# Medor Adminstration Building

Schedule from Primavera P6, 2010-07-10 to 2011-04-10, data date 2010-06-29.

## Calendars

- Gama projects calender: Mon-Thu 08:00-16:00; Fri off; Sat-Sun 08:00-16:00. Exceptions (off unless hours are given): 2010-11-15 to 2010-11-18.

## Schedule

| ID | WBS | Activity | Type | Duration | Start | Finish | Predecessors | Total float | Free float |
| --- | --- | --- | --- | --- | --- | --- | --- | --- | --- |
|  | 1 | **general** |  |  | 2010-07-10 | 2011-04-10 |  |  |  |
| A1000 |  | Receiving IFC drawings | milestone | 0d | 2010-07-10 | 2010-07-10 |  | 0d |  |
| A1010 |  | Receiving advance payement | milestone | 0d | 2010-07-10 | 2010-07-10 |  | 0d |  |
| A1020 |  | start construction phase | milestone | 0d | 2010-07-19 | 2010-07-19 | A2000 | 0d |  |
| A1030 |  | finish construction | milestone | 0d | 2011-04-10 | 2011-04-10 | A2160 | 0d |  |
|  | 3 | **engineering** |  |  | 2010-07-10 | 2010-08-15 |  |  |  |
| A1990 |  | submit ground floor's shop drawings for approval |  | 1d | 2010-07-10 | 2010-07-10 | A1000, A1010 | 0d |  |
| A2010 |  | submit 1st floor shop drawings for approval |  | 1d | 2010-07-14 | 2010-07-14 | A1990 FS+3d | 37d | 0d |
| A2000 |  | ground floor's shop drawings approval | milestone | 0d | 2010-07-18 | 2010-07-18 | A1990 FS+7d | 0d |  |
| A2030 |  | submit 2nd floor shop drawings for approval |  | 1d | 2010-07-19 | 2010-07-19 | A2010 FS+3d | 63d | 0d |
| A2020 |  | 1st floor shop drawings approval | milestone | 0d | 2010-07-22 | 2010-07-22 | A2010 FS+7d | 37d | 2d |
| A2050 |  | submit 3rd floor shop drawings for approval |  | 1d | 2010-07-24 | 2010-07-24 | A2030 FS+3d | 89d | 0d |
| A2040 |  | 2nd floor shop drawings approval | milestone | 0d | 2010-07-27 | 2010-07-27 | A2030 FS+7d | 63d | 28d |
| A2070 |  | submit 4th floor shop drawings for approval |  | 1d | 2010-07-28 | 2010-07-28 | A2050 FS+3d | 115d | 0d |
| A2060 |  | 3rd floor shop drawings approval | milestone | 0d | 2010-08-01 | 2010-08-01 | A2050 FS+7d | 89d | 54d |
| A2090 |  | submit 5th floor shop drawings for approval |  | 1d | 2010-08-02 | 2010-08-02 | A2070 FS+3d | 141d | 0d |
| A2080 |  | 4th floor shop drawings approval | milestone | 0d | 2010-08-05 | 2010-08-05 | A2070 FS+7d | 115d | 80d |
| A2110 |  | submit 6th floor shop drawings for approval |  | 1d | 2010-08-07 | 2010-08-07 | A2090 FS+3d | 167d | 0d |
| A2100 |  | 5th floor shop drawings approval | milestone | 0d | 2010-08-10 | 2010-08-10 | A2090 FS+7d | 141d | 106d |
| A2120 |  | 6th floor shop drawings approval | milestone | 0d | 2010-08-15 | 2010-08-15 | A2110 FS+7d | 167d | 132d |
|  | 2 | **skeleton** |  |  | 2010-07-19 | 2011-04-10 |  |  |  |
|  | 1 | **ground floor** |  |  | 2010-07-19 | 2010-08-16 |  |  |  |
| A1330 |  | columns Formwork & Rft. Part 2 |  | 10d | 2010-07-19 | 2010-07-29 | A1020 | 0d |  |
| A1350 |  | Slab Formwork & Rft. Part1 |  | 10d | 2010-07-19 | 2010-07-29 | A1020 | 35d | 0d |
| A1340 |  | Columns Pouring Part2 |  | 1d | 2010-07-31 | 2010-07-31 | A1330 | 0d |  |
| A1360 |  | Slab Pouring Part1 |  | 1d | 2010-07-31 | 2010-07-31 | A1350 | 35d | 0d |
| A1370 |  | Slab Formwork & Rft. Part2 |  | 11d | 2010-08-03 | 2010-08-15 | A1340 FS+2d | 0d |  |
| A1380 |  | Slab Pouring Part2 |  | 1d | 2010-08-16 | 2010-08-16 | A1370 | 0d |  |

| ID | WBS | Activity | Duration | Start | Finish | Predecessors | Total float | Free float |
| --- | --- | --- | --- | --- | --- | --- | --- | --- |
|  | 2 | **1st floor** |  | 2010-08-03 | 2010-09-22 |  |  |  |
| A1390 |  | columns Formwork & Rft. Part1 | 10d | 2010-08-03 | 2010-08-14 | A1360 FS+2d, A2020 FS+7d | 35d | 0d |
| A1400 |  | Columns Pouring Part1 | 1d | 2010-08-15 | 2010-08-15 | A1390 | 35d | 0d |
| A1420 |  | Slab Formwork & Rft. Part1 | 14d | 2010-08-18 | 2010-09-02 | A1400 FS+2d | 35d | 0d |
| A1410 |  | columns Formwork & Rft. Part 2 | 10d | 2010-08-19 | 2010-08-30 | A1380 FS+2d | 0d |  |
| A1440 |  | Columns Pouring Part2 | 1d | 2010-08-31 | 2010-08-31 | A1410 | 0d |  |
| A1450 |  | Slab Pouring Part1 | 1d | 2010-09-04 | 2010-09-04 | A1420 | 35d | 0d |
| A1460 |  | Slab Formwork & Rft. Part2 | 14d | 2010-09-04 | 2010-09-21 | A1440 FS+2d | 0d |  |
| A1480 |  | Slab Pouring Part2 | 1d | 2010-09-22 | 2010-09-22 | A1460 | 0d |  |
|  | 3 | **2nd floor** |  | 2010-09-07 | 2010-10-27 |  |  |  |
| A1490 |  | columns Formwork & Rft. Part1 | 10d | 2010-09-07 | 2010-09-20 | A1450 FS+2d, A2040 FS+7d | 35d | 0d |
| A1500 |  | Columns Pouring Part1 | 1d | 2010-09-21 | 2010-09-21 | A1490 | 35d | 0d |
| A1520 |  | Slab Formwork & Rft. Part1 | 14d | 2010-09-25 | 2010-10-10 | A1500 FS+2d | 35d | 0d |
| A1510 |  | columns Formwork & Rft. Part 2 | 10d | 2010-09-26 | 2010-10-06 | A1480 FS+2d | 0d |  |
| A1540 |  | Columns Pouring Part2 | 1d | 2010-10-07 | 2010-10-07 | A1510 | 0d |  |
| A1550 |  | Slab Pouring Part1 | 1d | 2010-10-11 | 2010-10-11 | A1520 | 35d | 0d |
| A1560 |  | Slab Formwork & Rft. Part2 | 14d | 2010-10-11 | 2010-10-26 | A1540 FS+2d | 0d |  |
| A1580 |  | Slab Pouring Part2 | 1d | 2010-10-27 | 2010-10-27 | A1560 | 0d |  |
|  | 4 | **3rd floor** |  | 2010-10-14 | 2010-12-06 |  |  |  |
| A1590 |  | columns Formwork & Rft. Part1 | 10d | 2010-10-14 | 2010-10-25 | A1550 FS+2d, A2060 FS+7d | 35d | 0d |
| A1600 |  | Columns Pouring Part1 | 1d | 2010-10-26 | 2010-10-26 | A1590 | 35d | 0d |
| A1620 |  | Slab Formwork & Rft. Part1 | 14d | 2010-10-30 | 2010-11-14 | A1600 FS+2d | 35d | 0d |
| A1610 |  | columns Formwork & Rft. Part 2 | 10d | 2010-10-31 | 2010-11-10 | A1580 FS+2d | 0d |  |
| A1640 |  | Columns Pouring Part2 | 1d | 2010-11-11 | 2010-11-11 | A1610 | 0d |  |
| A1650 |  | Slab Pouring Part1 | 1d | 2010-11-20 | 2010-11-20 | A1620 | 35d | 0d |
| A1660 |  | Slab Formwork & Rft. Part2 | 14d | 2010-11-20 | 2010-12-05 | A1640 FS+2d | 0d |  |
| A1680 |  | Slab Pouring Part2 | 1d | 2010-12-06 | 2010-12-06 | A1660 | 0d |  |

| ID | WBS | Activity | Duration | Start | Finish | Predecessors | Total float | Free float |
| --- | --- | --- | --- | --- | --- | --- | --- | --- |
|  | 5 | **4th floor** |  | 2010-11-23 | 2011-01-10 |  |  |  |
| A1690 |  | columns Formwork & Rft. Part1 | 10d | 2010-11-23 | 2010-12-04 | A1650 FS+2d, A2080 FS+7d | 35d | 0d |
| A1700 |  | Columns Pouring Part1 | 1d | 2010-12-05 | 2010-12-05 | A1690 | 35d | 0d |
| A1720 |  | Slab Formwork & Rft. Part1 | 14d | 2010-12-08 | 2010-12-23 | A1700 FS+2d | 35d | 0d |
| A1710 |  | columns Formwork & Rft. Part 2 | 10d | 2010-12-09 | 2010-12-20 | A1680 FS+2d | 0d |  |
| A1740 |  | Columns Pouring Part2 | 1d | 2010-12-21 | 2010-12-21 | A1710 | 0d |  |
| A1750 |  | Slab Pouring Part1 | 1d | 2010-12-25 | 2010-12-25 | A1720 | 35d | 0d |
| A1760 |  | Slab Formwork & Rft. Part2 | 14d | 2010-12-25 | 2011-01-09 | A1740 FS+2d | 0d |  |
| A1780 |  | Slab Pouring Part2 | 1d | 2011-01-10 | 2011-01-10 | A1760 | 0d |  |
|  | 6 | **5th floor** |  | 2010-12-28 | 2011-02-14 |  |  |  |
| A1790 |  | columns Formwork & Rft. Part1 | 10d | 2010-12-28 | 2011-01-08 | A1750 FS+2d, A2100 FS+7d | 35d | 0d |
| A1800 |  | Columns Pouring Part1 | 1d | 2011-01-09 | 2011-01-09 | A1790 | 35d | 0d |
| A1820 |  | Slab Formwork & Rft. Part1 | 14d | 2011-01-12 | 2011-01-27 | A1800 FS+2d | 35d | 0d |
| A1810 |  | columns Formwork & Rft. Part 2 | 10d | 2011-01-13 | 2011-01-24 | A1780 FS+2d | 0d |  |
| A1840 |  | Columns Pouring Part2 | 1d | 2011-01-25 | 2011-01-25 | A1810 | 0d |  |
| A1850 |  | Slab Pouring Part1 | 1d | 2011-01-29 | 2011-01-29 | A1820 | 35d | 0d |
| A1860 |  | Slab Formwork & Rft. Part2 | 14d | 2011-01-29 | 2011-02-13 | A1840 FS+2d | 0d |  |
| A1880 |  | Slab Pouring Part2 | 1d | 2011-02-14 | 2011-02-14 | A1860 | 0d |  |
|  | 7 | **6th floor** |  | 2011-02-01 | 2011-03-21 |  |  |  |
| A1890 |  | columns Formwork & Rft. Part1 | 10d | 2011-02-01 | 2011-02-12 | A1850 FS+2d, A2120 FS+7d | 35d | 0d |
| A1900 |  | Columns Pouring Part1 | 1d | 2011-02-13 | 2011-02-13 | A1890 | 35d | 0d |
| A1920 |  | Slab Formwork & Rft. Part1 | 10d | 2011-02-16 | 2011-02-27 | A1900 FS+2d | 35d | 0d |
| A1910 |  | columns Formwork & Rft. Part 2 | 10d | 2011-02-17 | 2011-02-28 | A1880 FS+2d | 0d |  |
| A1950 |  | Slab Pouring Part1 | 1d | 2011-02-28 | 2011-02-28 | A1920 | 35d |  |
| A1940 |  | Columns Pouring Part2 | 1d | 2011-03-01 | 2011-03-01 | A1910 | 0d |  |
| A1960 |  | Slab Formwork & Rft. Part2 | 14d | 2011-03-05 | 2011-03-20 | A1940 FS+2d | 0d |  |
| A1980 |  | Slab Pouring Part2 | 1d | 2011-03-21 | 2011-03-21 | A1960 | 0d |  |

| ID | WBS | Activity | Duration | Start | Finish | Predecessors | Total float |
| --- | --- | --- | --- | --- | --- | --- | --- |
|  | 8 | **Roof floor** |  | 2011-03-24 | 2011-04-10 |  |  |
| A2130 |  | columns Formwork & Rft. | 5d | 2011-03-24 | 2011-03-29 | A1980 FS+2d | 0d |
| A2140 |  | Columns Pouring | 1d | 2011-03-30 | 2011-03-30 | A2130 | 0d |
| A2150 |  | Slab Formwork & Rft. | 8d | 2011-03-31 | 2011-04-09 | A2140 | 0d |
| A2160 |  | Slab Pouring | 1d | 2011-04-10 | 2011-04-10 | A2150 | 0d |
