# Medor Adminstration Building

Schedule from Primavera P6, 2010-07-07 to 2011-04-03, data date 2010-06-29.

## Calendars

- Gama projects calender: Mon-Thu 08:00-16:00; Fri off; Sat-Sun 08:00-16:00. Exceptions (off unless hours are given): 2010-09-09, 2010-11-16 to 2010-11-18.

## Schedule

| ID | WBS | Activity | Type | Duration | Start | Finish | Predecessors | Total float | Free float |
| --- | --- | --- | --- | --- | --- | --- | --- | --- | --- |
|  | 1 | **general** |  |  | 2010-07-07 | 2011-04-03 |  |  |  |
| A1000 |  | Receiving IFC drawings | milestone | 0d | 2010-07-07 | 2010-07-07 |  | 0d |  |
| A1010 |  | Receiving advance payement | milestone | 0d | 2010-07-07 | 2010-07-07 |  | 0d |  |
| A1020 |  | start construction phase | milestone | 0d | 2010-07-17 | 2010-07-17 | A2000 | 0d |  |
| A1030 |  | finish construction | milestone | 0d | 2011-04-03 | 2011-04-03 | A2160 | 0d |  |
|  | 3 | **engineering** |  |  | 2010-07-07 | 2010-08-12 |  |  |  |
| A1990 |  | submit ground floor's shop drawings for approval |  | 1d | 2010-07-07 | 2010-07-07 | A1000, A1010 | 0d |  |
| A2010 |  | submit 1st floor shop drawings for approval |  | 1d | 2010-07-12 | 2010-07-12 | A1990 FS+3d | 12d | 0d |
| A2000 |  | ground floor's shop drawings approval | milestone | 0d | 2010-07-15 | 2010-07-15 | A1990 FS+7d | 0d |  |
| A2030 |  | submit 2nd floor shop drawings for approval |  | 1d | 2010-07-17 | 2010-07-17 | A2010 FS+3d | 39d | 0d |
| A2020 |  | 1st floor shop drawings approval | milestone | 0d | 2010-07-20 | 2010-07-20 | A2010 FS+7d | 12d |  |
| A2050 |  | submit 3rd floor shop drawings for approval |  | 1d | 2010-07-21 | 2010-07-21 | A2030 FS+3d | 66d | 0d |
| A2040 |  | 2nd floor shop drawings approval | milestone | 0d | 2010-07-25 | 2010-07-25 | A2030 FS+7d | 39d |  |
| A2070 |  | submit 4th floor shop drawings for approval |  | 1d | 2010-07-26 | 2010-07-26 | A2050 FS+3d | 92d | 0d |
| A2060 |  | 3rd floor shop drawings approval | milestone | 0d | 2010-07-29 | 2010-07-29 | A2050 FS+7d | 66d |  |
| A2090 |  | submit 5th floor shop drawings for approval |  | 1d | 2010-07-31 | 2010-07-31 | A2070 FS+3d | 118d | 0d |
| A2080 |  | 4th floor shop drawings approval | milestone | 0d | 2010-08-03 | 2010-08-03 | A2070 FS+7d | 92d |  |
| A2110 |  | submit 6th floor shop drawings for approval |  | 1d | 2010-08-04 | 2010-08-04 | A2090 FS+3d | 144d | 0d |
| A2100 |  | 5th floor shop drawings approval | milestone | 0d | 2010-08-08 | 2010-08-08 | A2090 FS+7d | 118d |  |
| A2120 |  | 6th floor shop drawings approval | milestone | 0d | 2010-08-12 | 2010-08-12 | A2110 FS+7d | 144d |  |
|  | 2 | **skeleton** |  |  | 2010-07-17 | 2011-04-03 |  |  |  |
|  | 1 | **ground floor** |  |  | 2010-07-17 | 2010-08-10 |  |  |  |
| A1330 |  | columns Formwork & Rft. Part 2 |  | 8d | 2010-07-17 | 2010-07-25 | A1020 | 0d |  |
| A1350 |  | Slab Formwork & Rft. Part1 |  | 10d | 2010-07-17 | 2010-07-27 | A1020 | 11d |  |
| A1340 |  | Columns Pouring Part2 |  | 1d | 2010-07-26 | 2010-07-26 | A1330 | 0d |  |
| A1370 |  | Slab Formwork & Rft. Part2 |  | 10d | 2010-07-29 | 2010-08-09 | A1340 FS+2d | 0d |  |
| A1380 |  | Slab Pouring |  | 1d | 2010-08-10 | 2010-08-10 | A1370, A1350 | 0d |  |

| ID | WBS | Activity | Duration | Start | Finish | Predecessors | Total float |
| --- | --- | --- | --- | --- | --- | --- | --- |
|  | 2 | **1st floor** |  | 2010-08-12 | 2010-09-16 |  |  |
| A1390 |  | columns Formwork & Rft. Part1 | 8d | 2010-08-12 | 2010-08-21 | A2020 FS+7d, A1380 FS+1d | 0d |
| A1400 |  | Columns Pouring Part1 | 1d | 2010-08-22 | 2010-08-22 | A1390 | 0d |
| A1410 |  | columns Formwork & Rft. Part 2 | 8d | 2010-08-22 | 2010-08-30 | A1380 FS+1d, A1400 FS-1d | 0d |
| A1420 |  | Slab Formwork & Rft. Part1 | 10d | 2010-08-24 | 2010-09-04 | A1400 FS+1d | 9d |
| A1440 |  | Columns Pouring Part2 | 1d | 2010-08-31 | 2010-08-31 | A1410 | 0d |
| A1460 |  | Slab Formwork & Rft. Part2 | 10d | 2010-09-04 | 2010-09-15 | A1440 FS+2d | 0d |
| A1480 |  | Slab Pouring | 1d | 2010-09-16 | 2010-09-16 | A1460, A1420 | 0d |
|  | 3 | **2nd floor** |  | 2010-09-19 | 2010-10-23 |  |  |
| A1490 |  | columns Formwork & Rft. Part1 | 8d | 2010-09-19 | 2010-09-27 | A2040 FS+7d, A1480 FS+1d | 0d |
| A1500 |  | Columns Pouring Part1 | 1d | 2010-09-28 | 2010-09-28 | A1490 | 0d |
| A1510 |  | columns Formwork & Rft. Part 2 | 8d | 2010-09-28 | 2010-10-06 | A1480 FS+1d, A1500 FS-1d | 0d |
| A1520 |  | Slab Formwork & Rft. Part1 | 10d | 2010-09-30 | 2010-10-11 | A1500 FS+1d | 9d |
| A1540 |  | Columns Pouring Part2 | 1d | 2010-10-07 | 2010-10-07 | A1510 | 0d |
| A1560 |  | Slab Formwork & Rft. Part2 | 10d | 2010-10-11 | 2010-10-21 | A1540 FS+2d | 0d |
| A1580 |  | Slab Pouring | 1d | 2010-10-23 | 2010-10-23 | A1560, A1520 | 0d |
|  | 4 | **3rd floor** |  | 2010-10-25 | 2010-11-30 |  |  |
| A1590 |  | columns Formwork & Rft. Part1 | 8d | 2010-10-25 | 2010-11-02 | A2060 FS+7d, A1580 FS+1d | 0d |
| A1610 |  | columns Formwork & Rft. Part 2 | 8d | 2010-11-02 | 2010-11-10 | A1580 FS+1d, A1600 FS-2d | 0d |
| A1600 |  | Columns Pouring Part1 | 1d | 2010-11-03 | 2010-11-03 | A1590 | 0d |
| A1620 |  | Slab Formwork & Rft. Part1 | 10d | 2010-11-06 | 2010-11-20 | A1600 FS+1d | 8d |
| A1640 |  | Columns Pouring Part2 | 1d | 2010-11-11 | 2010-11-11 | A1610 | 0d |
| A1660 |  | Slab Formwork & Rft. Part2 | 10d | 2010-11-15 | 2010-11-29 | A1640 FS+2d | 0d |
| A1680 |  | Slab Pouring | 1d | 2010-11-30 | 2010-11-30 | A1660, A1620 | 0d |

| ID | WBS | Activity | Duration | Start | Finish | Predecessors | Total float |
| --- | --- | --- | --- | --- | --- | --- | --- |
|  | 5 | **4th floor** |  | 2010-12-02 | 2011-01-04 |  |  |
| A1690 |  | columns Formwork & Rft. Part1 | 8d | 2010-12-02 | 2010-12-11 | A2080 FS+7d, A1680 FS+1d | 0d |
| A1710 |  | columns Formwork & Rft. Part 2 | 8d | 2010-12-11 | 2010-12-19 | A1680 FS+1d, A1700 FS-2d | 0d |
| A1700 |  | Columns Pouring Part1 | 1d | 2010-12-12 | 2010-12-12 | A1690 | 0d |
| A1720 |  | Slab Formwork & Rft. Part1 | 10d | 2010-12-14 | 2010-12-25 | A1700 FS+1d | 8d |
| A1740 |  | Columns Pouring Part2 | 1d | 2010-12-20 | 2010-12-20 | A1710 | 0d |
| A1760 |  | Slab Formwork & Rft. Part2 | 10d | 2010-12-23 | 2011-01-03 | A1740 FS+2d | 0d |
| A1780 |  | Slab Pouring | 1d | 2011-01-04 | 2011-01-04 | A1760, A1720 | 0d |
|  | 6 | **5th floor** |  | 2011-01-06 | 2011-02-08 |  |  |
| A1790 |  | columns Formwork & Rft. Part1 | 8d | 2011-01-06 | 2011-01-15 | A2100 FS+7d, A1780 FS+1d | 0d |
| A1810 |  | columns Formwork & Rft. Part 2 | 8d | 2011-01-15 | 2011-01-23 | A1780 FS+1d, A1800 FS-2d | 0d |
| A1800 |  | Columns Pouring Part1 | 1d | 2011-01-16 | 2011-01-16 | A1790 | 0d |
| A1820 |  | Slab Formwork & Rft. Part1 | 10d | 2011-01-18 | 2011-01-29 | A1800 FS+1d | 8d |
| A1840 |  | Columns Pouring Part2 | 1d | 2011-01-24 | 2011-01-24 | A1810 | 0d |
| A1860 |  | Slab Formwork & Rft. Part2 | 10d | 2011-01-27 | 2011-02-07 | A1840 FS+2d | 0d |
| A1880 |  | Slab Pouring | 1d | 2011-02-08 | 2011-02-08 | A1860, A1820 | 0d |
|  | 7 | **6th floor** |  | 2011-02-10 | 2011-03-15 |  |  |
| A1890 |  | columns Formwork & Rft. Part1 | 8d | 2011-02-10 | 2011-02-19 | A2120 FS+7d, A1880 FS+1d | 0d |
| A1910 |  | columns Formwork & Rft. Part 2 | 8d | 2011-02-19 | 2011-02-27 | A1880 FS+1d, A1900 FS-2d | 0d |
| A1900 |  | Columns Pouring Part1 | 1d | 2011-02-20 | 2011-02-20 | A1890 | 0d |
| A1920 |  | Slab Formwork & Rft. Part1 | 10d | 2011-02-22 | 2011-03-05 | A1900 FS+1d | 8d |
| A1940 |  | Columns Pouring Part2 | 1d | 2011-02-28 | 2011-02-28 | A1910 | 0d |
| A1960 |  | Slab Formwork & Rft. Part2 | 10d | 2011-03-03 | 2011-03-14 | A1940 FS+2d | 0d |
| A1980 |  | Slab Pouring | 1d | 2011-03-15 | 2011-03-15 | A1960, A1920 | 0d |

| ID | WBS | Activity | Duration | Start | Finish | Predecessors | Total float |
| --- | --- | --- | --- | --- | --- | --- | --- |
|  | 8 | **Roof floor** |  | 2011-03-19 | 2011-04-03 |  |  |
| A2130 |  | columns Formwork & Rft. | 5d | 2011-03-19 | 2011-03-23 | A1980 FS+2d | 0d |
| A2140 |  | Columns Pouring | 1d | 2011-03-24 | 2011-03-24 | A2130 | 0d |
| A2150 |  | Slab Formwork & Rft. | 7d | 2011-03-26 | 2011-04-02 | A2140 | 0d |
| A2160 |  | Slab Pouring | 1d | 2011-04-03 | 2011-04-03 | A2150 | 0d |
