# Medor Adminstration Building

Schedule from Primavera P6, 2010-07-07 to 2011-03-31, data date 2010-09-01, A marks actual dates.

## Calendars

- Gama projects calender: Mon-Thu 08:00-16:00; Fri off; Sat-Sun 08:00-16:00. Exceptions (off unless hours are given): 2010-09-09, 2010-11-16 to 2010-11-18.

## Schedule

| ID | WBS | Activity | Type | Duration | Start | Finish | Predecessors | Complete | Planned start | Planned finish | Total float | Free float |
| --- | --- | --- | --- | --- | --- | --- | --- | --- | --- | --- | --- | --- |
|  | 1 | **General** |  |  | 2010-07-07 | 2011-03-31 |  |  |  |  |  |  |
| A1000 |  | Receiving IFC drawings | milestone | 0d | 2010-07-07 A | 2010-07-07 A |  | 100% |  |  |  |  |
| A1010 |  | Receiving advance payement | milestone | 0d | 2010-07-07 A | 2010-07-07 A |  | 100% |  |  |  |  |
| A1020 |  | start construction phase | milestone | 0d | 2010-07-10 A | 2010-07-10 A | A2000 | 100% | 2010-07-17 | 2010-07-17 |  |  |
| A1030 |  | finish construction | milestone | 0d | 2011-03-31 | 2011-03-31 | A2160 |  |  |  | 0d |  |
|  | 3 | **Engineering** |  |  | 2010-07-07 | 2010-09-29 |  |  |  |  |  |  |
| A1990 |  | submit ground floor's shop drawings for approval |  | 1d | 2010-07-07 A | 2010-07-07 A | A1000, A1010 | 100% |  |  |  |  |
| A2010 |  | submit 1st floor shop drawings for approval |  | 1d | 2010-07-12 A | 2010-07-12 A | A1990 FS+3d | 100% |  |  |  |  |
| A2000 |  | ground floor's shop drawings approval | milestone | 0d | 2010-07-15 A | 2010-07-15 A | A1990 FS+7d | 100% |  |  |  |  |
| A2020 |  | 1st floor shop drawings approval | milestone | 0d | 2010-07-20 A | 2010-07-20 A | A2010 FS+7d | 100% |  |  |  |  |
| A2030 |  | submit 2nd floor shop drawings for approval |  | 1d | 2010-09-01 | 2010-09-01 | A2010 FS+3d |  |  |  | 154d | 0d |
| A2050 |  | submit 3rd floor shop drawings for approval |  | 1d | 2010-09-06 | 2010-09-06 | A2030 FS+3d |  |  |  | 154d | 0d |
| A2040 |  | 2nd floor shop drawings approval | milestone | 0d | 2010-09-11 | 2010-09-11 | A2030 FS+7d |  |  |  | 170d |  |
| A2070 |  | submit 4th floor shop drawings for approval |  | 1d | 2010-09-12 | 2010-09-12 | A2050 FS+3d |  |  |  | 154d | 0d |
| A2060 |  | 3rd floor shop drawings approval | milestone | 0d | 2010-09-15 | 2010-09-15 | A2050 FS+7d |  |  |  | 166d |  |
| A2090 |  | submit 5th floor shop drawings for approval |  | 1d | 2010-09-16 | 2010-09-16 | A2070 FS+3d |  |  |  | 154d | 0d |
| A2080 |  | 4th floor shop drawings approval | milestone | 0d | 2010-09-20 | 2010-09-20 | A2070 FS+7d |  |  |  | 162d |  |
| A2110 |  | submit 6th floor shop drawings for approval |  | 1d | 2010-09-21 | 2010-09-21 | A2090 FS+3d |  |  |  | 154d | 0d |
| A2100 |  | 5th floor shop drawings approval | milestone | 0d | 2010-09-25 | 2010-09-25 | A2090 FS+7d |  |  |  | 158d |  |
| A2120 |  | 6th floor shop drawings approval | milestone | 0d | 2010-09-29 | 2010-09-29 | A2110 FS+7d |  |  |  | 154d |  |
|  | 2 | **Skeleton** |  |  | 2010-07-10 | 2011-03-31 |  |  |  |  |  |  |
|  | 1 | **Ground Floor** |  |  | 2010-07-10 | 2010-08-07 |  |  |  |  |  |  |
| A1350 |  | Slab Formwork & Rft. Part1 |  | 10d | 2010-07-10 A | 2010-07-16 A | A1020 | 100% | 2010-07-17 | 2010-07-27 |  |  |
| A1330 |  | columns Formwork & Rft. Part 2 |  | 8d | 2010-07-17 A | 2010-07-27 A | A1020 | 100% | 2010-07-17 | 2010-07-25 |  |  |
| A1340 |  | Columns Pouring Part2 |  | 1d | 2010-07-28 A | 2010-07-28 A | A1330 | 100% | 2010-07-26 | 2010-07-26 |  |  |
| A1370 |  | Slab Formwork & Rft. Part2 |  | 10d | 2010-07-29 A | 2010-08-05 A | A1340 FS+2d | 100% | 2010-07-29 | 2010-08-09 |  |  |
| A1380 |  | Slab Pouring |  | 1d | 2010-08-07 A | 2010-08-07 A | A1370, A1350 | 100% | 2010-08-10 | 2010-08-10 |  |  |

| ID | WBS | Activity | Duration | Start | Finish | Predecessors | Complete | Remaining | Planned start | Planned finish | Total float |
| --- | --- | --- | --- | --- | --- | --- | --- | --- | --- | --- | --- |
|  | 2 | **1st Floor** |  | 2010-08-08 | 2010-09-14 |  |  |  |  |  |  |
| A1390 |  | columns Formwork & Rft. Part1 | 8d | 2010-08-08 A | 2010-08-24 A | A2020 FS+7d, A1380 FS+1d | 100% |  | 2010-08-12 | 2010-08-21 |  |
| A1410 |  | columns Formwork & Rft. Part 2 | 8d | 2010-08-22 A | 2010-08-29 A | A1380 FS+1d, A1400 FS-1d | 100% |  | 2010-08-22 | 2010-08-30 |  |
| A1400 |  | Columns Pouring Part1 | 1d | 2010-08-25 A | 2010-08-25 A | A1390 | 100% |  | 2010-08-22 | 2010-08-22 |  |
| A1420 |  | Slab Formwork & Rft. Part1 | 10d | 2010-08-26 A | 2010-09-13 | A1400 FS+1d | 60% | 10d | 2010-08-24 | 2010-09-04 | 0d |
| A1440 |  | Columns Pouring Part2 | 1d | 2010-08-30 A | 2010-08-30 A | A1410 | 100% |  | 2010-08-31 | 2010-08-31 |  |
| A1460 |  | Slab Formwork & Rft. Part2 | 10d | 2010-08-31 A | 2010-09-11 | A1440 FS+2d | 20% | 8d | 2010-09-04 | 2010-09-15 | 2d |
| A1480 |  | Slab Pouring | 1d | 2010-09-14 | 2010-09-14 | A1460, A1420 |  |  |  |  | 0d |
|  | 3 | **2nd Floor** |  | 2010-09-16 | 2010-10-20 |  |  |  |  |  |  |
| A1490 |  | columns Formwork & Rft. Part1 | 8d | 2010-09-16 | 2010-09-25 | A1480 FS+1d |  |  |  |  | 0d |
| A1500 |  | Columns Pouring Part1 | 1d | 2010-09-26 | 2010-09-26 | A1490 |  |  |  |  | 0d |
| A1510 |  | columns Formwork & Rft. Part 2 | 8d | 2010-09-26 | 2010-10-04 | A1480 FS+1d, A1500 FS-1d |  |  |  |  | 0d |
| A1520 |  | Slab Formwork & Rft. Part1 | 10d | 2010-09-28 | 2010-10-09 | A1500 FS+1d |  |  |  |  | 9d |
| A1540 |  | Columns Pouring Part2 | 1d | 2010-10-05 | 2010-10-05 | A1510 |  |  |  |  | 0d |
| A1560 |  | Slab Formwork & Rft. Part2 | 10d | 2010-10-09 | 2010-10-19 | A1540 FS+2d |  |  |  |  | 0d |
| A1580 |  | Slab Pouring | 1d | 2010-10-20 | 2010-10-20 | A1560, A1520 |  |  |  |  | 0d |
|  | 4 | **3rd Floor** |  | 2010-10-23 | 2010-11-28 |  |  |  |  |  |  |
| A1590 |  | columns Formwork & Rft. Part1 | 8d | 2010-10-23 | 2010-10-31 | A1580 FS+1d |  |  |  |  | 0d |
| A1610 |  | columns Formwork & Rft. Part 2 | 8d | 2010-10-31 | 2010-11-08 | A1580 FS+1d, A1600 FS-2d |  |  |  |  | 0d |
| A1600 |  | Columns Pouring Part1 | 1d | 2010-11-01 | 2010-11-01 | A1590 |  |  |  |  | 0d |
| A1620 |  | Slab Formwork & Rft. Part1 | 10d | 2010-11-03 | 2010-11-14 | A1600 FS+1d |  |  |  |  | 8d |
| A1640 |  | Columns Pouring Part2 | 1d | 2010-11-09 | 2010-11-09 | A1610 |  |  |  |  | 0d |
| A1660 |  | Slab Formwork & Rft. Part2 | 10d | 2010-11-13 | 2010-11-27 | A1640 FS+2d |  |  |  |  | 0d |
| A1680 |  | Slab Pouring | 1d | 2010-11-28 | 2010-11-28 | A1660, A1620 |  |  |  |  | 0d |

| ID | WBS | Activity | Duration | Start | Finish | Predecessors | Total float |
| --- | --- | --- | --- | --- | --- | --- | --- |
|  | 5 | **4th Floor** |  | 2010-11-30 | 2011-01-02 |  |  |
| A1690 |  | columns Formwork & Rft. Part1 | 8d | 2010-11-30 | 2010-12-08 | A1680 FS+1d | 0d |
| A1710 |  | columns Formwork & Rft. Part 2 | 8d | 2010-12-08 | 2010-12-16 | A1680 FS+1d, A1700 FS-2d | 0d |
| A1700 |  | Columns Pouring Part1 | 1d | 2010-12-09 | 2010-12-09 | A1690 | 0d |
| A1720 |  | Slab Formwork & Rft. Part1 | 10d | 2010-12-12 | 2010-12-22 | A1700 FS+1d | 8d |
| A1740 |  | Columns Pouring Part2 | 1d | 2010-12-18 | 2010-12-18 | A1710 | 0d |
| A1760 |  | Slab Formwork & Rft. Part2 | 10d | 2010-12-21 | 2011-01-01 | A1740 FS+2d | 0d |
| A1780 |  | Slab Pouring | 1d | 2011-01-02 | 2011-01-02 | A1760, A1720 | 0d |
|  | 6 | **5th Floor** |  | 2011-01-04 | 2011-02-06 |  |  |
| A1790 |  | columns Formwork & Rft. Part1 | 8d | 2011-01-04 | 2011-01-12 | A1780 FS+1d | 0d |
| A1810 |  | columns Formwork & Rft. Part 2 | 8d | 2011-01-12 | 2011-01-20 | A1780 FS+1d, A1800 FS-2d | 0d |
| A1800 |  | Columns Pouring Part1 | 1d | 2011-01-13 | 2011-01-13 | A1790 | 0d |
| A1820 |  | Slab Formwork & Rft. Part1 | 10d | 2011-01-16 | 2011-01-26 | A1800 FS+1d | 8d |
| A1840 |  | Columns Pouring Part2 | 1d | 2011-01-22 | 2011-01-22 | A1810 | 0d |
| A1860 |  | Slab Formwork & Rft. Part2 | 10d | 2011-01-25 | 2011-02-05 | A1840 FS+2d | 0d |
| A1880 |  | Slab Pouring | 1d | 2011-02-06 | 2011-02-06 | A1860, A1820 | 0d |
|  | 7 | **6th Floor** |  | 2011-02-08 | 2011-03-13 |  |  |
| A1890 |  | columns Formwork & Rft. Part1 | 8d | 2011-02-08 | 2011-02-16 | A1880 FS+1d | 0d |
| A1910 |  | columns Formwork & Rft. Part 2 | 8d | 2011-02-16 | 2011-02-24 | A1880 FS+1d, A1900 FS-2d | 0d |
| A1900 |  | Columns Pouring Part1 | 1d | 2011-02-17 | 2011-02-17 | A1890 | 0d |
| A1920 |  | Slab Formwork & Rft. Part1 | 10d | 2011-02-20 | 2011-03-02 | A1900 FS+1d | 8d |
| A1940 |  | Columns Pouring Part2 | 1d | 2011-02-26 | 2011-02-26 | A1910 | 0d |
| A1960 |  | Slab Formwork & Rft. Part2 | 10d | 2011-03-01 | 2011-03-12 | A1940 FS+2d | 0d |
| A1980 |  | Slab Pouring | 1d | 2011-03-13 | 2011-03-13 | A1960, A1920 | 0d |

| ID | WBS | Activity | Duration | Start | Finish | Predecessors | Total float |
| --- | --- | --- | --- | --- | --- | --- | --- |
|  | 8 | **Roof Floor** |  | 2011-03-16 | 2011-03-31 |  |  |
| A2130 |  | columns Formwork & Rft. | 5d | 2011-03-16 | 2011-03-21 | A1980 FS+2d | 0d |
| A2140 |  | Columns Pouring | 1d | 2011-03-22 | 2011-03-22 | A2130 | 0d |
| A2150 |  | Slab Formwork & Rft. | 7d | 2011-03-23 | 2011-03-30 | A2140 | 0d |
| A2160 |  | Slab Pouring | 1d | 2011-03-31 | 2011-03-31 | A2150 | 0d |
