# KATAMYA AIRBASE

Schedule from Primavera P6, 2012-01-01 to 2013-12-30, data date 2012-01-01.

## Calendars

- 6days work: Mon-Thu 08:00-16:00; Fri off; Sat-Sun 08:00-16:00.

## Schedule

| ID | WBS | Activity | Type | Duration | Start | Finish | Predecessors | Total float | Free float |
| --- | --- | --- | --- | --- | --- | --- | --- | --- | --- |
|  | 5 | **MILESTONES** |  |  | 2012-01-01 | 2013-12-30 |  |  |  |
| A10100 |  | Commencement date | milestone | 0d | 2012-01-01 | 2012-01-01 |  | 0d |  |
| A10110 |  | Project handing over | milestone | 0d | 2013-12-30 | 2013-12-30 | A10130 | 0d |  |
|  | 26 | **MOBILIZATION** |  |  | 2012-01-01 | 2013-12-30 |  |  |  |
| A10120 |  | Mobilization |  | 30d | 2012-01-01 | 2012-02-04 | A10100 | 0d |  |
| A10130 |  | Demobilization |  | 20d | 2013-12-08 | 2013-12-30 | A3730 FF+11d | 0d |  |
|  | 4 | **CONSTRUCTION** |  |  | 2012-01-01 | 2013-12-23 |  |  |  |
|  | 1 | **Airfield lighting vault (ZA)** |  |  | 2012-04-15 | 2012-08-07 |  |  |  |
|  | 1 | **CIVIL&ARCH** |  |  | 2012-04-15 | 2012-08-07 |  |  |  |
| A1740 |  | Excavation |  | 3d | 2012-04-15 | 2012-04-17 | A10120 FS+60d | 437d | 0d |
| A1750 |  | Foundation |  | 18d | 2012-04-18 | 2012-05-08 | A1740 | 437d | 0d |
| A1760 |  | Columns |  | 7d | 2012-05-09 | 2012-05-16 | A1750 | 437d | 0d |
| A1770 |  | Ground floor slab |  | 14d | 2012-05-17 | 2012-06-02 | A1760 | 437d | 0d |
| A1780 |  | Steel columns erection |  | 5d | 2012-05-17 | 2012-05-22 | A1760 | 503d |  |
| A1790 |  | Masonry under slab on grade |  | 10d | 2012-06-03 | 2012-06-13 | A1770 | 437d | 0d |
| A1800 |  | Footing insulation&backfilling |  | 14d | 2012-06-14 | 2012-06-30 | A1790 | 437d | 0d |
| A1810 |  | Slab on grade |  | 2d | 2012-07-01 | 2012-07-02 | A1800 | 437d | 0d |
| A1820 |  | Ground floor masonry |  | 10d | 2012-07-03 | 2012-07-14 | A1810 | 437d | 0d |
| A1830 |  | Finishing works |  | 21d | 2012-07-15 | 2012-08-07 | A1820 | 437d |  |
|  | 2 | **MEP** |  |  |  |  |  |  |  |
|  | 1 | **HVAC** |  |  |  |  |  |  |  |
|  | 2 | **ELECTRICAL WORKS** |  |  |  |  |  |  |  |
|  | 8 | **Air wing vehicle workshop (S)** |  |  | 2012-07-05 | 2013-08-17 |  |  |  |
|  | 1 | **CIVIL&ARCH** |  |  | 2012-07-05 | 2013-05-15 |  |  |  |
| A2140 |  | Excavation |  | 10d | 2012-07-05 | 2012-07-16 | A3060, A10120 | 116d | 0d |
| A2150 |  | Foundation |  | 25d | 2012-07-17 | 2012-08-14 | A2140 | 116d | 0d |
| A2160 |  | Ground floor Columns |  | 15d | 2012-08-15 | 2012-09-01 | A2150 | 116d | 0d |
| A2170 |  | Ground floor slab |  | 30d | 2012-09-02 | 2012-10-06 | A2160 | 116d | 0d |
| A2180 |  | First floor columns |  | 15d | 2012-10-07 | 2012-10-23 | A2170 | 116d | 0d |
| A2190 |  | First floor slab |  | 20d | 2012-10-24 | 2012-11-15 | A2180 | 351d |  |
| A2230 |  | Masonry under slab on grade |  | 20d | 2012-10-24 | 2012-11-15 | A2180 | 116d | 0d |
| A2240 |  | Footing insulation&backfilling |  | 25d | 2012-11-17 | 2012-12-15 | A2230 | 116d | 0d |
| A2220 |  | Slab on grade |  | 10d | 2012-12-16 | 2012-12-26 | A2240 | 116d | 0d |
| A2210 |  | Masonry works |  | 30d | 2012-12-27 | 2013-01-30 | A2220 | 116d | 0d |
| A2200 |  | Finishing works |  | 90d | 2013-01-31 | 2013-05-15 | A2210 | 196d |  |

| ID | WBS | Activity | Duration | Start | Finish | Predecessors | Total float | Free float | MEP |
| --- | --- | --- | --- | --- | --- | --- | --- | --- | --- |
|  | 2 | **MEP** |  | 2013-02-24 | 2013-08-17 |  |  |  |  |
|  | 1 | **HVAC** |  | 2013-02-24 | 2013-08-17 |  |  |  |  |
| A9720 |  | HVAC WORKS | 150d | 2013-02-24 | 2013-08-17 | A2210 FS+20d | 116d |  | HAVC |
|  | 2 | **ELECTRICAL WORKS** |  | 2013-02-24 | 2013-08-17 |  |  |  |  |
| A9730 |  | Electrical works | 150d | 2013-02-24 | 2013-08-17 | A2210 FS+20d | 116d |  | ELEC |
|  | 12 | **Aircraft supply storage ware house** |  | 2012-02-05 | 2013-01-30 |  |  |  |  |
|  | 1 | **CIVIL&ARCH** |  | 2012-02-05 | 2012-12-03 |  |  |  |  |
| A3000 |  | Excavation | 15d | 2012-02-05 | 2012-02-21 | A10120 | 116d | 0d |  |
| A3010 |  | Foundation | 45d | 2012-02-22 | 2012-04-14 | A3000 | 116d | 0d |  |
| A3020 |  | Columns | 15d | 2012-04-15 | 2012-05-01 | A3010 | 116d | 0d |  |
| A3040 |  | Masonry under slab on grade | 20d | 2012-05-02 | 2012-05-24 | A3020 | 116d | 0d |  |
| A3050 |  | Footing insulation&backfilling | 25d | 2012-05-26 | 2012-06-23 | A3040 | 116d | 0d |  |
| A3060 |  | Slab on grade | 10d | 2012-06-24 | 2012-07-04 | A3050 | 116d | 0d |  |
| A3090 |  | Steel roof erection | 20d | 2012-07-05 | 2012-07-28 | A3060 | 286d | 0d |  |
| A3070 |  | Ground floor masonry | 20d | 2012-07-29 | 2012-08-20 | A3090 | 286d | 0d |  |
| A3080 |  | Finishing works | 90d | 2012-08-21 | 2012-12-03 | A3070 | 286d | 0d |  |
|  | 2 | **MEP** |  | 2012-09-13 | 2013-01-30 |  |  |  |  |
|  | 1 | **HVAC** |  | 2012-09-13 | 2013-01-30 |  |  |  |  |
| A10080 |  | HVAC WORKS | 120d | 2012-09-13 | 2013-01-30 | A3080 SS+20d | 286d |  | HAVC |
|  | 2 | **ELECTRICAL WORKS** |  | 2012-09-13 | 2013-01-30 |  |  |  |  |
| A10090 |  | Electrical works | 120d | 2012-09-13 | 2013-01-30 | A3080 SS+20d | 286d |  | ELEC |
|  | 15 | **Aircraft shelter no 33 (LA)** |  | 2012-02-05 | 2013-03-12 |  |  |  |  |
|  | 1 | **CIVIL&ARCH** |  | 2012-02-05 | 2013-03-12 |  |  |  |  |
| A3640 |  | Excavation | 15d | 2012-02-05 | 2012-02-21 | A10120 | 251d | 0d |  |
| A3650 |  | Foundations | 60d | 2012-02-22 | 2012-05-01 | A3640 | 251d | 0d |  |
| A3660 |  | Concrete skeleton | 90d | 2012-05-02 | 2012-08-14 | A3650 | 251d | 0d |  |
| A3670 |  | Finishing works | 90d | 2012-08-15 | 2012-11-27 | A3660 | 251d | 0d |  |
| A3680 |  | Backfilling around shelters | 90d | 2012-11-28 | 2013-03-12 | A3670 | 251d |  |  |

| ID | WBS | Activity | Duration | Start | Finish | Predecessors | Total float | Free float | MEP |
| --- | --- | --- | --- | --- | --- | --- | --- | --- | --- |
|  | 2 | **MEP** |  | 2012-09-08 | 2013-02-28 |  |  |  |  |
|  | 1 | **HVAC** |  | 2012-09-08 | 2013-02-28 |  |  |  |  |
| A9740 |  | HVAC WORKS | 150d | 2012-09-08 | 2013-02-28 | A3670 SS+20d | 261d |  | HAVC |
|  | 2 | **ELECTRICAL WORKS** |  | 2012-09-08 | 2013-02-28 |  |  |  |  |
| A9750 |  | Electrical works | 150d | 2012-09-08 | 2013-02-28 | A3670 SS+20d | 261d |  | ELEC |
|  | 16 | **Aircraft shelters no 34,35 (LB)** |  | 2012-10-07 | 2013-12-17 |  |  |  |  |
|  | 1 | **CIVIL&ARCH** |  | 2012-10-07 | 2013-12-17 |  |  |  |  |
| A3690 |  | Excavation | 15d | 2012-10-07 | 2012-10-23 | A10120 FS+210d | 0d |  |  |
| A3700 |  | Foundations | 60d | 2012-10-24 | 2013-01-01 | A3690 | 0d |  |  |
| A3710 |  | Concrete skeleton | 120d | 2013-01-02 | 2013-05-21 | A3700 | 0d |  |  |
| A3720 |  | Finishing works | 90d | 2013-05-22 | 2013-09-03 | A3710 | 0d |  |  |
| A3730 |  | Backfilling around shelters | 90d | 2013-09-04 | 2013-12-17 | A3720 | 0d |  |  |
|  | 2 | **MEP** |  | 2013-06-15 | 2013-12-05 |  |  |  |  |
|  | 1 | **HVAC** |  | 2013-06-15 | 2013-12-05 |  |  |  |  |
| A9760 |  | HVAC WORKS | 150d | 2013-06-15 | 2013-12-05 | A3720 SS+20d | 21d |  | HAVC |
|  | 2 | **ELECTRICAL WORKS** |  | 2013-06-15 | 2013-12-05 |  |  |  |  |
| A9770 |  | Electrical works | 150d | 2013-06-15 | 2013-12-05 | A3720 SS+20d | 21d |  | ELEC |
|  | 25 | **Base commander building (A)** |  | 2012-02-05 | 2013-02-11 |  |  |  |  |
|  | 1 | **CIVIL&ARCH** |  | 2012-02-05 | 2012-10-29 |  |  |  |  |
| A2890 |  | Excavation | 10d | 2012-02-05 | 2012-02-15 | A10120 | 169d | 0d |  |
| A2900 |  | Foundation | 25d | 2012-02-16 | 2012-03-15 | A2890 | 169d | 0d |  |
| A2910 |  | Ground floor Columns | 15d | 2012-03-17 | 2012-04-02 | A2900 | 169d | 0d |  |
| A2920 |  | Ground floor slab | 20d | 2012-04-03 | 2012-04-25 | A2910 | 169d | 0d |  |
| A2930 |  | First floor columns | 15d | 2012-04-26 | 2012-05-13 | A2920 | 169d | 0d |  |
| A2940 |  | First floor slab | 20d | 2012-05-14 | 2012-06-05 | A2930 | 169d | 0d |  |
| A2950 |  | Masonry under slab on grade | 20d | 2012-05-14 | 2012-06-05 | A2930 | 276d | 0d |  |
| A2960 |  | Footing insulation&backfilling | 25d | 2012-06-06 | 2012-07-04 | A2950 | 276d | 0d |  |
| A2970 |  | Slab on grade | 10d | 2012-07-05 | 2012-07-16 | A2960 | 276d | 0d |  |
| A2980 |  | Masonry works | 30d | 2012-07-17 | 2012-08-20 | A2970 | 276d | 0d |  |
| A2990 |  | Finishing works | 60d | 2012-08-21 | 2012-10-29 | A2980 | 276d | 0d |  |

| ID | WBS | Activity | Duration | Start | Finish | Predecessors | Total float | Free float | MEP |
| --- | --- | --- | --- | --- | --- | --- | --- | --- | --- |
|  | 2 | **MEP** |  | 2012-08-21 | 2013-02-11 |  |  |  |  |
|  | 1 | **HVAC** |  | 2012-08-21 | 2013-02-11 |  |  |  |  |
| A9780 |  | HVAC WORKS | 150d | 2012-08-21 | 2013-02-11 | A2990 SS | 276d |  | HAVC |
|  | 2 | **ELECTRICAL WORKS** |  | 2012-08-21 | 2013-02-11 |  |  |  |  |
| A9790 |  | Electrical works | 150d | 2012-08-21 | 2013-02-11 | A2990 SS | 276d |  | ELEC |
|  | 3 | **Aircraft wash rack** |  | 2012-06-24 | 2012-08-30 |  |  |  |  |
|  | 1 | **CIVIL&ARCH** |  | 2012-06-24 | 2012-08-30 |  |  |  |  |
| A1070 |  | Excavation | 2d | 2012-06-24 | 2012-06-25 | A10120 FS+120d | 417d | 0d |  |
| A1080 |  | Foundation | 5d | 2012-06-26 | 2012-07-01 | A1070 | 417d | 0d |  |
| A1090 |  | Columns | 4d | 2012-07-02 | 2012-07-05 | A1080 | 417d | 0d |  |
| A1100 |  | Roof slab | 7d | 2012-07-07 | 2012-07-14 | A1090 | 417d | 0d |  |
| A1110 |  | Masonry under slab on grade | 7d | 2012-07-15 | 2012-07-22 | A1100 | 417d | 0d |  |
| A1160 |  | Footing insulation&backfilling | 5d | 2012-07-23 | 2012-07-28 | A1110 | 417d | 0d |  |
| A1120 |  | Slab on grade | 1d | 2012-07-29 | 2012-07-29 | A1160 | 417d | 0d |  |
| A1170 |  | Ground floor masonry | 7d | 2012-07-30 | 2012-08-06 | A1120 | 417d | 0d |  |
| A1130 |  | Finishing works | 21d | 2012-08-07 | 2012-08-30 | A1170 | 417d |  |  |
|  | 2 | **MEP** |  |  |  |  |  |  |  |
|  | 1 | **HVAC** |  |  |  |  |  |  |  |
|  | 2 | **ELECTRICAL WORKS** |  |  |  |  |  |  |  |
|  | 6 | **Base gate house (U)** |  | 2012-02-05 | 2013-02-12 |  |  |  |  |
| A1320 |  | Excavation | 3d | 2012-11-22 | 2012-11-25 | A10120 FS+250d | 275d | 0d |  |
| A1330 |  | Foundation | 10d | 2012-11-26 | 2012-12-06 | A1320 | 275d | 0d |  |
| A1340 |  | Columns | 7d | 2012-12-08 | 2012-12-15 | A1330 | 275d | 0d |  |
| A1390 |  | Gate house slab | 5d | 2012-12-16 | 2012-12-20 | A1340 | 275d | 0d |  |
| A1400 |  | columns-2 | 4d | 2012-12-22 | 2012-12-25 | A1390 | 275d | 0d |  |
| A1350 |  | Entrance beam | 5d | 2012-12-26 | 2012-12-31 | A1400 | 275d | 0d |  |
| A1380 |  | Masonry works | 7d | 2013-01-01 | 2013-01-08 | A1350 | 275d | 0d |  |
| A1370 |  | Finishing works | 30d | 2013-01-09 | 2013-02-12 | A1380 | 275d |  |  |

| ID | WBS | Activity | Duration | Start | Finish | Predecessors | Total float | Free float |
| --- | --- | --- | --- | --- | --- | --- | --- | --- |
|  | 4 | **Water distribution pump house (W)** |  | 2012-02-05 | 2012-05-29 |  |  |  |
| A1840 |  | Excavation | 3d | 2012-02-05 | 2012-02-07 | A10120 | 497d | 0d |
| A1850 |  | Foundation | 18d | 2012-02-08 | 2012-02-28 | A1840 | 497d | 0d |
| A1860 |  | Columns | 7d | 2012-02-29 | 2012-03-07 | A1850 | 497d | 0d |
| A1870 |  | Ground floor slab | 14d | 2012-03-08 | 2012-03-24 | A1860 | 497d | 0d |
| A1890 |  | Masonry under slab on grade | 10d | 2012-03-25 | 2012-04-04 | A1870 | 497d | 0d |
| A1900 |  | Footing insulation&backfilling | 14d | 2012-04-05 | 2012-04-21 | A1890 | 497d | 0d |
| A1910 |  | Slab on grade | 2d | 2012-04-22 | 2012-04-23 | A1900 | 497d | 0d |
| A1920 |  | Ground floor masonry | 10d | 2012-04-24 | 2012-05-05 | A1910 | 497d | 0d |
| A1930 |  | Finishing works | 21d | 2012-05-06 | 2012-05-29 | A1920 | 497d |  |
|  | 5 | **Guard Towers(33) and Fences (V)** |  | 2012-02-05 | 2012-03-15 |  |  |  |
| A1410 |  | Excavation | 2d | 2012-02-05 | 2012-02-06 | A10120 | 561d | 0d |
| A1420 |  | Foundation | 7d | 2012-02-07 | 2012-02-14 | A1410 | 561d | 0d |
| A1430 |  | Column | 7d | 2012-02-15 | 2012-02-22 | A1420 | 561d | 0d |
| A1440 |  | First floor slab | 5d | 2012-02-23 | 2012-02-28 | A1430 | 561d | 0d |
| A1450 |  | Roofing | 3d | 2012-02-29 | 2012-03-03 | A1440 | 561d | 0d |
| A1490 |  | Steel ladder erection | 1d | 2012-03-04 | 2012-03-04 | A1450 | 561d | 0d |
| A1480 |  | Finishing works | 10d | 2012-03-05 | 2012-03-15 | A1490 | 561d |  |
|  | 18 | **Civil Eng. Compound (H)** |  | 2012-02-05 | 2012-09-06 |  |  |  |
|  | 1 | **CIVIL&ARCH** |  | 2012-02-05 | 2012-07-04 |  |  |  |
| A2050 |  | Excavation | 5d | 2012-02-05 | 2012-02-09 | A10120 | 411d | 0d |
| A2060 |  | Foundation | 20d | 2012-02-11 | 2012-03-04 | A2050 | 411d | 0d |
| A2070 |  | Columns | 7d | 2012-03-05 | 2012-03-12 | A2060 | 411d | 0d |
| A2080 |  | Ground floor slab | 20d | 2012-03-13 | 2012-04-04 | A2070 | 411d | 0d |
| A2090 |  | Masonry under slab on grade | 15d | 2012-04-05 | 2012-04-22 | A2080 | 411d | 0d |
| A2100 |  | Footing insulation&backfilling | 14d | 2012-04-23 | 2012-05-08 | A2090 | 411d | 0d |
| A2110 |  | Slab on grade | 4d | 2012-05-09 | 2012-05-13 | A2100 | 411d | 0d |
| A2120 |  | Ground floor masonry | 10d | 2012-05-14 | 2012-05-24 | A2110 | 411d | 0d |
| A2130 |  | Finishing works | 35d | 2012-05-26 | 2012-07-04 | A2120 | 411d | 0d |

| ID | WBS | Activity | Duration | Start | Finish | Predecessors | Total float | Free float | MEP |
| --- | --- | --- | --- | --- | --- | --- | --- | --- | --- |
|  | 2 | **MEP** |  | 2012-05-26 | 2012-09-06 |  |  |  |  |
|  | 1 | **HVAC** |  | 2012-05-26 | 2012-09-06 |  |  |  |  |
| A9800 |  | HVAC WORKS | 90d | 2012-05-26 | 2012-09-06 | A2130 SS | 411d |  | HAVC |
|  | 2 | **ELECTRICAL WORKS** |  | 2012-05-26 | 2012-09-06 |  |  |  |  |
| A9810 |  | Electrical works | 90d | 2012-05-26 | 2012-09-06 | A2130 SS | 411d |  | ELEC |
|  | 17 | **Control Tower** |  | 2012-06-24 | 2013-05-07 |  |  |  |  |
|  | 3 | **CIVIL&ARCH** |  | 2012-06-24 | 2013-03-14 |  |  |  |  |
|  | 1 | **Control tower** |  | 2012-06-24 | 2013-03-14 |  |  |  |  |
| A3280 |  | Excavation | 5d | 2012-06-24 | 2012-06-28 | A10120 FS+120d | 203d | 0d |  |
| A3290 |  | Foundation | 25d | 2012-06-30 | 2012-07-28 | A3280 | 249d | 0d |  |
| A3300 |  | Ground floor Columns | 15d | 2012-07-29 | 2012-08-14 | A3290 | 249d | 0d |  |
| A3310 |  | Ground floor slab&stairs | 20d | 2012-08-15 | 2012-09-06 | A3300 | 249d | 0d |  |
| A3320 |  | First floor columns | 7d | 2012-09-08 | 2012-09-15 | A3310 | 249d | 0d |  |
| A3330 |  | First floor slab&stairs | 14d | 2012-09-16 | 2012-10-01 | A3320 | 249d | 0d |  |
| A3340 |  | Second floor columns | 7d | 2012-10-02 | 2012-10-09 | A3330 | 249d | 0d |  |
| A3350 |  | Second floor slab&stairs | 14d | 2012-10-10 | 2012-10-25 | A3340 | 249d | 0d |  |
| A3360 |  | Control console&steel roof erection | 30d | 2012-10-27 | 2012-11-29 | A3350 | 249d | 0d |  |
| A3370 |  | Masonry works | 30d | 2012-12-01 | 2013-01-03 | A3360 | 249d | 0d |  |
| A3380 |  | Finishing works | 60d | 2013-01-05 | 2013-03-14 | A3370 | 249d |  |  |
|  | 2 | **Ground floor building** |  | 2012-06-30 | 2013-01-22 |  |  |  |  |
| A3190 |  | Excavation | 5d | 2012-06-30 | 2012-07-04 | A3280 | 203d | 0d |  |
| A3200 |  | Foundation | 25d | 2012-07-05 | 2012-08-02 | A3190 | 203d | 0d |  |
| A3210 |  | Ground floor Columns | 15d | 2012-08-04 | 2012-08-20 | A3200 | 203d | 0d |  |
| A3220 |  | Ground floor slab | 20d | 2012-08-21 | 2012-09-12 | A3210 | 203d | 0d |  |
| A3230 |  | Masonry under slab on grade | 15d | 2012-09-13 | 2012-09-30 | A3220 | 203d | 0d |  |
| A3240 |  | Footing insulation&backfilling | 14d | 2012-10-01 | 2012-10-16 | A3230 | 203d | 0d |  |
| A3250 |  | Slab on grade | 4d | 2012-10-17 | 2012-10-21 | A3240 | 203d | 0d |  |
| A3260 |  | Ground floor masonry | 20d | 2012-10-22 | 2012-11-13 | A3250 | 203d | 0d |  |
| A3270 |  | Finishing works | 60d | 2012-11-14 | 2013-01-22 | A3260 | 203d | 0d |  |

| ID | WBS | Activity | Duration | Start | Finish | Predecessors | Total float | Free float | MEP |
| --- | --- | --- | --- | --- | --- | --- | --- | --- | --- |
|  | 4 | **MEP** |  | 2012-12-19 | 2013-05-07 |  |  |  |  |
|  | 1 | **HVAC** |  | 2012-12-19 | 2013-05-07 |  |  |  |  |
| A9820 |  | HVAC WORKS | 120d | 2012-12-19 | 2013-05-07 | A3270 SS+30d | 203d |  | HAVC |
|  | 2 | **ELECTRICAL WORKS** |  | 2012-12-19 | 2013-05-07 |  |  |  |  |
| A9830 |  | Electrical works | 120d | 2012-12-19 | 2013-05-07 | A3270 SS+30d | 203d |  | ELEC |
|  | 7 | **Communication building (T)** |  | 2012-09-19 | 2013-06-16 |  |  |  |  |
|  | 3 | **CIVIL&ARCH-1** |  | 2012-09-19 | 2013-01-27 |  |  |  |  |
| A1940 |  | Excavation | 5d | 2012-09-19 | 2012-09-24 | A10120, A2940 FS+90d | 169d | 0d |  |
| A1950 |  | Foundation | 18d | 2012-09-25 | 2012-10-15 | A1940 | 169d | 0d |  |
| A1960 |  | Basement Columns&foundation wall | 7d | 2012-10-16 | 2012-10-23 | A1950 | 169d | 0d |  |
| A2030 |  | Basement slab | 14d | 2012-10-24 | 2012-11-08 | A1960 | 169d | 0d |  |
| A2040 |  | Ground floor columns | 14d | 2012-11-10 | 2012-11-25 | A2030 | 169d | 0d |  |
| A1970 |  | Ground floor slab | 14d | 2012-11-26 | 2012-12-11 | A2040 | 169d | 0d |  |
| A2010 |  | Ground floor masonry | 10d | 2012-12-12 | 2012-12-23 | A1970 | 169d | 0d |  |
| A2020 |  | Finishing works | 30d | 2012-12-24 | 2013-01-27 | A2010 | 169d | 0d |  |
|  | 2 | **MEP** |  | 2012-12-24 | 2013-06-16 |  |  |  |  |
|  | 1 | **HVAC** |  | 2012-12-24 | 2013-05-12 |  |  |  |  |
| A9840 |  | HVAC WORKS | 120d | 2012-12-24 | 2013-05-12 | A2020 SS | 199d |  | HAVC |
|  | 2 | **ELECTRICAL WORKS** |  | 2012-12-24 | 2013-06-16 |  |  |  |  |
| A9850 |  | Electrical works | 150d | 2012-12-24 | 2013-06-16 | A2020 SS | 169d |  | ELEC |
|  | 4 | **External Fence** |  | 2012-04-15 | 2013-12-23 |  |  |  |  |
| A10260 |  | External fence | 530d | 2012-04-15 | 2013-12-23 | A10120 FS+60d | 6d |  |  |
|  | 11 | **Equipment storage workshop** |  | 2012-01-01 | 2013-03-14 |  |  |  |  |
|  | 3 | **CIVIL&ARCH** |  | 2012-01-01 | 2013-01-03 |  |  |  |  |
|  | 1 | **Vehicle sunshade** |  | 2012-02-05 | 2012-03-19 |  |  |  |  |
| A3490 |  | Excavation | 5d | 2012-02-05 | 2012-02-09 | A10120 | 558d | 0d |  |
| A3500 |  | Foundation | 10d | 2012-02-11 | 2012-02-21 | A3490 | 558d | 0d |  |
| A3510 |  | Sunshade erection | 10d | 2012-02-22 | 2012-03-04 | A3500 | 558d | 0d |  |
| A3520 |  | Paving | 5d | 2012-03-05 | 2012-03-10 | A3510 | 558d | 0d |  |
| A3530 |  | wheel stop | 4d | 2012-03-11 | 2012-03-14 | A3520 | 558d | 0d |  |
| A3540 |  | Bollard erection | 4d | 2012-03-15 | 2012-03-19 | A3530 | 558d |  |  |

| ID | WBS | Activity | Duration | Start | Finish | Predecessors | Total float | Free float | MEP |
| --- | --- | --- | --- | --- | --- | --- | --- | --- | --- |
|  | 2 | **Buildngs A&B&C&D** |  | 2012-01-01 | 2013-01-03 |  |  |  |  |
| A3550 |  | Excavation | 20d | 2012-01-01 | 2012-01-23 |  | 249d | 0d |  |
| A3560 |  | Foundation | 45d | 2012-01-24 | 2012-03-15 | A3550 | 249d | 0d |  |
| A3570 |  | Columns | 20d | 2012-03-17 | 2012-04-08 | A3560 | 249d | 0d |  |
| A3580 |  | Ground floor slab | 45d | 2012-04-09 | 2012-05-30 | A3570 | 249d | 0d |  |
| A3590 |  | Masonry under slab on grade | 30d | 2012-05-31 | 2012-07-04 | A3580 | 249d | 0d |  |
| A3600 |  | Footing insulation&backfilling | 30d | 2012-07-05 | 2012-08-08 | A3590 | 249d | 0d |  |
| A3610 |  | Slab on grade | 7d | 2012-08-09 | 2012-08-16 | A3600 | 249d | 0d |  |
| A3620 |  | Ground floor masonry | 30d | 2012-08-18 | 2012-09-20 | A3610 | 249d | 0d |  |
| A3630 |  | Finishing works | 90d | 2012-09-22 | 2013-01-03 | A3620 | 249d | 0d |  |
|  | 4 | **MEP** |  | 2012-09-22 | 2013-03-14 |  |  |  |  |
|  | 1 | **HVAC** |  | 2012-09-22 | 2013-03-14 |  |  |  |  |
| A9860 |  | HVAC WORKS | 150d | 2012-09-22 | 2013-03-14 | A3630 SS | 249d |  | HAVC |
|  | 2 | **ELECTRICAL WORKS** |  | 2012-09-22 | 2013-03-14 |  |  |  |  |
| A9870 |  | Electrical works | 150d | 2012-09-22 | 2013-03-14 | A3630 SS | 249d |  | ELEC |
|  | 30 | **Fire station (ZC)** |  | 2012-10-07 | 2013-04-20 |  |  |  |  |
|  | 1 | **CIVIL&ARCH** |  | 2012-10-07 | 2013-02-14 |  |  |  |  |
| A1500 |  | Excavation | 3d | 2012-10-07 | 2012-10-09 | A10120 FS+210d | 218d | 0d |  |
| A1510 |  | Foundation | 18d | 2012-10-10 | 2012-10-30 | A1500 | 218d | 0d |  |
| A1520 |  | Columns | 7d | 2012-10-31 | 2012-11-07 | A1510 | 218d | 0d |  |
| A1530 |  | Ground floor slab | 14d | 2012-11-08 | 2012-11-24 | A1520 | 218d | 0d |  |
| A1600 |  | Steel columns erection | 5d | 2012-11-08 | 2012-11-13 | A1520 | 339d | 66d |  |
| A1550 |  | Masonry under slab on grade | 10d | 2012-11-25 | 2012-12-05 | A1530 | 218d | 0d |  |
| A1570 |  | Footing insulation&backfilling | 14d | 2012-12-06 | 2012-12-22 | A1550 | 218d | 0d |  |
| A1560 |  | Slab on grade | 2d | 2012-12-23 | 2012-12-24 | A1570 | 218d | 0d |  |
| A1540 |  | Ground floor masonry | 10d | 2012-12-25 | 2013-01-05 | A1560 | 218d | 0d |  |
| A1580 |  | Finishing works | 21d | 2013-01-06 | 2013-01-29 | A1540 | 218d | 0d |  |
| A1590 |  | Steel roof erection | 14d | 2013-01-30 | 2013-02-14 | A1580, A1600 | 273d |  |  |

| ID | WBS | Activity | Duration | Start | Finish | Predecessors | Total float | Free float | MEP |
| --- | --- | --- | --- | --- | --- | --- | --- | --- | --- |
|  | 2 | **MEP** |  | 2013-01-06 | 2013-04-20 |  |  |  |  |
|  | 1 | **HVAC** |  | 2013-01-06 | 2013-04-20 |  |  |  |  |
| A9880 |  | HVAC WORKS | 90d | 2013-01-06 | 2013-04-20 | A1580 SS | 218d |  | HAVC |
|  | 2 | **ELECTRICAL WORKS** |  | 2013-01-06 | 2013-04-20 |  |  |  |  |
| A9890 |  | Electrical works | 90d | 2013-01-06 | 2013-04-20 | A1580 SS | 218d |  | ELEC |
|  | 29 | **Generator building (ZD)** |  | 2012-10-07 | 2013-03-31 |  |  |  |  |
|  | 1 | **CIVIL&ARCH** |  | 2012-10-07 | 2013-01-20 |  |  |  |  |
| A1680 |  | Excavation | 3d | 2012-10-07 | 2012-10-09 | A10120 FS+210d | 235d | 0d |  |
| A1690 |  | Foundation | 18d | 2012-10-10 | 2012-10-30 | A1680 | 235d | 0d |  |
| A1700 |  | Columns | 7d | 2012-10-31 | 2012-11-07 | A1690 | 235d | 0d |  |
| A1710 |  | Masonry under slab on grade | 10d | 2012-11-08 | 2012-11-19 | A1700 | 235d | 0d |  |
| A1720 |  | Footing insulation&backfilling | 14d | 2012-11-20 | 2012-12-05 | A1710 | 235d | 0d |  |
| A1730 |  | Slab on grade | 2d | 2012-12-06 | 2012-12-08 | A1720 | 235d | 0d |  |
| A1670 |  | Steel structure erection | 10d | 2012-12-09 | 2012-12-19 | A1730 | 235d | 0d |  |
| A1630 |  | Masonry works | 7d | 2012-12-20 | 2012-12-27 | A1670 | 235d | 0d |  |
| A1640 |  | Finishing works | 20d | 2012-12-29 | 2013-01-20 | A1630 | 235d | 0d |  |
|  | 2 | **MEP** |  | 2013-01-21 | 2013-03-31 |  |  |  |  |
|  | 1 | **HVAC** |  | 2013-01-21 | 2013-03-31 |  |  |  |  |
| A9900 |  | HVAC WORKS | 60d | 2013-01-21 | 2013-03-31 | A1640 | 235d |  | HAVC |
|  | 2 | **ELECTRICAL WORKS** |  | 2013-01-21 | 2013-03-31 |  |  |  |  |
| A9910 |  | Electrical works | 60d | 2013-01-21 | 2013-03-31 | A1640 | 235d |  | ELEC |
|  | 31 | **Lab. Building (ZB)** |  | 2012-09-25 | 2013-03-25 |  |  |  |  |
|  | 1 | **CIVIL&ARCH** |  | 2012-09-25 | 2013-01-14 |  |  |  |  |
| A10140 |  | Excavation | 3d | 2012-09-25 | 2012-09-27 | A10120 FS+200d | 240d | 0d |  |
| A10150 |  | Foundation | 18d | 2012-09-29 | 2012-10-18 | A10140 | 240d | 0d |  |
| A10160 |  | Columns | 7d | 2012-10-20 | 2012-10-27 | A10150 | 240d | 0d |  |
| A10230 |  | Ground floor slab | 15d | 2012-10-28 | 2012-11-13 | A10160 | 240d | 0d |  |
| A10170 |  | Masonry under slab on grade | 10d | 2012-11-14 | 2012-11-25 | A10230 | 240d | 0d |  |
| A10180 |  | Footing insulation&backfilling | 14d | 2012-11-26 | 2012-12-11 | A10170 | 240d | 0d |  |
| A10190 |  | Slab on grade | 2d | 2012-12-12 | 2012-12-13 | A10180 | 240d | 0d |  |
| A10210 |  | Masonry works | 7d | 2012-12-15 | 2012-12-22 | A10190 | 240d | 0d |  |
| A10220 |  | Finishing works | 20d | 2012-12-23 | 2013-01-14 | A10210 | 240d | 0d |  |

| ID | WBS | Activity | Duration | Start | Finish | Predecessors | Total float | Free float | MEP |
| --- | --- | --- | --- | --- | --- | --- | --- | --- | --- |
|  | 2 | **MEP** |  | 2013-01-15 | 2013-03-25 |  |  |  |  |
|  | 1 | **HVAC** |  | 2013-01-15 | 2013-03-25 |  |  |  |  |
| A10240 |  | HVAC WORKS | 60d | 2013-01-15 | 2013-03-25 | A10220 | 240d |  | HAVC |
|  | 2 | **ELECTRICAL WORKS** |  | 2013-01-15 | 2013-03-25 |  |  |  |  |
| A10250 |  | Electrical works | 60d | 2013-01-15 | 2013-03-25 | A10220 | 240d |  | ELEC |
|  | 14 | **Missile maintenance shelter** |  | 2012-02-05 | 2012-11-27 |  |  |  |  |
|  | 1 | **CIVIL&ARCH** |  | 2012-02-05 | 2012-08-14 |  |  |  |  |
| A3400 |  | Excavation | 7d | 2012-02-05 | 2012-02-12 | A10120 | 341d | 0d |  |
| A3410 |  | Foundation | 25d | 2012-02-13 | 2012-03-12 | A3400 | 341d | 0d |  |
| A3420 |  | Columns | 10d | 2012-03-13 | 2012-03-24 | A3410 | 341d | 0d |  |
| A3430 |  | Ground floor slab | 15d | 2012-03-25 | 2012-04-10 | A3420 | 341d | 0d |  |
| A3440 |  | Masonry under slab on grade | 15d | 2012-04-11 | 2012-04-28 | A3430 | 341d | 0d |  |
| A3450 |  | Footing insulation&backfilling | 14d | 2012-04-29 | 2012-05-14 | A3440 | 341d | 0d |  |
| A3460 |  | Slab on grade | 4d | 2012-05-15 | 2012-05-19 | A3450 | 341d | 0d |  |
| A3470 |  | Ground floor masonry | 15d | 2012-05-20 | 2012-06-05 | A3460 | 341d | 0d |  |
| A3480 |  | Finishing works | 60d | 2012-06-06 | 2012-08-14 | A3470 | 341d | 0d |  |
|  | 2 | **MEP** |  | 2012-07-11 | 2012-11-27 |  |  |  |  |
|  | 1 | **HVAC** |  | 2012-07-11 | 2012-11-27 |  |  |  |  |
| A10040 |  | HVAC WORKS | 120d | 2012-07-11 | 2012-11-27 | A3480 SS+30d | 341d |  | HAVC |
|  | 2 | **ELECTRICAL WORKS** |  | 2012-07-11 | 2012-11-27 |  |  |  |  |
| A10050 |  | Electrical works | 120d | 2012-07-11 | 2012-11-27 | A3480 SS+30d | 341d |  | ELEC |
|  | 13 | **Maintenance hangar** |  | 2012-02-05 | 2013-03-24 |  |  |  |  |
|  | 1 | **CIVIL&ARCH** |  | 2012-02-05 | 2013-02-17 |  |  |  |  |
| A3100 |  | Excavation | 15d | 2012-02-05 | 2012-02-21 | A10120 | 241d | 0d |  |
| A3110 |  | Foundation | 50d | 2012-02-22 | 2012-04-19 | A3100 | 241d | 0d |  |
| A3120 |  | Columns | 20d | 2012-04-21 | 2012-05-13 | A3110 | 241d | 0d |  |
| A3130 |  | Masonry under slab on grade | 25d | 2012-05-14 | 2012-06-11 | A3120 | 241d | 0d |  |
| A3140 |  | Footing insulation&backfilling | 30d | 2012-06-12 | 2012-07-16 | A3130 | 241d | 0d |  |
| A3150 |  | Slab on grade | 15d | 2012-07-17 | 2012-08-02 | A3140 | 241d | 0d |  |
| A3160 |  | Steel roof erection | 20d | 2012-08-04 | 2012-08-26 | A3150 | 241d | 0d |  |
| A3170 |  | Ground floor masonry | 30d | 2012-08-27 | 2012-09-30 | A3160 | 241d | 0d |  |
| A3390 |  | Wheel crane erection | 14d | 2012-08-27 | 2012-09-11 | A3160 | 407d |  |  |
| A3180 |  | Finishing works | 120d | 2012-10-01 | 2013-02-17 | A3170 | 241d | 0d |  |

| ID | WBS | Activity | Duration | Start | Finish | Predecessors | Total float | Free float | MEP |
| --- | --- | --- | --- | --- | --- | --- | --- | --- | --- |
|  | 2 | **MEP** |  | 2012-12-10 | 2013-03-24 |  |  |  |  |
|  | 1 | **HVAC** |  | 2012-12-10 | 2013-03-24 |  |  |  |  |
| A9930 |  | HVAC WORKS | 90d | 2012-12-10 | 2013-03-24 | A3180 SS+60d | 241d |  | HAVC |
|  | 2 | **ELECTRICAL WORKS** |  | 2012-12-10 | 2013-03-24 |  |  |  |  |
| A9920 |  | Electrical works | 90d | 2012-12-10 | 2013-03-24 | A3180 SS+60d | 241d |  | ELEC |
|  | 19 | **NCO BEQ (G)** |  | 2012-07-31 | 2013-08-07 |  |  |  |  |
|  | 1 | **CIVIL&ARCH** |  | 2012-07-31 | 2013-05-29 |  |  |  |  |
| A2260 |  | Excavation | 10d | 2012-07-31 | 2012-08-11 | A2520, A10120 | 124d | 0d |  |
| A2280 |  | Foundation | 25d | 2012-08-12 | 2012-09-09 | A2260 | 124d | 0d |  |
| A2290 |  | Ground floor Columns | 15d | 2012-09-10 | 2012-09-26 | A2280 | 124d | 0d |  |
| A2300 |  | Ground floor slab | 20d | 2012-09-27 | 2012-10-20 | A2290 | 124d | 0d |  |
| A2310 |  | First floor columns | 15d | 2012-10-21 | 2012-11-06 | A2300 | 124d | 0d |  |
| A2320 |  | First floor slab | 20d | 2012-11-07 | 2012-11-29 | A2310 | 339d |  |  |
| A2330 |  | Masonry under slab on grade | 20d | 2012-11-07 | 2012-11-29 | A2310 | 124d | 0d |  |
| A2340 |  | Footing insulation&backfilling | 25d | 2012-12-01 | 2012-12-29 | A2330 | 124d | 0d |  |
| A2350 |  | Slab on grade | 10d | 2012-12-30 | 2013-01-09 | A2340 | 124d | 0d |  |
| A2360 |  | Masonry works | 30d | 2013-01-10 | 2013-02-13 | A2350 | 124d | 0d |  |
| A2370 |  | Finishing works | 90d | 2013-02-14 | 2013-05-29 | A2360 | 124d | 0d |  |
|  | 2 | **MEP** |  | 2013-03-21 | 2013-08-07 |  |  |  |  |
|  | 1 | **HVAC** |  | 2013-03-21 | 2013-08-07 |  |  |  |  |
| A10060 |  | HVAC WORKS | 120d | 2013-03-21 | 2013-08-07 | A2370 SS+30d | 124d |  | HAVC |
|  | 2 | **ELECTRICAL WORKS** |  | 2013-03-21 | 2013-08-07 |  |  |  |  |
| A10070 |  | Electrical works | 120d | 2013-03-21 | 2013-08-07 | A2370 SS+30d | 124d |  | ELEC |
|  | 20 | **Officers BOQ (F)** |  | 2012-09-02 | 2013-08-05 |  |  |  |  |
|  | 1 | **CIVIL&ARCH** |  | 2012-09-02 | 2013-05-27 |  |  |  |  |
| A2580 |  | Excavation | 10d | 2012-09-02 | 2012-09-12 | A10120 FS+180d | 126d | 0d |  |
| A2590 |  | Foundation | 25d | 2012-09-13 | 2012-10-11 | A2580 | 126d | 0d |  |
| A2600 |  | Ground floor Columns | 15d | 2012-10-13 | 2012-10-29 | A2590 | 126d | 0d |  |
| A2610 |  | Ground floor slab | 20d | 2012-10-30 | 2012-11-21 | A2600 | 126d | 0d |  |
| A2620 |  | First floor columns | 15d | 2012-11-22 | 2012-12-09 | A2610 | 126d | 0d |  |
| A2630 |  | First floor slab | 20d | 2012-12-10 | 2013-01-01 | A2620 | 311d |  |  |
| A2640 |  | Masonry under slab on grade | 20d | 2012-12-10 | 2013-01-01 | A2620 | 126d | 0d |  |
| A2650 |  | Footing insulation&backfilling | 25d | 2013-01-02 | 2013-01-30 | A2640 | 126d | 0d |  |
| A2660 |  | Slab on grade | 10d | 2013-01-31 | 2013-02-11 | A2650 | 126d | 0d |  |
| A2670 |  | Masonry works | 30d | 2013-02-12 | 2013-03-18 | A2660 | 126d | 0d |  |
| A2680 |  | Finishing works | 60d | 2013-03-19 | 2013-05-27 | A2670 | 126d | 0d |  |

| ID | WBS | Activity | Duration | Start | Finish | Predecessors | Total float | Free float | MEP |
| --- | --- | --- | --- | --- | --- | --- | --- | --- | --- |
|  | 2 | **MEP** |  | 2013-04-23 | 2013-08-05 |  |  |  |  |
|  | 1 | **HVAC** |  | 2013-04-23 | 2013-08-05 |  |  |  |  |
| A9940 |  | HVAC WORKS | 90d | 2013-04-23 | 2013-08-05 | A2680 SS+30d | 126d |  | HAVC |
|  | 2 | **ELECTRICAL WORKS** |  | 2013-04-23 | 2013-08-05 |  |  |  |  |
| A9950 |  | Electrical works | 90d | 2013-04-23 | 2013-08-05 | A2680 SS+30d | 126d |  | ELEC |
|  | 21 | **Pilot BOQ (E)** |  | 2012-06-06 | 2013-05-09 |  |  |  |  |
|  | 1 | **CIVIL&ARCH** |  | 2012-06-06 | 2013-02-28 |  |  |  |  |
| A2380 |  | Excavation | 10d | 2012-06-06 | 2012-06-17 | A2940, A10120 | 201d | 0d |  |
| A2390 |  | Foundation | 25d | 2012-06-18 | 2012-07-16 | A2380 | 201d | 0d |  |
| A2400 |  | Ground floor Columns | 15d | 2012-07-17 | 2012-08-02 | A2390 | 201d | 0d |  |
| A2410 |  | Ground floor slab | 20d | 2012-08-04 | 2012-08-26 | A2400 | 201d | 0d |  |
| A2420 |  | First floor columns | 15d | 2012-08-27 | 2012-09-12 | A2410 | 201d | 0d |  |
| A2430 |  | First floor slab | 20d | 2012-09-13 | 2012-10-06 | A2420 | 386d |  |  |
| A2440 |  | Masonry under slab on grade | 20d | 2012-09-13 | 2012-10-06 | A2420 | 201d | 0d |  |
| A2450 |  | Footing insulation&backfilling | 25d | 2012-10-07 | 2012-11-04 | A2440 | 201d | 0d |  |
| A2460 |  | Slab on grade | 10d | 2012-11-05 | 2012-11-15 | A2450 | 201d | 0d |  |
| A2470 |  | Masonry works | 30d | 2012-11-17 | 2012-12-20 | A2460 | 201d | 0d |  |
| A2480 |  | Finishing works | 60d | 2012-12-22 | 2013-02-28 | A2470 | 201d | 0d |  |
|  | 2 | **MEP** |  | 2013-01-26 | 2013-05-09 |  |  |  |  |
|  | 1 | **HVAC** |  | 2013-01-26 | 2013-05-09 |  |  |  |  |
| A9960 |  | HVAC WORKS | 90d | 2013-01-26 | 2013-05-09 | A2480 SS+30d | 201d |  | HAVC |
|  | 2 | **ELECTRICAL WORKS** |  | 2013-01-26 | 2013-05-09 |  |  |  |  |
| A9970 |  | Electrical works | 90d | 2013-01-26 | 2013-05-09 | A2480 SS+30d | 201d |  | ELEC |
|  | 23 | **Squadron building ©** |  | 2012-05-20 | 2013-01-30 |  |  |  |  |
|  | 1 | **CIVIL&ARCH** |  | 2012-05-20 | 2012-12-03 |  |  |  |  |
| A2490 |  | Excavation | 7d | 2012-05-20 | 2012-05-27 | A10120 FS+90d | 124d | 0d |  |
| A2500 |  | Foundation | 25d | 2012-05-28 | 2012-06-25 | A2490 | 124d | 0d |  |
| A2510 |  | Columns | 10d | 2012-06-26 | 2012-07-07 | A2500 | 124d | 0d |  |
| A2520 |  | Ground floor slab | 20d | 2012-07-08 | 2012-07-30 | A2510 | 124d | 0d |  |
| A2530 |  | Masonry under slab on grade | 15d | 2012-07-31 | 2012-08-16 | A2520 | 286d | 0d |  |
| A2540 |  | Footing insulation&backfilling | 14d | 2012-08-18 | 2012-09-02 | A2530 | 286d | 0d |  |
| A2550 |  | Slab on grade | 4d | 2012-09-03 | 2012-09-06 | A2540 | 286d | 0d |  |
| A2560 |  | Ground floor masonry | 15d | 2012-09-08 | 2012-09-24 | A2550 | 286d | 0d |  |
| A2570 |  | Finishing works | 60d | 2012-09-25 | 2012-12-03 | A2560 | 286d | 0d |  |

| ID | WBS | Activity | Duration | Start | Finish | Predecessors | Total float | Free float | MEP |
| --- | --- | --- | --- | --- | --- | --- | --- | --- | --- |
|  | 2 | **MEP** |  | 2012-10-18 | 2013-01-30 |  |  |  |  |
|  | 1 | **HVAC** |  | 2012-10-18 | 2013-01-30 |  |  |  |  |
| A9980 |  | HVAC WORKS | 90d | 2012-10-18 | 2013-01-30 | A2570 SS+20d | 286d |  | HAVC |
|  | 2 | **ELECTRICAL WORKS** |  | 2012-10-18 | 2013-01-30 |  |  |  |  |
| A9990 |  | Electrical works | 90d | 2012-10-18 | 2013-01-30 | A2570 SS+20d | 286d |  | ELEC |
|  | 22 | **Squadron Eng. Building (D)** |  | 2013-01-20 | 2013-09-26 |  |  |  |  |
|  | 1 | **CIVIL&ARCH** |  | 2013-01-20 | 2013-07-30 |  |  |  |  |
| A2800 |  | Excavation | 7d | 2013-01-20 | 2013-01-27 | A10120 FS+300d | 81d | 0d |  |
| A2810 |  | Foundation | 25d | 2013-01-28 | 2013-02-25 | A2800 | 81d | 0d |  |
| A2820 |  | Columns | 10d | 2013-02-26 | 2013-03-09 | A2810 | 81d | 0d |  |
| A2830 |  | Ground floor slab | 15d | 2013-03-10 | 2013-03-26 | A2820 | 81d | 0d |  |
| A2840 |  | Masonry under slab on grade | 15d | 2013-03-27 | 2013-04-13 | A2830 | 81d | 0d |  |
| A2850 |  | Footing insulation&backfilling | 14d | 2013-04-14 | 2013-04-29 | A2840 | 81d | 0d |  |
| A2860 |  | Slab on grade | 4d | 2013-04-30 | 2013-05-04 | A2850 | 81d | 0d |  |
| A2870 |  | Ground floor masonry | 15d | 2013-05-05 | 2013-05-21 | A2860 | 81d | 0d |  |
| A2880 |  | Finishing works | 60d | 2013-05-22 | 2013-07-30 | A2870 | 81d | 0d |  |
|  | 2 | **MEP** |  | 2013-06-15 | 2013-09-26 |  |  |  |  |
|  | 1 | **HVAC** |  | 2013-06-15 | 2013-09-26 |  |  |  |  |
| A10010 |  | HVAC WORKS | 90d | 2013-06-15 | 2013-09-26 | A2880 SS+20d | 81d |  | HAVC |
|  | 2 | **ELECTRICAL WORKS** |  | 2013-06-15 | 2013-09-26 |  |  |  |  |
| A10000 |  | Electrical works | 90d | 2013-06-15 | 2013-09-26 | A2880 SS+20d | 81d |  | ELEC |
|  | 10 | **Vehicle sunshade 10 bays (Q)** |  | 2012-09-25 | 2012-10-20 |  |  |  |  |
| A1240 |  | Excavation | 2d | 2012-09-25 | 2012-09-26 | A10120 FS+200d | 374d | 0d |  |
| A1250 |  | Foundation | 5d | 2012-09-27 | 2012-10-02 | A1240 | 374d | 0d |  |
| A1180 |  | Sunshade erection | 10d | 2012-10-03 | 2012-10-14 | A1250 | 374d | 0d |  |
| A1230 |  | Paving | 1d | 2012-10-15 | 2012-10-15 | A1180 | 374d | 0d |  |
| A1210 |  | wheel stop | 2d | 2012-10-16 | 2012-10-17 | A1230 | 374d | 0d |  |
| A1200 |  | Bollard erection | 2d | 2012-10-18 | 2012-10-20 | A1210 | 374d |  |  |

| ID | WBS | Activity | Duration | Start | Finish | Predecessors | Total float | Free float |
| --- | --- | --- | --- | --- | --- | --- | --- | --- |
|  | 9 | **Vehicle sunshade 8 bays** |  | 2012-11-11 | 2012-12-05 |  |  |  |
| A1260 |  | Excavation | 2d | 2012-11-11 | 2012-11-12 | A10120 FS+240d | 334d | 0d |
| A1270 |  | Foundation | 5d | 2012-11-13 | 2012-11-18 | A1260 | 334d | 0d |
| A1280 |  | Sunshade erection | 10d | 2012-11-19 | 2012-11-29 | A1270 | 334d | 0d |
| A1290 |  | Paving | 1d | 2012-12-01 | 2012-12-01 | A1280 | 334d | 0d |
| A1300 |  | wheel stop | 2d | 2012-12-02 | 2012-12-03 | A1290 | 334d | 0d |
| A1310 |  | Bollard erection | 2d | 2012-12-04 | 2012-12-05 | A1300 | 334d |  |
|  | 2 | **Vehicle fuel station (Y)** |  | 2012-09-25 | 2012-10-30 |  |  |  |
|  | 1 | **CIVIL&ARCH** |  | 2012-09-25 | 2012-10-30 |  |  |  |
| A1000 |  | Excavation | 2d | 2012-09-25 | 2012-09-26 | A10120 FS+200d | 365d | 0d |
| A1010 |  | Foundation | 5d | 2012-09-27 | 2012-10-02 | A1000 | 365d | 0d |
| A1150 |  | Columns | 5d | 2012-10-03 | 2012-10-08 | A1010 | 365d | 0d |
| A1020 |  | Tank installation | 3d | 2012-10-09 | 2012-10-11 | A1150 | 365d | 0d |
| A1030 |  | Backfilling | 2d | 2012-10-13 | 2012-10-14 | A1020 | 365d | 0d |
| A1040 |  | Canopy system installation | 7d | 2012-10-15 | 2012-10-22 | A1030 | 365d | 0d |
| A1050 |  | Fuel dispenser installation | 2d | 2012-10-23 | 2012-10-24 | A1040 | 365d | 0d |
| A1060 |  | Casting slab concrete | 5d | 2012-10-25 | 2012-10-30 | A1050 | 365d |  |
|  | 24 | **Wing command building (B)** |  | 2012-02-05 | 2013-01-30 |  |  |  |
|  | 1 | **CIVIL&ARCH** |  | 2012-02-05 | 2012-10-29 |  |  |  |
| A2690 |  | Excavation | 10d | 2012-02-05 | 2012-02-15 | A10120 | 286d | 0d |
| A2700 |  | Foundation | 25d | 2012-02-16 | 2012-03-15 | A2690 | 286d | 0d |
| A2710 |  | Ground floor Columns | 15d | 2012-03-17 | 2012-04-02 | A2700 | 286d | 0d |
| A2720 |  | Ground floor slab | 20d | 2012-04-03 | 2012-04-25 | A2710 | 286d | 0d |
| A2730 |  | First floor columns | 15d | 2012-04-26 | 2012-05-13 | A2720 | 286d | 0d |
| A2740 |  | First floor slab | 20d | 2012-05-14 | 2012-06-05 | A2730 | 491d |  |
| A2750 |  | Masonry under slab on grade | 20d | 2012-05-14 | 2012-06-05 | A2730 | 286d | 0d |
| A2760 |  | Footing insulation&backfilling | 25d | 2012-06-06 | 2012-07-04 | A2750 | 286d | 0d |
| A2770 |  | Slab on grade | 10d | 2012-07-05 | 2012-07-16 | A2760 | 286d | 0d |
| A2780 |  | Masonry works | 30d | 2012-07-17 | 2012-08-20 | A2770 | 286d | 0d |
| A2790 |  | Finishing works | 60d | 2012-08-21 | 2012-10-29 | A2780 | 286d | 0d |

| ID | WBS | Activity | Duration | Start | Finish | Predecessors | Total float | MEP |
| --- | --- | --- | --- | --- | --- | --- | --- | --- |
|  | 2 | **MEP** |  | 2012-09-13 | 2013-01-30 |  |  |  |
|  | 1 | **HVAC** |  | 2012-09-13 | 2013-01-30 |  |  |  |
| A10020 |  | HVAC WORKS | 120d | 2012-09-13 | 2013-01-30 | A2790 SS+20d | 286d | HAVC |
|  | 2 | **ELECTRICAL WORKS** |  | 2012-09-13 | 2013-01-30 |  |  |  |
| A10030 |  | Electrical works | 120d | 2012-09-13 | 2013-01-30 | A2790 SS+20d | 286d | ELEC |

## Activity codes

| Code | Value | Meaning |
| --- | --- | --- |
| MEP | HAVC | HVAC |
