# PORTO MATROUH

Schedule from Primavera P6, 2012-03-18 to 2012-10-15, data date 2012-05-16, costs in EGP, A marks actual dates.

## Calendars

- porto -2: Mon-Sun 08:00-16:00.
- PORTO MATROUH Calendar: Mon-Thu 08:00-16:00; Fri off; Sat-Sun 08:00-16:00.

## Resources

| Resource | Group | Unit | Rate |
| --- | --- | --- | --- |
| Cash | material |  | 1 |
| Formwork Labors | labor |  |  |
| Insulation Labors | labor |  |  |
| Polysterine | material | m2 |  |
| Conc Labors | labor |  |  |
| Concrete | material | M3 |  |
| Steel bars | material | ton |  |
| Steel Labors | labor |  |  |
| Slab Formwork | material | m2 |  |
| Proofing membrane | material | m2 |  |
| Foam Concrete | material | M3 |  |

## Schedule

| ID | WBS | Activity | Type | Duration | Start | Finish | Predecessors | Complete | Planned start | Planned finish | Total float | Constraint | Calendar |
| --- | --- | --- | --- | --- | --- | --- | --- | --- | --- | --- | --- | --- | --- |
|  | Milestones | **Milestones** |  |  | 2012-03-18 | 2012-10-15 |  |  |  |  |  |  |  |
| MS-1000 |  | Commencement date | milestone | 0d | 2012-03-18 A | 2012-03-18 A | MS-1020 | 100% | 2012-04-29 | 2012-04-29 |  |  | PORTO MATROUH Calendar |
| MS-1020 |  | Receive advanced payment | milestone | 0d | 2012-03-18 A | 2012-03-18 A |  | 100% | 2012-04-29 | 2012-04-29 |  | mandatory start 2012-03-18 | PORTO MATROUH Calendar |
| MS-1030 |  | Project handing over | milestone | 0d | 2012-10-15 | 2012-10-15 | H-1-530, H-2-390, H-3-390, H-4-390, H-5-390, H-6-390, H-7-390, H-8-390, H-9-390, H-10-330, H-11-390, H-12-530, H-1-720, H-4-580, H-6-580, H-5-580, H-7-580, H-8-580, H-9-580, H-10-580, H-11-580, H-12-720, C-1-320, C-1-310, C-2-310, C-2-320, C-3-320, C-3-310, C-4-310, C-4-320, C-5-310, C-5-320, H-1-20, H-1-510, H-1-80, H-1-140, H-1-220, H-1-280, H-1-340, H-1-410, H-1-480, H-1-570, H-1-620, H-1-700, H-2-20, H-2-380, H-2-80, H-2-140, H-2-190, H-2-270, H-2-330, H-2-430, H-2-480, H-2-560, H-3-20, H-3-370, H-3-80, H-3-140, H-3-190, H-3-270, H-3-340, H-3-430, H-3-480, H-3-560, H-4-20, H-4-370, H-4-80, H-4-140, H-4-190, H-4-270, H-4-340, H-4-430, H-4-480, H-4-560, H-5-20, H-5-370, H-5-80, H-5-140, H-5-190, H-5-270, H-5-340, H-5-430, H-5-480, H-5-560, H-6-20, H-6-370, H-6-80, H-6-140, H-6-190, H-6-270, H-6-340, H-6-430, H-6-480, H-6-560, H-7-20, H-7-370, H-7-80, H-7-140, H-7-190, H-7-270, H-7-340, H-7-430, H-7-480, H-7-560, H-8-20, H-8-370, H-8-80, H-8-140, H-8-190, H-8-270, H-8-340, H-8-430, H-8-480, H-8-560, H-9-20, H-9-370, H-9-80, H-9-140, H-9-190, H-9-270, H-9-340, H-9-430, H-9-480, H-9-560, H-10-20, H-10-320, H-10-80, H-10-140, H-10-190, H-10-270, H-10-360, H-10-430, H-10-480, H-10-560, H-11-20, H-11-370, H-11-80, H-11-140, H-11-190, H-11-270, H-11-340, H-11-430, H-11-480, H-11-560, H-12-20, H-12-510, H-12-80, H-12-140, H-12-210, H-12-280, H-12-330, H-12-410, H-12-480, H-12-570, H-12-620, H-12-700, C-1-20, C-1-80, C-1-140, C-1-190, C-1-290, C-2-20, C-2-80, C-2-140, C-2-190, C-2-290, C-3-20, C-3-80, C-3-140, C-3-190, C-3-290, C-4-20, C-4-80, C-4-140, C-4-190, C-4-290, C-5-20, C-5-80, C-5-140, C-5-190, C-5-290, H-2-580, H-3-580 |  |  |  | 0d |  | PORTO MATROUH Calendar |
|  | Mobilization | **Site preparation** |  |  | 2012-03-18 | 2012-03-30 |  |  |  |  |  |  |  |
| A1160 |  | Site preparation |  | 15d | 2012-03-18 A | 2012-03-30 A | MS-1000 | 100% | 2012-04-29 | 2012-05-13 |  |  | PORTO MATROUH Calendar |
|  | 2 | **Site Taking over** |  |  | 2012-03-18 | 2012-05-16 |  |  |  |  |  |  |  |
|  | 1 | **Cabines area** |  |  | 2012-03-18 | 2012-03-18 |  |  |  |  |  |  |  |
| Z-C1 |  | Zone 1 | milestone | 0d | 2012-03-18 A | 2012-03-18 A | A1160 SS | 100% | 2012-04-29 | 2012-04-29 |  |  | PORTO MATROUH Calendar |
| Z-C2 |  | Zone 2 | milestone | 0d | 2012-03-18 A | 2012-03-18 A | A1160 SS | 100% | 2012-04-29 | 2012-04-29 |  |  | PORTO MATROUH Calendar |
| Z-C3 |  | Zone 3 | milestone | 0d | 2012-03-18 A | 2012-03-18 A | A1160 SS | 100% | 2012-04-29 | 2012-04-29 |  |  | PORTO MATROUH Calendar |
| Z-C4 |  | Zone 4 | milestone | 0d | 2012-03-18 A | 2012-03-18 A | A1160 SS | 100% | 2012-04-29 | 2012-04-29 |  |  | PORTO MATROUH Calendar |
| Z-C5 |  | Zone 5 | milestone | 0d | 2012-03-18 A | 2012-03-18 A | A1160 SS | 100% | 2012-04-29 | 2012-04-29 |  |  | PORTO MATROUH Calendar |
|  | 2 | **Hotel area** |  |  | 2012-03-18 | 2012-05-16 |  |  |  |  |  |  |  |
| Z-H1 |  | Zone 1 | milestone | 0d | 2012-03-18 A | 2012-03-18 A | A1160 SS | 100% | 2012-04-29 | 2012-04-29 |  |  | PORTO MATROUH Calendar |
| Z-H10 |  | Zone 10 | milestone | 0d | 2012-03-18 A | 2012-03-18 A | A1160 SS | 100% | 2012-04-29 | 2012-04-29 |  |  | PORTO MATROUH Calendar |
| Z-H11 |  | Zone 11 | milestone | 0d | 2012-03-18 A | 2012-03-18 A | A1160 SS | 100% | 2012-04-29 | 2012-04-29 |  |  | PORTO MATROUH Calendar |
| Z-H2 |  | Zone 2 | milestone | 0d | 2012-03-18 A | 2012-03-18 A | A1160 SS | 100% | 2012-04-29 | 2012-04-29 |  |  | PORTO MATROUH Calendar |
| Z-H3 |  | Zone 3 | milestone | 0d | 2012-03-18 A | 2012-03-18 A | A1160 SS | 100% | 2012-04-29 | 2012-04-29 |  |  | PORTO MATROUH Calendar |
| Z-H4 |  | Zone 4 | milestone | 0d | 2012-03-18 A | 2012-03-18 A | A1160 SS | 100% | 2012-04-29 | 2012-04-29 |  |  | PORTO MATROUH Calendar |
| Z-H5 |  | Zone 5 | milestone | 0d | 2012-03-18 A | 2012-03-18 A | A1160 SS | 100% | 2012-04-29 | 2012-04-29 |  |  | PORTO MATROUH Calendar |
| Z-H6 |  | Zone 6 | milestone | 0d | 2012-03-18 A | 2012-03-18 A | A1160 SS | 100% | 2012-04-29 | 2012-04-29 |  |  | PORTO MATROUH Calendar |
| Z-H8 |  | Zone 8 | milestone | 0d | 2012-03-18 A | 2012-03-18 A | A1160 SS | 100% | 2012-04-29 | 2012-04-29 |  |  | PORTO MATROUH Calendar |
| Z-H9 |  | Zone 9 | milestone | 0d | 2012-03-18 A | 2012-03-18 A | A1160 SS | 100% | 2012-04-29 | 2012-04-29 |  |  | PORTO MATROUH Calendar |
| Z-H12 |  | Zone 12 | milestone | 0d | 2012-05-07 A | 2012-05-07 A | A1160 SS | 100% | 2012-05-05 | 2012-05-05 |  |  | PORTO MATROUH Calendar |
| Z-H7 |  | Zone 7 | milestone | 0d | 2012-05-16 | 2012-05-16 | A1160 SS |  |  |  | 10d |  | PORTO MATROUH Calendar |

| ID | WBS | Activity | Type | Duration | Start | Finish | Predecessors | Complete | Planned start | Planned finish | Total float | Free float | Calendar |
| --- | --- | --- | --- | --- | --- | --- | --- | --- | --- | --- | --- | --- | --- |
|  | 1 | **Engineering** |  |  | 2012-03-18 | 2012-06-16 |  |  |  |  |  |  |  |
|  | 3 | **Recieving design drawings from owner** |  |  | 2012-03-18 | 2012-05-16 |  |  |  |  |  |  |  |
|  | 1 | **Cabines drawings** |  |  | 2012-03-18 | 2012-03-18 |  |  |  |  |  |  |  |
| DD-C-1 |  | Building 1 | milestone | 0d | 2012-03-18 A | 2012-03-18 A | A1160 SS | 100% |  |  |  |  | PORTO MATROUH Calendar |
| DD-C-2 |  | Building 2 | milestone | 0d | 2012-03-18 A | 2012-03-18 A | A1160 SS | 100% |  |  |  |  | PORTO MATROUH Calendar |
| DD-C-3 |  | Building 3 | milestone | 0d | 2012-03-18 A | 2012-03-18 A | A1160 SS | 100% |  |  |  |  | PORTO MATROUH Calendar |
| DD-C-4 |  | Building 4 | milestone | 0d | 2012-03-18 A | 2012-03-18 A | A1160 SS | 100% |  |  |  |  | PORTO MATROUH Calendar |
| DD-C-5 |  | Building 5 | milestone | 0d | 2012-03-18 A | 2012-03-18 A | A1160 SS | 100% |  |  |  |  | PORTO MATROUH Calendar |
|  | 2 | **Hotel drawings** |  |  | 2012-03-18 | 2012-05-16 |  |  |  |  |  |  |  |
| DD-H-1 |  | Building 1 | milestone | 0d | 2012-03-18 A | 2012-03-18 A | A1160 SS | 100% |  |  |  |  | PORTO MATROUH Calendar |
| DD-H-10&11 |  | Building 10&11 | milestone | 0d | 2012-03-18 A | 2012-03-18 A | A1160 SS | 100% |  |  |  |  | PORTO MATROUH Calendar |
| DD-H-2 |  | Building 2 | milestone | 0d | 2012-03-18 A | 2012-03-18 A | A1160 SS | 100% |  |  |  |  | PORTO MATROUH Calendar |
| DD-H-3 |  | Building 3 | milestone | 0d | 2012-03-18 A | 2012-03-18 A | A1160 SS | 100% |  |  |  |  | PORTO MATROUH Calendar |
| DD-H-4 |  | Building 4 | milestone | 0d | 2012-03-21 A | 2012-03-21 A | A1160 SS | 100% | 2012-03-18 | 2012-03-18 |  |  | PORTO MATROUH Calendar |
| DD-H-5&6 |  | Building 5&6 | milestone | 0d | 2012-03-21 A | 2012-03-21 A | A1160 SS | 100% | 2012-03-18 | 2012-03-18 |  |  | PORTO MATROUH Calendar |
| DD-H-8&9 |  | Building 8&9 | milestone | 0d | 2012-03-28 A | 2012-03-28 A | A1160 SS | 100% | 2012-03-18 | 2012-03-18 |  |  | PORTO MATROUH Calendar |
| DD-H-12 |  | Building 12 | milestone | 0d | 2012-05-16 | 2012-05-16 | A1160 SS |  |  |  | 2d | 0d | PORTO MATROUH Calendar |
| DD-H-7 |  | Building 7 | milestone | 0d | 2012-05-16 | 2012-05-16 | A1160 SS |  |  |  | 0d |  | PORTO MATROUH Calendar |
|  | 1 | **Submittals** |  |  | 2012-03-18 | 2012-06-09 |  |  |  |  |  |  |  |
|  | 1 | **Hotel drawings** |  |  | 2012-03-18 | 2012-06-09 |  |  |  |  |  |  |  |
|  | 7 | **Building 1** |  |  | 2012-03-18 | 2012-05-16 |  |  |  |  |  |  |  |
| SD-H-1-10 |  | P.C footings |  | 1d | 2012-03-18 A | 2012-03-18 A | DD-H-1 | 100% | 2012-04-29 | 2012-04-29 |  |  | PORTO MATROUH Calendar |
| SD-H-1-20 |  | R.c footings |  | 1d | 2012-04-04 A | 2012-04-04 A | DD-H-1 FS+2d | 100% | 2012-04-30 | 2012-04-30 |  |  | PORTO MATROUH Calendar |
| SD-H-1-27 |  | Basement columns |  | 1d | 2012-04-28 A | 2012-04-28 A | DD-H-1 FS+2d | 100% | 2012-05-05 | 2012-05-05 |  |  | PORTO MATROUH Calendar |
| SD-H-1-40 |  | Ground floor slabs |  | 1d | 2012-05-07 A | 2012-05-07 A | DD-H-1 FS+4d | 100% | 2012-05-05 | 2012-05-05 |  |  | PORTO MATROUH Calendar |
| SD-H-1-26 |  | Basement roof |  | 1d | 2012-05-16 | 2012-05-16 | DD-H-1 FS+2d |  |  |  | 124d | 0d | PORTO MATROUH Calendar |
| SD-H-1-30 |  | Ground floor columns |  | 1d | 2012-05-16 | 2012-05-16 | DD-H-1 FS+3d |  |  |  | 37d | 0d | PORTO MATROUH Calendar |
| SD-H-1-50 |  | first floor columns |  | 1d | 2012-05-16 | 2012-05-16 | DD-H-1 FS+4d |  |  |  | 61d | 0d | PORTO MATROUH Calendar |
| SD-H-1-60 |  | First floor slab |  | 1d | 2012-05-16 | 2012-05-16 | DD-H-1 FS+6d |  |  |  | 71d | 0d | PORTO MATROUH Calendar |
| SD-H-1-70 |  | Second floor columns |  | 1d | 2012-05-16 | 2012-05-16 | DD-H-1 FS+10d |  |  |  | 85d | 0d | PORTO MATROUH Calendar |
| SD-H-1-80 |  | Second floor slab |  | 1d | 2012-05-16 | 2012-05-16 | DD-H-1 FS+10d |  |  |  | 96d | 0d | PORTO MATROUH Calendar |

| ID | WBS | Activity | Duration | Start | Finish | Predecessors | Complete | Planned start | Planned finish | Total float | Free float | Calendar |
| --- | --- | --- | --- | --- | --- | --- | --- | --- | --- | --- | --- | --- |
|  | 1 | **Building 2** |  | 2012-03-18 | 2012-05-16 |  |  |  |  |  |  |  |
| SD-H-2-10 |  | P.C footings | 1d | 2012-03-18 A | 2012-03-18 A | DD-H-2 FS+2d | 100% | 2012-03-20 | 2012-03-20 |  |  | PORTO MATROUH Calendar |
| SD-H-2-20 |  | R.c footings | 1d | 2012-04-04 A | 2012-04-04 A | DD-H-2 FS+5d | 100% | 2012-04-30 | 2012-04-30 |  |  | PORTO MATROUH Calendar |
| SD-H-2-40 |  | Ground floor slabs | 1d | 2012-04-29 A | 2012-04-29 A | DD-H-2 FS+10d | 100% | 2012-05-05 | 2012-05-05 |  |  | PORTO MATROUH Calendar |
| SD-H-2-30 |  | Ground floor columns | 1d | 2012-05-16 | 2012-05-16 | DD-H-2 FS+10d |  |  |  | 57d | 0d | PORTO MATROUH Calendar |
| SD-H-2-50 |  | first floor columns | 1d | 2012-05-16 | 2012-05-16 | DD-H-2 FS+20d |  |  |  | 76d | 0d | PORTO MATROUH Calendar |
| SD-H-2-60 |  | First floor slab | 1d | 2012-05-16 | 2012-05-16 | DD-H-2 FS+20d |  |  |  | 84d | 0d | PORTO MATROUH Calendar |
| SD-H-2-70 |  | Second floor columns | 1d | 2012-05-16 | 2012-05-16 | DD-H-2 FS+20d |  |  |  | 95d | 0d | PORTO MATROUH Calendar |
| SD-H-2-80 |  | Second floor slab | 1d | 2012-05-16 | 2012-05-16 | DD-H-2 FS+20d |  |  |  | 102d | 0d | PORTO MATROUH Calendar |
|  | 2 | **Building 3** |  | 2012-03-18 | 2012-05-16 |  |  |  |  |  |  |  |
| SD-H-3-10 |  | P.C footings | 1d | 2012-03-18 A | 2012-03-18 A | DD-H-3 FS+2d | 100% | 2012-03-20 | 2012-03-20 |  |  | PORTO MATROUH Calendar |
| SD-H-3-20 |  | R.c footings | 1d | 2012-03-27 A | 2012-03-27 A | DD-H-3 FS+5d | 100% | 2012-03-24 | 2012-03-24 |  |  | PORTO MATROUH Calendar |
| SD-H-3-30 |  | Ground floor columns | 1d | 2012-04-18 A | 2012-04-18 A | DD-H-3 FS+10d | 100% | 2012-04-30 | 2012-04-30 |  |  | PORTO MATROUH Calendar |
| SD-H-3-40 |  | Ground floor slabs | 1d | 2012-04-24 A | 2012-04-24 A | DD-H-3 FS+10d | 100% | 2012-04-30 | 2012-04-30 |  |  | PORTO MATROUH Calendar |
| SD-H-3-50 |  | first floor columns | 1d | 2012-04-28 A | 2012-04-28 A | DD-H-3 FS+10d | 100% | 2012-04-30 | 2012-04-30 |  |  | PORTO MATROUH Calendar |
| SD-H-3-60 |  | First floor slab | 1d | 2012-05-09 A | 2012-05-09 A | DD-H-3 FS+10d | 100% | 2012-05-05 | 2012-05-05 |  |  | PORTO MATROUH Calendar |
| SD-H-3-70 |  | Second floor columns | 1d | 2012-05-16 | 2012-05-16 | DD-H-3 FS+12d |  |  |  | 79d | 0d | PORTO MATROUH Calendar |
| SD-H-3-80 |  | Second floor slab | 1d | 2012-05-16 | 2012-05-16 | DD-H-3 FS+12d |  |  |  | 91d | 0d | PORTO MATROUH Calendar |
|  | 3 | **Building 4** |  | 2012-03-18 | 2012-05-16 |  |  |  |  |  |  |  |
| SD-H-4-10 |  | P.C footings | 1d | 2012-03-18 A | 2012-03-18 A | DD-H-4 FS+2d | 100% | 2012-03-20 | 2012-03-20 |  |  | PORTO MATROUH Calendar |
| SD-H-4-20 |  | R.c footings | 1d | 2012-03-25 A | 2012-03-25 A | DD-H-4 FS+5d | 100% | 2012-03-24 | 2012-03-24 |  |  | PORTO MATROUH Calendar |
| SD-H-4-30 |  | Ground floor columns | 1d | 2012-04-13 A | 2012-04-13 A | DD-H-4 FS+10d | 100% | 2012-05-05 | 2012-05-05 |  |  | PORTO MATROUH Calendar |
| SD-H-4-50 |  | first floor columns | 1d | 2012-04-28 A | 2012-04-28 A | DD-H-4 FS+10d | 100% | 2012-04-30 | 2012-04-30 |  |  | PORTO MATROUH Calendar |
| SD-H-4-40 |  | Ground floor slabs | 1d | 2012-04-29 A | 2012-04-29 A | DD-H-4 FS+10d | 100% | 2012-04-30 | 2012-04-30 |  |  | PORTO MATROUH Calendar |
| SD-H-4-60 |  | First floor slab | 1d | 2012-05-06 A | 2012-05-06 A | DD-H-4 FS+10d | 100% | 2012-05-05 | 2012-05-05 |  |  | PORTO MATROUH Calendar |
| SD-H-4-70 |  | Second floor columns | 1d | 2012-05-16 | 2012-05-16 | DD-H-4 FS+10d |  |  |  | 79d | 0d | PORTO MATROUH Calendar |
| SD-H-4-80 |  | Second floor slab | 1d | 2012-05-16 | 2012-05-16 | DD-H-4 FS+10d |  |  |  | 91d | 0d | PORTO MATROUH Calendar |

| ID | WBS | Activity | Duration | Start | Finish | Predecessors | Complete | Planned start | Planned finish | Total float | Free float | Calendar |
| --- | --- | --- | --- | --- | --- | --- | --- | --- | --- | --- | --- | --- |
|  | 4 | **Building 5&6** |  | 2012-03-25 | 2012-05-16 |  |  |  |  |  |  |  |
| SD-H-5&6-20 |  | R.c footings | 1d | 2012-03-25 A | 2012-03-25 A | DD-H-5&6 FS+5d | 100% | 2012-03-24 | 2012-03-24 |  |  | PORTO MATROUH Calendar |
| SD-H-5&6-10 |  | P.C footings | 1d | 2012-03-27 A | 2012-03-27 A | DD-H-5&6 FS+2d | 100% | 2012-03-20 | 2012-03-20 |  |  | PORTO MATROUH Calendar |
| SD-H-5&6-30 |  | Ground floor columns | 1d | 2012-04-13 A | 2012-04-13 A | DD-H-5&6 FS+10d | 100% | 2012-05-05 | 2012-05-05 |  |  | PORTO MATROUH Calendar |
| SD-H-5&6-40 |  | Ground floor slabs | 1d | 2012-04-25 A | 2012-04-25 A | DD-H-5&6 FS+10d | 100% | 2012-04-30 | 2012-04-30 |  |  | PORTO MATROUH Calendar |
| SD-H-5&6-50 |  | first floor columns | 1d | 2012-04-28 A | 2012-04-28 A | DD-H-5&6 FS+12d | 100% | 2012-04-30 | 2012-04-30 |  |  | PORTO MATROUH Calendar |
| SD-H-5&6-60 |  | First floor slab | 1d | 2012-05-09 A | 2012-05-09 A | DD-H-5&6 FS+12d | 100% | 2012-05-05 | 2012-05-05 |  |  | PORTO MATROUH Calendar |
| SD-H-5&6-70 |  | Second floor columns | 1d | 2012-05-16 | 2012-05-16 | DD-H-5&6 FS+14d |  |  |  | 79d | 0d | PORTO MATROUH Calendar |
| SD-H-5&6-80 |  | Second floor slab | 1d | 2012-05-16 | 2012-05-16 | DD-H-5&6 FS+14d |  |  |  | 91d | 0d | PORTO MATROUH Calendar |
|  | 9 | **Building 7** |  | 2012-05-19 | 2012-05-28 |  |  |  |  |  |  |  |
| SD-H-7-10 |  | P.C footings | 1d | 2012-05-19 | 2012-05-19 | DD-H-7 FS+2d |  |  |  | 0d |  | PORTO MATROUH Calendar |
| SD-H-7-20 |  | R.c footings | 1d | 2012-05-22 | 2012-05-22 | DD-H-7 FS+5d |  |  |  | 2d | 0d | PORTO MATROUH Calendar |
| SD-H-7-30 |  | Ground floor columns | 1d | 2012-05-28 | 2012-05-28 | DD-H-7 FS+10d |  |  |  | 14d | 0d | PORTO MATROUH Calendar |
| SD-H-7-40 |  | Ground floor slabs | 1d | 2012-05-28 | 2012-05-28 | DD-H-7 FS+10d |  |  |  | 22d | 0d | PORTO MATROUH Calendar |
| SD-H-7-50 |  | first floor columns | 1d | 2012-05-28 | 2012-05-28 | DD-H-7 FS+10d |  |  |  | 41d | 0d | PORTO MATROUH Calendar |
| SD-H-7-60 |  | First floor slab | 1d | 2012-05-28 | 2012-05-28 | DD-H-7 FS+10d |  |  |  | 50d | 0d | PORTO MATROUH Calendar |
|  | 6 | **Building 8&9** |  | 2012-03-28 | 2012-05-16 |  |  |  |  |  |  |  |
| SD-H-8&9-10 |  | P.C footings | 1d | 2012-03-28 A | 2012-03-28 A | DD-H-8&9 FS+2d | 100% | 2012-04-30 | 2012-04-30 |  |  | PORTO MATROUH Calendar |
| SD-H-8&9-20 |  | R.c footings | 1d | 2012-04-13 A | 2012-04-13 A | DD-H-8&9 FS+5d | 100% | 2012-04-30 | 2012-04-30 |  |  | PORTO MATROUH Calendar |
| SD-H-8&9-30 |  | Ground floor columns | 1d | 2012-04-25 A | 2012-04-25 A | DD-H-8&9 FS+10d | 100% | 2012-04-30 | 2012-04-30 |  |  | PORTO MATROUH Calendar |
| SD-H-8&9-40 |  | Ground floor slabs | 1d | 2012-05-16 | 2012-05-16 | DD-H-8&9 FS+10d |  |  |  | 124d | 0d | PORTO MATROUH Calendar |
| SD-H-8&9-50 |  | first floor columns | 1d | 2012-05-16 | 2012-05-16 | DD-H-8&9 FS+10d |  |  |  | 124d | 0d | PORTO MATROUH Calendar |
| SD-H-8&9-60 |  | First floor slab | 1d | 2012-05-16 | 2012-05-16 | DD-H-8&9 FS+10d |  |  |  | 60d | 0d | PORTO MATROUH Calendar |
| SD-H-8&9-70 |  | Second floor columns | 1d | 2012-05-16 | 2012-05-16 | DD-H-8&9 FS+10d |  |  |  | 79d | 0d | PORTO MATROUH Calendar |
| SD-H-8&9-80 |  | Second floor slab | 1d | 2012-05-16 | 2012-05-16 | DD-H-8&9 FS+10d |  |  |  | 91d | 0d | PORTO MATROUH Calendar |

| ID | WBS | Activity | Duration | Start | Finish | Predecessors | Complete | Planned start | Planned finish | Total float | Free float | Calendar |
| --- | --- | --- | --- | --- | --- | --- | --- | --- | --- | --- | --- | --- |
|  | 5 | **Building 10&11** |  | 2012-03-18 | 2012-05-16 |  |  |  |  |  |  |  |
| SD-H-10&11-10 |  | P.C footings | 1d | 2012-03-18 A | 2012-03-18 A | DD-H-10&11 FS+2d | 100% | 2012-03-20 | 2012-03-20 |  |  | PORTO MATROUH Calendar |
| SD-H-10&11-20 |  | R.c footings | 1d | 2012-03-27 A | 2012-03-27 A | DD-H-10&11 FS+5d | 100% | 2012-03-24 | 2012-03-24 |  |  | PORTO MATROUH Calendar |
| SD-H-10&11-30 |  | Ground floor columns | 1d | 2012-04-25 A | 2012-04-25 A | DD-H-10&11 FS+10d | 100% | 2012-04-30 | 2012-04-30 |  |  | PORTO MATROUH Calendar |
| SD-H-10&11-40 |  | Ground floor slabs | 1d | 2012-04-29 A | 2012-04-29 A | DD-H-10&11 FS+10d | 100% | 2012-04-30 | 2012-04-30 |  |  | PORTO MATROUH Calendar |
| SD-H-10&11-60 |  | First floor slab | 1d | 2012-05-07 A | 2012-05-07 A | DD-H-10&11 FS+10d | 100% | 2012-05-05 | 2012-05-05 |  |  | PORTO MATROUH Calendar |
| SD-H-10&11-50 |  | first floor columns | 1d | 2012-05-16 | 2012-05-16 | DD-H-10&11 FS+10d |  |  |  | 72d | 0d | PORTO MATROUH Calendar |
| SD-H-10&11-70 |  | Second floor columns | 1d | 2012-05-16 | 2012-05-16 | DD-H-10&11 FS+10d |  |  |  | 79d | 0d | PORTO MATROUH Calendar |
| SD-H-10&11-80 |  | Second floor slab | 1d | 2012-05-16 | 2012-05-16 | DD-H-10&11 FS+10d |  |  |  | 91d | 0d | PORTO MATROUH Calendar |
|  | 8 | **Building 12** |  | 2012-05-13 | 2012-06-09 |  |  |  |  |  |  |  |
| SD-H-12-10 |  | P.C footings | 1d | 2012-05-13 A | 2012-05-13 A | DD-H-12 FS+2d | 100% | 2012-05-07 | 2012-05-07 |  |  | PORTO MATROUH Calendar |
| SD-H-12-20 |  | R.c footings | 1d | 2012-05-22 | 2012-05-22 | DD-H-12 FS+5d |  |  |  | 2d | 0d | PORTO MATROUH Calendar |
| SD-H-12-25 |  | Basement columns | 1d | 2012-05-24 | 2012-05-24 | DD-H-12 FS+7d |  |  |  | 18d | 0d | PORTO MATROUH Calendar |
| SD-H-12-26 |  | Basement roof | 1d | 2012-05-24 | 2012-05-24 | DD-H-12 FS+7d |  |  |  | 26d | 0d | PORTO MATROUH Calendar |
| SD-H-12-30 |  | Ground floor columns | 1d | 2012-05-28 | 2012-05-28 | DD-H-12 FS+10d |  |  |  | 38d | 0d | PORTO MATROUH Calendar |
| SD-H-12-40 |  | Ground floor slabs | 1d | 2012-05-28 | 2012-05-28 | DD-H-12 FS+10d |  |  |  | 46d | 0d | PORTO MATROUH Calendar |
| SD-H-12-50 |  | first floor columns | 1d | 2012-05-28 | 2012-05-28 | DD-H-12 FS+10d |  |  |  | 61d | 0d | PORTO MATROUH Calendar |
| SD-H-12-60 |  | First floor slab | 1d | 2012-06-02 | 2012-06-02 | DD-H-12 FS+14d |  |  |  | 65d | 0d | PORTO MATROUH Calendar |
| SD-H-12-70 |  | Second floor columns | 1d | 2012-06-09 | 2012-06-09 | DD-H-12 FS+20d |  |  |  | 71d | 0d | PORTO MATROUH Calendar |
| SD-H-12-80 |  | Second floor slab | 1d | 2012-06-09 | 2012-06-09 | DD-H-12 FS+20d |  |  |  | 81d | 0d | PORTO MATROUH Calendar |
|  | 2 | **Cabines drawings** |  | 2012-03-27 | 2012-03-27 |  |  |  |  |  |  |  |
| SD-C-10 |  | Building 1 | 1d | 2012-03-27 A | 2012-03-27 A | DD-C-1 FS+3d | 100% | 2012-03-21 | 2012-03-21 |  |  | PORTO MATROUH Calendar |
| SD-C-20 |  | Building 2 | 1d | 2012-03-27 A | 2012-03-27 A | DD-C-2 FS+3d | 100% | 2012-03-21 | 2012-03-21 |  |  | PORTO MATROUH Calendar |
| SD-C-30 |  | Building 3 | 1d | 2012-03-27 A | 2012-03-27 A | DD-C-3 FS+3d | 100% | 2012-03-21 | 2012-03-21 |  |  | PORTO MATROUH Calendar |
| SD-C-40 |  | Building 4 | 1d | 2012-03-27 A | 2012-03-27 A | DD-C-4 FS+3d | 100% | 2012-03-21 | 2012-03-21 |  |  | PORTO MATROUH Calendar |
| SD-C-50 |  | Building 5 | 1d | 2012-03-27 A | 2012-03-27 A | DD-C-5 FS+3d | 100% | 2012-03-21 | 2012-03-21 |  |  | PORTO MATROUH Calendar |

| ID | WBS | Activity | Duration | Start | Finish | Predecessors | Complete | Planned start | Planned finish | Total float | Free float | Calendar |
| --- | --- | --- | --- | --- | --- | --- | --- | --- | --- | --- | --- | --- |
|  | 2 | **Approvals** |  | 2012-03-18 | 2012-06-16 |  |  |  |  |  |  |  |
|  | 1 | **Hotel drawings** |  | 2012-03-18 | 2012-06-16 |  |  |  |  |  |  |  |
|  | 7 | **Building 1** |  | 2012-03-18 | 2012-05-23 |  |  |  |  |  |  |  |
| AP-H-1-1 |  | P.C footings | 1d | 2012-03-18 A | 2012-03-18 A | SD-H-1-10 FS+5d | 100% | 2012-05-05 | 2012-05-05 |  |  | PORTO MATROUH Calendar |
| AP-H-1-2 |  | R.c footings | 1d | 2012-04-08 A | 2012-04-08 A | SD-H-1-20 FS+5d | 100% | 2012-05-06 | 2012-05-06 |  |  | PORTO MATROUH Calendar |
| AP-H-1-21 |  | Basement columns | 1d | 2012-04-29 A | 2012-04-29 A | SD-H-1-27 FS+5d | 100% | 2012-05-11 | 2012-05-11 |  |  | PORTO MATROUH Calendar |
| AP-H-1-4 |  | Ground floor slabs | 1d | 2012-05-10 A | 2012-05-10 A | SD-H-1-40 FS+5d | 100% | 2012-05-11 | 2012-05-11 |  |  | PORTO MATROUH Calendar |
| AP-H-1-22 |  | Basement roof | 1d | 2012-05-23 | 2012-05-23 | SD-H-1-26 FS+5d |  |  |  | 124d |  | PORTO MATROUH Calendar |
| AP-H-1-3 |  | Ground floor columns | 1d | 2012-05-23 | 2012-05-23 | SD-H-1-30 FS+5d |  |  |  | 37d | 0d | PORTO MATROUH Calendar |
| AP-H-1-5 |  | first floor columns | 1d | 2012-05-23 | 2012-05-23 | SD-H-1-50 FS+5d |  |  |  | 61d | 23d | PORTO MATROUH Calendar |
| AP-H-1-6 |  | First floor slab | 1d | 2012-05-23 | 2012-05-23 | SD-H-1-60 FS+5d |  |  |  | 71d | 33d | PORTO MATROUH Calendar |
| AP-H-1-7 |  | Second floor columns | 1d | 2012-05-23 | 2012-05-23 | SD-H-1-70 FS+5d |  |  |  | 85d | 48d | PORTO MATROUH Calendar |
| AP-H-1-8 |  | Second floor slab | 1d | 2012-05-23 | 2012-05-23 | SD-H-1-80 FS+5d |  |  |  | 96d | 58d | PORTO MATROUH Calendar |
|  | 1 | **Building 2** |  | 2012-03-18 | 2012-05-23 |  |  |  |  |  |  |  |
| AP-H-2-1 |  | P.C footings | 1d | 2012-03-18 A | 2012-03-18 A | SD-H-2-10 FS+5d | 100% | 2012-03-27 | 2012-03-27 |  |  | PORTO MATROUH Calendar |
| AP-H-2-2 |  | R.c footings | 1d | 2012-04-08 A | 2012-04-08 A | SD-H-2-20 FS+5d | 100% | 2012-05-06 | 2012-05-06 |  |  | PORTO MATROUH Calendar |
| AP-H-2-4 |  | Ground floor slabs | 1d | 2012-05-01 A | 2012-05-01 A | SD-H-2-40 FS+5d | 100% | 2012-05-11 | 2012-05-11 |  |  | PORTO MATROUH Calendar |
| AP-H-2-3 |  | Ground floor columns | 1d | 2012-05-23 | 2012-05-23 | SD-H-2-30 FS+5d |  |  |  | 57d | 0.5d | PORTO MATROUH Calendar |
| AP-H-2-5 |  | first floor columns | 1d | 2012-05-23 | 2012-05-23 | SD-H-2-50 FS+5d |  |  |  | 76d | 19d | PORTO MATROUH Calendar |
| AP-H-2-6 |  | First floor slab | 1d | 2012-05-23 | 2012-05-23 | SD-H-2-60 FS+5d |  |  |  | 84d | 26.5d | PORTO MATROUH Calendar |
| AP-H-2-7 |  | Second floor columns | 1d | 2012-05-23 | 2012-05-23 | SD-H-2-70 FS+5d |  |  |  | 95d | 37.5d | PORTO MATROUH Calendar |
| AP-H-2-8 |  | Second floor slab | 1d | 2012-05-23 | 2012-05-23 | SD-H-2-80 FS+5d |  |  |  | 102d | 44.5d | PORTO MATROUH Calendar |
|  | 2 | **Building 3** |  | 2012-03-18 | 2012-05-23 |  |  |  |  |  |  |  |
| AP-H-3-1 |  | P.C footings | 1d | 2012-03-18 A | 2012-03-18 A | SD-H-3-10 FS+5d | 100% | 2012-03-27 | 2012-03-27 |  |  | PORTO MATROUH Calendar |
| AP-H-3-2 |  | R.c footings | 1d | 2012-03-31 A | 2012-03-31 A | SD-H-3-20 FS+5d | 100% |  |  |  |  | PORTO MATROUH Calendar |
| AP-H-3-3 |  | Ground floor columns | 1d | 2012-04-20 A | 2012-04-20 A | SD-H-3-30 FS+5d | 100% | 2012-05-06 | 2012-05-06 |  |  | PORTO MATROUH Calendar |
| AP-H-3-4 |  | Ground floor slabs | 1d | 2012-04-26 A | 2012-04-26 A | SD-H-3-40 FS+5d | 100% | 2012-05-06 | 2012-05-06 |  |  | PORTO MATROUH Calendar |
| AP-H-3-5 |  | first floor columns | 1d | 2012-04-29 A | 2012-04-29 A | SD-H-3-50 FS+5d | 100% | 2012-05-06 | 2012-05-06 |  |  | PORTO MATROUH Calendar |
| AP-H-3-6 |  | First floor slab | 1d | 2012-05-09 A | 2012-05-09 A | SD-H-3-60 FS+5d | 100% | 2012-05-11 | 2012-05-11 |  |  | PORTO MATROUH Calendar |
| AP-H-3-7 |  | Second floor columns | 1d | 2012-05-23 | 2012-05-23 | SD-H-3-70 FS+5d |  |  |  | 79d | 0d | PORTO MATROUH Calendar |
| AP-H-3-8 |  | Second floor slab | 1d | 2012-05-23 | 2012-05-23 | SD-H-3-80 FS+5d |  |  |  | 91d | 12d | PORTO MATROUH Calendar |

| ID | WBS | Activity | Duration | Start | Finish | Predecessors | Complete | Planned start | Planned finish | Total float | Free float | Calendar |
| --- | --- | --- | --- | --- | --- | --- | --- | --- | --- | --- | --- | --- |
|  | 3 | **Building 4** |  | 2012-03-18 | 2012-05-23 |  |  |  |  |  |  |  |
| AP-H-4-1 |  | P.C footings | 1d | 2012-03-18 A | 2012-03-18 A | SD-H-4-10 FS+5d | 100% | 2012-03-27 | 2012-03-27 |  |  | PORTO MATROUH Calendar |
| AP-H-4-2 |  | R.c footings | 1d | 2012-03-27 A | 2012-03-27 A | SD-H-4-20 FS+5d | 100% | 2012-03-31 | 2012-03-31 |  |  | PORTO MATROUH Calendar |
| AP-H-4-3 |  | Ground floor columns | 1d | 2012-04-15 A | 2012-04-15 A | SD-H-4-30 FS+5d | 100% | 2012-05-11 | 2012-05-11 |  |  | PORTO MATROUH Calendar |
| AP-H-4-5 |  | first floor columns | 1d | 2012-04-29 A | 2012-04-29 A | SD-H-4-50 FS+5d | 100% | 2012-05-03 | 2012-05-03 |  |  | PORTO MATROUH Calendar |
| AP-H-4-4 |  | Ground floor slabs | 1d | 2012-05-01 A | 2012-05-01 A | SD-H-4-40 FS+5d | 100% | 2012-05-04 | 2012-05-04 |  |  | PORTO MATROUH Calendar |
| AP-H-4-6 |  | First floor slab | 1d | 2012-05-16 | 2012-05-16 | SD-H-4-60 FS+5d |  |  |  | 66d | 8d | PORTO MATROUH Calendar |
| AP-H-4-7 |  | Second floor columns | 1d | 2012-05-23 | 2012-05-23 | SD-H-4-70 FS+5d |  |  |  | 79d | 21d | PORTO MATROUH Calendar |
| AP-H-4-8 |  | Second floor slab | 1d | 2012-05-23 | 2012-05-23 | SD-H-4-80 FS+5d |  |  |  | 91d | 33d | PORTO MATROUH Calendar |
|  | 4 | **Building 5&6** |  | 2012-03-27 | 2012-05-23 |  |  |  |  |  |  |  |
| AP-H-5&6-2 |  | R.c footings | 1d | 2012-03-27 A | 2012-03-27 A | SD-H-5&6-20 FS+5d | 100% | 2012-03-31 | 2012-03-31 |  |  | PORTO MATROUH Calendar |
| AP-H-5&6-1 |  | P.C footings | 1d | 2012-03-31 A | 2012-03-31 A | SD-H-5&6-10 FS+5d | 100% | 2012-03-27 | 2012-03-27 |  |  | PORTO MATROUH Calendar |
| AP-H-5&6-3 |  | Ground floor columns | 1d | 2012-04-15 A | 2012-04-15 A | SD-H-5&6-30 FS+5d | 100% | 2012-05-11 | 2012-05-11 |  |  | PORTO MATROUH Calendar |
| AP-H-5&6-4 |  | Ground floor slabs | 1d | 2012-04-26 A | 2012-04-26 A | SD-H-5&6-40 FS+5d | 100% | 2012-05-06 | 2012-05-06 |  |  | PORTO MATROUH Calendar |
| AP-H-5&6-5 |  | first floor columns | 1d | 2012-04-29 A | 2012-04-29 A | SD-H-5&6-50 FS+5d | 100% | 2012-05-03 | 2012-05-03 |  |  | PORTO MATROUH Calendar |
| AP-H-5&6-6 |  | First floor slab | 1d | 2012-05-10 A | 2012-05-10 A | SD-H-5&6-60 FS+5d | 100% | 2012-05-11 | 2012-05-11 |  |  | PORTO MATROUH Calendar |
| AP-H-5&6-7 |  | Second floor columns | 1d | 2012-05-23 | 2012-05-23 | SD-H-5&6-70 FS+5d |  |  |  | 79d | 0d | PORTO MATROUH Calendar |
| AP-H-5&6-8 |  | Second floor slab | 1d | 2012-05-23 | 2012-05-23 | SD-H-5&6-80 FS+5d |  |  |  | 91d | 12d | PORTO MATROUH Calendar |
|  | 9 | **Building 7** |  | 2012-05-26 | 2012-06-04 |  |  |  |  |  |  |  |
| AP-H-7-1 |  | P.C footings | 1d | 2012-05-26 | 2012-05-26 | SD-H-7-10 FS+5d |  |  |  | 0d |  | PORTO MATROUH Calendar |
| AP-H-7-2 |  | R.c footings | 1d | 2012-05-29 | 2012-05-29 | SD-H-7-20 FS+5d |  |  |  | 2d |  | PORTO MATROUH Calendar |
| AP-H-7-3 |  | Ground floor columns | 1d | 2012-06-04 | 2012-06-04 | SD-H-7-30 FS+5d |  |  |  | 14d |  | PORTO MATROUH Calendar |
| AP-H-7-4 |  | Ground floor slabs | 1d | 2012-06-04 | 2012-06-04 | SD-H-7-40 FS+5d |  |  |  | 22d |  | PORTO MATROUH Calendar |
| AP-H-7-5 |  | first floor columns | 1d | 2012-06-04 | 2012-06-04 | SD-H-7-50 FS+5d |  |  |  | 41d |  | PORTO MATROUH Calendar |
| AP-H-7-6 |  | First floor slab | 1d | 2012-06-04 | 2012-06-04 | SD-H-7-60 FS+5d |  |  |  | 50d |  | PORTO MATROUH Calendar |

| ID | WBS | Activity | Duration | Start | Finish | Predecessors | Complete | Planned start | Planned finish | Total float | Free float | Calendar |
| --- | --- | --- | --- | --- | --- | --- | --- | --- | --- | --- | --- | --- |
|  | 6 | **Building 8&9** |  | 2012-04-15 | 2012-05-23 |  |  |  |  |  |  |  |
| AP-H-8&9-2 |  | R.c footings | 1d | 2012-04-15 A | 2012-04-15 A | SD-H-8&9-20 FS+5d | 100% | 2012-05-06 | 2012-05-06 |  |  | PORTO MATROUH Calendar |
| AP-H-8&9-3 |  | Ground floor columns | 1d | 2012-04-29 A | 2012-04-29 A | SD-H-8&9-30 FS+5d | 100% | 2012-05-06 | 2012-05-06 |  |  | PORTO MATROUH Calendar |
| AP-H-8&9-1 |  | P.C footings | 1d | 2012-05-16 | 2012-05-16 | SD-H-8&9-10 FS+5d |  |  |  | 130d |  | PORTO MATROUH Calendar |
| AP-H-8&9-4 |  | Ground floor slabs | 1d | 2012-05-23 | 2012-05-23 | SD-H-8&9-40 FS+5d |  |  |  | 124d |  | PORTO MATROUH Calendar |
| AP-H-8&9-5 |  | first floor columns | 1d | 2012-05-23 | 2012-05-23 | SD-H-8&9-50 FS+5d |  |  |  | 124d |  | PORTO MATROUH Calendar |
| AP-H-8&9-6 |  | First floor slab | 1d | 2012-05-23 | 2012-05-23 | SD-H-8&9-60 FS+5d |  |  |  | 60d | 0d | PORTO MATROUH Calendar |
| AP-H-8&9-7 |  | Second floor columns | 1d | 2012-05-23 | 2012-05-23 | SD-H-8&9-70 FS+5d |  |  |  | 79d | 5.5d | PORTO MATROUH Calendar |
| AP-H-8&9-8 |  | Second floor slab | 1d | 2012-05-23 | 2012-05-23 | SD-H-8&9-80 FS+5d |  |  |  | 91d | 17.5d | PORTO MATROUH Calendar |
|  | 5 | **Building 10&11** |  | 2012-03-21 | 2012-05-23 |  |  |  |  |  |  |  |
| AP-H-10&11-1 |  | P.C footings | 1d | 2012-03-21 A | 2012-03-21 A | SD-H-10&11-10 FS+5d | 100% | 2012-03-27 | 2012-03-27 |  |  | PORTO MATROUH Calendar |
| AP-H-10&11-2 |  | R.c footings | 1d | 2012-03-31 A | 2012-03-31 A | SD-H-10&11-20 FS+5d | 100% |  |  |  |  | PORTO MATROUH Calendar |
| AP-H-10&11-3 |  | Ground floor columns | 1d | 2012-04-29 A | 2012-04-29 A | SD-H-10&11-30 FS+5d | 100% | 2012-05-06 | 2012-05-06 |  |  | PORTO MATROUH Calendar |
| AP-H-10&11-4 |  | Ground floor slabs | 1d | 2012-05-01 A | 2012-05-01 A | SD-H-10&11-40 FS+5d | 100% | 2012-05-06 | 2012-05-06 |  |  | PORTO MATROUH Calendar |
| AP-H-10&11-6 |  | First floor slab | 1d | 2012-05-09 A | 2012-05-09 A | SD-H-10&11-60 FS+5d | 100% | 2012-05-11 | 2012-05-11 |  |  | PORTO MATROUH Calendar |
| AP-H-10&11-5 |  | first floor columns | 1d | 2012-05-23 | 2012-05-23 | SD-H-10&11-50 FS+5d |  |  |  | 72d | 0d | PORTO MATROUH Calendar |
| AP-H-10&11-7 |  | Second floor columns | 1d | 2012-05-23 | 2012-05-23 | SD-H-10&11-70 FS+5d |  |  |  | 79d | 0d | PORTO MATROUH Calendar |
| AP-H-10&11-8 |  | Second floor slab | 1d | 2012-05-23 | 2012-05-23 | SD-H-10&11-80 FS+5d |  |  |  | 91d | 12d | PORTO MATROUH Calendar |
|  | 8 | **Building 12** |  | 2012-05-19 | 2012-06-16 |  |  |  |  |  |  |  |
| AP-H-12-1 |  | P.C footings | 1d | 2012-05-19 | 2012-05-19 | SD-H-12-10 FS+5d |  |  |  | 128d |  | PORTO MATROUH Calendar |
| AP-H-12-2 |  | R.c footings | 1d | 2012-05-29 | 2012-05-29 | SD-H-12-20 FS+5d |  |  |  | 2d | 0d | PORTO MATROUH Calendar |
| AP-H-12-21 |  | Basement columns | 1d | 2012-05-31 | 2012-05-31 | SD-H-12-25 FS+5d |  |  |  | 18d | 15d | PORTO MATROUH Calendar |
| AP-H-12-22 |  | Basement roof | 1d | 2012-05-31 | 2012-05-31 | SD-H-12-26 FS+5d |  |  |  | 26d | 24d | PORTO MATROUH Calendar |
| AP-H-12-3 |  | Ground floor columns | 1d | 2012-06-04 | 2012-06-04 | SD-H-12-30 FS+5d |  |  |  | 38d | 35d | PORTO MATROUH Calendar |
| AP-H-12-4 |  | Ground floor slabs | 1d | 2012-06-04 | 2012-06-04 | SD-H-12-40 FS+5d |  |  |  | 46d | 44d | PORTO MATROUH Calendar |
| AP-H-12-5 |  | first floor columns | 1d | 2012-06-04 | 2012-06-04 | SD-H-12-50 FS+5d |  |  |  | 61d | 58d | PORTO MATROUH Calendar |
| AP-H-12-6 |  | First floor slab | 1d | 2012-06-09 | 2012-06-09 | SD-H-12-60 FS+5d |  |  |  | 65d | 63d | PORTO MATROUH Calendar |
| AP-H-12-7 |  | Second floor columns | 1d | 2012-06-16 | 2012-06-16 | SD-H-12-70 FS+5d |  |  |  | 71d | 69d | PORTO MATROUH Calendar |
| AP-H-12-8 |  | Second floor slab | 1d | 2012-06-16 | 2012-06-16 | SD-H-12-80 FS+5d |  |  |  | 81d | 78d | PORTO MATROUH Calendar |

| ID | WBS | Activity | Duration | Start | Finish | Predecessors | Complete | Planned start | Planned finish | Total float | Free float | Calendar | Resources | Cost | Actual cost |
| --- | --- | --- | --- | --- | --- | --- | --- | --- | --- | --- | --- | --- | --- | --- | --- |
|  | 2 | **Cabines drawings** |  | 2012-03-29 | 2012-03-29 |  |  |  |  |  |  |  |  |  |  |
| AP-C-1 |  | Building 1 | 1d | 2012-03-29 A | 2012-03-29 A | SD-C-10 FS+5d | 100% | 2012-03-28 | 2012-03-28 |  |  | PORTO MATROUH Calendar |  |  |  |
| AP-C-2 |  | Building 2 | 1d | 2012-03-29 A | 2012-03-29 A | SD-C-20 FS+5d | 100% | 2012-03-28 | 2012-03-28 |  |  | PORTO MATROUH Calendar | Cash [8] | 8 | 8 |
| AP-C-3 |  | Building 3 | 1d | 2012-03-29 A | 2012-03-29 A | SD-C-30 FS+5d | 100% | 2012-03-28 | 2012-03-28 |  |  | PORTO MATROUH Calendar |  |  |  |
| AP-C-4 |  | Building 4 | 1d | 2012-03-29 A | 2012-03-29 A | SD-C-40 FS+5d | 100% | 2012-03-28 | 2012-03-28 |  |  | PORTO MATROUH Calendar |  |  |  |
| AP-C-5 |  | Building 5 | 1d | 2012-03-29 A | 2012-03-29 A | SD-C-50 FS+5d | 100% | 2012-03-28 | 2012-03-28 |  |  | PORTO MATROUH Calendar |  |  |  |
|  | Material | **Material** |  | 2012-03-18 | 2012-08-08 |  |  |  |  |  |  |  |  |  |  |
|  | 1 | **Material submittal** |  | 2012-05-16 | 2012-05-16 |  |  |  |  |  |  |  |  |  |  |
| MT-S-1 |  | Concrete design mix submitttal | 1d | 2012-05-16 | 2012-05-16 | MS-1000 FS+5d |  |  |  | 130d |  | PORTO MATROUH Calendar |  |  |  |
| MT-S-11 |  | Steel Rft. submittal | 1d | 2012-05-16 | 2012-05-16 | MS-1000 FS+8d |  |  |  | 129d | 0d | PORTO MATROUH Calendar |  |  |  |
| MT-S-21 |  | Bituminous paints submittals | 1d | 2012-05-16 | 2012-05-16 | MS-1000 FS+20d |  |  |  | 115d | 0d | PORTO MATROUH Calendar |  |  |  |
| MT-S-31 |  | Proofing memmbrane submittal | 1d | 2012-05-16 | 2012-05-16 | MS-1000 FS+40d |  |  |  | 129d | 0d | PORTO MATROUH Calendar |  |  |  |
| MT-S-41 |  | polyurethane foam submittal | 1d | 2012-05-16 | 2012-05-16 | MS-1000 FS+40d |  |  |  | 50d | 0d | PORTO MATROUH Calendar |  |  |  |
| MT-S-51 |  | Foam concrete submittal | 1d | 2012-05-16 | 2012-05-16 | MS-1000 FS+40d |  |  |  | 115d | 0d | PORTO MATROUH Calendar |  |  |  |
|  | 2 | **Material Approval** |  | 2012-03-18 | 2012-05-17 |  |  |  |  |  |  |  |  |  |  |
| MT-AP-1 |  | Concrete design approval | 1d | 2012-03-18 A | 2012-03-18 A | MT-S-1 | 100% | 2012-04-30 | 2012-04-30 |  |  | PORTO MATROUH Calendar |  |  |  |
| MT-AP-11 |  | Steel Rft approval | 1d | 2012-05-17 | 2012-05-17 | MT-S-11 |  |  |  | 129d |  | PORTO MATROUH Calendar |  |  |  |
| MT-AP-21 |  | Bituminous paints approval | 1d | 2012-05-17 | 2012-05-17 | MT-S-21 |  |  |  | 115d | 13.3d | PORTO MATROUH Calendar |  |  |  |
| MT-AP-31 |  | proofing membrane approval | 1d | 2012-05-17 | 2012-05-17 | MT-S-31 |  |  |  | 129d |  | PORTO MATROUH Calendar |  |  |  |
| MT-AP-41 |  | polyurethane foam approval | 1d | 2012-05-17 | 2012-05-17 | MT-S-41 |  |  |  | 50d | 0d | PORTO MATROUH Calendar |  |  |  |
| MT-AP-51 |  | Foam concrete approval | 1d | 2012-05-17 | 2012-05-17 | MT-S-51 |  |  |  | 115d | 62d | PORTO MATROUH Calendar |  |  |  |
|  | 3 | **Material delivery** |  | 2012-07-28 | 2012-08-08 |  |  |  |  |  |  |  |  |  |  |
| MT-DD-61 |  | polyurethane foam delivery(for cabines) | 1d | 2012-07-28 | 2012-07-28 | MT-AP-41 FS+60d |  |  |  | 53d | 0d | PORTO MATROUH Calendar |  |  |  |
| MT-DD-71 |  | polyurethane foam delivery(for hotels) | 1d | 2012-08-08 | 2012-08-08 | MT-AP-41 FS+70d |  |  |  | 50d | 0d | PORTO MATROUH Calendar |  |  |  |

| ID | WBS | Activity | Duration | Start | Finish | Predecessors | Complete | Remaining | Planned start | Planned finish | Total float | Free float | Resources | Cost | Actual cost |
| --- | --- | --- | --- | --- | --- | --- | --- | --- | --- | --- | --- | --- | --- | --- | --- |
|  | 3 | **CONSTRUCTION** |  | 2012-03-18 | 2012-10-15 |  |  |  |  |  |  |  |  |  |  |
|  | 1 | **HOTEL AREA** |  | 2012-03-18 | 2012-10-15 |  |  |  |  |  |  |  |  |  |  |
|  | B111 | **Building 1** |  | 2012-03-28 | 2012-09-01 |  |  |  |  |  |  |  |  |  |  |
|  | 1 | **Plain concrete** |  | 2012-03-28 | 2012-07-14 |  |  |  |  |  |  |  |  |  |  |
| H-1-10 |  | P.C footings formwork | 3d | 2012-03-28 A | 2012-04-02 A | Z-H1, AP-H-1-1 FS+1d | 100% |  | 2012-05-06 | 2012-05-08 |  |  | Cash [70254]; Formwork Labors [53 h] | 70,254 | 70,254 |
| H-1-20 |  | Engineer Release Pouring | 1d | 2012-04-02 A | 2012-04-02 A | H-1-10 | 100% |  | 2012-03-30 | 2012-03-30 |  |  |  |  |  |
| H-1-30 |  | P.C footings concrete pouring | 1d | 2012-04-07 A | 2012-04-07 A | H-1-20, MT-AP-1 FS+3d | 100% |  | 2012-03-31 | 2012-03-31 |  |  | Cash [105381]; Concrete [267 M3]; Conc Labors [13 h] | 105,381 | 105,381 |
| H-1-460 |  | Slab on grade work | 3d | 2012-07-10 | 2012-07-12 | H-1-440 FS+7d |  |  |  |  | 93d | 0d | Formwork Labors [11 h] |  |  |
| H-1-510 |  | Engineer Release Pouring | 1d | 2012-07-13 | 2012-07-13 | H-1-460 |  |  |  |  | 93d | 0d |  |  |  |
| H-1-530 |  | Slab on grade Concrete Pouring | 1d | 2012-07-14 | 2012-07-14 | H-1-510 |  |  |  |  | 93d |  | Cash [98000]; Concrete [105 M3]; Conc Labors [11 h] | 98,000 |  |
|  | 2 | **Reinforced concrete** |  | 2012-04-14 | 2012-08-16 |  |  |  |  |  |  |  |  |  |  |
|  | 1 | **Foundations** |  | 2012-04-14 | 2012-05-01 |  |  |  |  |  |  |  |  |  |  |
| H-1-40 |  | R.C footings form work | 3d | 2012-04-14 A | 2012-04-19 A | AP-H-1-2, H-1-30 | 100% |  | 2012-05-07 | 2012-05-09 |  |  | Cash [104022]; Formwork Labors [86 h] | 104,022 | 104,022 |
| H-1-50 |  | Engineer inspection & approval formwork | 1d | 2012-04-19 A | 2012-04-19 A | H-1-40 | 100% |  | 2012-05-10 | 2012-05-10 |  |  |  |  |  |
| H-1-60 |  | R.C footings steel works | 3d | 2012-04-20 A | 2012-04-23 A | H-1-50, MT-AP-11 FS+5d | 100% |  | 2012-05-11 | 2012-05-13 |  |  | Cash [121359]; Steel bars [21 ton]; Steel Labors [83 h] | 121,359 | 121,359 |
| H-1-70 |  | Engineer inspection & approval steel work | 1d | 2012-04-23 A | 2012-04-23 A | H-1-60 | 100% |  | 2012-05-14 | 2012-05-14 |  |  |  |  |  |
| H-1-80 |  | Engineer Release Pouring | 1d | 2012-04-24 A | 2012-04-24 A | H-1-70 SS | 100% |  | 2012-05-14 | 2012-05-14 |  |  |  |  |  |
| H-1-90 |  | R.C footings Pouring works | 1d | 2012-04-24 A | 2012-05-01 A | H-1-70, H-1-80 | 100% |  | 2012-05-17 | 2012-05-17 |  |  | Cash [121359]; Concrete [215 M3]; Conc Labors [11 h] | 121,359 | 121,359 |
|  | 5 | **Basement** |  | 2012-04-28 | 2012-05-19 |  |  |  |  |  |  |  |  |  |  |
| H-1-100 |  | Columns & Walls form works | 5d | 2012-04-28 A | 2012-05-16 | H-1-90, AP-H-1-21 | 100% | 0d | 2012-05-07 | 2012-05-12 | 152d | 0d | Cash [34709]; Formwork Labors [39 h] | 34,709 | 34,709 |
| H-1-120 |  | Columns&Walls Steel works | 3d | 2012-05-01 A | 2012-05-16 | H-1-110 | 90% | 0.3d | 2012-05-13 | 2012-05-16 | 151.7d | 0d | Cash [40494]; Steel bars [8 ton]; Steel Labors [38 h] | 40,494 | 36,444.6 |
| H-1-160 |  | Slab form works | 10d | 2012-05-05 A | 2012-05-16 | H-1-150, AP-H-1-22 | 100% | 0d | 2012-05-28 | 2012-06-06 | 152d | 0d | Cash [110460]; Formwork Labors [100 h] | 110,460 | 110,460 |
| H-1-150 |  | Columns&Walls Pouring works | 1d | 2012-05-09 A | 2012-05-16 | H-1-130, H-1-140 | 80% | 0.2d | 2012-05-27 | 2012-05-27 | 146.8d | 0d | Cash [40494]; Concrete [53 M3]; Conc Labors [7 h] | 40,494 | 32,395.2 |
| H-1-200 |  | Slab steel works | 4d | 2012-05-10 A | 2012-05-17 | H-1-190 | 60% | 1.6d | 2012-06-08 | 2012-06-11 | 48.4d | 0d | Cash [128870]; Steel bars [24 ton]; Steel Labors [96 h] | 128,870 | 77,322 |
| H-1-110 |  | ColColumns&walls form works inspection | 1d | 2012-05-16 | 2012-05-16 | H-1-100 |  |  |  |  | 152d |  |  |  |  |
| H-1-190 |  | Slab form works inspection | 1d | 2012-05-16 | 2012-05-16 | H-1-160 |  |  |  |  | 152d |  |  |  |  |
| H-1-130 |  | Columns&walls steel works inspection | 1d | 2012-05-16 | 2012-05-17 | H-1-120 |  |  |  |  | 151.7d | 0d |  |  |  |
| H-1-140 |  | Engineer Release Pouring | 1d | 2012-05-16 | 2012-05-17 | H-1-130 SS |  |  |  |  | 151.7d |  |  |  |  |
| H-1-210 |  | Slab steel works inspection | 1d | 2012-05-17 | 2012-05-18 | H-1-200 |  |  |  |  | 48.4d | 0d |  |  |  |
| H-1-220 |  | Engineer Release Pouring | 1d | 2012-05-17 | 2012-05-18 | H-1-210 SS |  |  |  |  | 48.4d | 0d |  |  |  |
| H-1-230 |  | Slab Pouring works | 1d | 2012-05-18 | 2012-05-19 | H-1-200, H-1-210, H-1-220 |  |  |  |  | 48.4d | 4.4d | Cash [128870]; Concrete [200 M3]; Slab Formwork [600 m2]; Conc Labors [10 h] | 128,870 |  |

| ID | WBS | Activity | Duration | Start | Finish | Predecessors | Total float | Free float | Resources | Cost |
| --- | --- | --- | --- | --- | --- | --- | --- | --- | --- | --- |
|  | 2 | **Ground floor** |  | 2012-05-24 | 2012-06-19 |  |  |  |  |  |
| H-1-240 |  | Columns form works | 4d | 2012-05-24 | 2012-05-27 | AP-H-1-3, H-1-230 | 44d | 0d | Cash [21854.2]; Formwork Labors [14 h] | 21,854.25 |
| H-1-250 |  | Columns form works ISPECTION | 1d | 2012-05-28 | 2012-05-28 | H-1-240 | 44d | 0d |  |  |
| H-1-260 |  | Columns Steel works | 3d | 2012-05-29 | 2012-05-31 | H-1-250 | 44d | 0d | Cash [25496.6]; Steel bars [6.05 ton]; Steel Labors [24 h] | 25,496.6 |
| H-1-270 |  | Columns Steel works ISPECTION | 1d | 2012-06-01 | 2012-06-01 | H-1-260 | 44d | 0d |  |  |
| H-1-280 |  | Engineer Release Pouring | 1d | 2012-06-01 | 2012-06-01 | H-1-270 SS | 44d | 0d |  |  |
| H-1-290 |  | Columns Pouring works | 1d | 2012-06-02 | 2012-06-02 | H-1-270, H-1-280 | 44d | 0d | Cash [25496.6]; Concrete [27.5 M3]; Conc Labors [3 h] | 25,496.6 |
| H-1-300 |  | Slab form works | 10d | 2012-06-03 | 2012-06-12 | H-1-290, AP-H-1-4 | 44d | 0d | Cash [110460]; Formwork Labors [100 h] | 110,460 |
| H-1-310 |  | Slab form works inspection | 1d | 2012-06-13 | 2012-06-13 | H-1-300 | 44d | 0d |  |  |
| H-1-320 |  | Slab steel works | 4d | 2012-06-14 | 2012-06-17 | H-1-310 | 44d | 0d | Cash [128870]; Steel bars [24 ton]; Steel Labors [96 h] | 128,870 |
| H-1-330 |  | Slab steel works inspection | 1d | 2012-06-18 | 2012-06-18 | H-1-320 | 44d | 0d |  |  |
| H-1-340 |  | Engineer Release Pouring | 1d | 2012-06-18 | 2012-06-18 | H-1-330 SS | 44d | 0d |  |  |
| H-1-350 |  | Slab Pouring works | 1d | 2012-06-19 | 2012-06-19 | H-1-320, H-1-330, H-1-340 | 44d | 0d | Cash [128870]; Concrete [200 M3]; Slab Formwork [600 m2]; Conc Labors [10 h] | 128,870 |
|  | 3 | **First floor** |  | 2012-06-20 | 2012-07-18 |  |  |  |  |  |
| H-1-360 |  | Columns form works | 6d | 2012-06-20 | 2012-06-25 | H-1-350, AP-H-1-5 | 44d | 0d | Cash [19297.5]; Formwork Labors [13 h] | 19,297.5 |
| H-1-370 |  | Columns form works ISPECTION | 1d | 2012-06-26 | 2012-06-26 | H-1-360 | 44d | 0d |  |  |
| H-1-380 |  | Columns Steel works | 3d | 2012-06-27 | 2012-06-29 | H-1-360, H-1-370 | 44d | 0d | Cash [22513.8]; Steel bars [5.5 ton]; Steel Labors [22 h] | 22,513.75 |
| H-1-400 |  | Columns steel works ISPECTION | 1d | 2012-06-30 | 2012-06-30 | H-1-380 | 44d | 0d |  |  |
| H-1-410 |  | Engineer Release Pouring | 1d | 2012-06-30 | 2012-06-30 | H-1-400 SS | 44d | 0d |  |  |
| H-1-420 |  | Columns Pouring works | 1d | 2012-07-01 | 2012-07-01 | H-1-400, H-1-410 | 44d | 0d | Cash [22513.8]; Concrete [25 M3]; Conc Labors [3 h] | 22,513.75 |
| H-1-430 |  | Slab form works | 10d | 2012-07-02 | 2012-07-11 | H-1-420, AP-H-1-6 | 44d | 0d | Cash [110460]; Formwork Labors [100 h] | 110,460 |
| H-1-450 |  | Slab form works inspection | 1d | 2012-07-12 | 2012-07-12 | H-1-430 | 44d | 0d |  |  |
| H-1-470 |  | Slab steel works | 4d | 2012-07-13 | 2012-07-16 | H-1-450 | 44d | 0d | Cash [128870]; Steel bars [24 ton]; Steel Labors [96 h] | 128,870 |
| H-1-480 |  | Engineer Release Pouring | 1d | 2012-07-17 | 2012-07-17 | H-1-490 SS | 44d | 0d |  |  |
| H-1-490 |  | Slab steel works inspection | 1d | 2012-07-17 | 2012-07-17 | H-1-470 | 44d | 0d |  |  |
| H-1-500 |  | Slab Pouring works | 1d | 2012-07-18 | 2012-07-18 | H-1-490, H-1-480 | 44d | 0d | Cash [128870]; Concrete [200 M3]; Conc Labors [10 h]; Slab Formwork [600 m2] | 128,870 |

| ID | WBS | Activity | Duration | Start | Finish | Predecessors | Total float | Free float | Resources | Cost |
| --- | --- | --- | --- | --- | --- | --- | --- | --- | --- | --- |
|  | 4 | **Second floor** |  | 2012-07-19 | 2012-08-16 |  |  |  |  |  |
| H-1-520 |  | Columns form works | 6d | 2012-07-19 | 2012-07-24 | H-1-500, AP-H-1-7 | 44d | 0d | Cash [19297.5]; Formwork Labors [13 h] | 19,297.5 |
| H-1-540 |  | Columns form works ISPECTION | 1d | 2012-07-25 | 2012-07-25 | H-1-520 | 44d | 0d |  |  |
| H-1-550 |  | Columns Steel works | 3d | 2012-07-26 | 2012-07-28 | H-1-540 | 44d | 0d | Cash [22513.8]; Steel bars [5.5 ton]; Steel Labors [22 h] | 22,513.75 |
| H-1-560 |  | Columns steel works ISPECTION | 1d | 2012-07-29 | 2012-07-29 | H-1-550 | 44d | 0d |  |  |
| H-1-570 |  | Engineer Release Pouring | 1d | 2012-07-29 | 2012-07-29 | H-1-560 SS | 44d | 0d |  |  |
| H-1-580 |  | Columns Pouring works | 1d | 2012-07-30 | 2012-07-30 | H-1-560, H-1-570 | 44d | 0d | Cash [22513.8]; Concrete [25 M3]; Conc Labors [3 h] | 22,513.75 |
| H-1-590 |  | Slab form works | 10d | 2012-07-31 | 2012-08-09 | H-1-580, AP-H-1-8 | 44d | 0d | Cash [110460]; Formwork Labors [100 h] | 110,460 |
| H-1-600 |  | Slab form works inspection | 1d | 2012-08-10 | 2012-08-10 | H-1-590 | 44d | 0d |  |  |
| H-1-610 |  | Slab steel works | 4d | 2012-08-11 | 2012-08-14 | H-1-600 | 44d | 0d | Cash [128870]; Steel bars [24 ton]; Steel Labors [96 h] | 128,870 |
| H-1-620 |  | Engineer Release Pouring | 1d | 2012-08-15 | 2012-08-15 | H-1-630 SS | 44d | 0d |  |  |
| H-1-630 |  | Slab steel works inspection | 1d | 2012-08-15 | 2012-08-15 | H-1-610 | 44d | 0d |  |  |
| H-1-640 |  | Slab Pouring works | 1d | 2012-08-16 | 2012-08-16 | H-1-630, H-1-620 | 44d | 0d | Cash [128870]; Concrete [200 M3]; Slab Formwork [600 m2]; Conc Labors [10 h] | 128,870 |
|  | 3 | **Insulation works** |  | 2012-05-16 | 2012-09-01 |  |  |  |  |  |
| H-1-170 |  | Water proofing membrane For Basement Walls | 5d | 2012-05-16 | 2012-05-21 | H-1-150 | 146.8d | 0d |  |  |
| H-1-180 |  | Engineer inspection&approval for water proofing For Basement Walls | 1d | 2012-05-21 | 2012-05-22 | H-1-170 | 146.8d |  |  |  |
| H-1-390 |  | Footing insulation | 4d | 2012-06-28 | 2012-07-01 | H-1-300 FS+15d | 93d | 0d | Cash [19000]; Insulation Labors [10 h] | 19,000 |
| H-1-440 |  | Engineer inspection&approval for Footing insulation | 1d | 2012-07-02 | 2012-07-02 | H-1-390 | 93d | 0d |  |  |
| H-1-650 |  | Water proofing membrane | 5d | 2012-08-17 | 2012-08-21 | H-1-640 | 44d | 0d | Cash [116840]; Insulation Labors [30 h] | 116,840 |
| H-1-660 |  | Engineer inspection&approval for water proofing | 1d | 2012-08-22 | 2012-08-22 | H-1-650 | 44d | 0d |  |  |
| H-1-670 |  | Heat insulation | 3d | 2012-08-25 | 2012-08-27 | H-1-660 FS+2d, MT-DD-71 | 44d | 0d | Cash [47600]; Polysterine [700 m2]; Insulation Labors [7 h] | 47,600 |
| H-1-680 |  | Engineer inspection&approval for Heat insulation | 1d | 2012-08-28 | 2012-08-28 | H-1-670 | 44d | 0d |  |  |
| H-1-690 |  | Slopped plain concrete | 2d | 2012-08-29 | 2012-08-30 | H-1-680 | 44d | 0d | Conc Labors [7 h] |  |
| H-1-700 |  | Engineer Release Pouring | 1d | 2012-08-31 | 2012-08-31 | H-1-710 SS | 44d | 0d |  |  |
| H-1-710 |  | Engineer inspection&approval for Slopped P.C | 1d | 2012-08-31 | 2012-08-31 | H-1-690 | 44d | 0d |  |  |
| H-1-720 |  | Slopped P.C Pouring | 1d | 2012-09-01 | 2012-09-01 | H-1-710, H-1-700 | 44d |  | Cash [34300]; Foam Concrete [53 M3]; Conc Labors [7 h] | 34,300 |

| ID | WBS | Activity | Duration | Start | Finish | Predecessors | Complete | Remaining | Planned start | Planned finish | Total float | Free float | Resources | Cost | Actual cost |
| --- | --- | --- | --- | --- | --- | --- | --- | --- | --- | --- | --- | --- | --- | --- | --- |
|  | B1111 | **Building 2** |  | 2012-04-26 | 2012-08-16 |  |  |  |  |  |  |  |  |  |  |
|  | 1 | **Plain concrete** |  | 2012-04-26 | 2012-07-09 |  |  |  |  |  |  |  |  |  |  |
| H-2-10 |  | P.C footings formwork | 3d | 2012-04-26 A | 2012-05-17 | Z-H2, AP-H-2-1 FS+1d, H-1-290, H-1-180 | 50% | 1.5d | 2012-06-14 | 2012-06-17 | 151.5d |  | Cash [91608]; Formwork Labors [70 h] | 91,608 | 45,804 |
| H-2-20 |  | Engineer Release Pouring | 1d | 2012-04-29 A | 2012-04-29 A | H-2-10 | 100% |  | 2012-06-17 | 2012-06-18 |  |  |  |  |  |
| H-2-30 |  | P.C footings concrete pouring | 1d | 2012-04-29 A | 2012-05-16 | H-2-20 | 50% | 0.5d | 2012-06-18 | 2012-06-19 | 66.5d | 0d | Cash [137412]; Concrete [348 M3]; Conc Labors [17 h] | 137,412 | 68,706 |
| H-2-350 |  | Slab on grade work | 2d | 2012-07-05 | 2012-07-07 | H-2-300 FS+7d |  |  |  |  | 98.5d | 0d | Formwork Labors [18 h] |  |  |
| H-2-380 |  | Engineer Release Pouring | 1d | 2012-07-07 | 2012-07-08 | H-2-350 |  |  |  |  | 98.5d | 0d |  |  |  |
| H-2-390 |  | Slab on grade Concrete Pouring | 1d | 2012-07-08 | 2012-07-09 | H-2-380 |  |  |  |  | 98.5d |  | Cash [168000]; Concrete [180 M3]; Conc Labors [18 h] | 168,000 |  |
|  | 2 | **Reinforced concrete** |  | 2012-05-16 | 2012-07-27 |  |  |  |  |  |  |  |  |  |  |
|  | 1 | **Foundations** |  | 2012-05-16 | 2012-05-24 |  |  |  |  |  |  |  |  |  |  |
| H-2-40 |  | R.C footings form work | 3d | 2012-05-16 | 2012-05-19 | AP-H-2-2 FS+2d, H-2-30 |  |  |  |  | 66.5d | 0d | Cash [113082]; Formwork Labors [94 h] | 113,082 |  |
| H-2-50 |  | Engineer inspection & approval formwork | 1d | 2012-05-19 | 2012-05-20 | H-2-40 |  |  |  |  | 66.5d | 0d |  |  |  |
| H-2-60 |  | R.C footings steel works | 2d | 2012-05-20 | 2012-05-22 | H-2-50 |  |  |  |  | 66.5d | 0d | Cash [131929]; Steel bars [21 ton]; Steel Labors [85 h] | 131,929 |  |
| H-2-70 |  | Engineer inspection & approval steel work | 1d | 2012-05-22 | 2012-05-23 | H-2-60 |  |  |  |  | 66.5d | 0d |  |  |  |
| H-2-80 |  | Engineer Release Pouring | 1d | 2012-05-22 | 2012-05-23 | H-2-70 SS |  |  |  |  | 66.5d | 0d |  |  |  |
| H-2-90 |  | R.C footings Pouring works | 1d | 2012-05-23 | 2012-05-24 | H-2-70, H-2-80 |  |  |  |  | 66.5d | 0d | Cash [131929]; Concrete [235 M3]; Conc Labors [12 h] | 131,929 |  |
|  | 2 | **Ground floor** |  | 2012-05-24 | 2012-06-15 |  |  |  |  |  |  |  |  |  |  |
| H-2-100 |  | Columns form works | 4d | 2012-05-24 | 2012-05-28 | H-2-90, AP-H-2-3 |  |  |  |  | 66.5d | 0d | Cash [51656]; Formwork Labors [33 h] | 51,656 |  |
| H-2-110 |  | Columns form works ISPECTION | 1d | 2012-05-28 | 2012-05-29 | H-2-100 |  |  |  |  | 66.5d | 0d |  |  |  |
| H-2-120 |  | Columns Steel works | 2d | 2012-05-29 | 2012-05-31 | H-2-110 |  |  |  |  | 66.5d | 0d | Cash [60265]; Steel bars [14 ton]; Steel Labors [57 h] | 60,265 |  |
| H-2-130 |  | Columns steel works ISPECTION | 1d | 2012-05-31 | 2012-06-01 | H-2-120 |  |  |  |  | 66.5d | 0d |  |  |  |
| H-2-140 |  | Engineer Release Pouring | 1d | 2012-05-31 | 2012-06-01 | H-2-130 SS |  |  |  |  | 66.5d | 0d |  |  |  |
| H-2-150 |  | Columns Pouring works | 1d | 2012-06-01 | 2012-06-02 | H-2-130, H-2-140 |  |  |  |  | 66.5d | 0d | Cash [60265]; Concrete [65 M3]; Conc Labors [7 h] | 60,265 |  |
| H-2-160 |  | Slab form works | 7d | 2012-06-02 | 2012-06-09 | H-2-150, AP-H-2-4 |  |  |  |  | 66.5d | 0d | Cash [174895]; Slab Formwork [950 m2]; Formwork Labors [158 h] | 174,895 |  |
| H-2-170 |  | Slab form works inspection | 1d | 2012-06-09 | 2012-06-10 | H-2-160 |  |  |  |  | 66.5d | 0d |  |  |  |
| H-2-180 |  | Slab steel works | 3d | 2012-06-10 | 2012-06-13 | H-2-170 |  |  |  |  | 66.5d | 0d | Cash [204044]; Steel bars [38 ton]; Steel Labors [152 h] | 204,044 |  |
| H-2-190 |  | Engineer Release Pouring | 1d | 2012-06-13 | 2012-06-14 | H-2-200 SS |  |  |  |  | 66.5d | 0d |  |  |  |
| H-2-200 |  | Slab steel works inspection | 1d | 2012-06-13 | 2012-06-14 | H-2-180 |  |  |  |  | 66.5d | 0d |  |  |  |
| H-2-210 |  | Slab Pouring works | 1d | 2012-06-14 | 2012-06-15 | H-2-200, H-2-190 |  |  |  |  | 66.5d | 0d | Cash [204044]; Concrete [317 M3]; Conc Labors [16 h] | 204,044 |  |

| ID | WBS | Activity | Duration | Start | Finish | Predecessors | Total float | Free float | Resources | Cost |
| --- | --- | --- | --- | --- | --- | --- | --- | --- | --- | --- |
|  | 3 | **First floor** |  | 2012-06-15 | 2012-07-07 |  |  |  |  |  |
| H-2-220 |  | Columns form works | 4d | 2012-06-15 | 2012-06-19 | H-2-210, AP-H-2-5 | 66.5d | 0d | Cash [31296]; Formwork Labors [20 h] | 31,296 |
| H-2-230 |  | Columns form works ISPECTION | 1d | 2012-06-19 | 2012-06-20 | H-2-220 | 66.5d | 0d |  |  |
| H-2-240 |  | Columns Steel works | 2d | 2012-06-20 | 2012-06-22 | H-2-230 | 66.5d | 0d | Cash [36512]; Steel bars [9 ton]; Steel Labors [36 h] | 36,512 |
| H-2-260 |  | Columns steel works ISPECTION | 1d | 2012-06-22 | 2012-06-23 | H-2-240 | 66.5d | 0d |  |  |
| H-2-270 |  | Engineer Release Pouring | 1d | 2012-06-22 | 2012-06-23 | H-2-260 SS | 114.5d |  |  |  |
| H-2-280 |  | Columns Pouring works | 1d | 2012-06-23 | 2012-06-24 | H-2-260 | 66.5d | 0d | Cash [36512]; Concrete [40 M3]; Conc Labors [4 h] | 36,512 |
| H-2-290 |  | Slab form works | 7d | 2012-06-24 | 2012-07-01 | H-2-280, AP-H-2-6 | 66.5d | 0d | Cash [174895]; Slab Formwork [950 m2]; Formwork Labors [158 h] | 174,895 |
| H-2-310 |  | Slab form works inspection | 1d | 2012-07-01 | 2012-07-02 | H-2-290 | 66.5d | 0d |  |  |
| H-2-320 |  | Slab steel works | 3d | 2012-07-02 | 2012-07-05 | H-2-310 | 66.5d | 0d | Cash [204044]; Steel bars [38 ton]; Steel Labors [152 h] | 204,044 |
| H-2-330 |  | Engineer Release Pouring | 1d | 2012-07-05 | 2012-07-06 | H-2-340 SS | 101.5d |  |  |  |
| H-2-340 |  | Slab steel works inspection | 1d | 2012-07-05 | 2012-07-06 | H-2-320 | 66.5d | 0d |  |  |
| H-2-360 |  | Slab Pouring works | 1d | 2012-07-06 | 2012-07-07 | H-2-340 | 66.5d | 0d | Cash [204044]; Concrete [317 M3]; Conc Labors [16 h] | 204,044 |
|  | 4 | **Second floor** |  | 2012-07-07 | 2012-07-27 |  |  |  |  |  |
| H-2-370 |  | Columns form works | 3d | 2012-07-07 | 2012-07-10 | H-2-360, AP-H-2-7 | 66.5d | 0d | Cash [31296]; Formwork Labors [20 h] | 31,296 |
| H-2-400 |  | Columns form works ISPECTION | 1d | 2012-07-10 | 2012-07-11 | H-2-370 | 66.5d | 0d |  |  |
| H-2-410 |  | Columns Steel works | 2d | 2012-07-11 | 2012-07-13 | H-2-400 | 66.5d | 0d | Cash [36512]; Steel bars [9 ton]; Steel Labors [36 h] | 36,512 |
| H-2-420 |  | Columns steel works ISPECTION | 1d | 2012-07-13 | 2012-07-14 | H-2-410 | 66.5d | 0d |  |  |
| H-2-430 |  | Engineer Release Pouring | 1d | 2012-07-13 | 2012-07-14 | H-2-420 SS | 93.5d |  |  |  |
| H-2-440 |  | Columns Pouring works | 1d | 2012-07-14 | 2012-07-15 | H-2-420 | 66.5d | 0d | Cash [36512]; Concrete [40 M3]; Conc Labors [4 h] | 36,512 |
| H-2-450 |  | Slab form works | 6d | 2012-07-15 | 2012-07-21 | H-2-440, AP-H-2-8 | 66.5d | 0d | Cash [174895]; Slab Formwork [950 m2]; Formwork Labors [158 h] | 174,895 |
| H-2-460 |  | Slab form works inspection | 1d | 2012-07-21 | 2012-07-22 | H-2-450 | 66.5d | 0d |  |  |
| H-2-470 |  | Slab steel works | 3d | 2012-07-22 | 2012-07-25 | H-2-460 | 66.5d | 0d | Cash [204044]; Steel bars [38 ton]; Steel Labors [152 h] | 204,044 |
| H-2-480 |  | Engineer Release Pouring | 1d | 2012-07-25 | 2012-07-26 | H-2-490 SS | 81.5d |  |  |  |
| H-2-490 |  | Slab steel works inspection | 1d | 2012-07-25 | 2012-07-26 | H-2-470 | 66.5d | 0d |  |  |
| H-2-500 |  | Slab Pouring works | 1d | 2012-07-26 | 2012-07-27 | H-2-490 | 66.5d | 0d | Cash [204044]; Concrete [317 M3]; Conc Labors [16 h] | 204,044 |

| ID | WBS | Activity | Duration | Start | Finish | Predecessors | Complete | Planned start | Planned finish | Total float | Free float | Resources | Cost | Actual cost |
| --- | --- | --- | --- | --- | --- | --- | --- | --- | --- | --- | --- | --- | --- | --- |
|  | 3 | **Insulation works** |  | 2012-06-24 | 2012-08-16 |  |  |  |  |  |  |  |  |  |
| H-2-250 |  | Footing insulation | 3d | 2012-06-24 | 2012-06-27 | H-2-160 FS+15d |  |  |  | 98.5d | 0d | Cash [24700]; Insulation Labors | 24,700 |  |
| H-2-300 |  | Engineer inspection&approval for Footing insulation | 1d | 2012-06-27 | 2012-06-28 | H-2-250 |  |  |  | 98.5d | 0d |  |  |  |
| H-2-510 |  | Water proofing membrane | 5d | 2012-07-27 | 2012-08-01 | H-2-500 |  |  |  | 66.5d | 0d | Cash [209100]; Insulation Labors [53 h] | 209,100 |  |
| H-2-520 |  | Engineer inspection&approval for water proofing | 1d | 2012-08-01 | 2012-08-02 | H-2-510 |  |  |  | 66.5d | 6.5d |  |  |  |
| H-2-530 |  | Heat insulation | 3d | 2012-08-09 | 2012-08-11 | H-2-520, MT-DD-71 |  |  |  | 60d | 0d | Cash [81600]; Polysterine [1200 m2]; Insulation Labors [12 h] | 81,600 |  |
| H-2-540 |  | Engineer inspection&approval for Heat insulation | 1d | 2012-08-12 | 2012-08-12 | H-2-530 |  |  |  | 60d | 0d |  |  |  |
| H-2-550 |  | Slopped plain concrete | 2d | 2012-08-13 | 2012-08-14 | H-2-540 |  |  |  | 60d | 0d | Conc Labors [12 h] |  |  |
| H-2-560 |  | Engineer Release Pouring | 1d | 2012-08-15 | 2012-08-15 | H-2-570 SS |  |  |  | 61d |  |  |  |  |
| H-2-570 |  | Engineer inspection&approval for Slopped P.C | 1d | 2012-08-15 | 2012-08-15 | H-2-550 |  |  |  | 60d | 0d |  |  |  |
| H-2-580 |  | Slopped P.C Pouring | 1d | 2012-08-16 | 2012-08-16 | H-2-570 |  |  |  | 60d |  | Cash [58800]; Foam Concrete [90 M3]; Conc Labors [12 h] | 58,800 |  |
|  | B1112 | **Building 3** |  | 2012-03-18 | 2012-08-17 |  |  |  |  |  |  |  |  |  |
|  | 1 | **Plain concrete** |  | 2012-03-18 | 2012-06-06 |  |  |  |  |  |  |  |  |  |
| H-3-10 |  | P.C footings formwork | 5d | 2012-03-18 A | 2012-03-18 A | Z-H3, AP-H-3-1 FS+1d | 100% | 2012-03-29 | 2012-04-02 |  |  | Cash [61028]; Formwork Labors [46 h] | 61,028 | 61,028 |
| H-3-20 |  | Engineer Release Pouring | 1d | 2012-03-18 A | 2012-03-18 A | H-3-10 | 100% | 2012-04-03 | 2012-04-03 |  |  |  |  |  |
| H-3-30 |  | P.C footings concrete pouring | 1d | 2012-03-18 A | 2012-03-18 A | H-3-20 | 100% | 2012-04-04 | 2012-04-04 |  |  | Cash [91542]; Concrete [232 M3]; Conc Labors [12 h] | 91,542 | 91,542 |
| H-3-320 |  | Slab on grade work | 5d | 2012-05-31 | 2012-06-04 | H-3-300 FS+7d |  |  |  | 131d | 0d | Formwork Labors [12 h] |  |  |
| H-3-370 |  | Engineer Release Pouring | 1d | 2012-06-05 | 2012-06-05 | H-3-320 |  |  |  | 131d | 0d |  |  |  |
| H-3-390 |  | Slab on grade Concrete Pouring | 1d | 2012-06-06 | 2012-06-06 | H-3-370 |  |  |  | 131d |  | Cash [107800]; Concrete [116 M3]; Conc Labors [12 h] | 107,800 |  |
|  | 2 | **Reinforced concrete** |  | 2012-03-25 | 2012-06-28 |  |  |  |  |  |  |  |  |  |
|  | 1 | **Foundations** |  | 2012-03-25 | 2012-04-04 |  |  |  |  |  |  |  |  |  |
| H-3-40 |  | R.C footings form work | 7d | 2012-03-25 A | 2012-03-30 A | AP-H-3-2 FS+2d, H-3-30 | 100% | 2012-04-28 | 2012-05-04 |  |  | Cash [74586]; Formwork Labors [62 h] | 74,586 | 74,586 |
| H-3-60 |  | R.C footings steel works | 7d | 2012-03-30 A | 2012-04-02 A | H-3-50 | 100% | 2012-05-06 | 2012-05-12 |  |  | Cash [87017]; Steel bars [14 ton]; Steel Labors [56 h] | 87,017 | 87,017 |
| H-3-50 |  | Engineer inspection & approval formwork | 1d | 2012-03-31 A | 2012-03-31 A | H-3-40 | 100% | 2012-05-05 | 2012-05-05 |  |  |  |  |  |
| H-3-70 |  | Engineer inspection & approval steel work | 1d | 2012-03-31 A | 2012-03-31 A | H-3-60 | 100% | 2012-04-20 | 2012-04-20 |  |  |  |  |  |
| H-3-80 |  | Engineer Release Pouring | 1d | 2012-04-02 A | 2012-04-02 A | H-3-70 SS | 100% | 2012-04-20 | 2012-04-20 |  |  |  |  |  |
| H-3-90 |  | R.C footings Pouring works | 1d | 2012-04-04 A | 2012-04-04 A | H-3-70 | 100% | 2012-04-21 | 2012-04-21 |  |  | Cash [87017]; Concrete [155 M3]; Conc Labors [8 h] | 87,017 | 87,017 |

| ID | WBS | Activity | Duration | Start | Finish | Predecessors | Complete | Remaining | Planned start | Planned finish | Total float | Free float | Resources | Cost | Actual cost |
| --- | --- | --- | --- | --- | --- | --- | --- | --- | --- | --- | --- | --- | --- | --- | --- |
|  | 2 | **Ground floor** |  | 2012-04-07 | 2012-04-26 |  |  |  |  |  |  |  |  |  |  |
| H-3-100 |  | Columns form works | 4d | 2012-04-07 A | 2012-04-11 A | H-3-90, AP-H-3-3 | 100% |  | 2012-05-13 | 2012-05-16 |  |  | Cash [35762]; Formwork Labors [23 h] | 35,762 | 35,762 |
| H-3-110 |  | Columns form works ISPECTION | 1d | 2012-04-11 A | 2012-04-11 A | H-3-100 | 100% |  | 2012-05-17 | 2012-05-17 |  |  |  |  |  |
| H-3-120 |  | Columns Steel works | 3d | 2012-04-12 A | 2012-04-15 A | H-3-110 | 100% |  | 2012-05-18 | 2012-05-20 |  |  | Cash [41722]; Steel bars [10 ton]; Steel Labors [40 h] | 41,722 | 41,722 |
| H-3-130 |  | Columns steel works ISPECTION | 1d | 2012-04-15 A | 2012-04-15 A | H-3-120 | 100% |  | 2012-05-21 | 2012-05-21 |  |  |  |  |  |
| H-3-140 |  | Engineer Release Pouring | 1d | 2012-04-15 A | 2012-04-15 A | H-3-130 SS | 100% |  | 2012-04-30 | 2012-04-30 |  |  |  |  |  |
| H-3-150 |  | Columns Pouring works | 1d | 2012-04-16 A | 2012-04-16 A | H-3-130 | 100% |  | 2012-05-22 | 2012-05-22 |  |  | Cash [41722]; Concrete [45 M3]; Conc Labors [5 h] | 41,722 | 41,722 |
| H-3-160 |  | Slab form works | 15d | 2012-04-17 A | 2012-04-22 A | H-3-150, AP-H-3-4 | 100% |  | 2012-05-22 | 2012-06-05 |  |  | Cash [111825]; Slab Formwork [630 m2]; Formwork Labors [105 h] | 111,825 | 111,825 |
| H-3-170 |  | Slab form works inspection | 1d | 2012-04-22 A | 2012-04-22 A | H-3-160 | 100% |  | 2012-06-06 | 2012-06-06 |  |  |  |  |  |
| H-3-180 |  | Slab steel works | 4d | 2012-04-22 A | 2012-04-25 A | H-3-170 | 100% |  | 2012-06-07 | 2012-06-10 |  |  | Cash [130463]; Steel bars [25 ton]; Steel Labors [101 h] | 130,463 | 130,463 |
| H-3-190 |  | Engineer Release Pouring | 1d | 2012-04-25 A | 2012-04-25 A | H-3-200 SS | 100% |  | 2012-04-30 | 2012-04-30 |  |  |  |  |  |
| H-3-200 |  | Slab steel works inspection | 1d | 2012-04-25 A | 2012-04-25 A | H-3-180 | 100% |  | 2012-06-11 | 2012-06-11 |  |  |  |  |  |
| H-3-210 |  | Slab Pouring works | 1d | 2012-04-25 A | 2012-04-26 A | H-3-200 | 100% |  | 2012-06-13 | 2012-06-13 |  |  | Cash [130463]; Concrete [210 M3]; Conc Labors [11 h] | 130,463 | 130,463 |
|  | 3 | **First floor** |  | 2012-04-26 | 2012-05-19 |  |  |  |  |  |  |  |  |  |  |
| H-3-220 |  | Columns form works | 4d | 2012-04-26 A | 2012-04-29 A | H-3-210, AP-H-3-5 | 100% |  | 2012-05-07 | 2012-05-10 |  |  | Cash [19560]; Formwork Labors [20 h] | 19,560 | 19,560 |
| H-3-240 |  | Columns Steel works | 3d | 2012-04-28 A | 2012-05-01 A | H-3-230 | 100% |  | 2012-05-12 | 2012-05-14 |  |  | Cash [22820]; Steel bars [5.5 ton]; Steel Labors [33 h] | 22,820 | 22,820 |
| H-3-230 |  | Columns form works ISPECTION | 1d | 2012-04-29 A | 2012-04-29 A | H-3-220 | 100% |  | 2012-05-07 | 2012-05-08 |  |  |  |  |  |
| H-3-260 |  | Columns steel works ISPECTION | 1d | 2012-05-01 A | 2012-05-01 A | H-3-240 | 100% |  | 2012-05-09 | 2012-05-10 |  |  |  |  |  |
| H-3-270 |  | Engineer Release Pouring | 1d | 2012-05-01 A | 2012-05-01 A | H-3-260 SS | 100% |  | 2012-05-15 | 2012-05-15 |  |  |  |  |  |
| H-3-280 |  | Columns Pouring works | 1d | 2012-05-01 A | 2012-05-03 A | H-3-260 | 100% |  | 2012-05-16 | 2012-05-16 |  |  | Cash [22820]; Concrete [25 M3]; Conc Labors [5 h] | 22,820 | 22,820 |
| H-3-290 |  | Slab form works | 15d | 2012-05-02 A | 2012-05-07 A | H-3-280, AP-H-3-6 | 100% |  | 2012-05-12 | 2012-05-26 |  |  | Cash [111825]; Slab Formwork [630 m2]; Formwork Labors [105 h] | 111,825 | 111,825 |
| H-3-310 |  | Slab form works inspection | 1d | 2012-05-07 A | 2012-05-07 A | H-3-290 | 100% |  | 2012-05-27 | 2012-05-27 |  |  |  |  |  |
| H-3-330 |  | Slab steel works | 4d | 2012-05-07 A | 2012-05-19 | H-3-310 |  | 4d | 2012-05-28 | 2012-05-31 | 149d |  | Cash [130463]; Steel bars [25 ton]; Steel Labors [101 h] | 130,463 |  |
| H-3-340 |  | Engineer Release Pouring | 1d | 2012-05-10 A | 2012-05-10 A | H-3-350 SS | 100% |  | 2012-06-01 | 2012-06-01 |  |  |  |  |  |
| H-3-350 |  | Slab steel works inspection | 1d | 2012-05-10 A | 2012-05-10 A | H-3-330 | 100% |  | 2012-06-01 | 2012-06-01 |  |  |  |  |  |
| H-3-360 |  | Slab Pouring works | 1d | 2012-05-11 A | 2012-05-16 | H-3-350 | 40% | 0.6d | 2012-06-02 | 2012-06-02 | 99.4d | 7.4d | Cash [130463]; Concrete [210 M3]; Conc Labors [11 h] | 130,463 | 52,185.2 |

| ID | WBS | Activity | Duration | Start | Finish | Predecessors | Total float | Free float | Resources | Cost |
| --- | --- | --- | --- | --- | --- | --- | --- | --- | --- | --- |
|  | 4 | **Second floor** |  | 2012-05-24 | 2012-06-28 |  |  |  |  |  |
| H-3-380 |  | Columns form works | 8d | 2012-05-24 | 2012-05-31 | H-3-360, AP-H-3-7 | 92d | 0d | Cash [19560]; Formwork Labors [20 h] | 19,560 |
| H-3-400 |  | Columns form works ISPECTION | 1d | 2012-06-01 | 2012-06-01 | H-3-380 | 92d | 0d |  |  |
| H-3-410 |  | Columns Steel works | 3d | 2012-06-02 | 2012-06-04 | H-3-400 | 92d | 0d | Cash [22820]; Steel bars [6 ton]; Steel Labors [33 h] | 22,820 |
| H-3-420 |  | Columns steel works ISPECTION | 1d | 2012-06-05 | 2012-06-05 | H-3-410 | 92d | 0d |  |  |
| H-3-430 |  | Engineer Release Pouring | 1d | 2012-06-05 | 2012-06-05 | H-3-420 SS | 132d |  |  |  |
| H-3-440 |  | Columns Pouring works | 1d | 2012-06-06 | 2012-06-06 | H-3-420 | 92d | 0d | Cash [22820]; Concrete [25 M3]; Conc Labors [5 h] | 22,820 |
| H-3-450 |  | Slab form works | 15d | 2012-06-07 | 2012-06-21 | H-3-440, AP-H-3-8 | 92d | 0d | Cash [111825]; Slab Formwork [630 m2]; Formwork Labors [105 h] | 111,825 |
| H-3-460 |  | Slab form works inspection | 1d | 2012-06-22 | 2012-06-22 | H-3-450 | 92d | 0d |  |  |
| H-3-470 |  | Slab steel works | 4d | 2012-06-23 | 2012-06-26 | H-3-460 | 92d | 0d | Cash [130463]; Steel bars [25 ton]; Steel Labors [101 h] | 130,463 |
| H-3-480 |  | Engineer Release Pouring | 1d | 2012-06-27 | 2012-06-27 | H-3-490 SS | 110d |  |  |  |
| H-3-490 |  | Slab steel works inspection | 1d | 2012-06-27 | 2012-06-27 | H-3-470 | 92d | 0d |  |  |
| H-3-500 |  | Slab Pouring works | 1d | 2012-06-28 | 2012-06-28 | H-3-490 | 92d | 0d | Cash [130463]; Concrete [210 M3]; Conc Labors [11 h] | 130,463 |
|  | 3 | **Insulation works** |  | 2012-05-16 | 2012-08-17 |  |  |  |  |  |
| H-3-250 |  | Footing insulation | 7d | 2012-05-16 | 2012-05-22 | H-3-160 FS+15d | 131d | 0d | Cash [16530]; Insulation Labors [9 h] | 16,530 |
| H-3-300 |  | Engineer inspection&approval for Footing insulation | 1d | 2012-05-23 | 2012-05-23 | H-3-250 | 131d | 0d |  |  |
| H-3-510 |  | Water proofing membrane | 7d | 2012-06-29 | 2012-07-05 | H-3-500 | 92d | 0d | Cash [136480]; Insulation Labors [35 h] | 136,480 |
| H-3-520 |  | Engineer inspection&approval for water proofing | 1d | 2012-07-06 | 2012-07-06 | H-3-510 | 92d | 33d |  |  |
| H-3-530 |  | Heat insulation | 3d | 2012-08-09 | 2012-08-11 | H-3-520, MT-DD-71 | 59d | 0d | Cash [52360]; Polysterine [770 m2]; Insulation Labors [8 h] | 52,360 |
| H-3-540 |  | Engineer inspection&approval for Heat insulation | 1d | 2012-08-12 | 2012-08-12 | H-3-530 | 59d | 0d |  |  |
| H-3-550 |  | Slopped plain concrete | 3d | 2012-08-13 | 2012-08-15 | H-3-540 | 59d | 0d | Conc Labors [8 h] |  |
| H-3-560 |  | Engineer Release Pouring | 1d | 2012-08-16 | 2012-08-16 | H-3-570 SS | 59d | 0d |  |  |
| H-3-570 |  | Engineer inspection&approval for Slopped P.C | 1d | 2012-08-16 | 2012-08-16 | H-3-550 | 59d | 0d |  |  |
| H-3-580 |  | Slopped P.C Pouring | 1d | 2012-08-17 | 2012-08-17 | H-3-570, H-3-560 | 59d |  | Cash [37730]; Foam Concrete [58 M3]; Conc Labors [8 h] | 37,730 |

| ID | WBS | Activity | Duration | Start | Finish | Predecessors | Complete | Planned start | Planned finish | Total float | Free float | Resources | Cost | Actual cost |
| --- | --- | --- | --- | --- | --- | --- | --- | --- | --- | --- | --- | --- | --- | --- |
|  | B1113 | **Building 4** |  | 2012-03-18 | 2012-08-17 |  |  |  |  |  |  |  |  |  |
|  | 1 | **Plain concrete** |  | 2012-03-18 | 2012-06-11 |  |  |  |  |  |  |  |  |  |
| H-4-10 |  | P.C footings formwork | 5d | 2012-03-18 A | 2012-03-18 A | Z-H4, AP-H-4-1 FS+1d | 100% | 2012-04-28 | 2012-05-02 |  |  | Cash [47188]; Formwork Labors [36 h] | 47,188 | 47,188 |
| H-4-20 |  | Engineer Release Pouring | 1d | 2012-03-18 A | 2012-03-18 A | H-4-10 | 100% | 2012-05-03 | 2012-05-03 |  |  |  |  |  |
| H-4-30 |  | P.C footings concrete pouring | 1d | 2012-03-19 A | 2012-03-19 A | H-4-20 | 100% | 2012-05-04 | 2012-05-04 |  |  | Cash [70782]; Concrete [179 M3]; Conc Labors [9 h] | 70,782 | 70,782 |
| H-4-320 |  | Slab on grade work | 5d | 2012-06-05 | 2012-06-09 | H-4-300 FS+7d |  |  |  | 126d | 0d | Formwork Labors [9 h] |  |  |
| H-4-370 |  | Engineer Release Pouring | 1d | 2012-06-10 | 2012-06-10 | H-4-320 |  |  |  | 126d | 0d |  |  |  |
| H-4-390 |  | Slab on grade Concrete Pouring | 1d | 2012-06-11 | 2012-06-11 | H-4-370 |  |  |  | 126d |  | Cash [84000]; Concrete [90 M3]; Conc Labors [9 h] | 84,000 |  |
|  | 2 | **Reinforced concrete** |  | 2012-03-28 | 2012-07-23 |  |  |  |  |  |  |  |  |  |
|  | 1 | **Foundations** |  | 2012-03-28 | 2012-04-08 |  |  |  |  |  |  |  |  |  |
| H-4-40 |  | R.C footings form work | 7d | 2012-03-28 A | 2012-04-03 A | AP-H-4-2 FS+2d, H-4-30 | 100% | 2012-04-28 | 2012-05-04 |  |  | Cash [57744]; Formwork Labors [48 h] | 57,744 | 57,744 |
| H-4-50 |  | Engineer inspection & approval formwork | 1d | 2012-04-03 A | 2012-04-03 A | H-4-40 | 100% | 2012-05-05 | 2012-05-05 |  |  |  |  |  |
| H-4-60 |  | R.C footings steel works | 7d | 2012-04-04 A | 2012-04-07 A | H-4-50 | 100% | 2012-05-06 | 2012-05-12 |  |  | Cash [67368]; Steel bars [11 ton]; Steel Labors [43 h] | 67,368 | 67,368 |
| H-4-70 |  | Engineer inspection & approval steel work | 1d | 2012-04-07 A | 2012-04-07 A | H-4-60 | 100% | 2012-05-13 | 2012-05-13 |  |  |  |  |  |
| H-4-80 |  | Engineer Release Pouring | 1d | 2012-04-07 A | 2012-04-07 A | H-4-70 SS | 100% | 2012-05-20 | 2012-05-20 |  |  |  |  |  |
| H-4-90 |  | R.C footings Pouring works | 1d | 2012-04-08 A | 2012-04-08 A | H-4-70 | 100% | 2012-05-21 | 2012-05-21 |  |  | Cash [67368]; Concrete [120 M3]; Conc Labors [6 h] | 67,368 | 67,368 |
|  | 2 | **Ground floor** |  | 2012-04-11 | 2012-05-16 |  |  |  |  |  |  |  |  |  |
| H-4-100 |  | Columns form works | 4d | 2012-04-11 A | 2012-04-16 A | H-4-90, AP-H-4-3 | 100% | 2012-05-14 | 2012-05-17 |  |  | Cash [27815]; Formwork Labors [18 h] | 27,815 | 27,815 |
| H-4-110 |  | Columns form works ISPECTION | 1d | 2012-04-15 A | 2012-04-15 A | H-4-100 | 100% | 2012-05-07 | 2012-05-07 |  |  |  |  |  |
| H-4-120 |  | Columns Steel works | 3d | 2012-04-16 A | 2012-04-19 A | H-4-110 | 100% | 2012-05-19 | 2012-05-21 |  |  | Cash [32450]; Steel bars [8 ton]; Steel Labors [31 h] | 32,450 | 32,450 |
| H-4-130 |  | Columns steel works ISPECTION | 1d | 2012-04-19 A | 2012-04-19 A | H-4-120 | 100% | 2012-05-07 | 2012-05-07 |  |  |  |  |  |
| H-4-140 |  | Engineer Release Pouring | 1d | 2012-04-19 A | 2012-04-19 A | H-4-130 SS | 100% | 2012-05-12 | 2012-05-12 |  |  |  |  |  |
| H-4-150 |  | Columns Pouring works | 1d | 2012-04-20 A | 2012-04-20 A | H-4-130 | 100% | 2012-05-31 | 2012-05-31 |  |  | Cash [32450]; Concrete [35 M3]; Conc Labors [4 h] | 32,450 | 32,450 |
| H-4-160 |  | Slab form works | 15d | 2012-04-23 A | 2012-05-06 A | H-4-150, AP-H-4-4 | 100% | 2012-05-12 | 2012-05-26 |  |  | Cash [88750]; Slab Formwork [500 m2]; Formwork Labors [83 h] | 88,750 | 88,750 |
| H-4-180 |  | Slab steel works | 4d | 2012-05-07 A | 2012-05-12 A | H-4-170 | 100% | 2012-05-28 | 2012-05-31 |  |  | Cash [103542]; Steel bars [20 ton]; Steel Labors [80 h] | 103,541.7 | 103,541.7 |
| H-4-170 |  | Slab form works inspection | 1d | 2012-05-09 A | 2012-05-09 A | H-4-160 | 100% | 2012-05-27 | 2012-05-27 |  |  |  |  |  |
| H-4-200 |  | Slab steel works inspection | 1d | 2012-05-12 A | 2012-05-12 A | H-4-180 | 100% | 2012-06-01 | 2012-06-01 |  |  |  |  |  |
| H-4-190 |  | Engineer Release Pouring | 1d | 2012-05-16 | 2012-05-16 | H-4-200 SS |  |  |  | 152d |  |  |  |  |
| H-4-210 |  | Slab Pouring works | 1d | 2012-05-16 | 2012-05-16 | H-4-200 |  |  |  | 67d | 0d | Cash [103542]; Concrete [166.7 M3]; Conc Labors [8 h] | 103,541.7 |  |

| ID | WBS | Activity | Duration | Start | Finish | Predecessors | Total float | Free float | Resources | Cost |
| --- | --- | --- | --- | --- | --- | --- | --- | --- | --- | --- |
|  | 3 | **First floor** |  | 2012-05-17 | 2012-06-17 |  |  |  |  |  |
| H-4-220 |  | Columns form works | 4d | 2012-05-17 | 2012-05-20 | H-4-210, AP-H-4-5 | 67d | 0d | Cash [15648]; Formwork Labors [10 h] | 15,648 |
| H-4-230 |  | Columns form works ISPECTION | 1d | 2012-05-21 | 2012-05-21 | H-4-220 | 67d | 0d |  |  |
| H-4-240 |  | Columns Steel works | 3d | 2012-05-22 | 2012-05-24 | H-4-230 | 67d | 0d | Cash [18256]; Steel bars [2.6 ton]; Steel Labors [16 h] | 18,256 |
| H-4-260 |  | Columns steel works ISPECTION | 1d | 2012-05-25 | 2012-05-25 | H-4-240 | 67d | 0d |  |  |
| H-4-270 |  | Engineer Release Pouring | 1d | 2012-05-25 | 2012-05-25 | H-4-260 SS | 143d |  |  |  |
| H-4-280 |  | Columns Pouring works | 1d | 2012-05-26 | 2012-05-26 | H-4-260 | 67d | 0d | Cash [18256]; Concrete [12 M3]; Conc Labors [2 h] | 18,256 |
| H-4-290 |  | Slab form works | 15d | 2012-05-27 | 2012-06-10 | H-4-280, AP-H-4-6 | 67d | 0d | Cash [88750]; Slab Formwork [500 m2]; Formwork Labors [83 h] | 88,750 |
| H-4-310 |  | Slab form works inspection | 1d | 2012-06-11 | 2012-06-11 | H-4-290 | 67d | 0d |  |  |
| H-4-330 |  | Slab steel works | 4d | 2012-06-12 | 2012-06-15 | H-4-310 | 67d | 0d | Cash [103542]; Steel bars [20 ton]; Steel Labors [80 h] | 103,541.7 |
| H-4-340 |  | Engineer Release Pouring | 1d | 2012-06-16 | 2012-06-16 | H-4-350 SS | 121d |  |  |  |
| H-4-350 |  | Slab steel works inspection | 1d | 2012-06-16 | 2012-06-16 | H-4-330 | 67d | 0d |  |  |
| H-4-360 |  | Slab Pouring works | 1d | 2012-06-17 | 2012-06-17 | H-4-350 | 67d | 0d | Cash [103542]; Concrete [166.7 M3]; Conc Labors [8 h] | 103,541.7 |
|  | 4 | **Second floor** |  | 2012-06-18 | 2012-07-23 |  |  |  |  |  |
| H-4-380 |  | Columns form works | 8d | 2012-06-18 | 2012-06-25 | H-4-360, AP-H-4-7 | 67d | 0d | Cash [15648]; Formwork Labors [10 h] | 15,648 |
| H-4-400 |  | Columns form works ISPECTION | 1d | 2012-06-26 | 2012-06-26 | H-4-380 | 67d | 0d |  |  |
| H-4-410 |  | Columns Steel works | 3d | 2012-06-27 | 2012-06-29 | H-4-400 | 67d | 0d | Cash [18256]; Steel bars [2.6 ton]; Steel Labors [16 h] | 18,256 |
| H-4-420 |  | Columns steel works ISPECTION | 1d | 2012-06-30 | 2012-06-30 | H-4-410 | 67d | 0d |  |  |
| H-4-430 |  | Engineer Release Pouring | 1d | 2012-06-30 | 2012-06-30 | H-4-420 SS | 107d |  |  |  |
| H-4-440 |  | Columns Pouring works | 1d | 2012-07-01 | 2012-07-01 | H-4-420 | 67d | 0d | Cash [18256]; Concrete [12 M3]; Conc Labors [2 h] | 18,256 |
| H-4-450 |  | Slab form works | 15d | 2012-07-02 | 2012-07-16 | H-4-440, AP-H-4-8 | 67d | 0d | Cash [88750]; Slab Formwork [500 m2]; Formwork Labors [83 h] | 88,750 |
| H-4-460 |  | Slab form works inspection | 1d | 2012-07-17 | 2012-07-17 | H-4-450 | 67d | 0d |  |  |
| H-4-470 |  | Slab steel works | 4d | 2012-07-18 | 2012-07-21 | H-4-460 | 67d | 0d | Cash [103542]; Steel bars [20 ton]; Steel Labors [80 h] | 103,541.7 |
| H-4-480 |  | Engineer Release Pouring | 1d | 2012-07-22 | 2012-07-22 | H-4-490 SS | 85d |  |  |  |
| H-4-490 |  | Slab steel works inspection | 1d | 2012-07-22 | 2012-07-22 | H-4-470 | 67d | 0d |  |  |
| H-4-500 |  | Slab Pouring works | 1d | 2012-07-23 | 2012-07-23 | H-4-490 | 67d | 0d | Cash [103542]; Concrete [166.7 M3]; Conc Labors [8 h] | 103,541.7 |

| ID | WBS | Activity | Duration | Start | Finish | Predecessors | Complete | Planned start | Planned finish | Total float | Free float | Resources | Cost | Actual cost |
| --- | --- | --- | --- | --- | --- | --- | --- | --- | --- | --- | --- | --- | --- | --- |
|  | 3 | **Insulation works** |  | 2012-05-21 | 2012-08-17 |  |  |  |  |  |  |  |  |  |
| H-4-250 |  | Footing insulation | 7d | 2012-05-21 | 2012-05-27 | H-4-160 FS+15d |  |  |  | 126d | 0d | Cash [12920]; Insulation Labors [7 h] | 12,920 |  |
| H-4-300 |  | Engineer inspection&approval for Footing insulation | 1d | 2012-05-28 | 2012-05-28 | H-4-250 |  |  |  | 126d | 0d |  |  |  |
| H-4-510 |  | Water proofing membrane | 7d | 2012-07-24 | 2012-07-30 | H-4-500 |  |  |  | 67d | 0d | Cash [106500]; Insulation Labors [27 h] | 106,500 |  |
| H-4-520 |  | Engineer inspection&approval for water proofing | 1d | 2012-07-31 | 2012-07-31 | H-4-510 |  |  |  | 67d | 8d |  |  |  |
| H-4-530 |  | Heat insulation | 3d | 2012-08-09 | 2012-08-11 | H-4-520, MT-DD-71 |  |  |  | 59d | 0d | Cash [40800]; Polysterine [600 m2]; Insulation Labors [6 h] | 40,800 |  |
| H-4-540 |  | Engineer inspection&approval for Heat insulation | 1d | 2012-08-12 | 2012-08-12 | H-4-530 |  |  |  | 59d | 0d |  |  |  |
| H-4-550 |  | Slopped plain concrete | 3d | 2012-08-13 | 2012-08-15 | H-4-540 |  |  |  | 59d | 0d | Conc Labors [6 h] |  |  |
| H-4-560 |  | Engineer Release Pouring | 1d | 2012-08-16 | 2012-08-16 | H-4-570 SS |  |  |  | 60d |  |  |  |  |
| H-4-570 |  | Engineer inspection&approval for Slopped P.C | 1d | 2012-08-16 | 2012-08-16 | H-4-550 |  |  |  | 59d | 0d |  |  |  |
| H-4-580 |  | Slopped P.C Pouring | 1d | 2012-08-17 | 2012-08-17 | H-4-570 |  |  |  | 59d |  | Cash [29400]; Foam Concrete [45 M3]; Conc Labors [6 h] | 29,400 |  |
|  | B1114 | **Building 5** |  | 2012-03-18 | 2012-08-17 |  |  |  |  |  |  |  |  |  |
|  | 1 | **Plain concrete** |  | 2012-03-18 | 2012-06-06 |  |  |  |  |  |  |  |  |  |
| H-5-10 |  | P.C footings formwork | 5d | 2012-03-18 A | 2012-03-18 A | Z-H5, AP-H-5&6-1 FS+1d | 100% | 2012-04-28 | 2012-05-02 |  |  | Cash [80404]; Formwork Labors [61 h] | 80,404 | 80,404 |
| H-5-20 |  | Engineer Release Pouring | 1d | 2012-03-18 A | 2012-03-18 A | H-5-10 | 100% | 2012-05-03 | 2012-05-03 |  |  |  |  |  |
| H-5-30 |  | P.C footings concrete pouring | 1d | 2012-03-20 A | 2012-03-20 A | H-5-20 | 100% | 2012-05-04 | 2012-05-04 |  |  | Cash [120606]; Concrete [305 M3]; Conc Labors [15 h] | 120,606 | 120,606 |
| H-5-320 |  | Slab on grade work | 5d | 2012-05-31 | 2012-06-04 | H-5-300 FS+7d |  |  |  | 131d | 0d | Formwork Labors [15 h] |  |  |
| H-5-370 |  | Engineer Release Pouring | 1d | 2012-06-05 | 2012-06-05 | H-5-320 |  |  |  | 131d | 0d |  |  |  |
| H-5-390 |  | Slab on grade Concrete Pouring | 1d | 2012-06-06 | 2012-06-06 | H-5-370 |  |  |  | 131d |  | Cash [140000]; Concrete [150 M3]; Conc Labors [15 h] | 140,000 |  |
|  | 2 | **Reinforced concrete** |  | 2012-03-25 | 2012-06-28 |  |  |  |  |  |  |  |  |  |
|  | 1 | **Foundations** |  | 2012-03-25 | 2012-04-30 |  |  |  |  |  |  |  |  |  |
| H-5-40 |  | R.C footings form work | 7d | 2012-03-25 A | 2012-03-30 A | AP-H-5&6-2 FS+2d, H-5-30 | 100% | 2012-04-28 | 2012-05-04 |  |  | Cash [98646]; Formwork Labors [82 h] | 98,646 | 98,646 |
| H-5-50 |  | Engineer inspection & approval formwork | 1d | 2012-03-30 A | 2012-04-30 A | H-5-40 | 100% | 2012-05-05 | 2012-05-05 |  |  |  |  |  |
| H-5-60 |  | R.C footings steel works | 7d | 2012-03-31 A | 2012-04-03 A | H-5-50 | 100% | 2012-05-06 | 2012-05-12 |  |  | Cash [115087]; Steel bars [18.45 ton]; Steel Labors [74 h] | 115,087 | 115,087 |
| H-5-70 |  | Engineer inspection & approval steel work | 1d | 2012-04-03 A | 2012-04-03 A | H-5-60 | 100% | 2012-05-13 | 2012-05-13 |  |  |  |  |  |
| H-5-80 |  | Engineer Release Pouring | 1d | 2012-04-03 A | 2012-04-03 A | H-5-70 SS | 100% | 2012-05-13 | 2012-05-13 |  |  |  |  |  |
| H-5-90 |  | R.C footings Pouring works | 1d | 2012-04-04 A | 2012-04-04 A | H-5-70 | 100% | 2012-05-21 | 2012-05-21 |  |  | Cash [115087]; Concrete [205 M3]; Conc Labors [10 h] | 115,087 | 115,087 |

| ID | WBS | Activity | Duration | Start | Finish | Predecessors | Complete | Remaining | Planned start | Planned finish | Total float | Free float | Resources | Cost | Actual cost |
| --- | --- | --- | --- | --- | --- | --- | --- | --- | --- | --- | --- | --- | --- | --- | --- |
|  | 2 | **Ground floor** |  | 2012-04-06 | 2012-04-25 |  |  |  |  |  |  |  |  |  |  |
| H-5-100 |  | Columns form works | 4d | 2012-04-06 A | 2012-04-10 A | H-5-90, AP-H-5&6-3 | 100% |  | 2012-05-14 | 2012-05-17 |  |  | Cash [47682]; Formwork Labors [30 h] | 47,682 | 47,682 |
| H-5-110 |  | Columns form works ISPECTION | 1d | 2012-04-10 A | 2012-04-10 A | H-5-100 | 100% |  | 2012-05-18 | 2012-05-18 |  |  |  |  |  |
| H-5-120 |  | Columns Steel works | 3d | 2012-04-10 A | 2012-04-13 A | H-5-110 | 100% |  | 2012-05-19 | 2012-05-21 |  |  | Cash [55629]; Steel bars [13.2 ton]; Steel Labors [53 h] | 55,629 | 55,629 |
| H-5-130 |  | Columns steel works ISPECTION | 1d | 2012-04-13 A | 2012-04-13 A | H-5-120 | 100% |  | 2012-05-22 | 2012-05-22 |  |  |  |  |  |
| H-5-140 |  | Engineer Release Pouring | 1d | 2012-04-14 A | 2012-04-14 A | H-5-130 SS | 100% |  | 2012-05-22 | 2012-05-22 |  |  |  |  |  |
| H-5-150 |  | Columns Pouring works | 1d | 2012-04-14 A | 2012-04-14 A | H-5-130 | 100% |  | 2012-05-31 | 2012-05-31 |  |  | Cash [55629]; Concrete [60 M3]; Conc Labors [6 h] | 55,629 | 55,629 |
| H-5-160 |  | Slab form works | 15d | 2012-04-15 A | 2012-04-19 A | H-5-150, AP-H-5&6-4 | 100% |  | 2012-05-23 | 2012-06-06 |  |  | Cash [149100]; Slab Formwork [840 m2]; Formwork Labors [140 h] | 149,100 | 149,100 |
| H-5-170 |  | Slab form works inspection | 1d | 2012-04-19 A | 2012-04-19 A | H-5-160 | 100% |  | 2012-06-07 | 2012-06-07 |  |  |  |  |  |
| H-5-180 |  | Slab steel works | 4d | 2012-04-19 A | 2012-04-22 A | H-5-170 | 100% |  | 2012-06-08 | 2012-06-11 |  |  | Cash [173950]; Steel bars [33.6 ton]; Steel Labors [134 h] | 173,950 | 173,950 |
| H-5-200 |  | Slab steel works inspection | 1d | 2012-04-22 A | 2012-04-22 A | H-5-180 | 100% |  | 2012-06-12 | 2012-06-12 |  |  |  |  |  |
| H-5-190 |  | Engineer Release Pouring | 1d | 2012-04-23 A | 2012-04-23 A | H-5-200 SS | 100% |  | 2012-05-07 | 2012-05-07 |  |  |  |  |  |
| H-5-210 |  | Slab Pouring works | 1d | 2012-04-23 A | 2012-04-25 A | H-5-200 | 100% |  | 2012-06-22 | 2012-06-22 |  |  | Cash [173950]; Concrete [280 M3]; Conc Labors [14 h] | 173,950 | 173,950 |
|  | 3 | **First floor** |  | 2012-04-25 | 2012-05-17 |  |  |  |  |  |  |  |  |  |  |
| H-5-220 |  | Columns form works | 4d | 2012-04-25 A | 2012-04-29 A | H-5-210, AP-H-5&6-5 | 100% |  | 2012-05-07 | 2012-05-11 |  |  | Cash [27384]; Formwork Labors [28 h] | 27,384 | 27,384 |
| H-5-230 |  | Columns form works ISPECTION | 1d | 2012-04-25 A | 2012-04-25 A | H-5-220 | 100% |  | 2012-05-11 | 2012-05-12 |  |  |  |  |  |
| H-5-240 |  | Columns Steel works | 3d | 2012-04-30 A | 2012-05-02 A | H-5-230 | 100% |  | 2012-05-12 | 2012-05-15 |  |  | Cash [31948]; Steel bars [7.7 ton]; Steel Labors [46 h] | 31,948 | 31,948 |
| H-5-260 |  | Columns steel works ISPECTION | 1d | 2012-05-02 A | 2012-05-02 A | H-5-240 | 100% |  | 2012-05-15 | 2012-05-16 |  |  |  |  |  |
| H-5-270 |  | Engineer Release Pouring | 1d | 2012-05-03 A | 2012-05-03 A | H-5-260 SS | 100% |  | 2012-05-12 | 2012-05-12 |  |  |  |  |  |
| H-5-280 |  | Columns Pouring works | 1d | 2012-05-03 A | 2012-05-03 A | H-5-260 | 100% |  | 2012-05-12 | 2012-05-12 |  |  | Cash [31948]; Concrete [35 M3]; Conc Labors [7 h] | 31,948 | 31,948 |
| H-5-290 |  | Slab form works | 15d | 2012-05-04 A | 2012-05-09 A | H-5-280, AP-H-5&6-6 | 100% |  | 2012-05-13 | 2012-05-27 |  |  | Cash [149100]; Slab Formwork [840 m2]; Formwork Labors [140 h] | 149,100 | 149,100 |
| H-5-330 |  | Slab steel works | 4d | 2012-05-08 A | 2012-05-17 | H-5-310 | 50% | 2d | 2012-05-29 | 2012-06-01 | 151d |  | Cash [173950]; Steel bars [33.6 ton]; Steel Labors [134 h] | 173,950 | 86,975 |
| H-5-310 |  | Slab form works inspection | 1d | 2012-05-09 A | 2012-05-09 A | H-5-290 | 100% |  | 2012-05-28 | 2012-05-28 |  |  |  |  |  |
| H-5-340 |  | Engineer Release Pouring | 1d | 2012-05-11 A | 2012-05-11 A | H-5-350 SS | 100% |  | 2012-06-02 | 2012-06-02 |  |  |  |  |  |
| H-5-350 |  | Slab steel works inspection | 1d | 2012-05-11 A | 2012-05-11 A | H-5-330 | 100% |  | 2012-06-02 | 2012-06-02 |  |  |  |  |  |
| H-5-360 |  | Slab Pouring works | 1d | 2012-05-11 A | 2012-05-16 | H-5-350 | 40% | 0.6d | 2012-06-03 | 2012-06-03 | 99.4d | 7.4d | Cash [173950]; Concrete [280 M3]; Conc Labors [14 h] | 173,950 | 69,580 |

| ID | WBS | Activity | Duration | Start | Finish | Predecessors | Total float | Free float | Resources | Cost |
| --- | --- | --- | --- | --- | --- | --- | --- | --- | --- | --- |
|  | 4 | **Second floor** |  | 2012-05-24 | 2012-06-28 |  |  |  |  |  |
| H-5-380 |  | Columns form works | 8d | 2012-05-24 | 2012-05-31 | H-5-360, AP-H-5&6-7 | 92d | 0d | Cash [27384]; Formwork Labors [28 h] | 27,384 |
| H-5-400 |  | Columns form works ISPECTION | 1d | 2012-06-01 | 2012-06-01 | H-5-380 | 92d | 0d |  |  |
| H-5-410 |  | Columns Steel works | 3d | 2012-06-02 | 2012-06-04 | H-5-400 | 92d | 0d | Cash [31948]; Steel bars [7.7 ton]; Steel Labors [46 h] | 31,948 |
| H-5-420 |  | Columns steel works ISPECTION | 1d | 2012-06-05 | 2012-06-05 | H-5-410 | 92d | 0d |  |  |
| H-5-430 |  | Engineer Release Pouring | 1d | 2012-06-05 | 2012-06-05 | H-5-420 SS | 132d |  |  |  |
| H-5-440 |  | Columns Pouring works | 1d | 2012-06-06 | 2012-06-06 | H-5-420 | 92d | 0d | Cash [31948]; Concrete [35 M3]; Conc Labors [7 h] | 31,948 |
| H-5-450 |  | Slab form works | 15d | 2012-06-07 | 2012-06-21 | H-5-440, AP-H-5&6-8 | 92d | 0d | Cash [149100]; Slab Formwork [840 m2]; Formwork Labors [140 h] | 149,100 |
| H-5-460 |  | Slab form works inspection | 1d | 2012-06-22 | 2012-06-22 | H-5-450 | 92d | 0d |  |  |
| H-5-470 |  | Slab steel works | 4d | 2012-06-23 | 2012-06-26 | H-5-460 | 92d | 0d | Cash [173950]; Steel bars [33.6 ton]; Steel Labors [134 h] | 173,950 |
| H-5-480 |  | Engineer Release Pouring | 1d | 2012-06-27 | 2012-06-27 | H-5-490 SS | 110d |  |  |  |
| H-5-490 |  | Slab steel works inspection | 1d | 2012-06-27 | 2012-06-27 | H-5-470 | 92d | 0d |  |  |
| H-5-500 |  | Slab Pouring works | 1d | 2012-06-28 | 2012-06-28 | H-5-490 | 92d | 0d | Cash [173950]; Concrete [280 M3]; Conc Labors [14 h] | 173,950 |
|  | 3 | **Insulation works** |  | 2012-05-16 | 2012-08-17 |  |  |  |  |  |
| H-5-250 |  | Footing insulation | 7d | 2012-05-16 | 2012-05-22 | H-5-160 FS+15d | 131d | 0d | Cash [22800]; Insulation Labors [12 h] | 22,800 |
| H-5-300 |  | Engineer inspection&approval for Footing insulation | 1d | 2012-05-23 | 2012-05-23 | H-5-250 | 131d | 0d |  |  |
| H-5-510 |  | Water proofing membrane | 7d | 2012-06-29 | 2012-07-05 | H-5-500 | 92d | 0d | Cash [181400]; Insulation Labors [46 h] | 181,400 |
| H-5-520 |  | Engineer inspection&approval for water proofing | 1d | 2012-07-06 | 2012-07-06 | H-5-510 | 92d | 33d |  |  |
| H-5-530 |  | Heat insulation | 3d | 2012-08-09 | 2012-08-11 | H-5-520, MT-DD-71 | 59d | 0d | Cash [68000]; Polysterine [1000 m2]; Insulation Labors [10 h] | 68,000 |
| H-5-540 |  | Engineer inspection&approval for Heat insulation | 1d | 2012-08-12 | 2012-08-12 | H-5-530 | 59d | 0d |  |  |
| H-5-550 |  | Slopped plain concrete | 3d | 2012-08-13 | 2012-08-15 | H-5-540 | 59d | 0d | Conc Labors [10 h] |  |
| H-5-560 |  | Engineer Release Pouring | 1d | 2012-08-16 | 2012-08-16 | H-5-570 SS | 60d |  |  |  |
| H-5-570 |  | Engineer inspection&approval for Slopped P.C | 1d | 2012-08-16 | 2012-08-16 | H-5-550 | 59d | 0d |  |  |
| H-5-580 |  | Slopped P.C Pouring | 1d | 2012-08-17 | 2012-08-17 | H-5-570 | 59d |  | Cash [49000]; Foam Concrete [75 M3]; Conc Labors [10 h] | 49,000 |

| ID | WBS | Activity | Duration | Start | Finish | Predecessors | Complete | Planned start | Planned finish | Total float | Free float | Resources | Cost | Actual cost |
| --- | --- | --- | --- | --- | --- | --- | --- | --- | --- | --- | --- | --- | --- | --- |
|  | B1115 | **Building 6** |  | 2012-03-18 | 2012-08-17 |  |  |  |  |  |  |  |  |  |
|  | 1 | **Plain concrete** |  | 2012-03-18 | 2012-06-06 |  |  |  |  |  |  |  |  |  |
| H-6-10 |  | P.C footings formwork | 5d | 2012-03-18 A | 2012-03-22 A | Z-H6, AP-H-5&6-1 FS+1d | 100% | 2012-04-28 | 2012-05-02 |  |  | Cash [44420]; Formwork Labors [34 h] | 44,420 | 44,420 |
| H-6-20 |  | Engineer Release Pouring | 1d | 2012-03-22 A | 2012-03-22 A | H-6-10 | 100% | 2012-05-03 | 2012-05-03 |  |  |  |  |  |
| H-6-30 |  | P.C footings concrete pouring | 1d | 2012-03-27 A | 2012-03-27 A | H-6-20 | 100% | 2012-05-04 | 2012-05-04 |  |  | Cash [66630]; Concrete [168.5 M3]; Conc Labors [8 h] | 66,630 | 66,630 |
| H-6-320 |  | Slab on grade work | 5d | 2012-05-31 | 2012-06-04 | H-6-300 FS+7d |  |  |  | 131d | 0d | Formwork Labors [8 h] |  |  |
| H-6-370 |  | Engineer Release Pouring | 1d | 2012-06-05 | 2012-06-05 | H-6-320 |  |  |  | 131d | 0d |  |  |  |
| H-6-390 |  | Slab on grade Concrete Pouring | 1d | 2012-06-06 | 2012-06-06 | H-6-370 |  |  |  | 131d |  | Cash [78400]; Concrete [84 M3]; Conc Labors [8 h] | 78,400 |  |
|  | 2 | **Reinforced concrete** |  | 2012-04-04 | 2012-06-28 |  |  |  |  |  |  |  |  |  |
|  | 1 | **Foundations** |  | 2012-04-04 | 2012-04-15 |  |  |  |  |  |  |  |  |  |
| H-6-40 |  | R.C footings form work | 7d | 2012-04-04 A | 2012-04-09 A | AP-H-5&6-2 FS+2d, H-6-30 | 100% | 2012-04-28 | 2012-05-04 |  |  | Cash [55338]; Formwork Labors [46 h] | 55,338 | 55,338 |
| H-6-50 |  | Engineer inspection & approval formwork | 1d | 2012-04-09 A | 2012-04-09 A | H-6-40 | 100% | 2012-05-05 | 2012-05-05 |  |  |  |  |  |
| H-6-60 |  | R.C footings steel works | 7d | 2012-04-10 A | 2012-04-13 A | H-6-50 | 100% | 2012-05-06 | 2012-05-12 |  |  | Cash [64561]; Steel bars [10.35 ton]; Steel Labors [41 h] | 64,561 | 64,561 |
| H-6-70 |  | Engineer inspection & approval steel work | 1d | 2012-04-13 A | 2012-04-13 A | H-6-60 | 100% | 2012-05-13 | 2012-05-13 |  |  |  |  |  |
| H-6-80 |  | Engineer Release Pouring | 1d | 2012-04-13 A | 2012-04-13 A | H-6-70 SS | 100% | 2012-05-13 | 2012-05-13 |  |  |  |  |  |
| H-6-90 |  | R.C footings Pouring works | 1d | 2012-04-14 A | 2012-04-15 A | H-6-70 | 100% | 2012-05-21 | 2012-05-21 |  |  | Cash [64561]; Concrete [115 M3]; Conc Labors [6 h] | 64,561 | 64,561 |
|  | 2 | **Ground floor** |  | 2012-04-15 | 2012-05-05 |  |  |  |  |  |  |  |  |  |
| H-6-100 |  | Columns form works | 4d | 2012-04-15 A | 2012-04-20 A | H-6-90, AP-H-5&6-3 | 100% | 2012-05-14 | 2012-05-17 |  |  | Cash [25430]; Formwork Labors [16 h] | 25,430 | 25,430 |
| H-6-110 |  | Columns form works ISPECTION | 1d | 2012-04-19 A | 2012-04-19 A | H-6-100 | 100% | 2012-05-07 | 2012-05-07 |  |  |  |  |  |
| H-6-120 |  | Columns Steel works | 3d | 2012-04-20 A | 2012-04-23 A | H-6-110 | 100% | 2012-05-19 | 2012-05-21 |  |  | Cash [29669]; Steel bars [7 ton]; Steel Labors [28 h] | 29,669 | 29,669 |
| H-6-130 |  | Columns steel works ISPECTION | 1d | 2012-04-23 A | 2012-04-23 A | H-6-120 | 100% | 2012-05-08 | 2012-05-08 |  |  |  |  |  |
| H-6-140 |  | Engineer Release Pouring | 1d | 2012-04-23 A | 2012-04-23 A | H-6-130 SS | 100% | 2012-05-07 | 2012-05-07 |  |  |  |  |  |
| H-6-150 |  | Columns Pouring works | 1d | 2012-04-24 A | 2012-04-24 A | H-6-130 | 100% | 2012-05-31 | 2012-05-31 |  |  | Cash [29669]; Concrete [32 M3]; Conc Labors [3 h] | 29,669 | 29,669 |
| H-6-160 |  | Slab form works | 15d | 2012-04-25 A | 2012-04-29 A | H-6-150, AP-H-5&6-4 | 100% | 2012-05-07 | 2012-05-22 |  |  | Cash [73640]; Slab Formwork [400 m2]; Formwork Labors [67 h] | 73,640 | 73,640 |
| H-6-170 |  | Slab form works inspection | 1d | 2012-04-29 A | 2012-04-29 A | H-6-160 | 100% | 2012-05-22 | 2012-05-23 |  |  |  |  |  |
| H-6-180 |  | Slab steel works | 4d | 2012-04-29 A | 2012-05-02 A | H-6-170 | 100% | 2012-05-23 | 2012-05-27 |  |  | Cash [85913.3]; Steel bars [16 ton]; Steel Labors [64 h] | 85,913.3 | 85,913.3 |
| H-6-190 |  | Engineer Release Pouring | 1d | 2012-05-02 A | 2012-05-02 A | H-6-200 SS | 100% | 2012-05-27 | 2012-05-28 |  |  |  |  |  |
| H-6-200 |  | Slab steel works inspection | 1d | 2012-05-02 A | 2012-05-02 A | H-6-180 | 100% | 2012-05-27 | 2012-05-28 |  |  |  |  |  |
| H-6-210 |  | Slab Pouring works | 1d | 2012-05-03 A | 2012-05-05 A | H-6-200 | 100% | 2012-05-28 | 2012-05-29 |  |  | Cash [85913.3]; Concrete [133.3 M3]; Conc Labors [7 h] | 85,913.3 | 85,913.3 |

| ID | WBS | Activity | Duration | Start | Finish | Predecessors | Complete | Remaining | Planned start | Planned finish | Total float | Free float | Resources | Cost | Actual cost |
| --- | --- | --- | --- | --- | --- | --- | --- | --- | --- | --- | --- | --- | --- | --- | --- |
|  | 3 | **First floor** |  | 2012-05-06 | 2012-05-21 |  |  |  |  |  |  |  |  |  |  |
| H-6-220 |  | Columns form works | 4d | 2012-05-06 A | 2012-05-09 A | H-6-210, AP-H-5&6-5 | 100% |  | 2012-05-12 | 2012-05-16 |  |  | Cash [11736]; Formwork Labors [8 h] | 11,736 | 11,736 |
| H-6-230 |  | Columns form works ISPECTION | 1d | 2012-05-09 A | 2012-05-09 A | H-6-220 | 100% |  | 2012-05-16 | 2012-05-17 |  |  |  |  |  |
| H-6-240 |  | Columns Steel works | 3d | 2012-05-10 A | 2012-05-16 | H-6-230 | 90% | 0.3d | 2012-05-17 | 2012-05-20 | 151.7d | 0d | Cash [13692]; Steel bars [3.3 ton]; Steel Labors [13 h] | 13,692 | 12,322.8 |
| H-6-280 |  | Columns Pouring works | 1d | 2012-05-11 A | 2012-05-16 | H-6-260 | 70% | 0.3d | 2012-05-17 | 2012-05-18 | 152.7d |  | Cash [13692]; Concrete [15 M3]; Conc Labors [2 h] | 13,692 | 9,584.4 |
| H-6-290 |  | Slab form works | 15d | 2012-05-12 A | 2012-05-20 | H-6-280, AP-H-5&6-6 | 70% | 4.5d | 2012-05-18 | 2012-06-02 | 147.5d | 0d | Cash [73640]; Slab Formwork [400 m2]; Formwork Labors [67 h] | 73,640 | 51,548 |
| H-6-330 |  | Slab steel works | 4d | 2012-05-13 A | 2012-05-17 | H-6-310 | 50% | 2d | 2012-06-03 | 2012-06-07 | 96d | 0d | Cash [85913.3]; Steel bars [16 ton]; Steel Labors [64 h] | 85,913.3 | 42,956.65 |
| H-6-260 |  | Columns steel works ISPECTION | 1d | 2012-05-16 | 2012-05-17 | H-6-240 |  |  |  |  | 151.7d | 0d |  |  |  |
| H-6-270 |  | Engineer Release Pouring | 1d | 2012-05-16 | 2012-05-17 | H-6-260 SS |  |  |  |  | 151.7d |  |  |  |  |
| H-6-340 |  | Engineer Release Pouring | 1d | 2012-05-18 | 2012-05-18 | H-6-350 SS |  |  |  |  | 150d |  |  |  |  |
| H-6-350 |  | Slab steel works inspection | 1d | 2012-05-18 | 2012-05-18 | H-6-330 |  |  |  |  | 96d | 0d |  |  |  |
| H-6-360 |  | Slab Pouring works | 1d | 2012-05-19 | 2012-05-19 | H-6-350 |  |  |  |  | 96d | 4d | Cash [85913.3]; Concrete [133.3 M3]; Conc Labors [7 h] | 85,913.3 |  |
| H-6-310 |  | Slab form works inspection | 1d | 2012-05-20 | 2012-05-21 | H-6-290 |  |  |  |  | 147.5d |  |  |  |  |
|  | 4 | **Second floor** |  | 2012-05-24 | 2012-06-28 |  |  |  |  |  |  |  |  |  |  |
| H-6-380 |  | Columns form works | 8d | 2012-05-24 | 2012-05-31 | H-6-360, AP-H-5&6-7 |  |  |  |  | 92d | 0d | Cash [11736]; Formwork Labors [8 h] | 11,736 |  |
| H-6-400 |  | Columns form works ISPECTION | 1d | 2012-06-01 | 2012-06-01 | H-6-380 |  |  |  |  | 92d | 0d |  |  |  |
| H-6-410 |  | Columns Steel works | 3d | 2012-06-02 | 2012-06-04 | H-6-400 |  |  |  |  | 92d | 0d | Cash [13692]; Steel bars [3.3 ton]; Steel Labors [13 h] | 13,692 |  |
| H-6-420 |  | Columns steel works ISPECTION | 1d | 2012-06-05 | 2012-06-05 | H-6-410 |  |  |  |  | 92d | 0d |  |  |  |
| H-6-430 |  | Engineer Release Pouring | 1d | 2012-06-05 | 2012-06-05 | H-6-420 SS |  |  |  |  | 132d |  |  |  |  |
| H-6-440 |  | Columns Pouring works | 1d | 2012-06-06 | 2012-06-06 | H-6-420 |  |  |  |  | 92d | 0d | Cash [13692]; Concrete [15 M3]; Conc Labors [2 h] | 13,692 |  |
| H-6-450 |  | Slab form works | 15d | 2012-06-07 | 2012-06-21 | H-6-440, AP-H-5&6-8 |  |  |  |  | 92d | 0d | Cash [73640]; Slab Formwork [400 m2]; Formwork Labors [67 h] | 73,640 |  |
| H-6-460 |  | Slab form works inspection | 1d | 2012-06-22 | 2012-06-22 | H-6-450 |  |  |  |  | 92d | 0d |  |  |  |
| H-6-470 |  | Slab steel works | 4d | 2012-06-23 | 2012-06-26 | H-6-460 |  |  |  |  | 92d | 0d | Cash [85913.3]; Steel bars [16 ton]; Steel Labors [64 h] | 85,913.3 |  |
| H-6-480 |  | Engineer Release Pouring | 1d | 2012-06-27 | 2012-06-27 | H-6-490 SS |  |  |  |  | 110d |  |  |  |  |
| H-6-490 |  | Slab steel works inspection | 1d | 2012-06-27 | 2012-06-27 | H-6-470 |  |  |  |  | 92d | 0d |  |  |  |
| H-6-500 |  | Slab Pouring works | 1d | 2012-06-28 | 2012-06-28 | H-6-490 |  |  |  |  | 92d | 0d | Cash [85913.3]; Concrete [133.3 M3]; Conc Labors [7 h] | 85,913.3 |  |

| ID | WBS | Activity | Duration | Start | Finish | Predecessors | Total float | Free float | Resources | Cost |
| --- | --- | --- | --- | --- | --- | --- | --- | --- | --- | --- |
|  | 3 | **Insulation works** |  | 2012-05-16 | 2012-08-17 |  |  |  |  |  |
| H-6-250 |  | Footing insulation | 7d | 2012-05-16 | 2012-05-22 | H-6-160 FS+15d | 131d | 0d | Cash [12350]; Insulation Labors [7 h] | 12,350 |
| H-6-300 |  | Engineer inspection&approval for Footing insulation | 1d | 2012-05-23 | 2012-05-23 | H-6-250 | 131d | 0d |  |  |
| H-6-510 |  | Water proofing membrane | 7d | 2012-06-29 | 2012-07-05 | H-6-500 | 92d | 0d | Cash [99400]; Insulation Labors [25 h] | 99,400 |
| H-6-520 |  | Engineer inspection&approval for water proofing | 1d | 2012-07-06 | 2012-07-06 | H-6-510 | 92d | 33d |  |  |
| H-6-530 |  | Heat insulation | 3d | 2012-08-09 | 2012-08-11 | H-6-520, MT-DD-71 | 59d | 0d | Cash [38080]; Polysterine [560 m2]; Insulation Labors [6 h] | 38,080 |
| H-6-540 |  | Engineer inspection&approval for Heat insulation | 1d | 2012-08-12 | 2012-08-12 | H-6-530 | 59d | 0d |  |  |
| H-6-550 |  | Slopped plain concrete | 3d | 2012-08-13 | 2012-08-15 | H-6-540 | 59d | 0d | Conc Labors [6 h] |  |
| H-6-560 |  | Engineer Release Pouring | 1d | 2012-08-16 | 2012-08-16 | H-6-570 SS | 60d |  |  |  |
| H-6-570 |  | Engineer inspection&approval for Slopped P.C | 1d | 2012-08-16 | 2012-08-16 | H-6-550 | 59d | 0d |  |  |
| H-6-580 |  | Slopped P.C Pouring | 1d | 2012-08-17 | 2012-08-17 | H-6-570 | 59d |  | Cash [27440]; Foam Concrete [42 M3]; Insulation Labors [6 h] | 27,440 |
|  | B1116 | **Building 7** |  | 2012-05-28 | 2012-10-15 |  |  |  |  |  |
|  | 1 | **Plain concrete** |  | 2012-05-28 | 2012-08-21 |  |  |  |  |  |
| H-7-10 |  | P.C footings formwork | 5d | 2012-05-28 | 2012-06-01 | Z-H7, AP-H-7-1 FS+1d | 0d |  | Cash [49298]; Formwork Labors [37 h] | 49,298 |
| H-7-20 |  | Engineer Release Pouring | 1d | 2012-06-02 | 2012-06-02 | H-7-10 | 0d |  |  |  |
| H-7-30 |  | P.C footings concrete pouring | 1d | 2012-06-03 | 2012-06-03 | H-7-20 | 0d |  | Cash [73947]; Concrete [187 M3]; Conc Labors [9 h] | 73,947 |
| H-7-320 |  | Slab on grade work | 5d | 2012-08-15 | 2012-08-19 | H-7-300 FS+7d | 55d | 0d | Formwork Labors [12 h] |  |
| H-7-370 |  | Engineer Release Pouring | 1d | 2012-08-20 | 2012-08-20 | H-7-320 | 55d | 0d |  |  |
| H-7-390 |  | Slab on grade Concrete Pouring | 1d | 2012-08-21 | 2012-08-21 | H-7-370 | 55d |  | Cash [112000]; Concrete [120 M3]; Conc Labors [12 h] | 112,000 |
|  | 2 | **Reinforced concrete** |  | 2012-06-04 | 2012-09-28 |  |  |  |  |  |
|  | 1 | **Foundations** |  | 2012-06-04 | 2012-06-20 |  |  |  |  |  |
| H-7-40 |  | R.C footings form work | 7d | 2012-06-04 | 2012-06-10 | AP-H-7-2 FS+2d, H-7-30 | 0d |  | Cash [57744]; Formwork Labors [48 h] | 57,744 |
| H-7-50 |  | Engineer inspection & approval formwork | 1d | 2012-06-11 | 2012-06-11 | H-7-40 | 0d |  |  |  |
| H-7-60 |  | R.C footings steel works | 7d | 2012-06-12 | 2012-06-18 | H-7-50 | 0d |  | Cash [67368]; Steel bars [10.8 ton]; Steel Labors [43 h] | 67,368 |
| H-7-70 |  | Engineer inspection & approval steel work | 1d | 2012-06-19 | 2012-06-19 | H-7-60 | 0d |  |  |  |
| H-7-80 |  | Engineer Release Pouring | 1d | 2012-06-19 | 2012-06-19 | H-7-70 SS | 118d |  |  |  |
| H-7-90 |  | R.C footings Pouring works | 1d | 2012-06-20 | 2012-06-20 | H-7-70 | 0d |  | Cash [67368]; Concrete [120 M3]; Conc Labors [6 h] | 67,368 |

| ID | WBS | Activity | Duration | Start | Finish | Predecessors | Total float | Resources | Cost |
| --- | --- | --- | --- | --- | --- | --- | --- | --- | --- |
|  | 2 | **Ground floor** |  | 2012-06-21 | 2012-07-22 |  |  |  |  |
| H-7-100 |  | Columns form works | 4d | 2012-06-21 | 2012-06-24 | H-7-90, AP-H-7-3 | 0d | Cash [39735]; Formwork Labors [25 h] | 39,735 |
| H-7-110 |  | Columns form works ISPECTION | 1d | 2012-06-25 | 2012-06-25 | H-7-100 | 0d |  |  |
| H-7-120 |  | Columns Steel works | 3d | 2012-06-26 | 2012-06-28 | H-7-110 | 0d | Cash [46358]; Steel bars [11 ton]; Steel Labors [44 h] | 46,358 |
| H-7-130 |  | Columns steel works ISPECTION | 1d | 2012-06-29 | 2012-06-29 | H-7-120 | 0d |  |  |
| H-7-140 |  | Engineer Release Pouring | 1d | 2012-06-29 | 2012-06-29 | H-7-130 SS | 108d |  |  |
| H-7-150 |  | Columns Pouring works | 1d | 2012-06-30 | 2012-06-30 | H-7-130 | 0d | Cash [46358]; Concrete [50 M3]; Conc Labors [5 h] | 46,358 |
| H-7-160 |  | Slab form works | 15d | 2012-07-01 | 2012-07-15 | H-7-150, AP-H-7-4 | 0d | Cash [76560]; Slab Formwork [400 m2]; Formwork Labors [67 h] | 76,560 |
| H-7-170 |  | Slab form works inspection | 1d | 2012-07-16 | 2012-07-16 | H-7-160 | 0d |  |  |
| H-7-180 |  | Slab steel works | 4d | 2012-07-17 | 2012-07-20 | H-7-170 | 0d | Cash [89320]; Steel bars [18.7 ton]; Steel Labors [75 h] | 89,320 |
| H-7-190 |  | Engineer Release Pouring | 1d | 2012-07-21 | 2012-07-21 | H-7-200 SS | 86d |  |  |
| H-7-200 |  | Slab steel works inspection | 1d | 2012-07-21 | 2012-07-21 | H-7-180 | 0d |  |  |
| H-7-210 |  | Slab Pouring works | 1d | 2012-07-22 | 2012-07-22 | H-7-200 | 0d | Cash [89320]; Concrete [133.3 M3]; Conc Labors [7 h] | 89,320 |
|  | 3 | **First floor** |  | 2012-07-23 | 2012-08-23 |  |  |  |  |
| H-7-220 |  | Columns form works | 4d | 2012-07-23 | 2012-07-26 | H-7-210, AP-H-7-5 | 0d | Cash [23472]; Formwork Labors [15 h] | 23,472 |
| H-7-230 |  | Columns form works ISPECTION | 1d | 2012-07-27 | 2012-07-27 | H-7-220 | 0d |  |  |
| H-7-240 |  | Columns Steel works | 3d | 2012-07-28 | 2012-07-30 | H-7-230 | 0d | Cash [27384]; Steel bars [6.6 ton]; Steel Labors [26 h] | 27,384 |
| H-7-260 |  | Columns steel works ISPECTION | 1d | 2012-07-31 | 2012-07-31 | H-7-240 | 0d |  |  |
| H-7-270 |  | Engineer Release Pouring | 1d | 2012-07-31 | 2012-07-31 | H-7-260 SS | 76d |  |  |
| H-7-280 |  | Columns Pouring works | 1d | 2012-08-01 | 2012-08-01 | H-7-260 | 0d | Cash [27384]; Concrete [30 M3]; Conc Labors [3 h] | 27,384 |
| H-7-290 |  | Slab form works | 15d | 2012-08-02 | 2012-08-16 | H-7-280, AP-H-7-6 | 0d | Cash [76560]; Slab Formwork [400 m2]; Formwork Labors [67 h] | 76,560 |
| H-7-310 |  | Slab form works inspection | 1d | 2012-08-17 | 2012-08-17 | H-7-290 | 0d |  |  |
| H-7-330 |  | Slab steel works | 4d | 2012-08-18 | 2012-08-21 | H-7-310 | 0d | Cash [89320]; Steel bars [18.7 ton]; Steel Labors [75 h] | 89,320 |
| H-7-340 |  | Engineer Release Pouring | 1d | 2012-08-22 | 2012-08-22 | H-7-350 SS | 54d |  |  |
| H-7-350 |  | Slab steel works inspection | 1d | 2012-08-22 | 2012-08-22 | H-7-330 | 0d |  |  |
| H-7-360 |  | Slab Pouring works | 1d | 2012-08-23 | 2012-08-23 | H-7-350 | 0d | Cash [89320]; Concrete [133.3 M3]; Conc Labors [7 h] | 89,320 |

| ID | WBS | Activity | Duration | Start | Finish | Predecessors | Total float | Free float | Resources | Cost |
| --- | --- | --- | --- | --- | --- | --- | --- | --- | --- | --- |
|  | 4 | **Second floor** |  | 2012-08-24 | 2012-09-28 |  |  |  |  |  |
| H-7-380 |  | Columns form works | 8d | 2012-08-24 | 2012-08-31 | H-7-360 | 0d |  | Cash [23472]; Formwork Labors [15 h] | 23,472 |
| H-7-400 |  | Columns form works ISPECTION | 1d | 2012-09-01 | 2012-09-01 | H-7-380 | 0d |  |  |  |
| H-7-410 |  | Columns Steel works | 3d | 2012-09-02 | 2012-09-04 | H-7-400 | 0d |  | Cash [27384]; Steel bars [6.6 ton]; Steel Labors [26 h] | 27,384 |
| H-7-420 |  | Columns steel works ISPECTION | 1d | 2012-09-05 | 2012-09-05 | H-7-410 | 0d |  |  |  |
| H-7-430 |  | Engineer Release Pouring | 1d | 2012-09-05 | 2012-09-05 | H-7-420 SS | 40d |  |  |  |
| H-7-440 |  | Columns Pouring works | 1d | 2012-09-06 | 2012-09-06 | H-7-420 | 0d |  | Cash [27384]; Concrete [30 M3]; Conc Labors [3 h] | 27,384 |
| H-7-450 |  | Slab form works | 15d | 2012-09-07 | 2012-09-21 | H-7-440 | 0d |  | Cash [76560]; Slab Formwork [400 m2]; Formwork Labors [67 h] | 76,560 |
| H-7-460 |  | Slab form works inspection | 1d | 2012-09-22 | 2012-09-22 | H-7-450 | 0d |  |  |  |
| H-7-470 |  | Slab steel works | 4d | 2012-09-23 | 2012-09-26 | H-7-460 | 0d |  | Cash [89320]; Steel bars [18.7 ton]; Steel Labors [75 h] | 89,320 |
| H-7-480 |  | Engineer Release Pouring | 1d | 2012-09-27 | 2012-09-27 | H-7-490 SS | 18d |  |  |  |
| H-7-490 |  | Slab steel works inspection | 1d | 2012-09-27 | 2012-09-27 | H-7-470 | 0d |  |  |  |
| H-7-500 |  | Slab Pouring works | 1d | 2012-09-28 | 2012-09-28 | H-7-490 | 0d |  | Cash [341040]; Concrete [133.3 M3]; Conc Labors [7 h] | 341,040 |
|  | 3 | **Insulation works** |  | 2012-07-31 | 2012-10-15 |  |  |  |  |  |
| H-7-250 |  | Footing insulation | 7d | 2012-07-31 | 2012-08-06 | H-7-160 FS+15d | 55d | 0d | Cash [13300]; Insulation Labors [7 h] | 13,300 |
| H-7-300 |  | Engineer inspection&approval for Footing insulation | 1d | 2012-08-07 | 2012-08-07 | H-7-250 | 55d | 0d |  |  |
| H-7-510 |  | Water proofing membrane | 7d | 2012-09-29 | 2012-10-05 | H-7-500 | 0d |  | Cash [130300]; Insulation Labors [33 h] | 130,300 |
| H-7-520 |  | Engineer inspection&approval for water proofing | 1d | 2012-10-06 | 2012-10-06 | H-7-510 | 0d |  |  |  |
| H-7-530 |  | Heat insulation | 3d | 2012-10-07 | 2012-10-09 | H-7-520, MT-DD-71 | 0d |  | Cash [54400]; Polysterine [800 m2]; Insulation Labors [8 h] | 54,400 |
| H-7-540 |  | Engineer inspection&approval for Heat insulation | 1d | 2012-10-10 | 2012-10-10 | H-7-530 | 0d |  |  |  |
| H-7-550 |  | Slopped plain concrete | 3d | 2012-10-11 | 2012-10-13 | H-7-540 | 0d |  | Conc Labors [8 h] |  |
| H-7-560 |  | Engineer Release Pouring | 1d | 2012-10-14 | 2012-10-14 | H-7-570 SS | 1d |  |  |  |
| H-7-570 |  | Engineer inspection&approval for Slopped P.C | 1d | 2012-10-14 | 2012-10-14 | H-7-550 | 0d |  |  |  |
| H-7-580 |  | Slopped P.C Pouring | 1d | 2012-10-15 | 2012-10-15 | H-7-570 | 0d |  | Cash [39200]; Foam Concrete [60 M3]; Conc Labors [8 h] | 39,200 |

| ID | WBS | Activity | Duration | Start | Finish | Predecessors | Complete | Planned start | Planned finish | Total float | Free float | Resources | Cost | Actual cost |
| --- | --- | --- | --- | --- | --- | --- | --- | --- | --- | --- | --- | --- | --- | --- |
|  | B1117 | **Building 8** |  | 2012-03-29 | 2012-08-17 |  |  |  |  |  |  |  |  |  |
|  | 1 | **Plain concrete** |  | 2012-03-29 | 2012-06-06 |  |  |  |  |  |  |  |  |  |
| H-8-10 |  | P.C footings formwork | 5d | 2012-03-29 A | 2012-04-01 A | Z-H8, AP-H-8&9-1 FS+1d | 100% | 2012-05-06 | 2012-05-10 |  |  | Cash [19774]; Formwork Labors [15 h] | 19,774 | 19,774 |
| H-8-20 |  | Engineer Release Pouring | 1d | 2012-04-02 A | 2012-04-02 A | H-8-10 | 100% | 2012-05-11 | 2012-05-11 |  |  |  |  |  |
| H-8-30 |  | P.C footings concrete pouring | 1d | 2012-04-02 A | 2012-04-02 A | H-8-20 | 100% | 2012-05-12 | 2012-05-12 |  |  | Cash [29661]; Concrete [75 M3]; Conc Labors [4 h] | 29,661 | 29,661 |
| H-8-320 |  | Slab on grade work | 5d | 2012-05-31 | 2012-06-04 | H-8-300 FS+7d |  |  |  | 131d | 0d | Formwork Labors [10 h] |  |  |
| H-8-370 |  | Engineer Release Pouring | 1d | 2012-06-05 | 2012-06-05 | H-8-320 |  |  |  | 131d | 0d |  |  |  |
| H-8-390 |  | Slab on grade Concrete Pouring | 1d | 2012-06-06 | 2012-06-06 | H-8-370 |  |  |  | 131d |  | Cash [92400]; Concrete [99 M3]; Conc Labors [10 h] | 92,400 |  |
|  | 2 | **Reinforced concrete** |  | 2012-04-04 | 2012-07-05 |  |  |  |  |  |  |  |  |  |
|  | 1 | **Foundations** |  | 2012-04-04 | 2012-04-14 |  |  |  |  |  |  |  |  |  |
| H-8-40 |  | R.C footings form work | 7d | 2012-04-04 A | 2012-04-09 A | AP-H-8&9-2 FS+2d, H-8-30 | 100% | 2012-05-13 | 2012-05-19 |  |  | Cash [34646.4]; Formwork Labors [29 h] | 34,646.4 | 34,646.4 |
| H-8-50 |  | Engineer inspection & approval formwork | 1d | 2012-04-09 A | 2012-04-09 A | H-8-40 | 100% | 2012-05-20 | 2012-05-20 |  |  |  |  |  |
| H-8-60 |  | R.C footings steel works | 7d | 2012-04-10 A | 2012-04-13 A | H-8-50 | 100% | 2012-05-21 | 2012-05-27 |  |  | Cash [40420.8]; Steel bars [6.48 ton]; Steel Labors [26 h] | 40,420.8 | 40,420.8 |
| H-8-70 |  | Engineer inspection & approval steel work | 1d | 2012-04-12 A | 2012-04-12 A | H-8-60 | 100% | 2012-05-28 | 2012-05-28 |  |  |  |  |  |
| H-8-80 |  | Engineer Release Pouring | 1d | 2012-04-13 A | 2012-04-13 A | H-8-70 SS | 100% | 2012-05-28 | 2012-05-28 |  |  |  |  |  |
| H-8-90 |  | R.C footings Pouring works | 1d | 2012-04-14 A | 2012-04-14 A | H-8-70 | 100% | 2012-05-29 | 2012-05-29 |  |  | Cash [40420.8]; Concrete [72 M3]; Conc Labors [4 h] | 40,420.8 | 40,420.8 |
|  | 2 | **Ground floor** |  | 2012-04-16 | 2012-05-05 |  |  |  |  |  |  |  |  |  |
| H-8-100 |  | Columns form works | 4d | 2012-04-16 A | 2012-04-19 A | H-8-90, AP-H-8&9-3 | 100% | 2012-05-09 | 2012-05-12 |  |  | Cash [35762]; Formwork Labors [23 h] | 35,762 | 35,762 |
| H-8-110 |  | Columns form works ISPECTION | 1d | 2012-04-19 A | 2012-04-19 A | H-8-100 | 100% | 2012-05-13 | 2012-05-13 |  |  |  |  |  |
| H-8-120 |  | Columns Steel works | 3d | 2012-04-19 A | 2012-04-21 A | H-8-110 | 100% | 2012-05-14 | 2012-05-16 |  |  | Cash [41722]; Steel bars [10 ton]; Steel Labors [40 h] | 41,722 | 41,722 |
| H-8-130 |  | Columns steel works ISPECTION | 1d | 2012-04-21 A | 2012-04-21 A | H-8-120 | 100% | 2012-05-17 | 2012-05-17 |  |  |  |  |  |
| H-8-140 |  | Engineer Release Pouring | 1d | 2012-04-22 A | 2012-04-22 A | H-8-130 SS | 100% | 2012-05-17 | 2012-05-17 |  |  |  |  |  |
| H-8-150 |  | Columns Pouring works | 1d | 2012-04-22 A | 2012-04-22 A | H-8-130 | 100% | 2012-05-18 | 2012-05-18 |  |  | Cash [41722]; Concrete [45 M3]; Conc Labors [5 h] | 41,722 | 41,722 |
| H-8-160 |  | Slab form works | 15d | 2012-04-24 A | 2012-04-29 A | H-8-150, AP-H-8&9-4 | 100% | 2012-05-19 | 2012-06-02 |  |  | Cash [39600]; Slab Formwork [200 m2]; Formwork Labors [33 h] | 39,600 | 39,600 |
| H-8-170 |  | Slab form works inspection | 1d | 2012-04-29 A | 2012-04-29 A | H-8-160 | 100% | 2012-06-03 | 2012-06-03 |  |  |  |  |  |
| H-8-180 |  | Slab steel works | 4d | 2012-04-29 A | 2012-05-02 A | H-8-170 | 100% | 2012-06-04 | 2012-06-07 |  |  | Cash [46200]; Steel bars [9.3 ton]; Steel Labors [37 h] | 46,200 | 46,200 |
| H-8-200 |  | Slab steel works inspection | 1d | 2012-05-01 A | 2012-05-01 A | H-8-180 | 100% | 2012-05-09 | 2012-05-10 |  |  |  |  |  |
| H-8-190 |  | Engineer Release Pouring | 1d | 2012-05-02 A | 2012-05-02 A | H-8-200 SS | 100% | 2012-05-09 | 2012-05-10 |  |  |  |  |  |
| H-8-210 |  | Slab Pouring works | 1d | 2012-05-03 A | 2012-05-05 A | H-8-200 | 100% | 2012-05-10 | 2012-05-11 |  |  | Cash [46200]; Concrete [66.7 M3]; Conc Labors [3 h] | 46,200 | 46,200 |

| ID | WBS | Activity | Duration | Start | Finish | Predecessors | Complete | Remaining | Planned start | Planned finish | Total float | Free float | Resources | Cost | Actual cost |
| --- | --- | --- | --- | --- | --- | --- | --- | --- | --- | --- | --- | --- | --- | --- | --- |
|  | 3 | **First floor** |  | 2012-05-05 | 2012-05-30 |  |  |  |  |  |  |  |  |  |  |
| H-8-220 |  | Columns form works | 4d | 2012-05-05 A | 2012-05-08 A | H-8-210, AP-H-8&9-5 | 100% |  | 2012-05-12 | 2012-05-16 |  |  | Cash |  |  |
| H-8-230 |  | Columns form works ISPECTION | 1d | 2012-05-08 A | 2012-05-08 A | H-8-220 | 100% |  | 2012-05-16 | 2012-05-17 |  |  |  |  |  |
| H-8-240 |  | Columns Steel works | 3d | 2012-05-09 A | 2012-05-11 A | H-8-230 | 100% |  | 2012-05-17 | 2012-05-20 |  |  | Cash |  |  |
| H-8-260 |  | Columns steel works ISPECTION | 1d | 2012-05-11 A | 2012-05-11 A | H-8-240 | 100% |  | 2012-05-20 | 2012-05-21 |  |  |  |  |  |
| H-8-270 |  | Engineer Release Pouring | 1d | 2012-05-12 A | 2012-05-12 A | H-8-260 SS | 100% |  | 2012-05-23 | 2012-05-23 |  |  |  |  |  |
| H-8-280 |  | Columns Pouring works | 1d | 2012-05-12 A | 2012-05-12 A | H-8-260 | 100% |  | 2012-05-23 | 2012-05-23 |  |  | Cash |  |  |
| H-8-290 |  | Slab form works | 15d | 2012-05-13 A | 2012-05-23 | H-8-280, AP-H-8&9-6 | 50% | 7.5d | 2012-05-24 | 2012-06-07 | 85.5d | 0d | Cash [39600]; Slab Formwork [200 m2]; Formwork Labors [33 h] | 39,600 | 19,800 |
| H-8-310 |  | Slab form works inspection | 1d | 2012-05-23 | 2012-05-24 | H-8-290 |  |  |  |  | 85.5d | 0d |  |  |  |
| H-8-330 |  | Slab steel works | 4d | 2012-05-24 | 2012-05-28 | H-8-310 |  |  |  |  | 85.5d | 0d | Cash [46200]; Steel bars [9.3 ton]; Steel Labors [37 h] | 46,200 |  |
| H-8-340 |  | Engineer Release Pouring | 1d | 2012-05-28 | 2012-05-29 | H-8-350 SS |  |  |  |  | 139.5d |  |  |  |  |
| H-8-350 |  | Slab steel works inspection | 1d | 2012-05-28 | 2012-05-29 | H-8-330 |  |  |  |  | 85.5d | 0d |  |  |  |
| H-8-360 |  | Slab Pouring works | 1d | 2012-05-29 | 2012-05-30 | H-8-350 |  |  |  |  | 85.5d | 0d | Cash [46200]; Concrete [66.7 M3]; Conc Labors [3 h] | 46,200 |  |
|  | 4 | **Second floor** |  | 2012-05-30 | 2012-07-05 |  |  |  |  |  |  |  |  |  |  |
| H-8-380 |  | Columns form works | 8d | 2012-05-30 | 2012-06-07 | H-8-360, AP-H-8&9-7 |  |  |  |  | 85.5d | 0d | Cash |  |  |
| H-8-400 |  | Columns form works ISPECTION | 1d | 2012-06-07 | 2012-06-08 | H-8-380 |  |  |  |  | 85.5d | 0d |  |  |  |
| H-8-410 |  | Columns Steel works | 3d | 2012-06-08 | 2012-06-11 | H-8-400 |  |  |  |  | 85.5d | 0d | Cash |  |  |
| H-8-420 |  | Columns steel works ISPECTION | 1d | 2012-06-11 | 2012-06-12 | H-8-410 |  |  |  |  | 85.5d | 0d |  |  |  |
| H-8-430 |  | Engineer Release Pouring | 1d | 2012-06-11 | 2012-06-12 | H-8-420 SS |  |  |  |  | 125.5d |  |  |  |  |
| H-8-440 |  | Columns Pouring works | 1d | 2012-06-12 | 2012-06-13 | H-8-420 |  |  |  |  | 85.5d | 0d | Cash |  |  |
| H-8-450 |  | Slab form works | 15d | 2012-06-13 | 2012-06-28 | H-8-440, AP-H-8&9-8 |  |  |  |  | 85.5d | 0d | Cash [39600]; Slab Formwork [200 m2]; Formwork Labors [33 h] | 39,600 |  |
| H-8-460 |  | Slab form works inspection | 1d | 2012-06-28 | 2012-06-29 | H-8-450 |  |  |  |  | 85.5d | 0d |  |  |  |
| H-8-470 |  | Slab steel works | 4d | 2012-06-29 | 2012-07-03 | H-8-460 |  |  |  |  | 85.5d | 0d | Cash [46200]; Steel bars [9.3 ton]; Steel Labors [37 h] | 46,200 |  |
| H-8-480 |  | Engineer Release Pouring | 1d | 2012-07-03 | 2012-07-04 | H-8-490 SS |  |  |  |  | 103.5d |  |  |  |  |
| H-8-490 |  | Slab steel works inspection | 1d | 2012-07-03 | 2012-07-04 | H-8-470 |  |  |  |  | 85.5d | 0d |  |  |  |
| H-8-500 |  | Slab Pouring works | 1d | 2012-07-04 | 2012-07-05 | H-8-490 |  |  |  |  | 85.5d | 0d | Cash [46200]; Concrete [66.7 M3]; Conc Labors [3 h] | 46,200 |  |

| ID | WBS | Activity | Duration | Start | Finish | Predecessors | Complete | Planned start | Planned finish | Total float | Free float | Resources | Cost | Actual cost |
| --- | --- | --- | --- | --- | --- | --- | --- | --- | --- | --- | --- | --- | --- | --- |
|  | 3 | **Insulation works** |  | 2012-05-16 | 2012-08-17 |  |  |  |  |  |  |  |  |  |
| H-8-250 |  | Footing insulation | 7d | 2012-05-16 | 2012-05-22 | H-8-160 FS+15d |  |  |  | 131d | 0d | Cash [7980]; Insulation Labors [4 h] | 7,980 |  |
| H-8-300 |  | Engineer inspection&approval for Footing insulation | 1d | 2012-05-23 | 2012-05-23 | H-8-250 |  |  |  | 131d | 0d |  |  |  |
| H-8-510 |  | Water proofing membrane | 7d | 2012-07-05 | 2012-07-12 | H-8-500 |  |  |  | 85.5d | 0d | Cash [104280]; Insulation Labors [26 h] | 104,280 |  |
| H-8-520 |  | Engineer inspection&approval for water proofing | 1d | 2012-07-12 | 2012-07-13 | H-8-510 |  |  |  | 85.5d | 26.5d |  |  |  |
| H-8-530 |  | Heat insulation | 3d | 2012-08-09 | 2012-08-11 | H-8-520, MT-DD-71 |  |  |  | 59d | 0d | Cash [44880]; Polysterine [660 m2]; Insulation Labors [7 h] | 44,880 |  |
| H-8-540 |  | Engineer inspection&approval for Heat insulation | 1d | 2012-08-12 | 2012-08-12 | H-8-530 |  |  |  | 59d | 0d |  |  |  |
| H-8-550 |  | Slopped plain concrete | 3d | 2012-08-13 | 2012-08-15 | H-8-540 |  |  |  | 59d | 0d | Conc Labors [7 h] |  |  |
| H-8-560 |  | Engineer Release Pouring | 1d | 2012-08-16 | 2012-08-16 | H-8-570 SS |  |  |  | 60d |  |  |  |  |
| H-8-570 |  | Engineer inspection&approval for Slopped P.C | 1d | 2012-08-16 | 2012-08-16 | H-8-550 |  |  |  | 59d | 0d |  |  |  |
| H-8-580 |  | Slopped P.C Pouring | 1d | 2012-08-17 | 2012-08-17 | H-8-570 |  |  |  | 59d |  | Cash [32340]; Foam Concrete [50 M3]; Insulation Labors [7 h] | 32,340 |  |
|  | B1118 | **Building 9** |  | 2012-03-29 | 2012-08-17 |  |  |  |  |  |  |  |  |  |
|  | 1 | **Plain concrete** |  | 2012-03-29 | 2012-06-10 |  |  |  |  |  |  |  |  |  |
| H-9-10 |  | P.C footings formwork | 5d | 2012-03-29 A | 2012-04-01 A | Z-H9, AP-H-8&9-1 FS+1d | 100% | 2012-05-06 | 2012-05-10 |  |  | Cash [99912]; Formwork Labors [76 h] | 99,912 | 99,912 |
| H-9-20 |  | Engineer Release Pouring | 1d | 2012-04-02 A | 2012-04-02 A | H-9-10 | 100% | 2012-05-11 | 2012-05-11 |  |  |  |  |  |
| H-9-30 |  | P.C footings concrete pouring | 1d | 2012-04-02 A | 2012-04-02 A | H-9-20 | 100% | 2012-05-12 | 2012-05-12 |  |  | Cash [149868]; Concrete [379 M3]; Conc Labors [19 h] | 149,868 | 149,868 |
| H-9-320 |  | Slab on grade work | 5d | 2012-06-04 | 2012-06-08 | H-9-300 FS+7d |  |  |  | 127d | 0d | Conc Labors [19 h] |  |  |
| H-9-370 |  | Engineer Release Pouring | 1d | 2012-06-09 | 2012-06-09 | H-9-320 |  |  |  | 127d | 0d |  |  |  |
| H-9-390 |  | Slab on grade Concrete Pouring | 1d | 2012-06-10 | 2012-06-10 | H-9-370 |  |  |  | 127d |  | Cash [175000]; Concrete [188 M3]; Conc Labors [19 h] | 175,000 |  |
|  | 2 | **Reinforced concrete** |  | 2012-04-04 | 2012-07-20 |  |  |  |  |  |  |  |  |  |
|  | 1 | **Foundations** |  | 2012-04-04 | 2012-04-16 |  |  |  |  |  |  |  |  |  |
| H-9-40 |  | R.C footings form work | 7d | 2012-04-04 A | 2012-04-09 A | AP-H-8&9-2 FS+2d, H-9-30 | 100% | 2012-05-13 | 2012-05-19 |  |  | Cash [120300]; Formwork Labors [100 h] | 120,300 | 120,300 |
| H-9-50 |  | Engineer inspection & approval formwork | 1d | 2012-04-09 A | 2012-04-09 A | H-9-40 | 100% | 2012-05-20 | 2012-05-20 |  |  |  |  |  |
| H-9-60 |  | R.C footings steel works | 7d | 2012-04-10 A | 2012-04-13 A | H-9-50 | 100% | 2012-05-21 | 2012-05-27 |  |  | Cash [140350]; Steel bars [22.5 ton]; Steel Labors [90 h] | 140,350 | 140,350 |
| H-9-70 |  | Engineer inspection & approval steel work | 1d | 2012-04-12 A | 2012-04-12 A | H-9-60 | 100% | 2012-05-28 | 2012-05-28 |  |  |  |  |  |
| H-9-80 |  | Engineer Release Pouring | 1d | 2012-04-13 A | 2012-04-13 A | H-9-70 SS | 100% | 2012-05-28 | 2012-05-28 |  |  |  |  |  |
| H-9-90 |  | R.C footings Pouring works | 1d | 2012-04-14 A | 2012-04-16 A | H-9-70 | 100% | 2012-05-29 | 2012-05-29 |  |  | Cash [140350]; Concrete [250 M3]; Conc Labors [13 h] | 140,350 | 140,350 |

| ID | WBS | Activity | Duration | Start | Finish | Predecessors | Complete | Planned start | Planned finish | Total float | Free float | Resources | Cost | Actual cost |
| --- | --- | --- | --- | --- | --- | --- | --- | --- | --- | --- | --- | --- | --- | --- |
|  | 2 | **Ground floor** |  | 2012-04-17 | 2012-05-16 |  |  |  |  |  |  |  |  |  |
| H-9-100 |  | Columns form works | 4d | 2012-04-17 A | 2012-04-21 A | H-9-90, AP-H-8&9-3 | 100% | 2012-05-07 | 2012-05-10 |  |  | Cash [55629]; Formwork Labors [35 h] | 55,629 | 55,629 |
| H-9-110 |  | Columns form works ISPECTION | 1d | 2012-04-21 A | 2012-04-21 A | H-9-100 | 100% | 2012-05-11 | 2012-05-11 |  |  |  |  |  |
| H-9-120 |  | Columns Steel works | 3d | 2012-04-21 A | 2012-04-24 A | H-9-110 | 100% | 2012-05-12 | 2012-05-14 |  |  | Cash [64901]; Steel bars [15 ton]; Steel Labors [62 h] | 64,901 | 64,901 |
| H-9-130 |  | Columns steel works ISPECTION | 1d | 2012-04-24 A | 2012-04-24 A | H-9-120 | 100% | 2012-05-15 | 2012-05-15 |  |  |  |  |  |
| H-9-140 |  | Engineer Release Pouring | 1d | 2012-04-24 A | 2012-04-24 A | H-9-130 SS | 100% | 2012-05-15 | 2012-05-15 |  |  |  |  |  |
| H-9-150 |  | Columns Pouring works | 1d | 2012-04-24 A | 2012-04-24 A | H-9-130 | 100% | 2012-05-16 | 2012-05-16 |  |  | Cash [64901]; Concrete [70 M3]; Conc Labors [7 h] | 64,901 | 64,901 |
| H-9-160 |  | Slab form works | 15d | 2012-04-25 A | 2012-05-05 A | H-9-150, AP-H-8&9-4 | 100% | 2012-05-17 | 2012-05-31 |  |  | Cash [172260]; Slab Formwork [900 m2]; Formwork Labors [150 h] | 172,260 | 172,260 |
| H-9-180 |  | Slab steel works | 4d | 2012-04-30 A | 2012-05-12 A | H-9-170 | 100% | 2012-06-02 | 2012-06-05 |  |  | Cash [200970]; Steel bars [42 ton]; Steel Labors [168 h] | 200,970 | 200,970 |
| H-9-210 |  | Slab Pouring works | 1d | 2012-05-03 A | 2012-05-12 A | H-9-200 | 100% | 2012-06-07 | 2012-06-07 |  |  | Cash [200970]; Concrete [300 M3]; Conc Labors [15 h] | 200,970 | 200,970 |
| H-9-170 |  | Slab form works inspection | 1d | 2012-05-07 A | 2012-05-07 A | H-9-160 | 100% | 2012-05-19 | 2012-05-20 |  |  |  |  |  |
| H-9-200 |  | Slab steel works inspection | 1d | 2012-05-11 A | 2012-05-11 A | H-9-180 | 100% | 2012-05-22 | 2012-05-23 |  |  |  |  |  |
| H-9-190 |  | Engineer Release Pouring | 1d | 2012-05-16 | 2012-05-16 | H-9-200 SS |  |  |  | 152d |  |  |  |  |
|  | 3 | **First floor** |  | 2012-05-11 | 2012-06-14 |  |  |  |  |  |  |  |  |  |
| H-9-220 |  | Columns form works | 4d | 2012-05-11 A | 2012-05-13 A | H-9-210, AP-H-8&9-5 | 100% | 2012-05-23 | 2012-05-26 |  |  | Cash [31296]; Formwork Labors [20 h] | 31,296 | 31,296 |
| H-9-230 |  | Columns form works ISPECTION | 1d | 2012-05-13 A | 2012-05-13 A | H-9-220 | 100% | 2012-05-27 | 2012-05-27 |  |  |  |  |  |
| H-9-240 |  | Columns Steel works | 3d | 2012-05-13 A | 2012-05-15 A | H-9-230 | 100% | 2012-05-28 | 2012-05-30 |  |  | Cash [36512]; Steel bars [8.8 ton]; Steel Labors [35 h] | 36,512 | 36,512 |
| H-9-260 |  | Columns steel works ISPECTION | 1d | 2012-05-16 | 2012-05-16 | H-9-240 |  |  |  | 76d | 0d |  |  |  |
| H-9-270 |  | Engineer Release Pouring | 1d | 2012-05-16 | 2012-05-16 | H-9-260 SS |  |  |  | 152d |  |  |  |  |
| H-9-280 |  | Columns Pouring works | 1d | 2012-05-17 | 2012-05-17 | H-9-260 |  |  |  | 76d | 6d | Cash [36512]; Concrete [40 M3]; Conc Labors [4 h] | 36,512 |  |
| H-9-290 |  | Slab form works | 15d | 2012-05-24 | 2012-06-07 | H-9-280, AP-H-8&9-6 |  |  |  | 70d | 0d | Cash [172260]; Slab Formwork [900 m2]; Formwork Labors [150 h] | 172,260 |  |
| H-9-310 |  | Slab form works inspection | 1d | 2012-06-08 | 2012-06-08 | H-9-290 |  |  |  | 70d | 0d |  |  |  |
| H-9-330 |  | Slab steel works | 4d | 2012-06-09 | 2012-06-12 | H-9-310 |  |  |  | 70d | 0d | Cash [200970]; Steel bars [42 ton]; Steel Labors [168 h] | 200,970 |  |
| H-9-340 |  | Engineer Release Pouring | 1d | 2012-06-13 | 2012-06-13 | H-9-350 SS |  |  |  | 124d |  |  |  |  |
| H-9-350 |  | Slab steel works inspection | 1d | 2012-06-13 | 2012-06-13 | H-9-330 |  |  |  | 70d | 0d |  |  |  |
| H-9-360 |  | Slab Pouring works | 1d | 2012-06-14 | 2012-06-14 | H-9-350 |  |  |  | 70d | 0d | Cash [200970]; Concrete [300 M3]; Conc Labors [15 h] | 200,970 |  |

| ID | WBS | Activity | Duration | Start | Finish | Predecessors | Total float | Free float | Resources | Cost |
| --- | --- | --- | --- | --- | --- | --- | --- | --- | --- | --- |
|  | 4 | **Second floor** |  | 2012-06-15 | 2012-07-20 |  |  |  |  |  |
| H-9-380 |  | Columns form works | 8d | 2012-06-15 | 2012-06-22 | H-9-360, AP-H-8&9-7 | 70d | 0d | Cash [31296]; Formwork Labors [20 h] | 31,296 |
| H-9-400 |  | Columns form works ISPECTION | 1d | 2012-06-23 | 2012-06-23 | H-9-380 | 70d | 0d |  |  |
| H-9-410 |  | Columns Steel works | 3d | 2012-06-24 | 2012-06-26 | H-9-400 | 70d | 0d | Cash [36512]; Steel bars [8.8 ton]; Steel Labors [35 h] | 36,512 |
| H-9-420 |  | Columns steel works ISPECTION | 1d | 2012-06-27 | 2012-06-27 | H-9-410 | 70d | 0d |  |  |
| H-9-430 |  | Engineer Release Pouring | 1d | 2012-06-27 | 2012-06-27 | H-9-420 SS | 110d |  |  |  |
| H-9-440 |  | Columns Pouring works | 1d | 2012-06-28 | 2012-06-28 | H-9-420 | 70d | 0d | Cash [36512]; Concrete [40 M3]; Conc Labors [4 h] | 36,512 |
| H-9-450 |  | Slab form works | 15d | 2012-06-29 | 2012-07-13 | H-9-440, AP-H-8&9-8 | 70d | 0d | Cash [172260]; Slab Formwork [900 m2]; Formwork Labors [150 h] | 172,260 |
| H-9-460 |  | Slab form works inspection | 1d | 2012-07-14 | 2012-07-14 | H-9-450 | 70d | 0d |  |  |
| H-9-470 |  | Slab steel works | 4d | 2012-07-15 | 2012-07-18 | H-9-460 | 70d | 0d | Cash [200970]; Steel bars [42 ton]; Steel Labors [168 h] | 200,970 |
| H-9-480 |  | Engineer Release Pouring | 1d | 2012-07-19 | 2012-07-19 | H-9-490 SS | 88d |  |  |  |
| H-9-490 |  | Slab steel works inspection | 1d | 2012-07-19 | 2012-07-19 | H-9-470 | 70d | 0d |  |  |
| H-9-500 |  | Slab Pouring works | 1d | 2012-07-20 | 2012-07-20 | H-9-490 | 70d | 0d | Cash [200970]; Concrete [300 M3]; Conc Labors [15 h] | 200,970 |
|  | 3 | **Insulation works** |  | 2012-05-20 | 2012-08-17 |  |  |  |  |  |
| H-9-250 |  | Footing insulation | 7d | 2012-05-20 | 2012-05-26 | H-9-160 FS+15d | 127d | 0d | Cash [26600]; Insulation Labors [14 h] | 26,600 |
| H-9-300 |  | Engineer inspection&approval for Footing insulation | 1d | 2012-05-27 | 2012-05-27 | H-9-250 | 127d | 0d |  |  |
| H-9-510 |  | Water proofing membrane | 7d | 2012-07-21 | 2012-07-27 | H-9-500 | 70d | 0d | Cash [201400]; Insulation Labors [51 h] | 201,400 |
| H-9-520 |  | Engineer inspection&approval for water proofing | 1d | 2012-07-28 | 2012-07-28 | H-9-510 | 70d | 11d |  |  |
| H-9-530 |  | Heat insulation | 3d | 2012-08-09 | 2012-08-11 | H-9-520, MT-DD-71 | 59d | 0d | Cash [85000]; Polysterine [1250 m2]; Insulation Labors [13 h] | 85,000 |
| H-9-540 |  | Engineer inspection&approval for Heat insulation | 1d | 2012-08-12 | 2012-08-12 | H-9-530 | 59d | 0d |  |  |
| H-9-550 |  | Slopped plain concrete | 3d | 2012-08-13 | 2012-08-15 | H-9-540 | 59d | 0d | Conc Labors [13 h] |  |
| H-9-560 |  | Engineer Release Pouring | 1d | 2012-08-16 | 2012-08-16 | H-9-570 SS | 60d |  |  |  |
| H-9-570 |  | Engineer inspection&approval for Slopped P.C | 1d | 2012-08-16 | 2012-08-16 | H-9-550 | 59d | 0d |  |  |
| H-9-580 |  | Slopped P.C Pouring | 1d | 2012-08-17 | 2012-08-17 | H-9-570 | 59d |  | Cash [61250]; Foam Concrete [94 M3]; Conc Labors [13 h] | 61,250 |

| ID | WBS | Activity | Duration | Start | Finish | Predecessors | Complete | Planned start | Planned finish | Total float | Free float | Resources | Cost | Actual cost |
| --- | --- | --- | --- | --- | --- | --- | --- | --- | --- | --- | --- | --- | --- | --- |
|  | B1119 | **Building 10** |  | 2012-03-18 | 2012-08-17 |  |  |  |  |  |  |  |  |  |
|  | 1 | **Plain concrete** |  | 2012-03-18 | 2012-05-30 |  |  |  |  |  |  |  |  |  |
| H-10-10 |  | P.C footings formwork | 5d | 2012-03-18 A | 2012-04-21 A | Z-H10, AP-H-10&11-1 FS+1d | 100% | 2012-04-28 | 2012-05-02 |  |  | Cash [73816]; Formwork Labors [56 h] | 73,816 | 73,816 |
| H-10-20 |  | Engineer Release Pouring | 1d | 2012-03-21 A | 2012-03-21 A | H-10-10 | 100% | 2012-04-28 | 2012-04-28 |  |  |  |  |  |
| H-10-30 |  | P.C footings concrete pouring | 1d | 2012-03-21 A | 2012-03-24 A | H-10-20 | 100% | 2012-05-04 | 2012-05-04 |  |  | Cash [110724]; Concrete [280 M3]; Conc Labors [14 h] | 110,724 | 110,724 |
| H-10-310 |  | Slab on grade work | 5d | 2012-05-24 | 2012-05-28 | H-10-300 |  |  |  | 138d | 0d | Formwork Labors [20 h] |  |  |
| H-10-320 |  | Engineer Release Pouring | 1d | 2012-05-29 | 2012-05-29 | H-10-310 |  |  |  | 138d | 0d |  |  |  |
| H-10-330 |  | Slab on grade Concrete Pouring | 1d | 2012-05-30 | 2012-05-30 | H-10-320 |  |  |  | 138d |  | Cash [189000]; Concrete [203 M3]; Conc Labors [20 h] | 189,000 |  |
|  | 2 | **Reinforced concrete** |  | 2012-04-06 | 2012-06-28 |  |  |  |  |  |  |  |  |  |
|  | 1 | **Foundations** |  | 2012-04-06 | 2012-04-16 |  |  |  |  |  |  |  |  |  |
| H-10-40 |  | R.C footings form work | 7d | 2012-04-06 A | 2012-04-11 A | AP-H-10&11-2 FS+2d, H-10-30 | 100% | 2012-04-29 | 2012-05-05 |  |  | Cash [101052]; Formwork Labors [84 h] | 101,052 | 101,052 |
| H-10-50 |  | Engineer inspection & approval formwork | 1d | 2012-04-11 A | 2012-04-11 A | H-10-40 | 100% | 2012-05-06 | 2012-05-06 |  |  |  |  |  |
| H-10-60 |  | R.C footings steel works | 7d | 2012-04-12 A | 2012-04-15 A | H-10-50 | 100% | 2012-05-07 | 2012-05-13 |  |  | Cash [117894]; Steel bars [18.9 ton]; Steel Labors [76 h] | 117,894 | 117,894 |
| H-10-70 |  | Engineer inspection & approval steel work | 1d | 2012-04-15 A | 2012-04-15 A | H-10-60 | 100% | 2012-05-14 | 2012-05-14 |  |  |  |  |  |
| H-10-80 |  | Engineer Release Pouring | 1d | 2012-04-15 A | 2012-04-15 A | H-10-70 SS | 100% | 2012-05-14 | 2012-05-14 |  |  |  |  |  |
| H-10-90 |  | R.C footings Pouring works | 1d | 2012-04-16 A | 2012-04-16 A | H-10-70 | 100% | 2012-05-21 | 2012-05-21 |  |  | Cash [117894]; Concrete [210 M3]; Conc Labors [11 h] | 117,894 | 117,894 |
|  | 2 | **Ground floor** |  | 2012-04-17 | 2012-04-30 |  |  |  |  |  |  |  |  |  |
| H-10-100 |  | Columns form works | 4d | 2012-04-17 A | 2012-04-20 A | H-10-90, AP-H-10&11-3 | 100% | 2012-05-06 | 2012-05-09 |  |  | Cash [63576]; Formwork Labors [40 h] | 63,576 | 63,576 |
| H-10-110 |  | Columns form works ISPECTION | 1d | 2012-04-20 A | 2012-04-20 A | H-10-100 | 100% | 2012-05-10 | 2012-05-10 |  |  |  |  |  |
| H-10-120 |  | Columns Steel works | 3d | 2012-04-20 A | 2012-04-23 A | H-10-110 | 100% | 2012-05-11 | 2012-05-13 |  |  | Cash [74172]; Steel bars [18 ton]; Steel Labors [70 h] | 74,172 | 74,172 |
| H-10-130 |  | Columns steel works ISPECTION | 1d | 2012-04-23 A | 2012-04-23 A | H-10-120 | 100% | 2012-05-14 | 2012-05-14 |  |  |  |  |  |
| H-10-140 |  | Engineer Release Pouring | 1d | 2012-04-24 A | 2012-04-24 A | H-10-130 SS | 100% | 2012-05-14 | 2012-05-14 |  |  |  |  |  |
| H-10-150 |  | Columns Pouring works | 1d | 2012-04-24 A | 2012-04-24 A | H-10-130 | 100% | 2012-05-31 | 2012-05-31 |  |  | Cash [74172]; Concrete [80 M3]; Conc Labors [8 h] | 74,172 | 74,172 |
| H-10-160 |  | Slab form works | 15d | 2012-04-24 A | 2012-04-29 A | H-10-150, AP-H-10&11-4 | 100% | 2012-05-07 | 2012-05-21 |  |  | Cash [133980]; Slab Formwork [700 m2]; Formwork Labors [117 h] | 133,980 | 133,980 |
| H-10-180 |  | Slab steel works | 4d | 2012-04-27 A | 2012-04-30 A | H-10-170 | 100% | 2012-05-23 | 2012-05-26 |  |  | Cash [156310]; Steel bars [32.7 ton]; Steel Labors [131 h] | 156,310 | 156,310 |
| H-10-170 |  | Slab form works inspection | 1d | 2012-04-29 A | 2012-04-29 A | H-10-160 | 100% | 2012-05-22 | 2012-05-22 |  |  |  |  |  |
| H-10-190 |  | Engineer Release Pouring | 1d | 2012-04-30 A | 2012-04-30 A | H-10-200 SS | 100% | 2012-05-27 | 2012-05-27 |  |  |  |  |  |
| H-10-200 |  | Slab steel works inspection | 1d | 2012-04-30 A | 2012-04-30 A | H-10-180 | 100% | 2012-05-27 | 2012-05-27 |  |  |  |  |  |
| H-10-210 |  | Slab Pouring works | 1d | 2012-04-30 A | 2012-04-30 A | H-10-200 | 100% | 2012-05-28 | 2012-05-28 |  |  | Cash [156310]; Concrete [233.3 M3]; Conc Labors [12 h] | 156,310 | 156,310 |

| ID | WBS | Activity | Duration | Start | Finish | Predecessors | Complete | Planned start | Planned finish | Total float | Free float | Resources | Cost | Actual cost |
| --- | --- | --- | --- | --- | --- | --- | --- | --- | --- | --- | --- | --- | --- | --- |
|  | 3 | **First floor** |  | 2012-05-01 | 2012-05-14 |  |  |  |  |  |  |  |  |  |
| H-10-220 |  | Columns form works | 4d | 2012-05-01 A | 2012-05-04 A | H-10-210, AP-H-10&11-5 | 100% | 2012-05-29 | 2012-06-01 |  |  | Cash [35208]; Formwork Labors [23 h] | 35,208 | 35,208 |
| H-10-240 |  | Columns Steel works | 3d | 2012-05-04 A | 2012-05-07 A | H-10-230 | 100% | 2012-05-14 | 2012-05-17 |  |  | Cash [41076]; Steel bars [9.9 ton]; Steel Labors [40 h] | 41,076 | 41,076 |
| H-10-230 |  | Columns form works ISPECTION | 1d | 2012-05-05 A | 2012-05-05 A | H-10-220 | 100% | 2012-05-13 | 2012-05-14 |  |  |  |  |  |
| H-10-260 |  | Columns steel works ISPECTION | 1d | 2012-05-07 A | 2012-05-07 A | H-10-240 | 100% | 2012-05-17 | 2012-05-18 |  |  |  |  |  |
| H-10-270 |  | Engineer Release Pouring | 1d | 2012-05-07 A | 2012-05-07 A | H-10-260 SS | 100% | 2012-05-17 | 2012-05-18 |  |  |  |  |  |
| H-10-280 |  | Columns Pouring works | 1d | 2012-05-07 A | 2012-05-07 A | H-10-260 | 100% | 2012-05-18 | 2012-05-19 |  |  | Cash [41076]; Concrete [45 M3]; Conc Labors [5 h] | 41,076 | 41,076 |
| H-10-290 |  | Slab form works | 15d | 2012-05-08 A | 2012-05-11 A | H-10-280, AP-H-10&11-6 | 100% | 2012-05-19 | 2012-06-03 |  |  | Cash [133980]; Slab Formwork [700 m2]; Formwork Labors [117 h] | 133,980 | 133,980 |
| H-10-350 |  | Slab steel works | 4d | 2012-05-10 A | 2012-05-13 A | H-10-340 | 100% | 2012-06-04 | 2012-06-08 |  |  | Cash [156310]; Steel bars [32.7 ton]; Steel Labors [131 h] | 156,310 | 156,310 |
| H-10-340 |  | Slab form works inspection | 1d | 2012-05-11 A | 2012-05-11 A | H-10-290 | 100% | 2012-06-03 | 2012-06-04 |  |  |  |  |  |
| H-10-360 |  | Engineer Release Pouring | 1d | 2012-05-13 A | 2012-05-13 A | H-10-370 SS | 100% | 2012-06-08 | 2012-06-09 |  |  |  |  |  |
| H-10-370 |  | Slab steel works inspection | 1d | 2012-05-13 A | 2012-05-13 A | H-10-350 | 100% | 2012-06-08 | 2012-06-09 |  |  |  |  |  |
| H-10-380 |  | Slab Pouring works | 1d | 2012-05-14 A | 2012-05-14 A | H-10-370 | 100% | 2012-06-09 | 2012-06-10 |  |  | Cash [156310]; Concrete [233.3 M3]; Conc Labors [12 h] | 156,310 | 156,310 |
|  | 4 | **Second floor** |  | 2012-05-24 | 2012-06-28 |  |  |  |  |  |  |  |  |  |
| H-10-390 |  | Columns form works | 8d | 2012-05-24 | 2012-05-31 | H-10-380, AP-H-10&11-7 |  |  |  | 92d | 0d | Cash [35208]; Formwork Labors [23 h] | 35,208 |  |
| H-10-400 |  | Columns form works ISPECTION | 1d | 2012-06-01 | 2012-06-01 | H-10-390 |  |  |  | 92d | 0d |  |  |  |
| H-10-410 |  | Columns Steel works | 3d | 2012-06-02 | 2012-06-04 | H-10-400 |  |  |  | 92d | 0d | Cash [41076]; Steel bars [9.9 ton]; Steel Labors [40 h] | 41,076 |  |
| H-10-420 |  | Columns steel works ISPECTION | 1d | 2012-06-05 | 2012-06-05 | H-10-410 |  |  |  | 92d | 0d |  |  |  |
| H-10-430 |  | Engineer Release Pouring | 1d | 2012-06-05 | 2012-06-05 | H-10-420 SS |  |  |  | 132d |  |  |  |  |
| H-10-440 |  | Columns Pouring works | 1d | 2012-06-06 | 2012-06-06 | H-10-420 |  |  |  | 92d | 0d | Cash [41076]; Concrete [45 M3]; Conc Labors [5 h] | 41,076 |  |
| H-10-450 |  | Slab form works | 15d | 2012-06-07 | 2012-06-21 | H-10-440, AP-H-10&11-8 |  |  |  | 92d | 0d | Cash [133980]; Slab Formwork [700 m2]; Formwork Labors [117 h] | 133,980 |  |
| H-10-460 |  | Slab form works inspection | 1d | 2012-06-22 | 2012-06-22 | H-10-450 |  |  |  | 92d | 0d |  |  |  |
| H-10-470 |  | Slab steel works | 4d | 2012-06-23 | 2012-06-26 | H-10-460 |  |  |  | 92d | 0d | Cash [156310]; Steel bars [33 ton]; Steel Labors [131 h] | 156,310 |  |
| H-10-480 |  | Engineer Release Pouring | 1d | 2012-06-27 | 2012-06-27 | H-10-490 SS |  |  |  | 110d |  |  |  |  |
| H-10-490 |  | Slab steel works inspection | 1d | 2012-06-27 | 2012-06-27 | H-10-470 |  |  |  | 92d | 0d |  |  |  |
| H-10-500 |  | Slab Pouring works | 1d | 2012-06-28 | 2012-06-28 | H-10-490 |  |  |  | 92d | 0d | Cash [156310]; Concrete [233.3 M3]; Conc Labors [12 h] | 156,310 |  |

| ID | WBS | Activity | Duration | Start | Finish | Predecessors | Complete | Remaining | Planned start | Planned finish | Total float | Free float | Resources | Cost | Actual cost |
| --- | --- | --- | --- | --- | --- | --- | --- | --- | --- | --- | --- | --- | --- | --- | --- |
|  | 3 | **Insulation works** |  | 2012-05-16 | 2012-08-17 |  |  |  |  |  |  |  |  |  |  |
| H-10-250 |  | Footing insulation | 7d | 2012-05-16 | 2012-05-22 | H-10-160 FS+15d |  |  |  |  | 138d | 0d | Cash [22800]; Insulation Labors [12 h] | 22,800 |  |
| H-10-300 |  | Engineer inspection&approval for Footing insulation | 1d | 2012-05-23 | 2012-05-23 | H-10-250 |  |  |  |  | 138d | 0d |  |  |  |
| H-10-510 |  | Water proofing membrane | 7d | 2012-06-29 | 2012-07-05 | H-10-500 |  |  |  |  | 92d | 0d | Cash [221100]; Insulation Labors [56 h] | 221,100 |  |
| H-10-520 |  | Engineer inspection&approval for water proofing | 1d | 2012-07-06 | 2012-07-06 | H-10-510 |  |  |  |  | 92d | 33d |  |  |  |
| H-10-530 |  | Heat insulation | 3d | 2012-08-09 | 2012-08-11 | H-10-520, MT-DD-71 |  |  |  |  | 59d | 0d | Cash [91800]; Polysterine [1350 m2]; Insulation Labors [14 h] | 91,800 |  |
| H-10-540 |  | Engineer inspection&approval for Heat insulation | 1d | 2012-08-12 | 2012-08-12 | H-10-530 |  |  |  |  | 59d | 0d |  |  |  |
| H-10-550 |  | Slopped plain concrete | 3d | 2012-08-13 | 2012-08-15 | H-10-540 |  |  |  |  | 59d | 0d | Conc Labors [14 h] |  |  |
| H-10-560 |  | Engineer Release Pouring | 1d | 2012-08-16 | 2012-08-16 | H-10-570 SS |  |  |  |  | 60d |  |  |  |  |
| H-10-570 |  | Engineer inspection&approval for Slopped P.C | 1d | 2012-08-16 | 2012-08-16 | H-10-550 |  |  |  |  | 59d | 0d |  |  |  |
| H-10-580 |  | Slopped P.C Pouring | 1d | 2012-08-17 | 2012-08-17 | H-10-570 |  |  |  |  | 59d |  | Cash [66150]; Foam Concrete [101 M3]; Conc Labors [14 h] | 66,150 |  |
|  | B11110 | **Building 11** |  | 2012-04-08 | 2012-08-16 |  |  |  |  |  |  |  |  |  |  |
|  | 1 | **Plain concrete** |  | 2012-04-08 | 2012-06-18 |  |  |  |  |  |  |  |  |  |  |
| H-11-10 |  | P.C footings formwork | 3d | 2012-04-08 A | 2012-04-13 A | Z-H11, AP-H-10&11-1 FS+1d, H-12-180 | 100% |  | 2012-06-14 | 2012-06-16 |  |  | Cash [19774]; Formwork Labors [15 h] | 19,774 | 19,774 |
| H-11-20 |  | Engineer Release Pouring | 1d | 2012-04-14 A | 2012-04-14 A | H-11-10 | 100% |  | 2012-06-17 | 2012-06-17 |  |  |  |  |  |
| H-11-30 |  | P.C footings concrete pouring | 1d | 2012-04-14 A | 2012-04-14 A | H-11-20 | 100% |  | 2012-06-18 | 2012-06-18 |  |  | Cash [29661]; Concrete [75 M3]; Conc Labors [4 h] | 29,661 | 29,661 |
| H-11-320 |  | Slab on grade work | 3d | 2012-06-14 | 2012-06-16 | H-11-300 FS+7d |  |  |  |  | 119d | 0d | Formwork Labors [10 h] |  |  |
| H-11-370 |  | Engineer Release Pouring | 1d | 2012-06-17 | 2012-06-17 | H-11-320 |  |  |  |  | 119d | 0d |  |  |  |
| H-11-390 |  | Slab on grade Concrete Pouring | 1d | 2012-06-18 | 2012-06-18 | H-11-370 |  |  |  |  | 119d |  | Cash [92400]; Concrete [99 M3]; Conc Labors [10 h] | 92,400 |  |
|  | 2 | **Reinforced concrete** |  | 2012-04-16 | 2012-07-11 |  |  |  |  |  |  |  |  |  |  |
|  | 1 | **Foundations** |  | 2012-04-16 | 2012-05-16 |  |  |  |  |  |  |  |  |  |  |
| H-11-40 |  | R.C footings form work | 3d | 2012-04-16 A | 2012-04-21 A | AP-H-10&11-2 FS+2d, H-11-30 | 100% |  | 2012-06-19 | 2012-06-21 |  |  | Cash [34646.4]; Formwork Labors [29 h] | 34,646.4 | 34,646.4 |
| H-11-50 |  | Engineer inspection & approval formwork | 1d | 2012-04-21 A | 2012-04-21 A | H-11-40 | 100% |  | 2012-06-22 | 2012-06-22 |  |  |  |  |  |
| H-11-60 |  | R.C footings steel works | 3d | 2012-04-22 A | 2012-04-25 A | H-11-50 | 100% |  | 2012-06-23 | 2012-06-25 |  |  | Cash [40420.8]; Steel bars [6.48 ton]; Steel Labors [26 h] | 40,420.8 | 40,420.8 |
| H-11-70 |  | Engineer inspection & approval steel work | 1d | 2012-04-25 A | 2012-04-25 A | H-11-60 | 100% |  | 2012-06-18 | 2012-06-18 |  |  |  |  |  |
| H-11-80 |  | Engineer Release Pouring | 1d | 2012-04-28 A | 2012-04-28 A | H-11-70 SS | 100% |  | 2012-06-18 | 2012-06-18 |  |  |  |  |  |
| H-11-90 |  | R.C footings Pouring works | 1d | 2012-04-28 A | 2012-05-16 | H-11-70 | 85% | 0.15d | 2012-06-19 | 2012-06-19 | 152.85d |  | Cash [40420.8]; Concrete [72 M3]; Conc Labors [4 h] | 40,420.8 | 34,357.68 |

| ID | WBS | Activity | Duration | Start | Finish | Predecessors | Complete | Remaining | Planned start | Planned finish | Total float | Free float | Resources | Cost | Actual cost |
| --- | --- | --- | --- | --- | --- | --- | --- | --- | --- | --- | --- | --- | --- | --- | --- |
|  | 2 | **Ground floor** |  | 2012-04-29 | 2012-05-19 |  |  |  |  |  |  |  |  |  |  |
| H-11-100 |  | Columns form works | 5d | 2012-04-29 A | 2012-05-16 | H-11-90, AP-H-10&11-3 | 85% | 0.75d | 2012-06-23 | 2012-06-28 | 152.25d |  | Cash [35761.5]; Formwork Labors [23 h] | 35,761.5 | 30,397.28 |
| H-11-110 |  | Columns form works ISPECTION | 1d | 2012-05-03 A | 2012-05-16 | H-11-100 |  | 1d | 2012-06-28 | 2012-06-29 | 152d |  |  |  |  |
| H-11-120 |  | Columns Steel works | 2d | 2012-05-05 A | 2012-05-16 | H-11-110 | 85% | 0.3d | 2012-06-29 | 2012-07-01 | 152.7d |  | Cash [41721.8]; Steel bars [9.9 ton]; Steel Labors [40 h] | 41,721.75 | 35,463.49 |
| H-11-130 |  | Columns steel works ISPECTION | 1d | 2012-05-09 A | 2012-05-16 | H-11-120 | 85% | 0.15d | 2012-07-01 | 2012-07-02 | 152d | 152.85d |  |  |  |
| H-11-150 |  | Columns Pouring works | 1d | 2012-05-11 A | 2012-05-16 | H-11-130 | 85% | 0.15d | 2012-07-02 | 2012-07-03 | 152.85d |  | Cash [41721.8]; Concrete [45 M3]; Conc Labors [5 h] | 41,721.75 | 35,463.49 |
| H-11-160 |  | Slab form works | 10d | 2012-05-12 A | 2012-05-18 | H-11-150, AP-H-10&11-4 | 70% | 3d | 2012-07-03 | 2012-07-13 | 119d | 0d | Cash [38280]; Slab Formwork [200 m2]; Formwork Labors [33 h] | 38,280 | 26,796 |
| H-11-180 |  | Slab steel works | 4d | 2012-05-14 A | 2012-05-17 | H-11-170 | 50% | 2d | 2012-07-14 | 2012-07-18 | 88d | 0d | Cash [44660]; Steel bars [9.3 ton]; Steel Labors [37 h] | 44,660 | 22,330 |
| H-11-140 |  | Engineer Release Pouring | 1d | 2012-05-16 | 2012-05-16 | H-11-130 SS |  |  |  |  | 152d |  |  |  |  |
| H-11-190 |  | Engineer Release Pouring | 1d | 2012-05-18 | 2012-05-18 | H-11-200 SS |  |  |  |  | 150d |  |  |  |  |
| H-11-200 |  | Slab steel works inspection | 1d | 2012-05-18 | 2012-05-18 | H-11-180 |  |  |  |  | 88d | 0d |  |  |  |
| H-11-170 |  | Slab form works inspection | 1d | 2012-05-19 | 2012-05-19 | H-11-160 |  |  |  |  | 149d |  |  |  |  |
| H-11-210 |  | Slab Pouring works | 1d | 2012-05-19 | 2012-05-19 | H-11-200 |  |  |  |  | 88d | 4d | Cash [44660]; Concrete [66.7 M3]; Conc Labors [3 h] | 44,660 |  |
|  | 3 | **First floor** |  | 2012-05-24 | 2012-06-16 |  |  |  |  |  |  |  |  |  |  |
| H-11-220 |  | Columns form works | 4d | 2012-05-24 | 2012-05-27 | H-11-210, AP-H-10&11-5 |  |  |  |  | 84d | 0d | Cash |  |  |
| H-11-230 |  | Columns form works ISPECTION | 1d | 2012-05-28 | 2012-05-28 | H-11-220 |  |  |  |  | 84d | 0d |  |  |  |
| H-11-240 |  | Columns Steel works | 3d | 2012-05-29 | 2012-05-31 | H-11-230 |  |  |  |  | 84d | 0d | Cash |  |  |
| H-11-260 |  | Columns steel works ISPECTION | 1d | 2012-06-01 | 2012-06-01 | H-11-240 |  |  |  |  | 84d | 0d |  |  |  |
| H-11-270 |  | Engineer Release Pouring | 1d | 2012-06-01 | 2012-06-01 | H-11-260 SS |  |  |  |  | 136d |  |  |  |  |
| H-11-280 |  | Columns Pouring works | 1d | 2012-06-02 | 2012-06-02 | H-11-260 |  |  |  |  | 84d | 0d | Cash |  |  |
| H-11-290 |  | Slab form works | 7d | 2012-06-03 | 2012-06-09 | H-11-280, AP-H-10&11-6 |  |  |  |  | 84d | 0d | Cash [38280]; Slab Formwork [200 m2]; Formwork Labors [33 h] | 38,280 |  |
| H-11-310 |  | Slab form works inspection | 1d | 2012-06-10 | 2012-06-10 | H-11-290 |  |  |  |  | 84d | 0d |  |  |  |
| H-11-330 |  | Slab steel works | 4d | 2012-06-11 | 2012-06-14 | H-11-310 |  |  |  |  | 84d | 0d | Cash [44660]; Steel bars [9.3 ton]; Steel Labors [37 h] | 44,660 |  |
| H-11-340 |  | Engineer Release Pouring | 1d | 2012-06-15 | 2012-06-15 | H-11-350 SS |  |  |  |  | 122d |  |  |  |  |
| H-11-350 |  | Slab steel works inspection | 1d | 2012-06-15 | 2012-06-15 | H-11-330 |  |  |  |  | 84d | 0d |  |  |  |
| H-11-360 |  | Slab Pouring works | 1d | 2012-06-16 | 2012-06-16 | H-11-350 |  |  |  |  | 84d | 0d | Cash [44660]; Concrete [66.7 M3]; Conc Labors [3 h] | 44,660 |  |

| ID | WBS | Activity | Duration | Start | Finish | Predecessors | Total float | Free float | Resources | Cost |
| --- | --- | --- | --- | --- | --- | --- | --- | --- | --- | --- |
|  | 4 | **Second floor** |  | 2012-06-17 | 2012-07-11 |  |  |  |  |  |
| H-11-380 |  | Columns form works | 5d | 2012-06-17 | 2012-06-21 | H-11-360, AP-H-10&11-7 | 84d | 0d | Cash |  |
| H-11-400 |  | Columns form works ISPECTION | 1d | 2012-06-22 | 2012-06-22 | H-11-380 | 84d | 0d |  |  |
| H-11-410 |  | Columns Steel works | 3d | 2012-06-23 | 2012-06-25 | H-11-400 | 84d | 0d | Cash |  |
| H-11-420 |  | Columns steel works ISPECTION | 1d | 2012-06-26 | 2012-06-26 | H-11-410 | 84d | 0d |  |  |
| H-11-430 |  | Engineer Release Pouring | 1d | 2012-06-26 | 2012-06-26 | H-11-420 SS | 111d |  |  |  |
| H-11-440 |  | Columns Pouring works | 1d | 2012-06-27 | 2012-06-27 | H-11-420 | 84d | 0d | Cash |  |
| H-11-450 |  | Slab form works | 7d | 2012-06-28 | 2012-07-04 | H-11-440, AP-H-10&11-8 | 84d | 0d | Cash [38280]; Slab Formwork [200 m2]; Formwork Labors [33 h] | 38,280 |
| H-11-460 |  | Slab form works inspection | 1d | 2012-07-05 | 2012-07-05 | H-11-450 | 84d | 0d |  |  |
| H-11-470 |  | Slab steel works | 4d | 2012-07-06 | 2012-07-09 | H-11-460 | 84d | 0d | Cash [44660]; Steel bars [9.3 ton]; Steel Labors [37 h] | 44,660 |
| H-11-480 |  | Engineer Release Pouring | 1d | 2012-07-10 | 2012-07-10 | H-11-490 SS | 97d |  |  |  |
| H-11-490 |  | Slab steel works inspection | 1d | 2012-07-10 | 2012-07-10 | H-11-470 | 84d | 0d |  |  |
| H-11-500 |  | Slab Pouring works | 1d | 2012-07-11 | 2012-07-11 | H-11-490 | 84d | 0d | Cash [44660]; Concrete [66.7 M3]; Conc Labors [3 h] | 44,660 |
|  | 3 | **Insulation works** |  | 2012-06-03 | 2012-08-16 |  |  |  |  |  |
| H-11-250 |  | Footing insulation | 3d | 2012-06-03 | 2012-06-05 | H-11-160 FS+15d | 119d | 0d | Cash [7980]; Insulation Labors [4 h] | 7,980 |
| H-11-300 |  | Engineer inspection&approval for Footing insulation | 1d | 2012-06-06 | 2012-06-06 | H-11-250 | 119d | 0d |  |  |
| H-11-510 |  | Water proofing membrane | 3d | 2012-07-12 | 2012-07-14 | H-11-500 | 84d | 0d | Cash [104280]; Insulation Labors [26 h] | 104,280 |
| H-11-520 |  | Engineer inspection&approval for water proofing | 1d | 2012-07-15 | 2012-07-15 | H-11-510 | 84d | 24d |  |  |
| H-11-530 |  | Heat insulation | 3d | 2012-08-09 | 2012-08-11 | H-11-520, MT-DD-71 | 60d | 0d | Cash [44880]; Polysterine [660 m2]; Insulation Labors [7 h] | 44,880 |
| H-11-540 |  | Engineer inspection&approval for Heat insulation | 1d | 2012-08-12 | 2012-08-12 | H-11-530 | 60d | 0d |  |  |
| H-11-550 |  | Slopped plain concrete | 2d | 2012-08-13 | 2012-08-14 | H-11-540 | 60d | 0d | Conc Labors [7 h] |  |
| H-11-560 |  | Engineer Release Pouring | 1d | 2012-08-15 | 2012-08-15 | H-11-570 SS | 61d |  |  |  |
| H-11-570 |  | Engineer inspection&approval for Slopped P.C | 1d | 2012-08-15 | 2012-08-15 | H-11-550 | 60d | 0d |  |  |
| H-11-580 |  | Slopped P.C Pouring | 1d | 2012-08-16 | 2012-08-16 | H-11-570 | 60d |  | Cash [32340]; Foam Concrete [50 M3]; Conc Labors [7 h] | 32,340 |

| ID | WBS | Activity | Duration | Start | Finish | Predecessors | Complete | Planned start | Planned finish | Total float | Free float | Resources |
| --- | --- | --- | --- | --- | --- | --- | --- | --- | --- | --- | --- | --- |
|  | B11111 | **Building 12** |  | 2012-05-11 | 2012-10-12 |  |  |  |  |  |  |  |
|  | 1 | **Plain concrete** |  | 2012-05-11 | 2012-09-10 |  |  |  |  |  |  |  |
| H-12-10 |  | P.C footings formwork | 5d | 2012-05-11 A | 2012-05-14 A | Z-H12, AP-H-12-1 FS+1d | 100% | 2012-05-15 | 2012-05-19 |  |  | Cash |
| H-12-20 |  | Engineer Release Pouring | 1d | 2012-05-14 A | 2012-05-14 A | H-12-10 | 100% | 2012-05-20 | 2012-05-20 |  |  |  |
| H-12-30 |  | P.C footings concrete pouring | 1d | 2012-05-14 A | 2012-05-15 A | H-12-20 | 100% | 2012-05-21 | 2012-05-21 |  |  | Cash |
| H-12-460 |  | Slab on grade work | 5d | 2012-09-04 | 2012-09-08 | H-12-440 FS+7d |  |  |  | 35d | 0d | Cash |
| H-12-510 |  | Engineer Release Pouring | 1d | 2012-09-09 | 2012-09-09 | H-12-460 |  |  |  | 35d | 0d |  |
| H-12-530 |  | Slab on grade Concrete Pouring | 1d | 2012-09-10 | 2012-09-10 | H-12-510 |  |  |  | 35d |  | Cash |
|  | 2 | **Reinforced concrete** |  | 2012-06-01 | 2012-09-29 |  |  |  |  |  |  |  |
|  | 1 | **Foundations** |  | 2012-06-01 | 2012-06-18 |  |  |  |  |  |  |  |
| H-12-40 |  | R.C footings form work | 8d | 2012-06-01 | 2012-06-08 | AP-H-12-2 FS+2d, H-12-30 |  |  |  | 3d | 0d | Cash |
| H-12-50 |  | Engineer inspection & approval formwork | 1d | 2012-06-09 | 2012-06-09 | H-12-40 |  |  |  | 3d | 0d |  |
| H-12-60 |  | R.C footings steel works | 7d | 2012-06-10 | 2012-06-16 | H-12-50 |  |  |  | 3d | 0d | Cash |
| H-12-70 |  | Engineer inspection & approval steel work | 1d | 2012-06-17 | 2012-06-17 | H-12-60 |  |  |  | 3d | 0d |  |
| H-12-80 |  | Engineer Release Pouring | 1d | 2012-06-17 | 2012-06-17 | H-12-70 SS |  |  |  | 120d |  |  |
| H-12-90 |  | R.C footings Pouring works | 1d | 2012-06-18 | 2012-06-18 | H-12-70 |  |  |  | 3d | 0d | Cash |
|  | 5 | **Basement** |  | 2012-06-19 | 2012-07-15 |  |  |  |  |  |  |  |
| H-12-100 |  | Columns form works | 4d | 2012-06-19 | 2012-06-22 | H-12-90, AP-H-12-21 |  |  |  | 3d | 0d | Cash |
| H-12-110 |  | ColColumns&walls form works inspection | 1d | 2012-06-23 | 2012-06-23 | H-12-100 |  |  |  | 3d | 0d |  |
| H-12-120 |  | Columns&Walls Steel works | 3d | 2012-06-24 | 2012-06-26 | H-12-110 |  |  |  | 3d | 0d | Cash |
| H-12-130 |  | Columns&walls steel works inspection | 1d | 2012-06-27 | 2012-06-27 | H-12-120 |  |  |  | 3d | 0d |  |
| H-12-140 |  | Engineer Release Pouring | 1d | 2012-06-27 | 2012-06-27 | H-12-130 SS |  |  |  | 110d |  |  |
| H-12-150 |  | Columns&Walls Pouring works | 1d | 2012-06-28 | 2012-06-28 | H-12-130 |  |  |  | 3d | 0d | Cash |
| H-12-160 |  | Slab form works | 10d | 2012-06-29 | 2012-07-08 | H-12-150, AP-H-12-22 |  |  |  | 3d | 0d | Cash |
| H-12-190 |  | Slab form works inspection | 1d | 2012-07-09 | 2012-07-09 | H-12-160 |  |  |  | 3d | 0d |  |
| H-12-200 |  | Slab steel works | 4d | 2012-07-10 | 2012-07-13 | H-12-190 |  |  |  | 3d | 0d | Cash |
| H-12-210 |  | Engineer Release Pouring | 1d | 2012-07-14 | 2012-07-14 | H-12-220 SS |  |  |  | 93d |  |  |
| H-12-220 |  | Slab steel works inspection | 1d | 2012-07-14 | 2012-07-14 | H-12-200 |  |  |  | 3d | 0d |  |
| H-12-230 |  | Slab Pouring works | 1d | 2012-07-15 | 2012-07-15 | H-12-220 |  |  |  | 3d | 0d | Cash |

| ID | WBS | Activity | Duration | Start | Finish | Predecessors | Total float | Free float | Resources |
| --- | --- | --- | --- | --- | --- | --- | --- | --- | --- |
|  | 2 | **Ground floor** |  | 2012-07-16 | 2012-08-11 |  |  |  |  |
| H-12-240 |  | Columns form works | 4d | 2012-07-16 | 2012-07-19 | AP-H-12-3, H-12-230 | 3d | 0d | Cash |
| H-12-250 |  | Columns form works ISPECTION | 1d | 2012-07-20 | 2012-07-20 | H-12-240 | 3d | 0d |  |
| H-12-260 |  | Columns Steel works | 3d | 2012-07-21 | 2012-07-23 | H-12-250 | 3d | 0d | Cash |
| H-12-270 |  | Columns steel works ISPECTION | 1d | 2012-07-24 | 2012-07-24 | H-12-260 | 3d | 0d |  |
| H-12-280 |  | Engineer Release Pouring | 1d | 2012-07-24 | 2012-07-24 | H-12-270 SS | 83d |  |  |
| H-12-290 |  | Columns Pouring works | 1d | 2012-07-25 | 2012-07-25 | H-12-270 | 3d | 0d | Cash |
| H-12-300 |  | Slab form works | 10d | 2012-07-26 | 2012-08-04 | H-12-290, AP-H-12-4 | 3d | 0d | Cash |
| H-12-310 |  | Slab form works inspection | 1d | 2012-08-05 | 2012-08-05 | H-12-300 | 3d | 0d |  |
| H-12-320 |  | Slab steel works | 4d | 2012-08-06 | 2012-08-09 | H-12-310 | 3d | 0d | Cash |
| H-12-330 |  | Engineer Release Pouring | 1d | 2012-08-10 | 2012-08-10 | H-12-340 SS | 66d |  |  |
| H-12-340 |  | Slab steel works inspection | 1d | 2012-08-10 | 2012-08-10 | H-12-320 | 3d | 0d |  |
| H-12-350 |  | Slab Pouring works | 1d | 2012-08-11 | 2012-08-11 | H-12-340 | 3d | 0d | Cash |
|  | 3 | **First floor** |  | 2012-08-12 | 2012-09-04 |  |  |  |  |
| H-12-360 |  | Columns form works | 4d | 2012-08-12 | 2012-08-15 | H-12-350, AP-H-12-5 | 3d | 0d | Cash |
| H-12-370 |  | Columns form works ISPECTION | 1d | 2012-08-16 | 2012-08-16 | H-12-360 | 3d | 0d |  |
| H-12-380 |  | Columns Steel works | 3d | 2012-08-17 | 2012-08-19 | H-12-370 | 3d | 0d | Cash |
| H-12-400 |  | Columns steel works ISPECTION | 1d | 2012-08-20 | 2012-08-20 | H-12-380 | 3d | 0d |  |
| H-12-410 |  | Engineer Release Pouring | 1d | 2012-08-20 | 2012-08-20 | H-12-400 SS | 56d |  |  |
| H-12-420 |  | Columns Pouring works | 1d | 2012-08-21 | 2012-08-21 | H-12-400 | 3d | 0d | Cash |
| H-12-430 |  | Slab form works | 7d | 2012-08-22 | 2012-08-28 | H-12-420, AP-H-12-6 | 3d | 0d | Cash |
| H-12-450 |  | Slab form works inspection | 1d | 2012-08-29 | 2012-08-29 | H-12-430 | 3d | 0d |  |
| H-12-470 |  | Slab steel works | 4d | 2012-08-30 | 2012-09-02 | H-12-450 | 3d | 0d | Cash |
| H-12-480 |  | Engineer Release Pouring | 1d | 2012-09-03 | 2012-09-03 | H-12-490 SS | 42d |  |  |
| H-12-490 |  | Slab steel works inspection | 1d | 2012-09-03 | 2012-09-03 | H-12-470 | 3d | 0d |  |
| H-12-500 |  | Slab Pouring works | 1d | 2012-09-04 | 2012-09-04 | H-12-490 | 3d | 0d | Cash |

| ID | WBS | Activity | Duration | Start | Finish | Predecessors | Total float | Free float | Resources |
| --- | --- | --- | --- | --- | --- | --- | --- | --- | --- |
|  | 4 | **Second floor** |  | 2012-09-05 | 2012-09-29 |  |  |  |  |
| H-12-520 |  | Columns form works | 5d | 2012-09-05 | 2012-09-09 | H-12-500, AP-H-12-7 | 3d | 0d | Cash |
| H-12-540 |  | Columns form works ISPECTION | 1d | 2012-09-10 | 2012-09-10 | H-12-520 | 3d | 0d |  |
| H-12-550 |  | Columns Steel works | 3d | 2012-09-11 | 2012-09-13 | H-12-540 | 3d | 0d | Cash |
| H-12-560 |  | Columns steel works ISPECTION | 1d | 2012-09-14 | 2012-09-14 | H-12-550 | 3d | 0d |  |
| H-12-570 |  | Engineer Release Pouring | 1d | 2012-09-14 | 2012-09-14 | H-12-560 SS | 31d |  |  |
| H-12-580 |  | Columns Pouring works | 1d | 2012-09-15 | 2012-09-15 | H-12-560 | 3d | 0d | Cash |
| H-12-590 |  | Slab form works | 7d | 2012-09-16 | 2012-09-22 | H-12-580, AP-H-12-8 | 3d | 0d | Cash |
| H-12-600 |  | Slab form works inspection | 1d | 2012-09-23 | 2012-09-23 | H-12-590 | 3d | 0d |  |
| H-12-610 |  | Slab steel works | 4d | 2012-09-24 | 2012-09-27 | H-12-600 | 3d | 0d | Cash |
| H-12-620 |  | Engineer Release Pouring | 1d | 2012-09-28 | 2012-09-28 | H-12-630 SS | 17d |  |  |
| H-12-630 |  | Slab steel works inspection | 1d | 2012-09-28 | 2012-09-28 | H-12-610 | 3d | 0d |  |
| H-12-640 |  | Slab Pouring works | 1d | 2012-09-29 | 2012-09-29 | H-12-630 | 3d | 0d | Cash |
|  | 3 | **Insulation works** |  | 2012-06-29 | 2012-10-12 |  |  |  |  |
| H-12-170 |  | Water proofing membrane For basement Walls | 3d | 2012-06-29 | 2012-07-01 | H-12-150 | 105d | 0d | Cash |
| H-12-180 |  | Engineer inspection&approval for water proofing For basement Walls | 1d | 2012-07-02 | 2012-07-02 | H-12-170 | 105d |  |  |
| H-12-390 |  | Footing insulation | 7d | 2012-08-20 | 2012-08-26 | H-12-300 FS+15d | 35d | 0d | Cash |
| H-12-440 |  | Engineer inspection&approval for Footing insulation | 1d | 2012-08-27 | 2012-08-27 | H-12-390 | 35d | 0d |  |
| H-12-650 |  | Water proofing membrane | 3d | 2012-09-30 | 2012-10-02 | H-12-640 | 3d | 0d | Cash |
| H-12-660 |  | Engineer inspection&approval for water proofing | 1d | 2012-10-03 | 2012-10-03 | H-12-650 | 3d | 0d |  |
| H-12-670 |  | Heat insulation | 3d | 2012-10-04 | 2012-10-06 | H-12-660, MT-DD-71 | 3d | 0d | Cash |
| H-12-680 |  | Engineer inspection&approval for Heat insulation | 1d | 2012-10-07 | 2012-10-07 | H-12-670 | 3d | 0d |  |
| H-12-690 |  | Slopped plain concrete | 3d | 2012-10-08 | 2012-10-10 | H-12-680 | 3d | 0d | Cash |
| H-12-700 |  | Engineer Release Pouring | 1d | 2012-10-11 | 2012-10-11 | H-12-710 SS | 4d |  |  |
| H-12-710 |  | Engineer inspection&approval for Slopped P.C | 1d | 2012-10-11 | 2012-10-11 | H-12-690 | 3d | 0d |  |
| H-12-720 |  | Slopped P.C Pouring | 1d | 2012-10-12 | 2012-10-12 | H-12-710 | 3d |  | Cash |

| ID | WBS | Activity | Duration | Start | Finish | Predecessors | Complete | Remaining | Planned start | Planned finish | Total float | Free float | Calendar | Resources | Cost | Actual cost |
| --- | --- | --- | --- | --- | --- | --- | --- | --- | --- | --- | --- | --- | --- | --- | --- | --- |
|  | 2 | **CABINES AREA** |  | 2012-03-18 | 2012-08-14 |  |  |  |  |  |  |  |  |  |  |  |
|  | 18 | **Building 1** |  | 2012-03-18 | 2012-08-14 |  |  |  |  |  |  |  |  |  |  |  |
|  | 4 | **Foundations** |  | 2012-03-18 | 2012-04-28 |  |  |  |  |  |  |  |  |  |  |  |
| C-1-10 |  | P.C footings formwork | 6d | 2012-03-18 A | 2012-03-18 A | Z-C1, AP-C-1 FS+2d | 100% |  | 2012-04-28 | 2012-05-03 |  |  | PORTO MATROUH Calendar | Cash [43287.6]; Formwork Labors [33 h] | 43,287.6 | 43,287.6 |
| C-1-20 |  | Engineer Release Pouring | 1d | 2012-03-18 A | 2012-03-18 A | C-1-10 | 100% |  | 2012-04-08 | 2012-04-08 |  |  | PORTO MATROUH Calendar |  |  |  |
| C-1-30 |  | P.C footings concrete pouring | 1d | 2012-03-19 A | 2012-03-19 A | C-1-20 | 100% |  | 2012-04-09 | 2012-04-09 |  |  | PORTO MATROUH Calendar | Cash [64931.4]; Concrete [164.2 M3]; Conc Labors [9 h] | 64,931.4 | 64,931.4 |
| C-1-40 |  | R.C footings form work | 6d | 2012-03-20 A | 2012-04-25 A | AP-C-1 FS+5d, C-1-30 | 100% |  | 2012-05-05 | 2012-05-10 |  |  | PORTO MATROUH Calendar | Cash [57421.8]; Formwork Labors [57 h] | 57,421.8 | 57,421.8 |
| C-1-60 |  | R.C footings steel works | 6d | 2012-03-25 A | 2012-03-28 A | C-1-50 | 100% |  | 2012-05-12 | 2012-05-17 |  |  | PORTO MATROUH Calendar | Cash [66992.1]; Steel bars [12.06 ton]; Steel Labors [48 h] | 66,992.1 | 66,992.1 |
| C-1-50 |  | Engineer inspection & approval formwork | 1d | 2012-03-28 A | 2012-04-28 A | C-1-40 | 100% |  | 2012-05-12 | 2012-05-12 |  |  | PORTO MATROUH Calendar |  |  |  |
| C-1-80 |  | Engineer Release Pouring | 1d | 2012-03-30 A | 2012-03-30 A | C-1-70 SS | 100% |  | 2012-04-28 | 2012-04-28 |  |  | PORTO MATROUH Calendar |  |  |  |
| C-1-70 |  | Engineer inspection & approval steel work | 1d | 2012-03-31 A | 2012-03-31 A | C-1-60 | 100% |  | 2012-05-19 | 2012-05-19 |  |  | PORTO MATROUH Calendar |  |  |  |
| C-1-90 |  | R.C footings Pouring works | 1d | 2012-04-01 A | 2012-04-02 A | C-1-70 | 100% |  | 2012-04-29 | 2012-04-29 |  |  | PORTO MATROUH Calendar | Cash [66992.1]; Concrete [114 M3]; Conc Labors [6 h] | 66,992.1 | 66,992.1 |
|  | 2 | **Ground floor** |  | 2012-04-02 | 2012-06-09 |  |  |  |  |  |  |  |  |  |  |  |
| C-1-100 |  | Columns&walls form works | 12d | 2012-04-02 A | 2012-04-06 A | C-1-90, AP-C-1 FS+5d | 100% |  | 2012-05-20 | 2012-05-31 |  |  | PORTO MATROUH Calendar | Cash [47511]; Formwork Labors [78 h] | 47,511 | 47,511 |
| C-1-140 |  | Engineer Release Pouring | 1d | 2012-04-04 A | 2012-04-04 A | C-1-130 SS | 100% |  | 2012-05-23 | 2012-05-23 |  |  | PORTO MATROUH Calendar |  |  |  |
| C-1-110 |  | ColColumns&walls form works inspection | 1d | 2012-04-06 A | 2012-04-06 A | C-1-100 | 100% |  | 2012-06-02 | 2012-06-02 |  |  | PORTO MATROUH Calendar |  |  |  |
| C-1-120 |  | Columns&walls Steel works | 6d | 2012-04-06 A | 2012-04-09 A | C-1-110 | 100% |  | 2012-06-02 | 2012-06-07 |  |  | PORTO MATROUH Calendar | Cash [55429.5]; Steel bars [10.03 ton]; Steel Labors [60 h] | 55,429.5 | 55,429.5 |
| C-1-130 |  | Columns&walls steel works inspection | 1d | 2012-04-09 A | 2012-04-09 A | C-1-120 | 100% |  | 2012-06-09 | 2012-06-09 |  |  | PORTO MATROUH Calendar |  |  |  |
| C-1-150 |  | Columns&walls pouring works | 1d | 2012-04-09 A | 2012-04-09 A | C-1-130 | 100% |  | 2012-05-24 | 2012-05-24 |  |  | PORTO MATROUH Calendar | Cash [55429.5]; Concrete [81 M3]; Conc Labors [13 h] | 55,429.5 | 55,429.5 |
| C-1-160 |  | Slab form works | 9d | 2012-04-15 A | 2012-04-23 A | C-1-150, AP-C-1 FS+5d | 100% |  | 2012-04-29 | 2012-05-07 |  |  | PORTO MATROUH Calendar | Cash [94443.5]; Slab Formwork [580 m2]; Formwork Labors [130 h] | 94,443.5 | 94,443.5 |
| C-1-180 |  | Slab steel works | 5d | 2012-04-20 A | 2012-04-24 A | C-1-170 | 100% |  | 2012-05-09 | 2012-05-13 |  |  | PORTO MATROUH Calendar | Cash [110184]; Steel bars [20.52 ton]; Steel Labors [103 h] | 110,183.85 | 110,183.85 |
| C-1-170 |  | Slab form works inspection | 1d | 2012-04-23 A | 2012-04-23 A | C-1-160 | 100% |  | 2012-05-08 | 2012-05-08 |  |  | PORTO MATROUH Calendar |  |  |  |
| C-1-200 |  | Slab steel works inspection | 1d | 2012-04-24 A | 2012-04-24 A | C-1-180 | 100% |  | 2012-05-14 | 2012-05-14 |  |  | PORTO MATROUH Calendar |  |  |  |
| C-1-190 |  | Engineer Release Pouring | 1d | 2012-04-25 A | 2012-04-25 A | C-1-200 SS | 100% |  | 2012-05-14 | 2012-05-14 |  |  | PORTO MATROUH Calendar |  |  |  |
| C-1-210 |  | Slab Pouring works | 1d | 2012-04-25 A | 2012-05-16 | C-1-200 | 70% | 0.3d | 2012-05-15 | 2012-05-15 | 101.7d | 0d | PORTO MATROUH Calendar | Cash [110184]; Concrete [171 M3]; Conc Labors [17 h] | 110,183.85 | 77,128.7 |
| C-1-270 |  | Removing form work | 5d | 2012-06-03 | 2012-06-09 | C-1-210 FS+15d |  |  |  |  | 101.7d | 0d | PORTO MATROUH Calendar | Formwork Labors [6 h] |  |  |

| ID | WBS | Activity | Duration | Start | Finish | Predecessors | Complete | Remaining | Planned start | Planned finish | Total float | Free float | Calendar | Resources | Cost | Actual cost |
| --- | --- | --- | --- | --- | --- | --- | --- | --- | --- | --- | --- | --- | --- | --- | --- | --- |
|  | 3 | **Insulation works** |  | 2012-05-10 | 2012-08-14 |  |  |  |  |  |  |  |  |  |  |  |
| C-1-220 |  | Water proofing membrane | 7d | 2012-05-10 A | 2012-05-19 | C-1-210, MT-AP-31 FS+5d | 60% | 2.8d | 2012-05-22 | 2012-05-28 | 112.2d | 0d | PORTO MATROUH Calendar | Cash [29440]; Proofing membrane [640 m2]; Insulation Labors [13 h] | 29,440 | 17,664 |
| C-1-230 |  | Engineer inspection&approval for water proofing | 1d | 2012-05-19 | 2012-05-20 | C-1-220 |  |  |  |  | 112.2d | 59.2d | PORTO MATROUH Calendar |  |  |  |
| C-1-280 |  | Footing insulation | 8d | 2012-06-09 | 2012-06-18 | C-1-270, MT-AP-21 FS+5d |  |  |  |  | 101.7d | 0d | PORTO MATROUH Calendar | Cash [17366]; Insulation Labors [9 h] | 17,366 |  |
| C-1-320 |  | Engineer inspection&approval for Footing insulation | 1d | 2012-06-18 | 2012-06-19 | C-1-280 |  |  |  |  | 101.7d |  | PORTO MATROUH Calendar |  |  |  |
| C-1-240 |  | Heat insulation | 5d | 2012-07-29 | 2012-08-02 | C-1-230, MT-DD-61 |  |  |  |  | 53d | 0d | PORTO MATROUH Calendar | Cash [39576]; Polysterine [582 m2]; Insulation Labors [6 h] | 39,576 |  |
| C-1-250 |  | Engineer inspection&approval for Heat insulation | 1d | 2012-08-04 | 2012-08-04 | C-1-240 |  |  |  |  | 53d | 0d | PORTO MATROUH Calendar |  |  |  |
| C-1-260 |  | Slopped plain concrete | 7d | 2012-08-05 | 2012-08-12 | C-1-250, MT-AP-51 FS+5d |  |  |  |  | 53d | 0d | PORTO MATROUH Calendar | Conc Labors [8 h] |  |  |
| C-1-290 |  | Engineer Release Pouring | 1d | 2012-08-13 | 2012-08-13 | C-1-300 SS |  |  |  |  | 54d |  | PORTO MATROUH Calendar |  |  |  |
| C-1-300 |  | Engineer inspection&approval for Slopped P.C | 1d | 2012-08-13 | 2012-08-13 | C-1-260 |  |  |  |  | 53d | 0d | PORTO MATROUH Calendar |  |  |  |
| C-1-310 |  | Slopped P.C Pouring | 1d | 2012-08-14 | 2012-08-14 | C-1-300 |  |  |  |  | 53d |  | PORTO MATROUH Calendar | Cash [28420]; Foam Concrete [43.5 M3]; Conc Labors [2 h] | 28,420 |  |
|  | 1 | **Building 2** |  | 2012-03-18 | 2012-08-14 |  |  |  |  |  |  |  |  |  |  |  |
|  | 4 | **Foundations** |  | 2012-03-18 | 2012-03-29 |  |  |  |  |  |  |  |  |  |  |  |
| C-2-10 |  | P.C footings formwork | 5d | 2012-03-18 A | 2012-03-18 A | Z-C2, AP-C-2 FS+2d | 100% |  | 2012-04-01 | 2012-04-05 |  |  | PORTO MATROUH Calendar | Cash [51945.1]; Formwork Labors [39 h] | 51,945.12 | 51,945.12 |
| C-2-20 |  | Engineer Release Pouring | 1d | 2012-03-18 A | 2012-03-18 A | C-2-10 | 100% |  | 2012-04-08 | 2012-04-08 |  |  | PORTO MATROUH Calendar |  |  |  |
| C-2-30 |  | P.C footings concrete pouring | 1d | 2012-03-18 A | 2012-03-18 A | C-2-20 | 100% |  | 2012-04-09 | 2012-04-09 |  |  | PORTO MATROUH Calendar | Cash [77917.7]; Concrete [197.04 M3]; Conc Labors [11 h] | 77,917.68 | 77,917.68 |
| C-2-40 |  | R.C footings form work | 7d | 2012-03-19 A | 2012-03-24 A | AP-C-2 FS+5d, C-2-30 | 100% |  | 2012-04-29 | 2012-05-05 |  |  | PORTO MATROUH Calendar | Cash [68906.2]; Formwork Labors [68 h] | 68,906.16 | 68,906.16 |
| C-2-50 |  | Engineer inspection & approval formwork | 1d | 2012-03-24 A | 2012-03-24 A | C-2-40 | 100% |  | 2012-05-06 | 2012-05-06 |  |  | PORTO MATROUH Calendar |  |  |  |
| C-2-60 |  | R.C footings steel works | 7d | 2012-03-25 A | 2012-03-28 A | C-2-50 | 100% |  | 2012-05-07 | 2012-05-13 |  |  | PORTO MATROUH Calendar | Cash [80390.5]; Steel bars [14.47 ton]; Steel Labors [58 h] | 80,390.52 | 80,390.52 |
| C-2-80 |  | Engineer Release Pouring | 1d | 2012-03-26 A | 2012-03-26 A | C-2-70 SS | 100% |  | 2012-04-28 | 2012-04-28 |  |  | PORTO MATROUH Calendar |  |  |  |
| C-2-70 |  | Engineer inspection & approval steel work | 1d | 2012-03-28 A | 2012-03-28 A | C-2-60 | 100% |  | 2012-05-14 | 2012-05-14 |  |  | PORTO MATROUH Calendar |  |  |  |
| C-2-90 |  | R.C footings Pouring works | 1d | 2012-03-29 A | 2012-03-29 A | C-2-70 | 100% |  | 2012-04-29 | 2012-04-29 |  |  | PORTO MATROUH Calendar | Cash [80390.5]; Concrete [136.8 M3]; Conc Labors [7 h] | 80,390.52 | 80,390.52 |
|  | 2 | **Ground floor** |  | 2012-03-31 | 2012-04-28 |  |  |  |  |  |  |  |  |  |  |  |
| C-2-100 |  | Columns&walls form works | 10d | 2012-03-31 A | 2012-04-05 A | C-2-90, AP-C-2 FS+5d | 100% |  | 2012-04-29 | 2012-05-08 |  |  | PORTO MATROUH Calendar | Cash [57013.2]; Formwork Labors [93 h] | 57,013.2 | 57,013.2 |
| C-2-110 |  | ColColumns&walls form works inspection | 1d | 2012-04-05 A | 2012-04-05 A | C-2-100 | 100% |  | 2012-05-09 | 2012-05-09 |  |  | PORTO MATROUH Calendar |  |  |  |
| C-2-120 |  | Columns&walls Steel works | 7d | 2012-04-06 A | 2012-04-09 A | C-2-110 | 100% |  | 2012-05-10 | 2012-05-16 |  |  | PORTO MATROUH Calendar | Cash [66515.4]; Steel bars [12.04 ton]; Steel Labors [72 h] | 66,515.4 | 66,515.4 |
| C-2-130 |  | Columns&walls steel works inspection | 1d | 2012-04-09 A | 2012-04-09 A | C-2-120 | 100% |  | 2012-05-17 | 2012-05-17 |  |  | PORTO MATROUH Calendar |  |  |  |
| C-2-140 |  | Engineer Release Pouring | 1d | 2012-04-10 A | 2012-04-10 A | C-2-130 SS | 100% |  | 2012-05-21 | 2012-05-21 |  |  | PORTO MATROUH Calendar |  |  |  |
| C-2-150 |  | Columns&walls pouring works | 1d | 2012-04-10 A | 2012-04-10 A | C-2-130 | 100% |  | 2012-05-22 | 2012-05-22 |  |  | PORTO MATROUH Calendar | Cash [66515.4]; Concrete [97.2 M3]; Conc Labors [16 h] | 66,515.4 | 66,515.4 |
| C-2-160 |  | Slab form works | 8d | 2012-04-12 A | 2012-04-17 A | C-2-150, AP-C-2 FS+5d, C-1-210 FS+8d | 100% |  | 2012-05-24 | 2012-05-31 |  |  | PORTO MATROUH Calendar | Cash [113332]; Slab Formwork [696 m2]; Formwork Labors [156 h] | 113,331.96 | 113,331.96 |
| C-2-170 |  | Slab form works inspection | 1d | 2012-04-17 A | 2012-04-17 A | C-2-160 | 100% |  | 2012-06-02 | 2012-06-02 |  |  | PORTO MATROUH Calendar |  |  |  |
| C-2-180 |  | Slab steel works | 5d | 2012-04-18 A | 2012-04-21 A | C-2-170 | 100% |  | 2012-06-03 | 2012-06-07 |  |  | PORTO MATROUH Calendar | Cash [132221]; Steel bars [24.62 ton]; Steel Labors [123 h] | 132,220.62 | 132,220.62 |
| C-2-200 |  | Slab steel works inspection | 1d | 2012-04-21 A | 2012-04-21 A | C-2-180 | 100% |  | 2012-06-09 | 2012-06-09 |  |  | PORTO MATROUH Calendar |  |  |  |
| C-2-190 |  | Engineer Release Pouring | 1d | 2012-04-22 A | 2012-04-22 A | C-2-200 SS | 100% |  | 2012-06-09 | 2012-06-09 |  |  | PORTO MATROUH Calendar |  |  |  |
| C-2-210 |  | Slab Pouring works | 1d | 2012-04-22 A | 2012-04-22 A | C-2-200 | 100% |  | 2012-07-12 | 2012-07-12 |  |  | PORTO MATROUH Calendar | Cash [132221]; Concrete [205.2 M3]; Conc Labors [21 h] | 132,220.62 | 132,220.62 |
| C-2-270 |  | Removing form work | 5d | 2012-04-24 A | 2012-04-28 A | C-2-210 FS+15d | 100% |  | 2012-05-07 | 2012-05-11 |  |  | PORTO MATROUH Calendar | Formwork Labors [8 h] |  |  |

| ID | WBS | Activity | Duration | Start | Finish | Predecessors | Complete | Remaining | Planned start | Planned finish | Total float | Free float | Calendar | Resources | Cost | Actual cost |
| --- | --- | --- | --- | --- | --- | --- | --- | --- | --- | --- | --- | --- | --- | --- | --- | --- |
|  | 3 | **Insulation works** |  | 2012-04-26 | 2012-08-14 |  |  |  |  |  |  |  |  |  |  |  |
| C-2-220 |  | Water proofing membrane | 7d | 2012-04-26 A | 2012-05-02 A | C-2-210 | 100% |  | 2012-04-30 | 2012-05-06 |  |  | PORTO MATROUH Calendar | Cash [35328]; Proofing membrane [768 m2]; Insulation Labors [15 h] | 35,328 | 35,328 |
| C-2-280 |  | Footing insulation | 8d | 2012-05-12 A | 2012-05-17 | C-2-270 | 80% | 1.6d | 2012-05-23 | 2012-05-31 | 128.4d | 0d | PORTO MATROUH Calendar | Cash [20839.2]; Insulation Labors [11 h] | 20,839.2 | 16,671.36 |
| C-2-230 |  | Engineer inspection&approval for water proofing | 1d | 2012-05-16 | 2012-05-16 | C-2-220 |  |  |  |  | 115d | 62d | PORTO MATROUH Calendar |  |  |  |
| C-2-320 |  | Engineer inspection&approval for Footing insulation | 1d | 2012-05-17 | 2012-05-19 | C-2-280 |  |  |  |  | 128.4d |  | PORTO MATROUH Calendar |  |  |  |
| C-2-240 |  | Heat insulation | 5d | 2012-07-29 | 2012-08-02 | C-2-230, MT-DD-61 |  |  |  |  | 53d | 0d | PORTO MATROUH Calendar | Cash [47491.2]; Polysterine [698.4 m2]; Insulation Labors [7 h] | 47,491.2 |  |
| C-2-250 |  | Engineer inspection&approval for Heat insulation | 1d | 2012-08-04 | 2012-08-04 | C-2-240 |  |  |  |  | 53d | 0d | PORTO MATROUH Calendar |  |  |  |
| C-2-260 |  | Slopped plain concrete | 7d | 2012-08-05 | 2012-08-12 | C-2-250 |  |  |  |  | 53d | 0d | PORTO MATROUH Calendar | Conc Labors [10 h] |  |  |
| C-2-290 |  | Engineer Release Pouring | 1d | 2012-08-13 | 2012-08-13 | C-2-300 SS |  |  |  |  | 54d |  | PORTO MATROUH Calendar |  |  |  |
| C-2-300 |  | Engineer inspection&approval for Slopped P.C | 1d | 2012-08-13 | 2012-08-13 | C-2-260 |  |  |  |  | 53d | 0d | PORTO MATROUH Calendar |  |  |  |
| C-2-310 |  | Slopped P.C Pouring | 1d | 2012-08-14 | 2012-08-14 | C-2-300 |  |  |  |  | 53d |  | PORTO MATROUH Calendar | Cash [34104]; Foam Concrete [52.2 M3]; Conc Labors [3 h] | 34,104 |  |
|  | 2 | **Building 3** |  | 2012-03-18 | 2012-08-14 |  |  |  |  |  |  |  |  |  |  |  |
|  | 4 | **Foundations** |  | 2012-03-18 | 2012-04-09 |  |  |  |  |  |  |  |  |  |  |  |
| C-3-10 |  | P.C footings formwork | 5d | 2012-03-18 A | 2012-03-18 A | Z-C3, AP-C-3 FS+2d | 100% |  | 2012-04-01 | 2012-04-05 |  |  | PORTO MATROUH Calendar | Cash [43287.6]; Formwork Labors [33 h] | 43,287.6 | 43,287.6 |
| C-3-20 |  | Engineer Release Pouring | 1d | 2012-03-18 A | 2012-03-18 A | C-3-10 | 100% |  | 2012-04-08 | 2012-04-08 |  |  | PORTO MATROUH Calendar |  |  |  |
| C-3-30 |  | P.C footings concrete pouring | 1d | 2012-03-18 A | 2012-03-18 A | C-3-20 | 100% |  | 2012-04-09 | 2012-04-09 |  |  | PORTO MATROUH Calendar | Cash [64931.4]; Concrete [164.2 M3]; Conc Labors [9 h] | 64,931.4 | 64,931.4 |
| C-3-40 |  | R.C footings form work | 7d | 2012-03-30 A | 2012-04-04 A | AP-C-3 FS+5d, C-3-30 | 100% |  | 2012-04-29 | 2012-05-05 |  |  | PORTO MATROUH Calendar | Cash [57421.8]; Formwork Labors [57 h] | 57,421.8 | 57,421.8 |
| C-3-50 |  | Engineer inspection & approval formwork | 1d | 2012-04-04 A | 2012-04-04 A | C-3-40 | 100% |  | 2012-05-06 | 2012-05-06 |  |  | PORTO MATROUH Calendar |  |  |  |
| C-3-60 |  | R.C footings steel works | 7d | 2012-04-05 A | 2012-04-08 A | C-3-50 | 100% |  | 2012-05-07 | 2012-05-13 |  |  | PORTO MATROUH Calendar | Cash [66992.1]; Steel bars [56 ton]; Steel Labors [48 h] | 66,992.1 | 66,992.1 |
| C-3-70 |  | Engineer inspection & approval steel work | 1d | 2012-04-08 A | 2012-04-08 A | C-3-60 | 100% |  | 2012-05-14 | 2012-05-14 |  |  | PORTO MATROUH Calendar |  |  |  |
| C-3-80 |  | Engineer Release Pouring | 1d | 2012-04-08 A | 2012-04-08 A | C-3-70 SS | 100% |  | 2012-04-28 | 2012-04-28 |  |  | PORTO MATROUH Calendar |  |  |  |
| C-3-90 |  | R.C footings Pouring works | 1d | 2012-04-09 A | 2012-04-09 A | C-3-70 | 100% |  | 2012-04-29 | 2012-04-29 |  |  | PORTO MATROUH Calendar | Cash [66992.1]; Concrete [114 M3]; Conc Labors [6 h] | 66,992.1 | 66,992.1 |
|  | 2 | **Ground floor** |  | 2012-04-10 | 2012-05-24 |  |  |  |  |  |  |  |  |  |  |  |
| C-3-100 |  | Columns&walls form works | 12d | 2012-04-10 A | 2012-04-13 A | C-3-90, AP-C-3 FS+5d | 100% |  | 2012-04-29 | 2012-05-10 |  |  | PORTO MATROUH Calendar | Cash [47511]; Formwork Labors [78 h] | 47,511 | 47,511 |
| C-3-110 |  | ColColumns&walls form works inspection | 1d | 2012-04-13 A | 2012-04-13 A | C-3-100 | 100% |  | 2012-05-12 | 2012-05-12 |  |  | PORTO MATROUH Calendar |  |  |  |
| C-3-120 |  | Columns&walls Steel works | 6d | 2012-04-13 A | 2012-04-17 A | C-3-110 | 100% |  | 2012-05-12 | 2012-05-17 |  |  | PORTO MATROUH Calendar | Cash [55429.5]; Steel bars [10.03 ton]; Steel Labors [60 h] | 55,429.5 | 55,429.5 |
| C-3-130 |  | Columns &walls steel works ISPECTION | 1d | 2012-04-17 A | 2012-04-17 A | C-3-120 | 100% |  | 2012-05-19 | 2012-05-19 |  |  | PORTO MATROUH Calendar |  |  |  |
| C-3-140 |  | Engineer Release Pouring | 1d | 2012-04-17 A | 2012-04-17 A | C-3-130 SS | 100% |  | 2012-05-19 | 2012-05-19 |  |  | PORTO MATROUH Calendar |  |  |  |
| C-3-150 |  | Columns&walls pouring works | 1d | 2012-04-18 A | 2012-04-18 A | C-3-130 | 100% |  | 2012-05-20 | 2012-05-20 |  |  | PORTO MATROUH Calendar | Cash [55429.5]; Concrete [81 M3]; Conc Labors [13 h] | 55,429.5 | 55,429.5 |
| C-3-160 |  | Slab form works | 9d | 2012-04-19 A | 2012-04-22 A | C-3-150, AP-C-3 FS+5d | 100% |  | 2012-05-21 | 2012-05-29 |  |  | PORTO MATROUH Calendar | Cash [94443.3]; Slab Formwork [580 m2]; Formwork Labors [130 h] | 94,443.3 | 94,443.3 |
| C-3-170 |  | Slab form works inspection | 1d | 2012-04-22 A | 2012-04-22 A | C-3-160 | 100% |  | 2012-05-30 | 2012-05-30 |  |  | PORTO MATROUH Calendar |  |  |  |
| C-3-180 |  | Slab steel works | 5d | 2012-04-23 A | 2012-04-29 A | C-3-170 | 100% |  | 2012-05-31 | 2012-06-04 |  |  | PORTO MATROUH Calendar | Cash [110184]; Steel bars [20.52 ton]; Steel Labors [103 h] | 110,183.85 | 110,183.85 |
| C-3-200 |  | Slab steel works inspection | 1d | 2012-04-29 A | 2012-04-29 A | C-3-180 | 100% |  | 2012-06-05 | 2012-06-05 |  |  | PORTO MATROUH Calendar |  |  |  |
| C-3-190 |  | Engineer Release Pouring | 1d | 2012-05-01 A | 2012-05-01 A | C-3-200 SS | 100% |  | 2012-04-30 | 2012-04-30 |  |  | PORTO MATROUH Calendar |  |  |  |
| C-3-210 |  | Slab Pouring works | 1d | 2012-05-02 A | 2012-05-02 A | C-3-200 | 100% |  | 2012-04-30 | 2012-04-30 |  |  | PORTO MATROUH Calendar | Cash [110184]; Concrete [171 M3]; Conc Labors [17 h] | 110,183.85 | 110,183.85 |
| C-3-270 |  | Removing form work | 5d | 2012-05-20 | 2012-05-24 | C-3-210 FS+15d |  |  |  |  | 114d | 0d | PORTO MATROUH Calendar | Formwork Labors [6 h] |  |  |

| ID | WBS | Activity | Duration | Start | Finish | Predecessors | Complete | Planned start | Planned finish | Total float | Free float | Calendar | Resources | Cost | Actual cost |
| --- | --- | --- | --- | --- | --- | --- | --- | --- | --- | --- | --- | --- | --- | --- | --- |
|  | 3 | **Insulation works** |  | 2012-05-08 | 2012-08-14 |  |  |  |  |  |  |  |  |  |  |
| C-3-220 |  | Water proofing membrane | 7d | 2012-05-08 A | 2012-05-13 A | C-3-210 | 100% | 2012-05-15 | 2012-05-21 |  |  | PORTO MATROUH Calendar | Cash [29440]; Proofing membrane [640 m2]; Insulation Labors [13 h] | 29,440 | 29,440 |
| C-3-230 |  | Engineer inspection&approval for water proofing | 1d | 2012-05-16 | 2012-05-16 | C-3-220 |  |  |  | 115d | 62d | PORTO MATROUH Calendar |  |  |  |
| C-3-280 |  | Footing insulation | 8d | 2012-05-26 | 2012-06-03 | C-3-270 |  |  |  | 114d | 0d | PORTO MATROUH Calendar | Cash [17366]; Insulation Labors [9 h] | 17,366 |  |
| C-3-320 |  | Engineer inspection&approval for Footing insulation | 1d | 2012-06-04 | 2012-06-04 | C-3-280 |  |  |  | 114d |  | PORTO MATROUH Calendar |  |  |  |
| C-3-240 |  | Heat insulation | 5d | 2012-07-29 | 2012-08-02 | C-3-230, MT-DD-61 |  |  |  | 53d | 0d | PORTO MATROUH Calendar | Cash [39576]; Polysterine [582 m2]; Insulation Labors [6 h] | 39,576 |  |
| C-3-250 |  | Engineer inspection&approval for Heat insulation | 1d | 2012-08-04 | 2012-08-04 | C-3-240 |  |  |  | 53d | 0d | PORTO MATROUH Calendar |  |  |  |
| C-3-260 |  | Slopped plain concrete | 7d | 2012-08-05 | 2012-08-12 | C-3-250 |  |  |  | 53d | 0d | PORTO MATROUH Calendar | Conc Labors [8 h] |  |  |
| C-3-290 |  | Engineer Release Pouring | 1d | 2012-08-13 | 2012-08-13 | C-3-300 SS |  |  |  | 54d |  | PORTO MATROUH Calendar |  |  |  |
| C-3-300 |  | Engineer inspection&approval for Slopped P.C | 1d | 2012-08-13 | 2012-08-13 | C-3-260 |  |  |  | 53d | 0d | PORTO MATROUH Calendar |  |  |  |
| C-3-310 |  | Slopped P.C Pouring | 1d | 2012-08-14 | 2012-08-14 | C-3-300 |  |  |  | 53d |  | PORTO MATROUH Calendar | Cash [28420]; Foam Concrete [43.5 M3]; Conc Labors [2 h] | 28,420 |  |
|  | 3 | **Building 4** |  | 2012-03-18 | 2012-08-14 |  |  |  |  |  |  |  |  |  |  |
|  | 4 | **Foundations** |  | 2012-03-18 | 2012-03-29 |  |  |  |  |  |  |  |  |  |  |
| C-4-10 |  | P.C footings formwork | 5d | 2012-03-18 A | 2012-03-18 A | Z-C4, AP-C-4 FS+2d | 100% | 2012-04-01 | 2012-04-05 |  |  | PORTO MATROUH Calendar | Cash [30301.3]; Formwork Labors [23 h] | 30,301.32 | 30,301.32 |
| C-4-20 |  | Engineer Release Pouring | 1d | 2012-03-18 A | 2012-03-18 A | C-4-10 | 100% | 2012-04-08 | 2012-04-08 |  |  | PORTO MATROUH Calendar |  |  |  |
| C-4-30 |  | P.C footings concrete pouring | 1d | 2012-03-18 A | 2012-03-18 A | C-4-20 | 100% | 2012-04-09 | 2012-04-09 |  |  | PORTO MATROUH Calendar | Cash [45452]; Concrete [114.94 M3]; Conc Labors [6 h] | 45,451.98 | 45,451.98 |
| C-4-40 |  | R.C footings form work | 7d | 2012-03-19 A | 2012-03-24 A | AP-C-4 FS+5d, C-4-30 | 100% | 2012-04-29 | 2012-05-05 |  |  | PORTO MATROUH Calendar | Cash [40195.3]; Formwork Labors [40 h] | 40,195.26 | 40,195.26 |
| C-4-80 |  | Engineer Release Pouring | 1d | 2012-03-22 A | 2012-03-22 A | C-4-70 SS | 100% | 2012-04-28 | 2012-04-28 |  |  | PORTO MATROUH Calendar |  |  |  |
| C-4-50 |  | Engineer inspection & approval formwork | 1d | 2012-03-24 A | 2012-03-24 A | C-4-40 | 100% | 2012-05-06 | 2012-05-06 |  |  | PORTO MATROUH Calendar |  |  |  |
| C-4-60 |  | R.C footings steel works | 7d | 2012-03-25 A | 2012-03-28 A | C-4-50 | 100% | 2012-05-07 | 2012-05-13 |  |  | PORTO MATROUH Calendar | Cash [46894.5]; Steel bars [8.44 ton]; Steel Labors [34 h] | 46,894.47 | 46,894.47 |
| C-4-70 |  | Engineer inspection & approval steel work | 1d | 2012-03-28 A | 2012-03-28 A | C-4-60 | 100% | 2012-05-14 | 2012-05-14 |  |  | PORTO MATROUH Calendar |  |  |  |
| C-4-90 |  | R.C footings Pouring works | 1d | 2012-03-29 A | 2012-03-29 A | C-4-70 | 100% | 2012-04-29 | 2012-04-29 |  |  | PORTO MATROUH Calendar | Cash [46894.5]; Concrete [79.8 M3]; Conc Labors [4 h] | 46,894.47 | 46,894.47 |
|  | 2 | **Ground floor** |  | 2012-03-30 | 2012-04-27 |  |  |  |  |  |  |  |  |  |  |
| C-4-100 |  | Columns&walls form works | 12d | 2012-03-30 A | 2012-04-04 A | C-4-90, AP-C-4 FS+5d | 100% | 2012-04-29 | 2012-05-10 |  |  | PORTO MATROUH Calendar | Cash [33257.7]; Formwork Labors [54 h] | 33,257.7 | 33,257.7 |
| C-4-110 |  | ColColumns&walls form works inspection | 1d | 2012-04-04 A | 2012-04-04 A | C-4-100 | 100% | 2012-05-12 | 2012-05-12 |  |  | PORTO MATROUH Calendar |  |  |  |
| C-4-120 |  | Columns&walls Steel works | 6d | 2012-04-05 A | 2012-04-09 A | C-4-110 | 100% | 2012-05-12 | 2012-05-17 |  |  | PORTO MATROUH Calendar | Cash [38800.7]; Steel bars [7.02 ton]; Steel Labors [42 h] | 38,800.65 | 38,800.65 |
| C-4-130 |  | Columns&walls steel works inspection | 1d | 2012-04-09 A | 2012-04-09 A | C-4-120 | 100% | 2012-05-19 | 2012-05-19 |  |  | PORTO MATROUH Calendar |  |  |  |
| C-4-140 |  | Engineer Release Pouring | 1d | 2012-04-10 A | 2012-04-10 A | C-4-130 SS | 100% | 2012-05-23 | 2012-05-23 |  |  | PORTO MATROUH Calendar |  |  |  |
| C-4-150 |  | Columns&walls pouring works | 1d | 2012-04-10 A | 2012-04-10 A | C-4-130 | 100% | 2012-05-20 | 2012-05-20 |  |  | PORTO MATROUH Calendar | Cash [38800.7]; Concrete [56.7 M3]; Conc Labors [9 h] | 38,800.65 | 38,800.65 |
| C-4-160 |  | Slab form works | 8d | 2012-04-11 A | 2012-04-16 A | C-4-150, AP-C-4 FS+5d, C-3-210 FS+8d | 100% | 2012-06-16 | 2012-06-23 |  |  | PORTO MATROUH Calendar | Cash [66110.3]; Slab Formwork [406 m2]; Formwork Labors [91 h] | 66,110.31 | 66,110.31 |
| C-4-170 |  | Slab form works inspection | 1d | 2012-04-16 A | 2012-04-16 A | C-4-160 | 100% | 2012-06-24 | 2012-06-24 |  |  | PORTO MATROUH Calendar |  |  |  |
| C-4-180 |  | Slab steel works | 4d | 2012-04-17 A | 2012-04-20 A | C-4-170 | 100% | 2012-06-25 | 2012-06-28 |  |  | PORTO MATROUH Calendar | Cash [77128.7]; Steel bars [14.36 ton]; Steel Labors [72 h] | 77,128.7 | 77,128.7 |
| C-4-190 |  | Engineer Release Pouring | 1d | 2012-04-20 A | 2012-04-20 A | C-4-200 SS | 100% | 2012-06-30 | 2012-06-30 |  |  | PORTO MATROUH Calendar |  |  |  |
| C-4-200 |  | Slab steel works inspection | 1d | 2012-04-20 A | 2012-04-20 A | C-4-180 | 100% | 2012-06-30 | 2012-06-30 |  |  | PORTO MATROUH Calendar |  |  |  |
| C-4-210 |  | Slab Pouring works | 1d | 2012-04-21 A | 2012-04-21 A | C-4-200 | 100% | 2012-07-01 | 2012-07-01 |  |  | PORTO MATROUH Calendar | Cash [77128.7]; Concrete [119.7 M3]; Conc Labors [12 h] | 77,128.7 | 77,128.7 |
| C-4-270 |  | Removing form work | 5d | 2012-04-23 A | 2012-04-27 A | C-4-210 FS+15d | 100% | 2012-05-15 | 2012-05-19 |  |  | PORTO MATROUH Calendar | Formwork Labors [5 h] |  |  |

| ID | WBS | Activity | Duration | Start | Finish | Predecessors | Complete | Remaining | Planned start | Planned finish | Total float | Free float | Calendar | Resources | Cost | Actual cost |
| --- | --- | --- | --- | --- | --- | --- | --- | --- | --- | --- | --- | --- | --- | --- | --- | --- |
|  | 3 | **Insulation works** |  | 2012-04-26 | 2012-08-14 |  |  |  |  |  |  |  |  |  |  |  |
| C-4-220 |  | Water proofing membrane | 7d | 2012-04-26 A | 2012-05-02 A | C-4-210 | 100% |  | 2012-05-09 | 2012-05-15 |  |  | PORTO MATROUH Calendar | Cash [20608]; Proofing membrane [448 m2]; Insulation Labors [9 h] | 20,608 | 20,608 |
| C-4-280 |  | Footing insulation | 8d | 2012-05-12 A | 2012-05-17 | C-4-270 | 80% | 1.6d | 2012-05-15 | 2012-05-22 | 128.4d | 0d | PORTO MATROUH Calendar | Cash [12156.2]; Insulation Labors [6 h] | 12,156.2 | 9,724.96 |
| C-4-230 |  | Engineer inspection&approval for water proofing | 1d | 2012-05-16 | 2012-05-16 | C-4-220 |  |  |  |  | 115d | 62d | PORTO MATROUH Calendar |  |  |  |
| C-4-320 |  | Engineer inspection&approval for Footing insulation | 1d | 2012-05-17 | 2012-05-19 | C-4-280 |  |  |  |  | 128.4d |  | PORTO MATROUH Calendar |  |  |  |
| C-4-240 |  | Heat insulation | 5d | 2012-07-29 | 2012-08-02 | C-4-230, MT-DD-61 |  |  |  |  | 53d | 0d | PORTO MATROUH Calendar | Cash [27703.2]; Polysterine [407.4 m2]; Insulation Labors [4 h] | 27,703.2 |  |
| C-4-250 |  | Engineer inspection&approval for Heat insulation | 1d | 2012-08-04 | 2012-08-04 | C-4-240 |  |  |  |  | 53d | 0d | PORTO MATROUH Calendar |  |  |  |
| C-4-260 |  | Slopped plain concrete | 7d | 2012-08-05 | 2012-08-12 | C-4-250 |  |  |  |  | 53d | 0d | PORTO MATROUH Calendar | Conc Labors [6 h] |  |  |
| C-4-290 |  | Engineer Release Pouring | 1d | 2012-08-13 | 2012-08-13 | C-4-300 SS |  |  |  |  | 54d |  | PORTO MATROUH Calendar |  |  |  |
| C-4-300 |  | Engineer inspection&approval for Slopped P.C | 1d | 2012-08-13 | 2012-08-13 | C-4-260 |  |  |  |  | 53d | 0d | PORTO MATROUH Calendar |  |  |  |
| C-4-310 |  | Slopped P.C Pouring | 1d | 2012-08-14 | 2012-08-14 | C-4-300 |  |  |  |  | 53d |  | PORTO MATROUH Calendar | Cash [19894]; Foam Concrete [30.45 M3]; Conc Labors [2 h] | 19,894 |  |
|  | 4 | **Building 5** |  | 2012-03-18 | 2012-08-14 |  |  |  |  |  |  |  |  |  |  |  |
|  | 4 | **Foundations** |  | 2012-03-18 | 2012-04-08 |  |  |  |  |  |  |  |  |  |  |  |
| C-5-10 |  | P.C footings formwork | 5d | 2012-03-18 A | 2012-03-18 A | Z-C5, AP-C-5 FS+2d | 100% |  | 2012-04-01 | 2012-04-05 |  |  | PORTO MATROUH Calendar | Cash [47616.4]; Formwork Labors [36 h] | 47,616.36 | 47,616.36 |
| C-5-20 |  | Engineer Release Pouring | 1d | 2012-03-18 A | 2012-03-18 A | C-5-10 | 100% |  | 2012-04-08 | 2012-04-08 |  |  | PORTO MATROUH Calendar |  |  |  |
| C-5-30 |  | P.C footings concrete pouring | 1d | 2012-03-18 A | 2012-03-18 A | C-5-20 | 100% |  | 2012-04-09 | 2012-04-09 |  |  | PORTO MATROUH Calendar | Cash [71424.5]; Concrete [180.62 M3]; Conc Labors [10 h] | 71,424.54 | 71,424.54 |
| C-5-80 |  | Engineer Release Pouring | 1d | 2012-03-27 A | 2012-03-27 A | C-5-70 SS | 100% |  | 2012-04-28 | 2012-04-28 |  |  | PORTO MATROUH Calendar |  |  |  |
| C-5-40 |  | R.C footings form work | 7d | 2012-03-29 A | 2012-04-03 A | AP-C-5 FS+5d, C-5-30 | 100% |  | 2012-04-29 | 2012-05-05 |  |  | PORTO MATROUH Calendar | Cash [63164]; Formwork Labors [63 h] | 63,163.98 | 63,163.98 |
| C-5-50 |  | Engineer inspection & approval formwork | 1d | 2012-04-03 A | 2012-04-03 A | C-5-40 | 100% |  | 2012-05-06 | 2012-05-06 |  |  | PORTO MATROUH Calendar |  |  |  |
| C-5-60 |  | R.C footings steel works | 7d | 2012-04-04 A | 2012-04-07 A | C-5-50 | 100% |  | 2012-05-07 | 2012-05-13 |  |  | PORTO MATROUH Calendar | Cash [73691.3]; Steel bars [13.27 ton]; Steel Labors [53 h] | 73,691.31 | 73,691.31 |
| C-5-70 |  | Engineer inspection & approval steel work | 1d | 2012-04-07 A | 2012-04-07 A | C-5-60 | 100% |  | 2012-05-14 | 2012-05-14 |  |  | PORTO MATROUH Calendar |  |  |  |
| C-5-90 |  | R.C footings Pouring works | 1d | 2012-04-08 A | 2012-04-08 A | C-5-70 | 100% |  | 2012-04-29 | 2012-04-29 |  |  | PORTO MATROUH Calendar | Cash [73691.3]; Concrete [125.4 M3]; Conc Labors [6 h] | 73,691.31 | 73,691.31 |
|  | 2 | **Ground floor** |  | 2012-04-10 | 2012-06-09 |  |  |  |  |  |  |  |  |  |  |  |
| C-5-100 |  | Columns&walls form works | 12d | 2012-04-10 A | 2012-04-15 A | C-5-90, AP-C-5 FS+5d | 100% |  | 2012-04-29 | 2012-05-10 |  |  | PORTO MATROUH Calendar | Cash [52262.1]; Formwork Labors [86 h] | 52,262.1 | 52,262.1 |
| C-5-110 |  | ColColumns&walls form works inspection | 1d | 2012-04-15 A | 2012-04-15 A | C-5-100 | 100% |  | 2012-05-12 | 2012-05-12 |  |  | PORTO MATROUH Calendar |  |  |  |
| C-5-120 |  | Columns&walls Steel works | 6d | 2012-04-16 A | 2012-04-20 A | C-5-110 | 100% |  | 2012-05-12 | 2012-05-17 |  |  | PORTO MATROUH Calendar | Cash [60972.4]; Steel bars [11.03 ton]; Steel Labors [66 h] | 60,972.45 | 60,972.45 |
| C-5-130 |  | Columns&walls steel works inspection | 1d | 2012-04-21 A | 2012-04-21 A | C-5-120 | 100% |  | 2012-05-19 | 2012-05-19 |  |  | PORTO MATROUH Calendar |  |  |  |
| C-5-140 |  | Engineer Release Pouring | 1d | 2012-04-22 A | 2012-04-22 A | C-5-130 SS | 100% |  | 2012-05-19 | 2012-05-19 |  |  | PORTO MATROUH Calendar |  |  |  |
| C-5-150 |  | Columns&walls pouring works | 1d | 2012-04-22 A | 2012-05-16 | C-5-130 | 80% | 0.2d | 2012-05-20 | 2012-05-20 | 130.8d |  | PORTO MATROUH Calendar | Cash [60972.4]; Concrete [89.1 M3]; Conc Labors [14 h] | 60,972.45 | 48,777.96 |
| C-5-160 |  | Slab form works | 9d | 2012-04-23 A | 2012-04-28 A | C-5-150, AP-C-5 FS+5d, C-3-210 FS+9d | 100% |  | 2012-05-10 | 2012-05-18 |  |  | PORTO MATROUH Calendar | Cash [103888]; Slab Formwork [638 m2]; Formwork Labors [143 h] | 103,887.63 | 103,887.63 |
| C-5-170 |  | Slab form works inspection | 1d | 2012-04-28 A | 2012-04-28 A | C-5-160 | 100% |  | 2012-05-19 | 2012-05-19 |  |  | PORTO MATROUH Calendar |  |  |  |
| C-5-180 |  | Slab steel works | 5d | 2012-04-29 A | 2012-05-01 A | C-5-170 | 100% |  | 2012-05-20 | 2012-05-24 |  |  | PORTO MATROUH Calendar | Cash [121202]; Steel bars [22.57 ton]; Steel Labors [113 h] | 121,202.24 | 121,202.24 |
| C-5-200 |  | Slab steel works inspection | 1d | 2012-04-30 A | 2012-04-30 A | C-5-180 | 100% |  | 2012-05-25 | 2012-05-25 |  |  | PORTO MATROUH Calendar |  |  |  |
| C-5-190 |  | Engineer Release Pouring | 1d | 2012-05-01 A | 2012-05-01 A | C-5-200 SS | 100% |  | 2012-05-25 | 2012-05-25 |  |  | PORTO MATROUH Calendar |  |  |  |
| C-5-210 |  | Slab Pouring works | 1d | 2012-05-01 A | 2012-05-16 | C-5-200 | 50% | 0.5d | 2012-05-26 | 2012-05-26 | 101.5d | 0d | PORTO MATROUH Calendar | Cash [121202]; Concrete [188.1 M3]; Conc Labors [19 h] | 121,202.24 | 60,601.12 |
| C-5-270 |  | Removing form work | 5d | 2012-06-03 | 2012-06-09 | C-5-210 FS+15d |  |  |  |  | 101.5d | 0d | PORTO MATROUH Calendar | Formwork Labors [7 h] |  |  |

| ID | WBS | Activity | Duration | Start | Finish | Predecessors | Total float | Free float | Calendar | Resources | Cost |
| --- | --- | --- | --- | --- | --- | --- | --- | --- | --- | --- | --- |
|  | 3 | **Insulation works** |  | 2012-05-16 | 2012-08-14 |  |  |  |  |  |  |
| C-5-220 |  | Water proofing membrane | 7d | 2012-05-16 | 2012-05-24 | C-5-210 | 107.5d | 0d | PORTO MATROUH Calendar | Cash [32384]; Proofing membrane [704 m2]; Insulation Labors [14 h] | 32,384 |
| C-5-230 |  | Engineer inspection&approval for water proofing | 1d | 2012-05-24 | 2012-05-26 | C-5-220 | 107.5d | 54.5d | PORTO MATROUH Calendar |  |  |
| C-5-280 |  | Footing insulation | 8d | 2012-06-09 | 2012-06-18 | C-5-270 | 101.5d | 0d | PORTO MATROUH Calendar | Cash [19102.6]; Insulation Labors [10 h] | 19,102.6 |
| C-5-320 |  | Engineer inspection&approval for Footing insulation | 1d | 2012-06-18 | 2012-06-19 | C-5-280 | 101.5d |  | PORTO MATROUH Calendar |  |  |
| C-5-240 |  | Heat insulation | 5d | 2012-07-29 | 2012-08-02 | C-5-230, MT-DD-61 | 53d | 0d | PORTO MATROUH Calendar | Cash [43533.6]; Polysterine [640.2 m2]; Insulation Labors [6 h] | 43,533.6 |
| C-5-250 |  | Engineer inspection&approval for Heat insulation | 1d | 2012-08-04 | 2012-08-04 | C-5-240 | 53d | 0d | PORTO MATROUH Calendar |  |  |
| C-5-260 |  | Slopped plain concrete | 7d | 2012-08-05 | 2012-08-12 | C-5-250 | 53d | 0d | PORTO MATROUH Calendar | Conc Labors [9 h] |  |
| C-5-290 |  | Engineer Release Pouring | 1d | 2012-08-13 | 2012-08-13 | C-5-300 SS | 54d |  | PORTO MATROUH Calendar |  |  |
| C-5-300 |  | Engineer inspection&approval for Slopped P.C | 1d | 2012-08-13 | 2012-08-13 | C-5-260 | 53d | 0d | PORTO MATROUH Calendar |  |  |
| C-5-310 |  | Slopped P.C Pouring | 1d | 2012-08-14 | 2012-08-14 | C-5-300 | 53d |  | PORTO MATROUH Calendar | Cash [31262]; Foam Concrete [47.85 M3]; Conc Labors [3 h] | 31,262 |
