# Office Building 14B01 Substructure Package

Schedule from Primavera P6, 2010-07-01 to 2010-10-07, data date 2010-07-01.

## Calendars

- Gama projects calender: Mon-Thu 08:00-16:00; Fri off; Sat-Sun 08:00-16:00.

## Resources

| Resource | Group |
| --- | --- |
| Form work labours | labor |
| Steel Fixing labours | labor |
| Pouring labours | labor |
| insulation & water proofing labours | labor |

## Schedule

| ID | WBS | Activity | Type | Duration | Start | Finish | Predecessors | Total float | Free float |
| --- | --- | --- | --- | --- | --- | --- | --- | --- | --- |
|  | 1 | **General** |  |  | 2010-07-01 | 2010-10-07 |  |  |  |
| A1000 |  | Start project | milestone | 0d | 2010-07-01 | 2010-07-01 |  | 0d |  |
| A1020 |  | Mobilization |  | 8d | 2010-07-01 | 2010-07-10 | A1000 | 77d |  |
| A1320 |  | Receive issue for construction drawings | milestone | 0d | 2010-07-01 | 2010-07-01 | A1000 | 1d | 0d |
| A1010 |  | Finish project | milestone | 0d | 2010-10-07 | 2010-10-07 | A1590, A2390, A2400 | 0d |  |
|  | 2 | **Engineering** |  |  | 2010-07-01 | 2010-08-18 |  |  |  |
|  | 1 | **Tower 1** |  |  | 2010-07-01 | 2010-08-08 |  |  |  |
|  | 1 | **Submittals** |  |  | 2010-07-01 | 2010-08-05 |  |  |  |
| A1140 |  | Submittal of All R.C raft dimension | milestone | 0d | 2010-07-01 | 2010-07-01 | A1000, A1320 | 1d | 0d |
| A1150 |  | Submittal of All column layout | milestone | 0d | 2010-07-01 | 2010-07-01 | A1000, A1320 | 3d | 0d |
| A1160 |  | Submittal of All R.C raft RFT&starters | milestone | 0d | 2010-07-12 | 2010-07-12 | A1000 FS+9d, A1320 | 1d | 0d |
| A1170 |  | Submittal of All basement columns & walls RFT | milestone | 0d | 2010-07-22 | 2010-07-22 | A1000 FS+18d, A1320 | 6d | 0d |
| A1180 |  | Submittal of All basement slab concrete dimension | milestone | 0d | 2010-07-29 | 2010-07-29 | A1000 FS+24d, A1320 | 5d | 0d |
| A1190 |  | Submittal of All basement slab RFT | milestone | 0d | 2010-08-05 | 2010-08-05 | A1000 FS+30d, A1320 | 7d | 0d |
|  | 2 | **Approvals** |  |  | 2010-07-04 | 2010-08-08 |  |  |  |
| A1141 |  | Approval of All R.C raft dimension | milestone | 0d | 2010-07-04 | 2010-07-04 | A1140 FS+3d | 1d | 0d |
| A1151 |  | Approval of All column layout | milestone | 0d | 2010-07-04 | 2010-07-04 | A1150 FS+3d | 3d | 2d |
| A1161 |  | Approval of All R.C raft RFT&starters | milestone | 0d | 2010-07-14 | 2010-07-14 | A1160 FS+3d | 1d | 0d |
| A1171 |  | Approval of All basement columns & walls RFT | milestone | 0d | 2010-07-25 | 2010-07-25 | A1170 FS+3d | 6d |  |
| A1181 |  | Approval of All basement slab concrete dimension | milestone | 0d | 2010-08-01 | 2010-08-01 | A1180 FS+3d | 5d |  |
| A1191 |  | Approval of All basement slab RFT | milestone | 0d | 2010-08-08 | 2010-08-08 | A1190 FS+3d | 7d | 6d |
|  | 3 | **Tank** |  |  | 2010-07-08 | 2010-07-11 |  |  |  |
| A1260 |  | submittals of all tank's shop drawings | milestone | 0d | 2010-07-08 | 2010-07-08 | A1000 FS+6d, A1320 | 6d | 0d |
| A2170 |  | Approval of all tank's shop drawings | milestone | 0d | 2010-07-11 | 2010-07-11 | A1260 FS+3d | 6d | 0d |

| ID | WBS | Activity | Type | Duration | Start | Finish | Predecessors | Total float | Free float | Resources | location | type of work | detailed work |
| --- | --- | --- | --- | --- | --- | --- | --- | --- | --- | --- | --- | --- | --- |
|  | 2 | **Tower 2** |  |  | 2010-07-12 | 2010-08-18 |  |  |  |  |  |  |  |
|  | 1 | **Submittals** |  |  | 2010-07-12 | 2010-08-16 |  |  |  |  |  |  |  |
| A1200 |  | Submittal of R.C raft dimension | milestone | 0d | 2010-07-12 | 2010-07-12 | A1000 FS+9d, A1320 | 5d | 0d |  |  |  |  |
| A1210 |  | Submittal of column layout | milestone | 0d | 2010-07-12 | 2010-07-12 | A1000 FS+9d, A1320 | 5d | 0d |  |  |  |  |
| A1220 |  | Submittal of R.C raft RFT&starters | milestone | 0d | 2010-07-22 | 2010-07-22 | A1000 FS+18d, A1320 | 7d | 0d |  |  |  |  |
| A1230 |  | Submittal of basement columns & walls RFT | milestone | 0d | 2010-07-29 | 2010-07-29 | A1000 FS+24d, A1320 | 0d |  |  |  |  |  |
| A1240 |  | Submittal of basement slab concrete dimension | milestone | 0d | 2010-08-05 | 2010-08-05 | A1000 FS+30d, A1320 | 18d | 0d |  |  |  |  |
| A1250 |  | Submittal of basement slab RFT | milestone | 0d | 2010-08-16 | 2010-08-16 | A1000 FS+39d, A1320 | 17d | 0d |  |  |  |  |
|  | 2 | **Approvals** |  |  | 2010-07-14 | 2010-08-18 |  |  |  |  |  |  |  |
| A1201 |  | Approval of R.C raft dimension | milestone | 0d | 2010-07-14 | 2010-07-14 | A1200 FS+3d | 5d | 2d |  |  |  |  |
| A1211 |  | Approval of column layout | milestone | 0d | 2010-07-14 | 2010-07-14 | A1210 FS+3d | 5d | 2d |  |  |  |  |
| A1221 |  | Approval of R.C raft RFT&starters | milestone | 0d | 2010-07-25 | 2010-07-25 | A1220 FS+3d | 7d | 0d |  |  |  |  |
| A1231 |  | Approval of basement columns & walls RFT | milestone | 0d | 2010-08-01 | 2010-08-01 | A1230 FS+3d | 0d |  |  |  |  |  |
| A1241 |  | Approval of basement slab concrete dimension | milestone | 0d | 2010-08-08 | 2010-08-08 | A1240 FS+3d | 18d | 16d |  |  |  |  |
| A1251 |  | Approval of basement slab RFT | milestone | 0d | 2010-08-18 | 2010-08-18 | A1250 FS+3d | 17d | 13d |  |  |  |  |
|  | 3 | **construction** |  |  | 2010-07-06 | 2010-10-07 |  |  |  |  |  |  |  |
| A1580 |  | Start construction | milestone | 0d | 2010-07-06 | 2010-07-06 | A1141 FS+1d | 1d | 0d |  |  |  |  |
| A1590 |  | Finish construction | milestone | 0d | 2010-10-04 | 2010-10-04 | A2160, A1720, A2020, A1870, A1570, A1420, A1130, A1670, A1750, A2050, A1980, A2370, A2380 | 3d |  |  |  |  |  |
|  | OFC | **Office building** |  |  | 2010-07-07 | 2010-10-07 |  |  |  |  |  |  |  |
|  | P1 | **Tower 1** |  |  | 2010-07-07 | 2010-10-07 |  |  |  |  |  |  |  |
|  | A1 | **Area 1 (550 m2)** |  |  | 2010-07-31 | 2010-09-29 |  |  |  |  |  |  |  |
|  | 1 | **R.C Raft** |  |  | 2010-07-31 | 2010-08-08 |  |  |  |  |  |  |  |
| A1270 |  | Formwork For R.C raft |  | 6d | 2010-07-31 | 2010-08-05 | A1141, A1151, A1600 FS+1d | 16d | 0d | Form work labours [96 h] | 01 | 02 | 02 |
| A1280 |  | Rebar For R.C raft |  | 5d | 2010-08-02 | 2010-08-07 | A1270 SS+2d, A1161 | 16d | 0d | Steel Fixing labours [704 h] | 01 | 02 | 02 |
| A1290 |  | M&E conduits For R.C raft (by others) | milestone | 0d | 2010-08-04 | 2010-08-04 | A1280 FS-3d | 18d | 2d |  | 01 | 05 |  |
| A1300 |  | Pouring For R.C raft |  | 1d | 2010-08-08 | 2010-08-08 | A1280, A1290 FS+1d | 16d | 0d | Pouring labours [56 h] | 01 | 02 | 02 |

Notes:
- A1: Area Division According to Construction Joint

| ID | WBS | Activity | Type | Duration | Start | Finish | Predecessors | Total float | Free float | Resources | location | type of work | detailed work |
| --- | --- | --- | --- | --- | --- | --- | --- | --- | --- | --- | --- | --- | --- |
|  | 2 | **Basement Walls & Columns** |  |  | 2010-08-15 | 2010-08-24 |  |  |  |  |  |  |  |
| A1360 |  | Formwork For basement walls & col. |  | 8d | 2010-08-15 | 2010-08-23 | A1300 FS+5d | 16d | 0d | Form work labours [480 h] | 01 | 02 | 03 |
| A1370 |  | Rebar For basement walls & col. |  | 4d | 2010-08-17 | 2010-08-21 | A1360 SS+2d, A1171, A1231 | 18d | 2d | Steel Fixing labours [480 h] | 01 | 02 | 03 |
| A1380 |  | Pouring For basement walls & col. |  | 1d | 2010-08-24 | 2010-08-24 | A1370, A1360 | 16d | 0d | Pouring labours [32 h] | 01 | 02 | 03 |
|  | 3 | **Basement Slab** |  |  | 2010-09-21 | 2010-09-29 |  |  |  |  |  |  |  |
| A1390 |  | Formwork For basement Slab & stairs |  | 6d | 2010-09-21 | 2010-09-27 | A1181, A1380 FS+1d, A1720 FS+4d | 0d |  | Form work labours [960 h] | 01 | 02 | 04 |
| A1400 |  | Rebar For basement Slab & stairs |  | 3d | 2010-09-26 | 2010-09-28 | A1390 FS-2d, A1191 | 0d |  | Steel Fixing labours [360 h] | 01 | 02 | 04 |
| A1410 |  | M&E conduits For basement Slab & stairs (by others) | milestone | 0d | 2010-09-27 | 2010-09-27 | A1400 FS-2d | 1d |  |  | 01 | 05 |  |
| A1420 |  | Pouring For basement Slab & stairs |  | 1d | 2010-09-29 | 2010-09-29 | A1400, A1410 FS+1d | 0d |  | Pouring labours [32 h] | 01 | 02 | 04 |
|  | 4 | **Insulation & Water Proofing** |  |  | 2010-08-26 | 2010-09-04 |  |  |  |  |  |  |  |
| A1340 |  | Water proofing bituminous membrane |  | 4d | 2010-08-26 | 2010-08-30 | A1380 FS+1d | 16d | 0d | insulation & water proofing labours [320 h] | 01 | 04 |  |
| A1310 |  | Isolation For Foundation bituminous emulsion |  | 4d | 2010-08-28 | 2010-08-31 | A1380 FS+2d | 19d | 3d | insulation & water proofing labours [80 h] | 01 | 04 |  |
| A1350 |  | Water proofing protection layer cartonal |  | 4d | 2010-08-31 | 2010-09-04 | A1340 | 16d | 0d | insulation & water proofing labours [320 h] | 01 | 04 |  |
|  | 1 | **Earth Work For Tower 1** |  |  | 2010-09-05 | 2010-09-16 |  |  |  |  |  |  |  |
| A2370 |  | Backfilling Around Foundation |  | 11d | 2010-09-05 | 2010-09-16 | A1310, A1350, A1061, A1065, A1470, A1500 | 16d | 15d |  |  |  |  |
|  | A2 | **Area 2 (1450 m2)** |  |  | 2010-07-07 | 2010-08-24 |  |  |  |  |  |  |  |
|  | 1 | **R.C Raft** |  |  | 2010-07-07 | 2010-07-25 |  |  |  |  |  |  |  |
| A1030 |  | Formwork For R.C raft |  | 8d | 2010-07-07 | 2010-07-15 | A1141, A1151, A1580 FS+1d | 1d | 0d | Form work labours [288 h] | 01 | 02 | 02 |
| A1040 |  | Rebar For R.C raft |  | 7d | 2010-07-15 | 2010-07-22 | A1030 SS+2d, A1161 | 1d | 0d | Steel Fixing labours [2080 h] | 01 | 02 | 02 |
| A1050 |  | M&E conduits For R.C raft (by others) | milestone | 0d | 2010-07-21 | 2010-07-21 | A1040 FS-2d | 2d | 1d |  | 01 | 05 |  |
| A1060 |  | Pouring For R.C raft |  | 2d | 2010-07-24 | 2010-07-25 | A1040, A1050 FS+1d | 1d | 0d | Pouring labours [168 h] | 01 | 02 | 02 |
|  | 2 | **Basement Walls & Columns** |  |  | 2010-07-27 | 2010-08-05 |  |  |  |  |  |  |  |
| A1070 |  | Formwork For basement walls & col. |  | 7d | 2010-07-27 | 2010-08-03 | A1060 FS+1d | 1d |  | Form work labours [1440 h] | 01 | 02 | 03 |
| A1080 |  | Rebar For basement walls & col. |  | 3d | 2010-08-02 | 2010-08-04 | A1070 SS+2d, A1171, A1231 | 0d |  | Steel Fixing labours [1440 h] | 01 | 02 | 03 |
| A1090 |  | Pouring For basement walls & col. |  | 1d | 2010-08-05 | 2010-08-05 | A1080, A1070 | 0d |  | Pouring labours [96 h] | 01 | 04 | 03 |

Notes:
- A2: Area Division According to Construction Joint

| ID | WBS | Activity | Type | Duration | Start | Finish | Predecessors | Total float | Free float | Resources | location | type of work | detailed work |
| --- | --- | --- | --- | --- | --- | --- | --- | --- | --- | --- | --- | --- | --- |
|  | 3 | **Basement Slab** |  |  | 2010-08-08 | 2010-08-24 |  |  |  |  |  |  |  |
| A1100 |  | Formwork For basement Slab & stairs |  | 10d | 2010-08-08 | 2010-08-18 | A1181, A1090 FS+1d | 0d |  | Form work labours [2880 h] | 01 | 02 | 04 |
| A1110 |  | Rebar For basement Slab & stairs |  | 6d | 2010-08-17 | 2010-08-23 | A1100 FS-2d, A1191 | 0d |  | Steel Fixing labours [1080 h] | 01 | 02 | 04 |
| A1120 |  | M&E conduits For basement Slab & stairs(by others) | milestone | 0d | 2010-08-22 | 2010-08-22 | A1110 FS-2d | 1d |  |  | 01 | 05 |  |
| A1130 |  | Pouring For basement Slab &stairs |  | 1d | 2010-08-24 | 2010-08-24 | A1110, A1120 FS+1d | 0d |  | Pouring labours [96 h] | 01 | 02 | 04 |
|  | 4 | **Insulation & Water Proofing** |  |  | 2010-08-08 | 2010-08-21 |  |  |  |  |  |  |  |
| A1064 |  | Water proofing bituminous membrane |  | 6d | 2010-08-08 | 2010-08-14 | A1090 FS+1d | 28d | 0d | insulation & water proofing labours [720 h] | 01 | 04 |  |
| A1061 |  | Isolation For Foundation bituminous emulsion |  | 6d | 2010-08-09 | 2010-08-15 | A1090 FS+2d | 33d | 17d | insulation & water proofing labours [240 h] | 01 | 04 |  |
| A1065 |  | Water proofing protection layer cartonal |  | 6d | 2010-08-15 | 2010-08-21 | A1064 | 28d | 12d | insulation & water proofing labours [720 h] | 01 | 04 |  |
|  | A3 | **Area 3 (660 m2)** |  |  | 2010-07-07 | 2010-08-24 |  |  |  |  |  |  |  |
|  | 1 | **R.C Raft** |  |  | 2010-07-07 | 2010-07-21 |  |  |  |  |  |  |  |
| A1430 |  | Formwork For R.C raft |  | 6d | 2010-07-07 | 2010-07-13 | A1141, A1151, A1580 FS+1d | 11d | 0d | Form work labours [96 h] | 01 | 02 | 02 |
| A1440 |  | Rebar For R.C raft |  | 5d | 2010-07-15 | 2010-07-20 | A1430 SS+2d, A1161 | 6d | 0d | Steel Fixing labours [704 h] | 01 | 02 | 02 |
| A1450 |  | M&E conduits For R.C raft (by others) | milestone | 0d | 2010-07-19 | 2010-07-19 | A1440 FS-2d | 7d | 1d |  | 01 | 05 |  |
| A1460 |  | Pouring For R.C raft |  | 1d | 2010-07-21 | 2010-07-21 | A1440, A1450 FS+1d | 6d | 0d | Pouring labours [56 h] | 01 | 02 | 02 |
|  | 2 | **Basement Walls & Columns** |  |  | 2010-07-25 | 2010-08-07 |  |  |  |  |  |  |  |
| A1510 |  | Formwork For basement walls & col. |  | 9d | 2010-07-25 | 2010-08-03 | A1460 FS+2d | 6d | 2d | Form work labours [480 h] | 01 | 02 | 03 |
| A1520 |  | Rebar For basement walls & col. |  | 4d | 2010-08-02 | 2010-08-05 | A1510 SS+3d, A1171, A1231 | 4d | 0d | Steel Fixing labours [480 h] | 01 | 02 | 03 |
| A1530 |  | Pouring For basement walls & col. |  | 1d | 2010-08-07 | 2010-08-07 | A1510, A1520 | 4d | 0d | Pouring labours [32 h] | 01 | 02 | 03 |
|  | 3 | **Basement Slab** |  |  | 2010-08-09 | 2010-08-22 |  |  |  |  |  |  |  |
| A1540 |  | Formwork For basement Slab & stairs |  | 8d | 2010-08-09 | 2010-08-17 | A1181, A1530 FS+1d | 4d | 0d | Form work labours [960 h] | 01 | 02 | 04 |
| A1550 |  | Rebar For basement Slab & stairs |  | 5d | 2010-08-16 | 2010-08-21 | A1540 FS-2d, A1191 | 4d | 0d | Steel Fixing labours [360 h] | 01 | 02 | 04 |
| A1560 |  | M&E conduits For Ground Floor Slab & stairs (by others) | milestone | 0d | 2010-08-19 | 2010-08-19 | A1550 FS-2d | 5d | 1d |  | 01 | 05 |  |
| A1570 |  | Pouring For basement Slab & stairs |  | 1d | 2010-08-22 | 2010-08-22 | A1550, A1560 FS+1d | 4d | 0d | Pouring labours [32 h] | 01 | 02 | 04 |

Notes:
- A3: Area Division According to Construction Joint

| ID | WBS | Activity | Type | Duration | Start | Finish | Predecessors | Total float | Free float | Resources | location | type of work | detailed work |
| --- | --- | --- | --- | --- | --- | --- | --- | --- | --- | --- | --- | --- | --- |
|  | 4 | **Insulation & Water Proofing** |  |  | 2010-08-09 | 2010-08-24 |  |  |  |  |  |  |  |
| A1490 |  | Water proofing bituminous membrane |  | 6d | 2010-08-09 | 2010-08-15 | A1530 FS+1d | 25d | 0d | insulation & water proofing labours [240 h] | 01 | 04 |  |
| A1470 |  | Isolation For Foundation bituminous emulsion |  | 8d | 2010-08-11 | 2010-08-19 | A1530 FS+3d | 29d | 13d | insulation & water proofing labours [80 h] | 01 | 04 |  |
| A1500 |  | Water proofing protection layer cartonal |  | 8d | 2010-08-16 | 2010-08-24 | A1490 | 25d | 9d | insulation & water proofing labours [240 h] | 01 | 04 |  |
|  | 2 | **Testing & Handingover For Tower 1** |  |  | 2010-10-06 | 2010-10-07 |  |  |  |  |  |  |  |
| A2390 |  | Testing & Handingover |  | 2d | 2010-10-06 | 2010-10-07 | A2370, A1420 FS+5d, A1130 FS+8d, A1570 FS+8d | 0d |  |  |  |  |  |
|  | P2 | **Tower 2** |  |  | 2010-07-18 | 2010-10-06 |  |  |  |  |  |  |  |
|  | A1 | **Area 1 (550 m2)** |  |  | 2010-07-18 | 2010-09-08 |  |  |  |  |  |  |  |
|  | 1 | **R.C Raft** |  |  | 2010-07-18 | 2010-08-01 |  |  |  |  |  |  |  |
| A1760 |  | Formwork For R.C raft |  | 6d | 2010-07-18 | 2010-07-24 | A1211, A1201, A1430 FS+3d | 13d | 5d | Form work labours [96 h] | 02 | 02 | 02 |
| A1770 |  | Rebar For R.C raft |  | 5d | 2010-07-26 | 2010-07-31 | A1221, A1760 SS+2d | 8d | 0d | Steel Fixing labours [704 h] | 02 | 02 | 02 |
| A1780 |  | M&E conduits For R.C raft (by others) | milestone | 0d | 2010-07-29 | 2010-07-29 | A1770 FS-2d | 9d | 1d |  | 02 | 05 |  |
| A1790 |  | Pouring For R.C raft |  | 1d | 2010-08-01 | 2010-08-01 | A1770, A1780 FS+1d | 8d | 0d | Pouring labours [56 h] | 02 | 02 | 02 |
|  | 2 | **Basement Walls & Columns** |  |  | 2010-08-11 | 2010-08-21 |  |  |  |  |  |  |  |
| A1800 |  | Formwork For basement walls & col. |  | 8d | 2010-08-11 | 2010-08-19 | A1790 FS+8d | 8d | 0d | Form work labours [480 h] | 02 | 02 | 03 |
| A1810 |  | Rebar For basement walls & col. |  | 4d | 2010-08-14 | 2010-08-17 | A1800 SS+2d | 10d | 2d | Steel Fixing labours [480 h] | 02 | 02 | 03 |
| A1820 |  | Pouring For basement walls & col. |  | 1d | 2010-08-21 | 2010-08-21 | A1800, A1810 | 8d | 0d | Pouring labours [32 h] | 02 | 02 | 03 |
|  | 3 | **Basement Slab** |  |  | 2010-08-28 | 2010-09-08 |  |  |  |  |  |  |  |
| A1840 |  | Formwork For basement Slab & stairs |  | 8d | 2010-08-28 | 2010-09-05 | A1241, A1570 FS+4d, A1820 FS+1d | 4d | 0d | Form work labours [960 h] | 02 | 02 | 04 |
| A1850 |  | Rebar For basement Slab & stairs |  | 4d | 2010-09-04 | 2010-09-07 | A1840 FS-2d, A1251 | 4d | 0d | Steel Fixing labours [360 h] | 02 | 02 | 04 |
| A1860 |  | M&E conduits For Ground Floor Slab & stairs (by others) | milestone | 0d | 2010-09-06 | 2010-09-06 | A1850 FS-2d | 5d | 1d |  | 02 | 05 |  |
| A1870 |  | Pouring For basement Slab & stairs |  | 1d | 2010-09-08 | 2010-09-08 | A1850, A1860 FS+1d | 4d | 0d | Pouring labours [32 h] | 02 | 02 | 04 |
|  | 4 | **Insulation & Water Proofing** |  |  | 2010-08-23 | 2010-08-31 |  |  |  |  |  |  |  |
| A1890 |  | Water proofing bituminous membrane |  | 4d | 2010-08-23 | 2010-08-26 | A1820 FS+1d | 19d | 0d | insulation & water proofing labours [240 h] | 02 | 04 |  |
| A1830 |  | Isolation For Foundation bituminous emulsion |  | 6d | 2010-08-25 | 2010-08-31 | A1820 FS+3d | 18d | 17d | insulation & water proofing labours [80 h] | 02 | 04 |  |
| A1900 |  | Water proofing protection layer cartonal |  | 3d | 2010-08-28 | 2010-08-30 | A1890 | 19d | 18d | insulation & water proofing labours [240 h] | 02 | 04 |  |

Notes:
- A1: Area Division According to Construction Joint

| ID | WBS | Activity | Type | Duration | Start | Finish | Predecessors | Total float | Free float | Resources | location | type of work | detailed work |
| --- | --- | --- | --- | --- | --- | --- | --- | --- | --- | --- | --- | --- | --- |
|  | A2 | **Area 2 (1450 m2)** |  |  | 2010-07-20 | 2010-09-15 |  |  |  |  |  |  |  |
|  | 1 | **R.C Raft** |  |  | 2010-07-20 | 2010-08-04 |  |  |  |  |  |  |  |
| A1600 |  | Formwork For R.C raft |  | 8d | 2010-07-20 | 2010-07-28 | A1211, A1201, A1030 FS+3d | 1d | 0d | Form work labours [288 h] | 02 | 02 | 02 |
| A1610 |  | Rebar For R.C raft |  | 7d | 2010-07-26 | 2010-08-02 | A1221, A1600 SS+2d | 8d | 0d | Steel Fixing labours [2080 h] | 02 | 02 | 02 |
| A1620 |  | M&E conduits For R.C raft (by others) | milestone | 0d | 2010-08-01 | 2010-08-01 | A1610 FS-2d | 9d | 1d |  | 02 | 05 |  |
| A1630 |  | Pouring For R.C raft |  | 2d | 2010-08-03 | 2010-08-04 | A1610, A1620 FS+1d | 8d | 0d | Pouring labours [168 h] | 02 | 02 | 02 |
|  | 2 | **Basement Walls & Columns** |  |  | 2010-08-07 | 2010-08-18 |  |  |  |  |  |  |  |
| A1640 |  | Formwork For basement walls & col. |  | 10d | 2010-08-07 | 2010-08-17 | A1630 FS+1d | 8d | 0d | Form work labours [1440 h] | 02 | 02 | 03 |
| A1650 |  | Rebar For basement walls & col. |  | 6d | 2010-08-09 | 2010-08-15 | A1640 SS+2d | 10d | 2d | Steel Fixing labours [1440 h] | 02 | 02 | 03 |
| A1660 |  | Pouring For basement walls & col. |  | 1d | 2010-08-18 | 2010-08-18 | A1640, A1650 | 8d | 0d | Pouring labours [96 h] | 02 | 02 | 03 |
|  | 3 | **Basement Slab** |  |  | 2010-08-30 | 2010-09-15 |  |  |  |  |  |  |  |
| A1690 |  | Formwork For basement Slab & stairs |  | 10d | 2010-08-30 | 2010-09-09 | A1241, A1130 FS+4d, A1660 FS+1d | 0d |  | Form work labours [2880 h] | 02 | 02 | 04 |
| A1700 |  | Rebar For basement Slab & stairs |  | 6d | 2010-09-08 | 2010-09-14 | A1251, A1690 FS-2d | 0d |  | Steel Fixing labours [1080 h] | 02 | 02 | 04 |
| A1710 |  | M&E conduits For basement Slab & stairs (by others) | milestone | 0d | 2010-09-13 | 2010-09-13 | A1700 FS-2d | 1d |  |  | 02 | 05 |  |
| A1720 |  | Pouring For basement Slab & stairs |  | 1d | 2010-09-15 | 2010-09-15 | A1700, A1710 FS+1d | 0d |  | Pouring labours [96 h] | 02 | 02 | 04 |
|  | 4 | **Insulation & Water Proofing** |  |  | 2010-08-19 | 2010-09-04 |  |  |  |  |  |  |  |
| A1670 |  | Isolation For Foundation bituminous emulsion |  | 8d | 2010-08-19 | 2010-08-28 | A1660 | 21d | 20d | insulation & water proofing labours [240 h] | 02 | 04 |  |
| A1740 |  | Water proofing bituminous membrane |  | 7d | 2010-08-21 | 2010-08-28 | A1660 FS+1d | 15d | 0d | insulation & water proofing labours [720 h] | 02 | 04 |  |
| A1750 |  | Water proofing protection layer cartonal |  | 6d | 2010-08-29 | 2010-09-04 | A1740 | 15d | 14d | insulation & water proofing labours [720 h] | 02 | 04 |  |
|  | A3 | **Area 3 (660 m2)** |  |  | 2010-07-31 | 2010-09-30 |  |  |  |  |  |  |  |
|  | 1 | **R.C Raft** |  |  | 2010-07-31 | 2010-08-11 |  |  |  |  |  |  |  |
| A1910 |  | Formwork For R.C raft |  | 9d | 2010-07-31 | 2010-08-09 | A1211, A1201, A1600 FS+1d | 1d | 0d | Form work labours [96 h] | 02 | 02 | 02 |
| A1920 |  | Rebar For R.C raft |  | 8d | 2010-08-02 | 2010-08-10 | A1910 SS+2d, A1221 | 1d | 0d | Steel Fixing labours [704 h] | 02 | 02 | 02 |
| A1930 |  | M&E conduits For R.C raft (by others) | milestone | 0d | 2010-08-09 | 2010-08-09 | A1920 FS-2d | 2d | 1d |  | 02 | 05 |  |
| A1940 |  | Pouring For R.C raft |  | 1d | 2010-08-11 | 2010-08-11 | A1920, A1930 FS+1d | 1d | 0d | Pouring labours [56 h] | 02 | 02 | 02 |

Notes:
- A2: Area Division According to Construction Joint
- A3: Area Division According to Construction Joint

| ID | WBS | Activity | Type | Duration | Start | Finish | Predecessors | Total float | Free float | Resources | location | type of work | detailed work |
| --- | --- | --- | --- | --- | --- | --- | --- | --- | --- | --- | --- | --- | --- |
|  | 2 | **Basement Walls & Columns** |  |  | 2010-08-14 | 2010-08-25 |  |  |  |  |  |  |  |
| A1950 |  | Formwork For basement walls & col. |  | 10d | 2010-08-14 | 2010-08-24 | A1940 FS+1d | 1d | 0d | Form work labours [480 h] | 02 | 02 | 03 |
| A1960 |  | Rebar For basement walls & col. |  | 6d | 2010-08-16 | 2010-08-22 | A1950 SS+2d | 3d | 2d | Steel Fixing labours [480 h] | 02 | 02 | 03 |
| A1970 |  | Pouring For basement walls & col. |  | 1d | 2010-08-25 | 2010-08-25 | A1950, A1960 | 1d | 0d | Pouring labours [32 h] | 02 | 02 | 03 |
|  | 3 | **Basement Slab** |  |  | 2010-09-14 | 2010-09-30 |  |  |  |  |  |  |  |
| A1990 |  | Formwork For basement Slab & stairs |  | 8d | 2010-09-14 | 2010-09-22 | A1241, A1970 FS+1d, A1870 FS+4d | 4d | 0d | Form work labours [960 h] | 02 | 02 | 04 |
| A2000 |  | Rebar For basement Slab & stairs |  | 5d | 2010-09-23 | 2010-09-28 | A1990, A1251 | 4d | 0d | Steel Fixing labours [360 h] | 02 | 02 | 04 |
| A2010 |  | M&E conduits For basement Slab & stairs(by others) | milestone | 0d | 2010-09-27 | 2010-09-27 | A2000 FS-2d | 6d | 2d |  | 02 | 05 |  |
| A2020 |  | Pouring For basement Slab & stairs |  | 1d | 2010-09-30 | 2010-09-30 | A2000 FS+1d, A2010 FS+1d | 4d | 3d | Pouring labours [32 h] | 02 | 02 | 04 |
|  | 4 | **Insulation & Water Proofing** |  |  | 2010-09-07 | 2010-09-20 |  |  |  |  |  |  |  |
| A2040 |  | Water proofing bituminous membrane |  | 6d | 2010-09-07 | 2010-09-13 | A1970 FS+10d | 1d | 0d | insulation & water proofing labours [240 h] | 02 | 04 |  |
| A1980 |  | Isolation For Foundation bituminous emulsion |  | 6d | 2010-09-09 | 2010-09-15 | A1970 FS+12d | 5d | 4d | insulation & water proofing labours [80 h] | 02 | 04 |  |
| A2050 |  | Water proofing protection layer cartonal |  | 6d | 2010-09-14 | 2010-09-20 | A2040 | 1d | 0d | insulation & water proofing labours [240 h] | 02 | 04 |  |
|  | 1 | **Earth Work For Tower 2** |  |  | 2010-09-21 | 2010-10-04 |  |  |  |  |  |  |  |
| A2380 |  | Backfilling Around Foundation |  | 12d | 2010-09-21 | 2010-10-04 | A1830, A1900, A1670, A1750, A1980, A2050 | 1d | 0d |  |  |  |  |
|  | 2 | **Testing & Handingover For Tower 2** |  |  | 2010-10-05 | 2010-10-06 |  |  |  |  |  |  |  |
| A2400 |  | Testing & Handingover |  | 2d | 2010-10-05 | 2010-10-06 | A2380, A2020, A1870, A1720 | 1d |  |  |  |  |  |
|  | TANK | **Tank** |  |  | 2010-07-20 | 2010-09-30 |  |  |  |  |  |  |  |
| A2060 |  | Formworks for R.C raft |  | 2d | 2010-07-20 | 2010-07-21 | A2170 FS+7d | 6d | 0d | Form work labours [80 h] | 03 | 02 | 02 |
| A2070 |  | Rebar for R.C raft |  | 3d | 2010-07-22 | 2010-07-25 | A2060 | 6d | 0d | Steel Fixing labours [120 h] | 03 | 02 | 02 |
| A2079 |  | M&E conduits For R.C raft (by others) | milestone | 0d | 2010-07-24 | 2010-07-24 | A2070 FS-2d | 7d | 1d |  |  |  |  |
| A2080 |  | Pouring For R.C raft |  | 1d | 2010-07-26 | 2010-07-26 | A2070, A2079 FS+1d | 6d | 0d | Pouring labours [40 h] | 03 | 02 | 02 |
| A2090 |  | Formwork For Tank walls |  | 8d | 2010-07-27 | 2010-08-04 | A2080 | 6d | 0d | Form work labours [240 h] | 03 | 02 | 03 |
| A2100 |  | Rebar For Tank walls |  | 6d | 2010-08-05 | 2010-08-11 | A2090 | 6d | 0d | Steel Fixing labours [120 h] | 03 | 02 | 03 |
| A2109 |  | M&E conduits For R.C walls (by others) | milestone | 0d | 2010-08-10 | 2010-08-10 | A2100 FS-2d | 7d | 1d |  |  |  |  |
| A2110 |  | Pouring For Tank walls |  | 1d | 2010-08-12 | 2010-08-12 | A2100, A2109 FS+1d | 6d | 0d | Pouring labours [40 h] | 03 | 02 | 03 |
| A2120 |  | Formwork For Tank Slab |  | 10d | 2010-08-14 | 2010-08-24 | A2110 | 6d | 0d | Form work labours [120 h] | 03 | 02 | 04 |
| A2130 |  | Rebar For Tank Slab |  | 6d | 2010-08-25 | 2010-08-31 | A2120 | 6d | 0d | Steel Fixing labours [160 h] | 03 | 02 | 04 |
| A2119 |  | M&E conduits For tank's slab (by others) | milestone | 0d | 2010-08-30 | 2010-08-30 | A2130 FS-2d | 7d | 1d |  |  |  |  |
| A2140 |  | Pouring For Tank slab |  | 1d | 2010-09-01 | 2010-09-01 | A2130, A2119 FS+1d | 6d | 0d | Pouring labours [40 h] | 03 | 02 | 04 |
| A2150 |  | Internal insulation |  | 15d | 2010-09-02 | 2010-09-19 | A2140 | 6d | 0d |  | 03 | 04 |  |
| A2160 |  | External insulation |  | 10d | 2010-09-20 | 2010-09-30 | A2150 | 6d | 3d |  | 03 | 04 |  |

## Activity codes

| Code | Value | Meaning |
| --- | --- | --- |
| detailed work | 02 | R.C foundation |
| detailed work | 03 | columns and walls |
| detailed work | 04 | slab |
| location | 01 | Part 1 |
| location | 02 | Part 2 |
| location | 03 | Tank |
| type of work | 02 | concrete works |
| type of work | 04 | insulation works |
| type of work | 05 | electro mrchanical work |
