# Farm mk

Schedule from MS Project, 2010-07-27 to 2011-03-06, status date 2010-08-26, A marks actual dates.

## Calendars

- Danon Farm: Mon-Thu 08:00-12:00, 13:00-17:00; Fri off; Sat-Sun 08:00-12:00, 13:00-17:00. Exceptions (off unless hours are given): 2010-09-09 to 2010-09-14 (Ead Fatr), 2010-11-14 to 2010-11-20 (Ead Adha).

## Resources

| Resource |
| --- |
| excavator |
| Gravil |
| Sand |
| Concrete |
| subcontractor |

## Schedule

| ID | Task | Duration | Start | Finish | Predecessors | Complete | Remaining | Baseline start | Baseline finish | Baseline duration | Total slack | Free slack | Constraint | Resources | Work | Actual work |
| --- | --- | --- | --- | --- | --- | --- | --- | --- | --- | --- | --- | --- | --- | --- | --- | --- |
| 1 | Work Shop Drawing' | 14d | 2010-07-27 A | 2010-08-11 | 102SS |  | 14d | 2010-08-01 | 2010-08-02 | 2d | 55.06d | 13d | finish no earlier than 2010-08-11 |  |  |  |
| 2 | Approval the work shop drawing | 7d | 2010-08-28 | 2010-09-04 | 1 |  |  | 2010-08-03 | 2010-08-10 | 7d | 42.06d | 0d | start no earlier than 2010-08-26 |  |  |  |
| 3 | Work Shop Drawing' | 8d | 2010-08-05 A | 2010-08-14 A |  | 100% |  | 2010-08-05 | 2010-08-14 | 8d |  |  | must start on 2010-08-05 |  |  |  |
| 4 | Approval the work shop drawing | 7d | 2010-08-28 | 2010-09-04 | 3 |  |  | 2010-08-15 | 2010-08-22 | 7d | 0.8d | 0d | start no earlier than 2010-08-26 |  |  |  |
| 5 | Work Shop Drawing' | 10d | 2010-08-22 A | 2010-09-01 |  | 50% | 5d | 2010-08-22 | 2010-09-01 | 10d | 0d |  | must start on 2010-08-22 |  |  |  |
| 6 | Approval the work shop drawing | 7d | 2010-09-02 | 2010-09-15 | 5 |  |  | 2010-09-02 | 2010-09-15 | 7d | 11d | 0d |  |  |  |  |
| 7 | Work Shop Drawing' | 2d | 2010-08-29 A | 2010-08-30 | 102SS |  | 2d | 2010-08-01 | 2010-08-05 | 5d | 136d | 0d | finish no earlier than 2010-08-30 |  |  |  |
| 8 | Approval the work shop drawing | 7d | 2010-08-31 | 2010-09-07 | 7 |  |  | 2010-08-07 | 2010-08-14 | 7d | 136d | 0d | start no earlier than 2010-08-26 |  |  |  |
| 9 | Work Shop Drawing' | 2d | 2010-08-28 | 2010-08-29 | 102SS |  |  | 2010-08-01 | 2010-08-02 | 2d | 65d | 0d | start no earlier than 2010-08-26 |  |  |  |
| 10 | Approval the work shop drawing | 7d | 2010-08-30 | 2010-09-06 | 9 |  |  | 2010-08-03 | 2010-08-10 | 7d | 65d | 0d | start no earlier than 2010-08-26 |  |  |  |
| 11 | Work Shop Drawing' | 2d | 2010-08-25 A | 2010-08-26 A | 102SS | 100% |  | 2010-08-01 | 2010-08-02 | 2d |  |  | start no earlier than 2010-08-26 |  |  |  |
| 12 | Approval the work shop drawing | 7d | 2010-08-28 | 2010-09-04 | 11 |  |  | 2010-08-03 | 2010-08-10 | 7d | 52d | 0d | start no earlier than 2010-08-26 |  |  |  |
| 13 | Work Shop Drawing' | 1d | 2010-08-15 A | 2010-08-15 A | 102SS | 100% |  | 2010-08-01 | 2010-08-11 | 10d |  |  | start no earlier than 2010-08-26 |  |  |  |
| 14 | Excavation | 11d | 2010-08-12 A | 2010-08-24 A | 8 | 100% |  | 2010-08-15 | 2010-09-02 | 17d |  |  |  | excavator | 88h | 88h |
| 15 | Replacement | 30d | 2010-08-22 A | 2010-09-30 | 14SS+10d | 30% | 21d | 2010-08-26 | 2010-10-05 | 30d | 128d | 0d |  |  |  |  |
| 16 | PC Foundation | 21d | 2010-09-01 | 2010-09-30 | 15SS+9d |  |  | 2010-09-06 | 2010-10-05 | 21d | 69d | 4d |  |  |  |  |
| 17 | RC foundation | 20d | 2010-09-20 | 2010-10-12 | 16SS+7d |  |  | 2010-09-20 | 2010-10-12 | 20d | 65d | 0d | finish no earlier than 2010-10-12 |  |  |  |
| 18 | Col. Neck | 18d | 2010-09-30 | 2010-10-20 | 17FF+7d |  |  | 2010-09-30 | 2010-10-20 | 18d | 65d | 0d |  |  |  |  |
| 19 | Insulation | 21d | 2010-10-05 | 2010-10-28 | 18FF+7d |  |  | 2010-10-05 | 2010-10-28 | 21d | 65d | 0d |  |  |  |  |
| 20 | Foundation Backfilling | 24d | 2010-10-13 | 2010-11-09 | 19SS+7d |  |  | 2010-10-13 | 2010-11-09 | 24d | 65d | 0d |  |  |  |  |
| 21 | Leveling slope land | 25d | 2010-10-21 | 2010-11-25 | 20SS+7d |  |  | 2010-10-21 | 2010-11-25 | 25d | 65d | 0d |  |  |  |  |
| 22 | SOG PC | 14d | 2010-11-27 | 2010-12-12 | 21 |  |  | 2010-11-27 | 2010-12-12 | 14d | 65d | 0d |  |  |  |  |
| 23 | SOG RC | 16d | 2010-12-02 | 2010-12-20 | 22SS+5d |  |  | 2010-12-02 | 2010-12-20 | 16d | 65d |  |  |  |  |  |
| 24 | Anchor bolt | 16d | 2010-10-03 | 2010-10-20 | 18FF, 153 |  |  | 2010-10-03 | 2010-10-20 | 16d | 83d | 18d |  |  |  |  |
| 25 | Steel Structure | 18d | 2010-11-11 | 2010-12-08 | 24, 21SS+18d |  |  | 2010-11-11 | 2010-12-08 | 18d | 65d | 0d |  |  |  |  |
| 26 | Roof Cladding | 21d | 2010-11-23 | 2010-12-16 | 25FF+7d |  |  | 2010-11-23 | 2010-12-16 | 21d | 65d | 0d |  |  |  |  |
| 27 | Painting | 15d | 2010-12-04 | 2010-12-20 | 26FF+3d |  |  | 2010-12-04 | 2010-12-20 | 15d | 65d |  |  |  |  |  |
| 28 | wairing | 10d | 2010-11-27 | 2010-12-07 | 25SS+7d, 332 |  |  | 2010-11-27 | 2010-12-07 | 10d | 66d | 0d |  |  |  |  |
| 29 | Lighting | 10d | 2010-12-08 | 2010-12-19 | 28, 26FF |  |  | 2010-12-08 | 2010-12-19 | 10d | 66d |  |  |  |  |  |
| 30 | Piping | 20d | 2010-11-24 | 2010-12-16 | 26FF |  |  | 2010-11-24 | 2010-12-16 | 20d | 68d |  |  |  |  |  |
| 31 | Excavation | 13.26d | 2010-09-01 | 2010-10-04 | 14FS+6d |  |  | 2010-09-16 | 2010-10-02 | 14d | 5d | 0d | finish no earlier than 2010-09-26 | excavator | 106.08h |  |
| 32 | Replacement | 30d | 2010-09-25 | 2010-10-28 | 31SS+7d |  |  | 2010-09-25 | 2010-10-28 | 30d | 33d | 0d | start no earlier than 2010-09-25 |  |  |  |
| 33 | PC Foundation | 21d | 2010-10-11 | 2010-11-03 | 32SS+14d |  |  | 2010-10-11 | 2010-11-03 | 21d | 33d | 0d |  |  |  |  |
| 34 | RC foundation | 20d | 2010-10-19 | 2010-11-10 | 33SS+7d |  |  | 2010-10-19 | 2010-11-10 | 20d | 33d | 0d |  |  |  |  |
| 35 | Col. Neck | 18d | 2010-10-30 | 2010-11-25 | 34FF+7d |  |  | 2010-10-30 | 2010-11-25 | 18d | 33d | 0d |  |  |  |  |
| 36 | Insulation | 21d | 2010-11-03 | 2010-12-04 | 35FF+7d |  |  | 2010-11-03 | 2010-12-04 | 21d | 33d | 0d |  |  |  |  |
| 37 | Foundation Backfilling | 24d | 2010-11-11 | 2010-12-15 | 36SS+7d |  |  | 2010-11-11 | 2010-12-15 | 24d | 33d | 0d |  |  |  |  |
| 38 | Leveling slope land | 30d | 2010-11-27 | 2010-12-30 | 37SS+7d |  |  | 2010-11-27 | 2010-12-30 | 30d | 33d | 0d |  |  |  |  |
| 39 | SOG PC | 14d | 2011-01-01 | 2011-01-16 | 38 |  |  | 2011-01-01 | 2011-01-16 | 14d | 33d | 0d |  |  |  |  |
| 40 | SOG RC | 18d | 2011-01-06 | 2011-01-26 | 39SS+5d |  |  | 2011-01-06 | 2011-01-26 | 18d | 33d |  |  |  |  |  |
| 41 | Anchor bolt | 16d | 2010-11-01 | 2010-11-25 | 35FF |  |  | 2010-11-01 | 2010-11-25 | 16d | 51d | 18d |  |  |  |  |
| 42 | Steel Structure | 25d | 2010-12-18 | 2011-01-15 | 38SS+18d, 41 |  |  | 2010-12-18 | 2011-01-15 | 25d | 33d | 0d |  |  |  |  |
| 43 | Roof Cladding | 21d | 2010-12-30 | 2011-01-23 | 42FF+7d |  |  | 2010-12-30 | 2011-01-23 | 21d | 33d | 0d |  |  |  |  |
| 44 | Painting | 15d | 2011-01-10 | 2011-01-26 | 43FF+3d |  |  | 2011-01-10 | 2011-01-26 | 15d | 33d |  |  |  |  |  |
| 45 | wairing | 10d | 2010-12-26 | 2011-01-05 | 42SS+7d |  |  | 2010-12-26 | 2011-01-05 | 10d | 41d | 5d |  |  |  |  |
| 46 | Lighting | 10d | 2011-01-12 | 2011-01-23 | 43FF, 45 |  |  | 2011-01-12 | 2011-01-23 | 10d | 36d |  |  |  |  |  |
| 47 | Piping | 20d | 2011-01-01 | 2011-01-23 | 43FF |  |  | 2011-01-01 | 2011-01-23 | 20d | 36d |  |  |  |  |  |
| 48 | Excavation | 12d | 2010-10-12 | 2010-10-25 | 31FS+6d |  |  | 2010-10-10 | 2010-10-25 | 14d | 5d | 0d | finish no earlier than 2010-10-25 | excavator | 96h |  |
| 49 | Replacement | 30d | 2010-10-20 | 2010-11-30 | 48SS+7d |  |  | 2010-10-18 | 2010-11-28 | 30d | 10d | 0d |  |  |  |  |
| 50 | PC Foundation | 21d | 2010-11-06 | 2010-12-06 | 49SS+14d |  |  | 2010-11-03 | 2010-12-04 | 21d | 10d | 0d |  |  |  |  |
| 51 | RC foundation | 21d | 2010-11-21 | 2010-12-14 | 50SS+7d |  |  | 2010-11-11 | 2010-12-12 | 21d | 10d | 0d |  |  |  |  |
| 52 | Col. Neck | 18d | 2010-12-02 | 2010-12-22 | 51FF+7d |  |  | 2010-11-30 | 2010-12-20 | 18d | 10d | 0d |  |  |  |  |
| 53 | Insulation | 21d | 2010-12-07 | 2010-12-30 | 52FF+7d |  |  | 2010-12-05 | 2010-12-28 | 21d | 10d | 0d |  |  |  |  |
| 54 | Foundation Backfilling | 24d | 2010-12-15 | 2011-01-11 | 53SS+7d |  |  | 2010-12-13 | 2011-01-09 | 24d | 10d | 0d |  |  |  |  |
| 55 | Leveling slope land | 21d | 2010-12-23 | 2011-01-16 | 54SS+7d |  |  | 2010-12-21 | 2011-01-13 | 21d | 10d | 0d |  |  |  |  |
| 56 | SOG PC | 14d | 2011-01-17 | 2011-02-01 | 55 |  |  | 2011-01-15 | 2011-01-30 | 14d | 19d | 0d |  |  |  |  |
| 57 | SOG RC | 18d | 2011-01-23 | 2011-02-12 | 56SS+5d |  |  | 2011-01-20 | 2011-02-09 | 18d | 19d |  |  |  |  |  |
| 58 | Anchor bolt | 16d | 2010-12-05 | 2010-12-22 | 52FF |  |  | 2010-12-02 | 2010-12-20 | 16d | 28d | 18d |  |  |  |  |
| 59 | Steel Structure | 25d | 2011-01-13 | 2011-02-10 | 55SS+18d, 58 |  |  | 2011-01-11 | 2011-02-08 | 25d | 10d | 0d |  |  |  |  |
| 60 | Roof Cladding | 21d | 2011-01-26 | 2011-02-19 | 59FF+7d |  |  | 2011-01-24 | 2011-02-16 | 21d | 10d | 0d |  |  |  |  |
| 61 | Painting | 15d | 2011-02-06 | 2011-02-22 | 60FF+3d |  |  | 2011-02-03 | 2011-02-20 | 15d | 10d |  |  |  |  |  |
| 62 | wairing | 10d | 2011-01-22 | 2011-02-01 | 59SS+7d |  |  | 2011-01-19 | 2011-01-30 | 10d | 18d | 5d |  |  |  |  |
| 63 | Lighting | 10d | 2011-02-08 | 2011-02-19 | 60FF, 62 |  |  | 2011-02-06 | 2011-02-16 | 10d | 13d |  |  |  |  |  |
| 64 | Piping | 20d | 2011-01-27 | 2011-02-19 | 60FF |  |  | 2011-01-25 | 2011-02-16 | 20d | 13d |  |  |  |  |  |
| 65 | Excavation | 14d | 2010-10-26 | 2010-11-10 | 48 |  |  | 2010-10-26 | 2010-11-10 | 14d | 5d | 0d |  | excavator | 112h |  |
| 66 | Replacement | 30d | 2010-11-03 | 2010-12-14 | 65SS+7d |  |  | 2010-11-03 | 2010-12-14 | 30d | 5d | 0d |  |  |  |  |
| 67 | PC Foundation | 21d | 2010-11-27 | 2010-12-20 | 66SS+14d |  |  | 2010-11-27 | 2010-12-20 | 21d | 5d | 0d |  |  |  |  |
| 68 | RC foundation | 21d | 2010-12-05 | 2010-12-28 | 67SS+7d |  |  | 2010-12-05 | 2010-12-28 | 21d | 5d | 0d |  |  |  |  |
| 69 | Col. Neck | 18d | 2010-12-16 | 2011-01-05 | 68FF+7d |  |  | 2010-12-16 | 2011-01-05 | 18d | 5d | 0d |  |  |  |  |
| 70 | Insulation | 21d | 2010-12-21 | 2011-01-13 | 69FF+7d |  |  | 2010-12-21 | 2011-01-13 | 21d | 5d | 0d |  |  |  |  |

| ID | Task | Duration | Start | Finish | Predecessors | Complete | Remaining | Baseline start | Baseline finish | Baseline duration | Total slack | Free slack | Constraint |
| --- | --- | --- | --- | --- | --- | --- | --- | --- | --- | --- | --- | --- | --- |
| 71 | Foundation Backfilling | 24d | 2010-12-29 | 2011-01-25 | 70SS+7d |  |  | 2010-12-29 | 2011-01-25 | 24d | 5d | 0d |  |
| 72 | Leveling slope land | 19d | 2011-01-06 | 2011-01-27 | 71SS+7d |  |  | 2011-01-06 | 2011-01-27 | 19d | 5d | 0d |  |
| 73 | SOG PC | 14d | 2011-01-29 | 2011-02-13 | 72 |  |  | 2011-01-29 | 2011-02-13 | 14d | 9d | 0d |  |
| 74 | SOG RC | 18d | 2011-02-03 | 2011-02-23 | 73SS+5d |  |  | 2011-02-03 | 2011-02-23 | 18d | 9d |  |  |
| 75 | Anchor bolt | 16d | 2010-12-19 | 2011-01-05 | 69FF |  |  | 2010-12-19 | 2011-01-05 | 16d | 24d | 19d |  |
| 76 | Steel Structure | 17d | 2011-01-29 | 2011-02-16 | 72, 75 |  |  | 2011-01-29 | 2011-02-16 | 17d | 5d | 0d |  |
| 77 | Roof Cladding | 21d | 2011-02-01 | 2011-02-24 | 76FF+7d |  |  | 2011-02-01 | 2011-02-24 | 21d | 5d | 0d |  |
| 78 | Painting | 15d | 2011-02-12 | 2011-02-28 | 77FF+3d |  |  | 2011-02-12 | 2011-02-28 | 15d | 5d |  |  |
| 79 | wairing | 10d | 2011-02-06 | 2011-02-16 | 76SS+7d |  |  | 2011-02-06 | 2011-02-16 | 10d | 5d | 0d |  |
| 80 | Lighting | 10d | 2011-02-17 | 2011-02-28 | 77FF, 79 |  |  | 2011-02-17 | 2011-02-28 | 10d | 5d |  |  |
| 81 | Piping | 20d | 2011-02-02 | 2011-02-24 | 77FF |  |  | 2011-02-02 | 2011-02-24 | 20d | 8d |  |  |
| 82 | Excavation | 7d | 2010-08-21 A | 2010-09-06 | 2 | 90% | 0.7d | 2010-08-11 | 2010-08-18 | 7d | 41.36d | 0d | start no earlier than 2010-08-19 |
| 83 | Replacement | 10.6d | 2010-08-24 A | 2010-09-16 | 82 | 60% | 4.24d | 2010-08-19 | 2010-08-28 | 8d | 41.36d | 0d | finish no earlier than 2010-09-05 |
| 84 | PC Foundation | 5d | 2010-09-16 | 2010-09-22 | 83 |  |  | 2010-08-29 | 2010-09-02 | 5d | 41.36d | 0d |  |
| 85 | RC foundation | 8d | 2010-09-22 | 2010-10-02 | 84, 321 |  |  | 2010-09-04 | 2010-09-18 | 8d | 41.36d | 0d |  |
| 86 | Col. Neck & walls | 9d | 2010-10-02 | 2010-10-12 | 85 |  |  | 2010-09-19 | 2010-09-28 | 9d | 41.36d | 0d |  |
| 87 | Insulation | 4d | 2010-10-12 | 2010-10-17 | 86 |  |  | 2010-09-29 | 2010-10-03 | 4d | 41.36d | 0d |  |
| 88 | Foundation Backfilling | 8d | 2010-10-17 | 2010-10-26 | 87 |  |  | 2010-10-04 | 2010-10-12 | 8d | 41.36d | 0d |  |
| 89 | RC slab | 9d | 2010-10-26 | 2010-11-06 | 88 |  |  | 2010-10-13 | 2010-10-23 | 9d | 41.36d | 0d |  |
| 90 | RC walls | 9d | 2010-11-06 | 2010-11-23 | 89 |  |  | 2010-10-24 | 2010-11-02 | 9d | 41.36d | 0d |  |
| 91 | SOG PC | 5d | 2010-11-23 | 2010-11-29 | 90 |  |  | 2010-11-03 | 2010-11-08 | 5d | 41.36d | 0d |  |
| 92 | SOG RC | 9d | 2010-11-29 | 2010-12-09 | 91 |  |  | 2010-11-09 | 2010-11-25 | 9d | 41.36d | 0d |  |
| 93 | Block walls | 14d | 2010-12-09 | 2010-12-26 | 92, 185 |  |  | 2010-11-27 | 2010-12-12 | 14d | 41.36d | 0d |  |
| 94 | plastering | 10d | 2010-12-26 | 2011-01-06 | 93 |  |  | 2010-12-13 | 2010-12-23 | 10d | 41.36d | 0d |  |
| 95 | Painting | 8d | 2011-01-06 | 2011-01-16 | 94 |  |  | 2010-12-25 | 2011-01-02 | 8d | 42.36d |  |  |
| 96 | Electrical | 18d | 2010-12-26 | 2011-01-16 | 99, 333 |  |  | 2010-12-13 | 2011-01-02 | 18d | 42.36d |  |  |
| 97 | Mechanical | 18d | 2010-12-26 | 2011-01-16 | 99, 333 |  |  | 2010-12-13 | 2011-01-02 | 18d | 42.36d |  |  |
| 98 | Anchor bolt | 9d | 2010-10-02 | 2010-10-12 | 86FF, 157 |  |  | 2010-09-19 | 2010-09-28 | 9d | 118.36d |  |  |
| 99 | Steel Structure | 14d | 2010-12-09 | 2010-12-26 | 92 |  |  | 2010-11-27 | 2010-12-12 | 14d | 42.36d | 0d |  |
| 100 | Sandwich Panels | 5d | 2011-01-06 | 2011-01-12 | 99, 94 |  |  | 2010-12-25 | 2010-12-29 | 5d | 41.36d | 0d |  |
| 101 | Roof Cladding | 10d | 2010-12-26 | 2011-01-06 | 99 |  |  | 2010-12-13 | 2010-12-23 | 10d | 46.36d | 5d |  |
| 102 | Mobilaization | 13d | 2010-08-01 A | 2010-08-15 A |  | 100% |  | 2010-08-01 | 2010-08-16 | 14d |  |  |  |
| 103 | Side Cladding | 4d | 2011-01-12 | 2011-01-17 | 101, 100 |  |  | 2010-12-30 | 2011-01-03 | 4d | 41.36d |  |  |
| 104 | Excavation | 2d | 2010-08-18 A | 2010-08-28 A | 113, 10 | 100% |  | 2010-08-19 | 2010-08-30 | 10d |  |  | finish no earlier than 2010-09-02 |
| 105 | Replacement | 13.5d | 2010-08-21 A | 2010-09-08 | 104FF+1.25w | 50% | 6.75d | 2010-08-21 | 2010-09-08 | 16d | 85d | 8d | finish no earlier than 2010-09-08 |
| 106 | PC Foundation | 10d | 2010-09-20 | 2010-09-30 | 105FF+1w, 115 |  |  | 2010-09-04 | 2010-09-21 | 10d | 77d | 12d |  |
| 107 | RC Foundation | 19d | 2010-10-07 | 2010-10-28 | 106FF+2w, 116, 324 |  |  | 2010-09-19 | 2010-10-10 | 19d | 65d | 0d |  |
| 108 | RC Walls | 24d | 2010-10-18 | 2010-11-21 | 107FF+14d |  |  | 2010-09-29 | 2010-10-26 | 24d | 65d | 0d |  |
| 109 | Insulation | 14d | 2010-11-04 | 2010-11-27 | 108FF+5d |  |  | 2010-10-17 | 2010-11-01 | 14d | 65d | 0d |  |
| 110 | Foundation Backfilling | 12d | 2010-11-21 | 2010-12-04 | 109FF+1w |  |  | 2010-10-26 | 2010-11-08 | 12d | 65d | 0d |  |
| 111 | SOG PC | 7d | 2010-12-05 | 2010-12-12 | 110 |  |  | 2010-11-09 | 2010-11-23 | 7d | 65d | 0d |  |
| 112 | SOG RC | 12d | 2010-12-07 | 2010-12-20 | 111FF+7d |  |  | 2010-11-11 | 2010-12-01 | 12d | 65d |  |  |
| 113 | Excavation | 6.3d | 2010-08-14 A | 2010-08-23 A | 12 | 100% |  | 2010-08-11 | 2010-08-18 | 7d |  |  |  |
| 114 | Replacement | 9d | 2010-08-28 A | 2010-09-06 | 113FF+5d | 30% | 6.3d | 2010-08-15 | 2010-08-24 | 9d | 55d | 0d | start no earlier than 2010-08-26 |
| 115 | PC Foundation | 10d | 2010-09-02 | 2010-09-19 | 114FF+1w |  |  | 2010-08-21 | 2010-08-31 | 10d | 55d | 0d |  |
| 116 | RC Foundation | 14d | 2010-09-19 | 2010-10-04 | 115FF+10d, 323 |  |  | 2010-08-28 | 2010-09-18 | 14d | 52d | 0d |  |
| 117 | RC Walls | 21d | 2010-09-27 | 2010-10-20 | 116FF+14d |  |  | 2010-09-05 | 2010-10-04 | 21d | 52d | 0d |  |
| 118 | Insulation | 14d | 2010-10-12 | 2010-10-27 | 117FF+6d |  |  | 2010-09-26 | 2010-10-11 | 14d | 52d | 0d |  |
| 119 | Foundation Backfilling | 14d | 2010-10-28 | 2010-11-13 | 118 |  |  | 2010-10-12 | 2010-10-27 | 14d | 52d | 0d |  |
| 120 | SOG PC | 7d | 2010-12-07 | 2010-12-14 | 123 |  |  | 2010-11-21 | 2010-11-28 | 7d | 52d | 0d |  |
| 121 | SOG RC | 18d | 2010-12-15 | 2011-01-04 | 120 |  |  | 2010-11-29 | 2010-12-19 | 18d | 52d |  |  |
| 122 | Anchor bolt | 12d | 2010-10-07 | 2010-10-20 | 117FF, 165 |  |  | 2010-09-21 | 2010-10-04 | 12d | 111d |  |  |
| 123 | Steel Structure | 14d | 2010-11-21 | 2010-12-06 | 119 |  |  | 2010-10-28 | 2010-11-13 | 14d | 52d | 0d |  |
| 124 | Roof Cladding | 25d | 2010-12-07 | 2011-01-04 | 123 |  |  | 2010-11-21 | 2010-12-19 | 25d | 52d |  |  |
| 125 | Excavation | 7.16d | 2010-08-24 A | 2010-09-02 A | 319 | 100% |  | 2010-08-21 | 2010-08-24 | 4d |  |  | finish no earlier than 2010-09-01 |
| 126 | Replacement | 8d | 2010-09-04 | 2010-09-18 | 125 |  |  | 2010-08-25 | 2010-09-02 | 8d | 78d | 0d |  |
| 127 | PC Foundation | 5d | 2010-09-19 | 2010-09-23 | 126 |  |  | 2010-09-04 | 2010-09-08 | 5d | 78d | 0d |  |
| 128 | RC Foundation | 5d | 2010-09-25 | 2010-09-29 | 127, 322 |  |  | 2010-09-15 | 2010-09-20 | 5d | 78d | 0d |  |
| 129 | Col. Neck | 6d | 2010-09-30 | 2010-10-06 | 128 |  |  | 2010-09-21 | 2010-09-27 | 6d | 83d | 0d |  |
| 130 | RC Walls | 7d | 2010-09-30 | 2010-10-07 | 128 |  |  | 2010-09-21 | 2010-09-28 | 7d | 78d | 0d |  |
| 131 | Insulation | 4d | 2010-10-09 | 2010-10-12 | 130 |  |  | 2010-09-29 | 2010-10-03 | 4d | 78d | 0d |  |
| 132 | Foundation Backfilling | 5d | 2010-10-13 | 2010-10-18 | 129, 131 |  |  | 2010-10-04 | 2010-10-09 | 5d | 78d | 0d |  |
| 133 | SOG PC | 5d | 2010-10-25 | 2010-10-30 | 136 |  |  | 2010-10-16 | 2010-10-20 | 5d | 78d | 0d |  |
| 134 | SOG RC | 8d | 2010-10-31 | 2010-11-08 | 133 |  |  | 2010-10-21 | 2010-10-30 | 8d | 78d | 0d |  |
| 135 | Anchor bolt | 10d | 2010-09-26 | 2010-10-06 | 129FF, 161 |  |  | 2010-09-16 | 2010-09-27 | 10d | 123d |  |  |
| 136 | Steel Structure | 5d | 2010-10-19 | 2010-10-24 | 132 |  |  | 2010-10-10 | 2010-10-14 | 5d | 78d | 0d |  |
| 137 | Roof Cladding | 11d | 2010-10-25 | 2010-11-06 | 136 |  |  | 2010-10-16 | 2010-10-27 | 11d | 94d | 16d |  |
| 138 | Work Shop Drawing' | 10d | 2010-08-10 A | 2010-08-21 A |  | 100% |  | 2010-08-10 | 2010-08-21 | 10d |  |  | must start on 2010-08-10 |
| 139 | Approval the work shop drawing | 7d | 2010-08-28 | 2010-09-04 | 138 |  |  | 2010-08-22 | 2010-08-29 | 7d | 5d | 0d | start no earlier than 2010-08-26 |
| 140 | Work Shop Drawing' | 10d | 2010-09-21 | 2010-10-02 | 102FS+26d |  |  | 2010-09-22 | 2010-10-03 | 10d | 14d | 0d |  |

| ID | Task | Duration | Start | Finish | Predecessors | Complete | Remaining | Baseline start | Baseline finish | Baseline duration | Total slack | Free slack | Constraint |
| --- | --- | --- | --- | --- | --- | --- | --- | --- | --- | --- | --- | --- | --- |
| 141 | Approval the work shop drawing | 7d | 2010-10-03 | 2010-10-10 | 140 |  |  | 2010-10-04 | 2010-10-11 | 7d | 14d | 0d |  |
| 142 | Work Shop Drawing' | 7d | 2010-08-28 | 2010-09-04 | 102SS+15d |  |  | 2010-08-18 | 2010-08-25 | 7d | 70d | 0d | start no earlier than 2010-08-26 |
| 143 | Approval the work shop drawing | 7d | 2010-09-05 | 2010-09-18 | 142 |  |  | 2010-08-26 | 2010-09-02 | 7d | 70d | 0d |  |
| 144 | Excavation | 10d | 2010-09-19 | 2010-09-29 | 143 |  |  | 2010-09-04 | 2010-09-20 | 10d | 70d | 0d |  |
| 145 | Replacement | 12d | 2010-09-30 | 2010-10-13 | 144 |  |  | 2010-09-21 | 2010-10-04 | 12d | 70d | 0d |  |
| 146 | PC Foundation | 7d | 2010-10-14 | 2010-10-21 | 145 |  |  | 2010-10-05 | 2010-10-12 | 7d | 70d | 0d |  |
| 147 | RC Foundation | 8d | 2010-10-23 | 2010-10-31 | 146, 325 |  |  | 2010-10-13 | 2010-10-21 | 8d | 70d | 0d |  |
| 148 | RC Walls | 14d | 2010-11-01 | 2010-11-23 | 147 |  |  | 2010-10-23 | 2010-11-07 | 14d | 70d | 0d |  |
| 149 | Rc Roof | 10d | 2010-11-24 | 2010-12-05 | 148 |  |  | 2010-11-08 | 2010-11-25 | 10d | 70d | 0d |  |
| 150 | Insulation | 3d | 2010-12-06 | 2010-12-08 | 149 |  |  | 2010-11-27 | 2010-11-29 | 3d | 70d | 0d | start no earlier than 2010-11-08 |
| 151 | Foundation Backfilling | 5d | 2010-12-09 | 2010-12-14 | 150 |  |  | 2010-11-30 | 2010-12-05 | 5d | 70d |  | start no earlier than 2010-11-08 |
| 152 | Work Shop Drawing' | 10d | 2010-09-01 | 2010-09-18 |  |  |  | 2010-09-01 | 2010-09-18 | 10d | 0d |  | must start on 2010-09-01 |
| 153 | Approval the work shop drawing | 7d | 2010-09-19 | 2010-09-26 | 152 |  |  | 2010-09-19 | 2010-09-26 | 7d | 88d | 5d |  |
| 154 | Work Shop Drawing' | 10d | 2010-10-13 | 2010-10-24 | 102FS+45d |  |  | 2010-10-14 | 2010-10-25 | 10d | 67d | 0d | start no earlier than 2010-07-26 |
| 155 | Approval the work shop drawing | 7d | 2010-10-25 | 2010-11-01 | 154 |  |  | 2010-10-26 | 2010-11-02 | 7d | 67d | 0d | start no earlier than 2010-07-26 |
| 156 | Work Shop Drawing' | 10d | 2010-08-18 A | 2010-08-29 |  | 80% | 2d | 2010-08-18 | 2010-08-29 | 10d | 0d |  | must start on 2010-08-18 |
| 157 | Approval the work shop drawing | 7d | 2010-08-30 | 2010-09-06 | 156 |  |  | 2010-08-30 | 2010-09-06 | 7d | 135d | 16.64d | start no earlier than 2010-07-26 |
| 158 | Work Shop Drawing' | 10d | 2010-10-30 | 2010-11-09 | 102FS+59d |  |  | 2010-10-31 | 2010-11-10 | 10d | 55d | 0d | start no earlier than 2010-07-26 |
| 159 | Approval the work shop drawing | 7d | 2010-11-10 | 2010-11-24 | 158 |  |  | 2010-11-11 | 2010-11-25 | 7d | 55d | 0d | start no earlier than 2010-07-26 |
| 160 | Work Shop Drawing' | 10d | 2010-08-28 | 2010-09-07 |  |  |  | 2010-08-16 | 2010-08-26 | 10d | 126d | 0d | start no earlier than 2010-08-26 |
| 161 | Approval the work shop drawing | 7d | 2010-09-08 | 2010-09-21 | 160 |  |  | 2010-08-28 | 2010-09-04 | 7d | 126d | 3d |  |
| 162 | Work Shop Drawing' | 10d | 2010-09-02 | 2010-09-19 | 102FS+15d |  |  | 2010-09-04 | 2010-09-20 | 10d | 102d | 0d | start no earlier than 2010-07-26 |
| 163 | Approval the work shop drawing | 7d | 2010-09-20 | 2010-09-27 | 162 |  |  | 2010-09-21 | 2010-09-28 | 7d | 102d | 0d | start no earlier than 2010-07-26 |
| 164 | Work Shop Drawing' | 10d | 2010-08-28 | 2010-09-07 |  |  |  | 2010-08-21 | 2010-08-31 | 10d | 124d | 0d | start no earlier than 2010-08-26 |
| 165 | Approval the work shop drawing | 7d | 2010-09-08 | 2010-09-21 | 164 |  |  | 2010-09-01 | 2010-09-08 | 7d | 124d | 13d | start no earlier than 2010-07-26 |
| 166 | Work Shop Drawing' | 10d | 2010-10-07 | 2010-10-18 | 102FS+40d |  |  | 2010-10-09 | 2010-10-19 | 10d | 78d | 0d | start no earlier than 2010-07-26 |
| 167 | Approval the work shop drawing | 7d | 2010-10-19 | 2010-10-26 | 166 |  |  | 2010-10-20 | 2010-10-27 | 7d | 78d | 0d | start no earlier than 2010-07-26 |
| 168 | Work Shop Drawing' | 10d | 2010-10-09 | 2010-10-19 | 326FS+4d |  |  | 2010-10-09 | 2010-10-19 | 10d | 21d | 0d | start no earlier than 2010-07-26 |
| 169 | Approval the work shop drawing | 7d | 2010-10-20 | 2010-10-27 | 168 |  |  | 2010-10-20 | 2010-10-27 | 7d | 21d | 3d | start no earlier than 2010-07-26 |
| 170 | Work Shop Drawing' | 10d | 2010-12-07 | 2010-12-18 | 102FS+86d |  |  | 2010-12-08 | 2010-12-19 | 10d | 25d | 0d | start no earlier than 2010-07-26 |
| 171 | Approval the work shop drawing | 7d | 2010-12-19 | 2010-12-26 | 170 |  |  | 2010-12-20 | 2010-12-27 | 7d | 25d | 0d | start no earlier than 2010-07-26 |
| 172 | Work Shop Drawing' | 10d | 2010-11-22 | 2010-12-02 |  |  |  | 2010-11-22 | 2010-12-02 | 10d | 42d | 0d | start no earlier than 2010-11-22 |
| 173 | Approval the work shop drawing | 7d | 2010-12-04 | 2010-12-11 | 172 |  |  | 2010-12-04 | 2010-12-11 | 7d | 42d | 10d | start no earlier than 2010-07-26 |
| 174 | Work Shop Drawing' | 10d | 2010-12-15 | 2010-12-26 | 102FS+93d |  |  | 2010-12-16 | 2010-12-27 | 10d | 14d | 0d | start no earlier than 2010-07-26 |
| 175 | Approval the work shop drawing | 7d | 2010-12-27 | 2011-01-03 | 174 |  |  | 2010-12-28 | 2011-01-04 | 7d | 14d | 0d | start no earlier than 2010-07-26 |
| 176 | Work Shop Drawing' | 10d | 2010-11-27 | 2010-12-07 |  |  |  | 2010-11-27 | 2010-12-07 | 10d | 0d |  | must start on 2010-11-27 |
| 177 | Approval the work shop drawing | 7d | 2010-12-08 | 2010-12-15 | 176 |  |  | 2010-12-08 | 2010-12-15 | 7d | 38d | 10d | start no earlier than 2010-07-26 |
| 178 | Work Shop Drawing' | 10d | 2010-12-26 | 2011-01-05 | 102FS+102d |  |  | 2010-12-27 | 2011-01-06 | 10d | 9d | 0d | start no earlier than 2010-07-26 |
| 179 | Approval the work shop drawing | 7d | 2011-01-06 | 2011-01-13 | 178 |  |  | 2011-01-08 | 2011-01-15 | 7d | 9d | 0d | start no earlier than 2010-07-26 |
| 180 | Work Shop Drawing' | 10d | 2010-11-22 | 2010-12-02 |  |  |  | 2010-11-22 | 2010-12-02 | 10d | 53d | 0d | start no earlier than 2010-11-22 |
| 181 | Approval the work shop drawing | 7d | 2010-12-04 | 2010-12-11 | 180 |  |  | 2010-12-04 | 2010-12-11 | 7d | 53d | 4d | start no earlier than 2010-07-26 |
| 182 | Work Shop Drawing' | 10d | 2010-12-13 | 2010-12-23 | 102FS+91d |  |  | 2010-12-14 | 2010-12-25 | 10d | 29d | 0d | start no earlier than 2010-07-26 |
| 183 | Approval the work shop drawing | 7d | 2010-12-25 | 2011-01-01 | 182 |  |  | 2010-12-26 | 2011-01-02 | 7d | 29d | 0d | start no earlier than 2010-07-26 |
| 184 | Work Shop Drawing' | 10d | 2010-10-25 | 2010-11-04 |  |  |  | 2010-10-25 | 2010-11-04 | 10d | 58d | 0d | start no earlier than 2010-10-25 |
| 185 | Approval the work shop drawing | 7d | 2010-11-06 | 2010-11-13 | 184 |  |  | 2010-11-06 | 2010-11-13 | 7d | 58d | 16.64d | start no earlier than 2010-07-26 |
| 186 | Block walls | 5d | 2010-11-09 | 2010-11-21 | 134 |  |  | 2010-10-31 | 2010-11-04 | 5d | 78d | 0d |  |
| 187 | plastering | 6d | 2010-11-22 | 2010-11-28 | 186 |  |  | 2010-11-06 | 2010-11-11 | 6d | 78d | 0d |  |
| 188 | Painting | 5d | 2010-11-29 | 2010-12-04 | 187 |  |  | 2010-11-13 | 2010-11-24 | 5d | 79d |  |  |
| 189 | Sandwich Panels | 3d | 2010-11-29 | 2010-12-01 | 187, 136 |  |  | 2010-11-13 | 2010-11-22 | 3d | 78d | 0d |  |
| 190 | Side Cladding | 3d | 2010-12-02 | 2010-12-05 | 137, 189 |  |  | 2010-11-23 | 2010-11-25 | 3d | 78d |  |  |
| 191 | Electrical | 15d | 2010-10-25 | 2010-11-10 | 136, 334 |  |  | 2010-10-16 | 2010-11-01 | 15d | 93d |  |  |
| 192 | Mechanical | 10d | 2010-10-25 | 2010-11-04 | 136 |  |  | 2010-10-16 | 2010-10-26 | 10d | 98d |  |  |
| 193 | Electrical | 14d | 2010-12-07 | 2010-12-22 | 123, 335 |  |  | 2010-11-21 | 2010-12-06 | 14d | 63d |  |  |
| 194 | Mechanical | 14d | 2010-12-07 | 2010-12-22 | 123 |  |  | 2010-11-21 | 2010-12-06 | 14d | 63d |  |  |
| 195 | Excavation | 5d | 2010-09-20 | 2010-09-25 | 104FS+14d, 6 |  |  | 2010-09-22 | 2010-09-27 | 5d | 8d | 0d |  |
| 196 | Replacement | 10d | 2010-09-26 | 2010-10-06 | 195 |  |  | 2010-09-28 | 2010-10-09 | 10d | 8d | 0d |  |
| 197 | PC Foundation | 7d | 2010-10-07 | 2010-10-14 | 196 |  |  | 2010-10-10 | 2010-10-17 | 7d | 8d | 0d |  |
| 198 | RC foundation | 12d | 2010-10-16 | 2010-10-28 | 197, 326 |  |  | 2010-10-18 | 2010-10-31 | 12d | 8d | 0d |  |
| 199 | Col. Neck | 8d | 2010-10-30 | 2010-11-07 | 198 |  |  | 2010-11-01 | 2010-11-09 | 8d | 8d | 0d |  |
| 200 | Insulation | 4d | 2010-11-08 | 2010-11-11 | 199 |  |  | 2010-11-10 | 2010-11-21 | 4d | 8d | 0d |  |
| 201 | Foundation Backfilling | 6d | 2010-11-13 | 2010-11-25 | 200 |  |  | 2010-11-22 | 2010-11-28 | 6d | 8d | 0d |  |
| 202 | SOG PC | 7d | 2010-12-08 | 2010-12-15 | 205 |  |  | 2010-12-11 | 2010-12-18 | 7d | 8d | 0d |  |
| 203 | SOG RC | 12d | 2010-12-16 | 2010-12-29 | 202 |  |  | 2010-12-19 | 2011-01-01 | 12d | 8d | 0d |  |
| 204 | Anchor bolt | 6d | 2010-11-01 | 2010-11-07 | 199FF, 169 |  |  | 2010-11-03 | 2010-11-09 | 6d | 18d | 10d |  |
| 205 | Steel Structure | 10d | 2010-11-27 | 2010-12-07 | 201, 204 |  |  | 2010-11-29 | 2010-12-09 | 10d | 8d | 0d |  |
| 206 | Roof Cladding | 10d | 2010-12-08 | 2010-12-19 | 205 |  |  | 2010-12-11 | 2010-12-21 | 10d | 56d | 0d |  |
| 207 | Side Cladding | 10d | 2010-12-20 | 2010-12-30 | 206 |  |  | 2010-12-22 | 2011-01-02 | 10d | 56d |  |  |
| 208 | Block walls | 10d | 2010-12-30 | 2011-01-10 | 203, 216 |  |  | 2011-01-02 | 2011-01-12 | 10d | 8d | 0d |  |
| 209 | plastering | 14d | 2011-01-08 | 2011-01-23 | 208SS+7d |  |  | 2011-01-10 | 2011-01-25 | 14d | 8d | 0d |  |
| 210 | Painting | 14d | 2011-02-09 | 2011-02-24 | 213 |  |  | 2011-02-12 | 2011-02-27 | 14d | 8d |  |  |

| ID | Task | Duration | Start | Finish | Predecessors | Complete | Remaining | Baseline start | Baseline finish | Baseline duration | Total slack | Free slack | Constraint |
| --- | --- | --- | --- | --- | --- | --- | --- | --- | --- | --- | --- | --- | --- |
| 211 | Electrical | 21d | 2011-01-12 | 2011-02-05 | 336 |  |  | 2011-01-13 | 2011-02-06 | 21d | 25d | 0d |  |
| 212 | Mechanical | 21d | 2011-01-12 | 2011-02-05 | 211SS |  |  | 2011-01-13 | 2011-02-06 | 21d | 25d |  |  |
| 213 | Flooring finish | 14d | 2011-01-24 | 2011-02-08 | 209 |  |  | 2011-01-26 | 2011-02-10 | 14d | 8d | 0d |  |
| 214 | Doors& windows | 8d | 2011-02-09 | 2011-02-17 | 213 |  |  | 2011-02-12 | 2011-02-20 | 8d | 14d |  |  |
| 215 | Work Shop Drawing' | 10d | 2010-12-07 | 2010-12-18 |  |  |  | 2010-12-07 | 2010-12-18 | 10d | 0d |  | must start on 2010-12-07 |
| 216 | Approval the work shop drawing | 7d | 2010-12-19 | 2010-12-26 | 215 |  |  | 2010-12-19 | 2010-12-26 | 7d | 11d | 3d |  |
| 217 | Excavation | 6d | 2010-09-04 A | 2010-09-15 | 102SS+24d, 4 | 30% | 4.2d | 2010-08-29 | 2010-09-04 | 6d | 0d |  | finish no earlier than 2010-09-15 |
| 218 | Replacement | 10d | 2010-09-16 | 2010-09-27 | 217 |  |  | 2010-09-05 | 2010-09-21 | 10d | 0d |  |  |
| 219 | PC Foundation | 8d | 2010-09-28 | 2010-10-06 | 218 |  |  | 2010-09-22 | 2010-09-30 | 8d | 0d |  |  |
| 220 | RC foundation | 12d | 2010-10-07 | 2010-10-20 | 219, 327 |  |  | 2010-10-02 | 2010-10-14 | 12d | 0d |  |  |
| 221 | Columnes | 8d | 2010-10-21 | 2010-10-30 | 220 |  |  | 2010-10-16 | 2010-10-24 | 8d | 0d |  |  |
| 222 | under graund masonry | 12d | 2010-10-31 | 2010-11-13 | 221 |  |  | 2010-10-25 | 2010-11-07 | 12d | 0d |  |  |
| 223 | Insulation | 6d | 2010-11-21 | 2010-11-27 | 222 |  |  | 2010-11-08 | 2010-11-21 | 6d | 0d |  |  |
| 224 | Foundation Backfilling | 8d | 2010-11-28 | 2010-12-06 | 223 |  |  | 2010-11-22 | 2010-11-30 | 8d | 0d |  |  |
| 225 | SOG PC | 4d | 2010-12-07 | 2010-12-11 | 224 |  |  | 2010-12-01 | 2010-12-05 | 4d | 0d |  |  |
| 226 | RC slab | 10d | 2010-12-12 | 2010-12-22 | 225 |  |  | 2010-12-06 | 2010-12-16 | 10d | 0d |  |  |
| 227 | Roof parapet | 7d | 2010-12-23 | 2010-12-30 | 226, 173 |  |  | 2010-12-18 | 2010-12-25 | 7d | 32d | 0d |  |
| 228 | Roof insulation | 10d | 2011-01-01 | 2011-01-11 | 227 |  |  | 2010-12-26 | 2011-01-05 | 10d | 32d | 0d |  |
| 229 | Roof tiles | 14d | 2011-01-12 | 2011-01-27 | 228 |  |  | 2011-01-06 | 2011-01-22 | 14d | 32d |  |  |
| 230 | Block walls | 14d | 2011-01-17 | 2011-02-01 | 226FS+21d |  |  | 2011-01-11 | 2011-01-26 | 14d | 0d |  |  |
| 231 | Plumping | 10d | 2011-01-29 | 2011-02-08 | 230SS+10d |  |  | 2011-01-23 | 2011-02-02 | 10d | 22d |  |  |
| 232 | plastering | 18d | 2011-01-29 | 2011-02-17 | 230SS+10d |  |  | 2011-01-23 | 2011-02-12 | 18d | 0d |  |  |
| 233 | Flooring finish | 14d | 2011-02-09 | 2011-02-24 | 232SS+10d |  |  | 2011-02-03 | 2011-02-19 | 14d | 1d |  |  |
| 234 | Painting | 14d | 2011-02-19 | 2011-03-06 | 232, 233SS+7d |  |  | 2011-02-13 | 2011-02-28 | 14d | 0d |  |  |
| 235 | Doors& windows | 10d | 2011-02-19 | 2011-03-01 | 234SS |  |  | 2011-02-13 | 2011-02-23 | 10d | 4d |  |  |
| 236 | Electrical | 25d | 2011-02-02 | 2011-03-02 | 230, 337 |  |  | 2011-01-27 | 2011-02-24 | 25d | 3d |  |  |
| 237 | Mechanical | 14d | 2011-02-19 | 2011-03-06 | 232 |  |  | 2011-02-13 | 2011-02-28 | 14d | 0d |  |  |
| 238 | Excavation | 6d | 2010-09-16 | 2010-09-22 | 217, 139 |  |  | 2010-09-05 | 2010-09-16 | 6d | 0d |  | start no earlier than 2010-09-05 |
| 239 | Replacement | 10d | 2010-09-23 | 2010-10-04 | 238 |  |  | 2010-09-18 | 2010-09-28 | 10d | 0d |  |  |
| 240 | PC Foundation | 8d | 2010-10-05 | 2010-10-13 | 239 |  |  | 2010-09-29 | 2010-10-07 | 8d | 0d |  |  |
| 241 | RC foundation | 12d | 2010-10-14 | 2010-10-27 | 240, 328 |  |  | 2010-10-09 | 2010-10-21 | 12d | 0d |  |  |
| 242 | Columnes | 8d | 2010-10-28 | 2010-11-06 | 241 |  |  | 2010-10-23 | 2010-10-31 | 8d | 0d |  |  |
| 243 | under graund masonry | 10d | 2010-11-07 | 2010-11-24 | 242 |  |  | 2010-11-01 | 2010-11-11 | 10d | 0d |  |  |
| 244 | Insulation | 4d | 2010-11-25 | 2010-11-29 | 243 |  |  | 2010-11-13 | 2010-11-23 | 4d | 0d |  |  |
| 245 | Foundation Backfilling | 8d | 2010-11-30 | 2010-12-08 | 244 |  |  | 2010-11-24 | 2010-12-02 | 8d | 0d |  |  |
| 246 | SOG PC | 4d | 2010-12-09 | 2010-12-13 | 245 |  |  | 2010-12-04 | 2010-12-07 | 4d | 0d |  |  |
| 247 | RC slab | 12d | 2010-12-14 | 2010-12-27 | 246 |  |  | 2010-12-08 | 2010-12-21 | 12d | 0d |  |  |
| 248 | Roof parapet | 7d | 2010-12-28 | 2011-01-04 | 247, 177 |  |  | 2010-12-22 | 2010-12-29 | 7d | 28d | 0d |  |
| 249 | Roof insulation | 10d | 2011-01-05 | 2011-01-16 | 248 |  |  | 2010-12-30 | 2011-01-10 | 10d | 28d | 0d |  |
| 250 | Roof tiles | 14d | 2011-01-17 | 2011-02-01 | 249 |  |  | 2011-01-11 | 2011-01-26 | 14d | 28d |  |  |
| 251 | Block walls | 14d | 2011-01-22 | 2011-02-06 | 247FS+21d |  |  | 2011-01-16 | 2011-01-31 | 14d | 0d |  |  |
| 252 | Plumping | 10d | 2011-02-02 | 2011-02-13 | 251SS+10d |  |  | 2011-01-27 | 2011-02-07 | 10d | 18d |  |  |
| 253 | plastering | 18d | 2011-02-02 | 2011-02-22 | 251SS+10d |  |  | 2011-01-27 | 2011-02-16 | 18d | 0d |  |  |
| 254 | Flooring finish | 14d | 2011-02-14 | 2011-03-01 | 253SS+10d |  |  | 2011-02-08 | 2011-02-23 | 14d | 1d |  |  |
| 255 | Painting | 10d | 2011-02-23 | 2011-03-06 | 253, 254SS+7d |  |  | 2011-02-17 | 2011-02-28 | 10d | 0d |  |  |
| 256 | Doors& windows | 10d | 2011-02-23 | 2011-03-06 | 255SS |  |  | 2011-02-17 | 2011-02-28 | 10d | 0d |  |  |
| 257 | Electrical | 21d | 2011-02-07 | 2011-03-02 | 251, 338 |  |  | 2011-02-01 | 2011-02-24 | 21d | 3d |  |  |
| 258 | Mechanical | 10d | 2011-02-23 | 2011-03-06 | 253 |  |  | 2011-02-17 | 2011-02-28 | 10d | 0d |  |  |
| 259 | Excavation | 3d | 2010-10-11 | 2010-10-13 | 195FS+12d, 141 |  |  | 2010-10-12 | 2010-10-14 | 3d | 14d | 0d |  |
| 260 | Replacement | 6d | 2010-10-14 | 2010-10-20 | 259 |  |  | 2010-10-16 | 2010-10-21 | 6d | 14d | 0d |  |
| 261 | PC Foundation | 4d | 2010-10-21 | 2010-10-25 | 260 |  |  | 2010-10-23 | 2010-10-26 | 4d | 14d | 0d |  |
| 262 | RC foundation | 8d | 2010-10-26 | 2010-11-03 | 261, 329 |  |  | 2010-10-27 | 2010-11-04 | 8d | 14d | 0d |  |
| 263 | Columnes | 6d | 2010-11-04 | 2010-11-10 | 262 |  |  | 2010-11-06 | 2010-11-11 | 6d | 14d | 0d |  |
| 264 | under graund masonry | 5d | 2010-11-11 | 2010-11-23 | 263 |  |  | 2010-11-13 | 2010-11-24 | 5d | 14d | 0d |  |
| 265 | Insulation | 3d | 2010-11-24 | 2010-11-27 | 264 |  |  | 2010-11-25 | 2010-11-28 | 3d | 14d | 0d |  |
| 266 | Foundation Backfilling | 5d | 2010-11-28 | 2010-12-02 | 265 |  |  | 2010-11-29 | 2010-12-04 | 5d | 14d | 0d |  |
| 267 | SOG PC | 2d | 2010-12-04 | 2010-12-05 | 266 |  |  | 2010-12-05 | 2010-12-06 | 2d | 14d | 0d |  |
| 268 | RC slab | 9d | 2010-12-06 | 2010-12-15 | 267 |  |  | 2010-12-07 | 2010-12-16 | 9d | 14d | 0d |  |
| 269 | Roof parapet | 4d | 2010-12-16 | 2010-12-20 | 268, 181 |  |  | 2010-12-18 | 2010-12-21 | 4d | 49d | 0d |  |
| 270 | Roof insulation | 7d | 2010-12-21 | 2010-12-28 | 269 |  |  | 2010-12-22 | 2010-12-29 | 7d | 49d | 0d |  |
| 271 | Roof tiles | 9d | 2010-12-29 | 2011-01-08 | 270 |  |  | 2010-12-30 | 2011-01-09 | 9d | 49d |  |  |
| 272 | Block walls | 7d | 2011-01-10 | 2011-01-17 | 268FS+21d |  |  | 2011-01-11 | 2011-01-18 | 7d | 14d | 0d |  |
| 273 | plastering | 10d | 2011-01-18 | 2011-01-29 | 272 |  |  | 2011-01-19 | 2011-01-30 | 10d | 14d | 0d |  |
| 274 | Flooring finish | 7d | 2011-01-30 | 2011-02-06 | 273 |  |  | 2011-01-31 | 2011-02-07 | 7d | 14d | 0d |  |
| 275 | Painting | 10d | 2011-02-07 | 2011-02-17 | 274 |  |  | 2011-02-08 | 2011-02-19 | 10d | 14d | 0d |  |
| 276 | Doors& windows | 4d | 2011-02-07 | 2011-02-10 | 275SS |  |  | 2011-02-08 | 2011-02-12 | 4d | 20d |  |  |
| 277 | Electrical | 12d | 2011-01-18 | 2011-01-31 | 272, 339 |  |  | 2011-01-19 | 2011-02-01 | 12d | 29d |  |  |
| 278 | Mechanical | 6d | 2011-01-30 | 2011-02-05 | 273 |  |  | 2011-01-31 | 2011-02-06 | 6d | 25d |  |  |
| 279 | Excavation | 3d | 2010-10-20 | 2010-10-23 |  |  |  | 2010-10-20 | 2010-10-23 | 3d | 5d | 0d | start no earlier than 2010-10-20 |
| 280 | Replacement | 6d | 2010-10-24 | 2010-10-30 | 279 |  |  | 2010-10-24 | 2010-10-30 | 6d | 5d | 0d |  |

| ID | Task | Duration | Start | Finish | Predecessors | Baseline start | Baseline finish | Baseline duration | Total slack | Free slack | Constraint |
| --- | --- | --- | --- | --- | --- | --- | --- | --- | --- | --- | --- |
| 281 | PC Foundation | 4d | 2010-10-31 | 2010-11-03 | 280 | 2010-10-31 | 2010-11-03 | 4d | 5d | 0d |  |
| 282 | RC foundation | 9d | 2010-11-04 | 2010-11-21 | 281 | 2010-11-04 | 2010-11-21 | 9d | 5d | 0d |  |
| 283 | Columnes | 6d | 2010-11-22 | 2010-11-28 | 282 | 2010-11-22 | 2010-11-28 | 6d | 5d | 0d |  |
| 284 | under graund masonry | 5d | 2010-11-29 | 2010-12-04 | 283 | 2010-11-29 | 2010-12-04 | 5d | 5d | 0d |  |
| 285 | Insulation | 3d | 2010-12-05 | 2010-12-07 | 284 | 2010-12-05 | 2010-12-07 | 3d | 5d | 0d |  |
| 286 | Foundation Backfilling | 5d | 2010-12-08 | 2010-12-13 | 285 | 2010-12-08 | 2010-12-13 | 5d | 5d | 0d |  |
| 287 | SOG PC | 2d | 2010-12-14 | 2010-12-15 | 286 | 2010-12-14 | 2010-12-15 | 2d | 5d | 0d |  |
| 288 | RC slab | 9d | 2010-12-16 | 2010-12-26 | 287 | 2010-12-16 | 2010-12-26 | 9d | 5d | 0d |  |
| 289 | Roof parapet | 5d | 2010-12-27 | 2011-01-01 | 288 | 2010-12-27 | 2011-01-01 | 5d | 39d | 0d |  |
| 290 | Roof insulation | 7d | 2011-01-02 | 2011-01-09 | 289 | 2011-01-02 | 2011-01-09 | 7d | 39d | 0d |  |
| 291 | Roof tiles | 9d | 2011-01-10 | 2011-01-19 | 290 | 2011-01-10 | 2011-01-19 | 9d | 39d |  |  |
| 292 | Block walls | 7d | 2011-01-20 | 2011-01-27 | 288FS+21d | 2011-01-20 | 2011-01-27 | 7d | 5d | 0d |  |
| 293 | plastering | 10d | 2011-01-29 | 2011-02-08 | 292 | 2011-01-29 | 2011-02-08 | 10d | 5d | 0d |  |
| 294 | Flooring finish | 7d | 2011-02-09 | 2011-02-16 | 293 | 2011-02-09 | 2011-02-16 | 7d | 5d | 0d |  |
| 295 | Painting | 10d | 2011-02-17 | 2011-02-28 | 294 | 2011-02-17 | 2011-02-28 | 10d | 5d | 0d |  |
| 296 | Doors& windows | 4d | 2011-02-17 | 2011-02-21 | 295SS | 2011-02-17 | 2011-02-21 | 4d | 11d |  |  |
| 297 | Electrical | 12d | 2011-01-29 | 2011-02-10 | 292, 339 | 2011-01-29 | 2011-02-10 | 12d | 20d |  |  |
| 298 | Mechanical | 6d | 2011-02-09 | 2011-02-15 | 293 | 2011-02-09 | 2011-02-15 | 6d | 16d |  |  |
| 299 | Excavation | 4d | 2010-10-16 | 2010-10-19 |  | 2010-10-16 | 2010-10-19 | 4d | 8d | 0d | start no earlier than 2010-10-16 |
| 300 | Replacement | 6d | 2010-10-20 | 2010-10-26 | 299 | 2010-10-20 | 2010-10-26 | 6d | 8d | 0d |  |
| 301 | PC Foundation | 4d | 2010-10-27 | 2010-10-31 | 300 | 2010-10-27 | 2010-10-31 | 4d | 8d | 0d |  |
| 302 | RC foundation | 9d | 2010-11-01 | 2010-11-10 | 301 | 2010-11-01 | 2010-11-10 | 9d | 8d | 0d |  |
| 303 | Columnes | 6d | 2010-11-11 | 2010-11-24 | 302 | 2010-11-11 | 2010-11-24 | 6d | 8d | 0d |  |
| 304 | under graund masonry | 5d | 2010-11-25 | 2010-11-30 | 303 | 2010-11-25 | 2010-11-30 | 5d | 8d | 0d |  |
| 305 | Insulation | 3d | 2010-12-01 | 2010-12-04 | 304 | 2010-12-01 | 2010-12-04 | 3d | 8d | 0d |  |
| 306 | Foundation Backfilling | 5d | 2010-12-05 | 2010-12-09 | 305 | 2010-12-05 | 2010-12-09 | 5d | 8d | 0d |  |
| 307 | SOG PC | 2d | 2010-12-11 | 2010-12-12 | 306 | 2010-12-11 | 2010-12-12 | 2d | 8d | 0d |  |
| 308 | RC slab | 9d | 2010-12-13 | 2010-12-22 | 307 | 2010-12-13 | 2010-12-22 | 9d | 8d | 0d |  |
| 309 | Roof parapet | 5d | 2010-12-23 | 2010-12-28 | 308 | 2010-12-23 | 2010-12-28 | 5d | 42d | 0d |  |
| 310 | Roof insulation | 7d | 2010-12-29 | 2011-01-05 | 309 | 2010-12-29 | 2011-01-05 | 7d | 42d | 0d |  |
| 311 | Roof tiles | 9d | 2011-01-06 | 2011-01-16 | 310 | 2011-01-06 | 2011-01-16 | 9d | 42d |  |  |
| 312 | Block walls | 7d | 2011-01-17 | 2011-01-24 | 308FS+21d | 2011-01-17 | 2011-01-24 | 7d | 8d | 0d |  |
| 313 | plastering | 10d | 2011-01-25 | 2011-02-05 | 312 | 2011-01-25 | 2011-02-05 | 10d | 8d | 0d |  |
| 314 | Flooring finish | 7d | 2011-02-06 | 2011-02-13 | 313 | 2011-02-06 | 2011-02-13 | 7d | 8d | 0d |  |
| 315 | Painting | 10d | 2011-02-14 | 2011-02-24 | 314 | 2011-02-14 | 2011-02-24 | 10d | 8d | 0d |  |
| 316 | Doors& windows | 4d | 2011-02-14 | 2011-02-17 | 315SS | 2011-02-14 | 2011-02-17 | 4d | 14d |  |  |
| 317 | Electrical | 12d | 2011-01-25 | 2011-02-07 | 312, 339 | 2011-01-25 | 2011-02-07 | 12d | 23d |  |  |
| 318 | Mechanical | 6d | 2011-02-06 | 2011-02-12 | 313 | 2011-02-06 | 2011-02-12 | 6d | 19d |  |  |
| 319 | Approval the work shop drawing | 7d | 2010-08-21 | 2010-08-28 | 13 | 2010-08-12 | 2010-08-19 | 7d | 86d | 0d | start no earlier than 2010-08-19 |
| 320 | Reinforcment WSD & BBL Approval | 7d | 2010-09-08 | 2010-09-21 | 8SS+7d | 2010-08-29 | 2010-09-05 | 7d | 136d |  |  |
| 321 | Reinforcment WSD & BBL Approval | 7d | 2010-09-01 | 2010-09-08 | 2SS | 2010-08-18 | 2010-08-25 | 7d | 48d | 6.64d | start no earlier than 2010-09-01 |
| 322 | Reinforcment WSD & BBL Approval | 7d | 2010-09-01 | 2010-09-08 | 319FS+3d | 2010-08-24 | 2010-08-31 | 7d | 86d | 8d |  |
| 323 | Reinforcment WSD & BBL Approval | 7d | 2010-09-05 | 2010-09-18 | 12 | 2010-08-11 | 2010-08-18 | 7d | 52d | 0d | start no earlier than 2010-08-19 |
| 324 | Reinforcment WSD & BBL Approval | 7d | 2010-09-29 | 2010-10-06 | 10FS+14d | 2010-08-28 | 2010-09-04 | 7d | 65d | 0d |  |
| 325 | Reinforcment WSD & BBL Approval | 7d | 2010-10-06 | 2010-10-13 | 143FS+15d | 2010-09-27 | 2010-10-04 | 7d | 77d | 7d |  |
| 326 | Reinforcment WSD & BBL Approval | 7d | 2010-09-26 | 2010-10-03 | 6FS+8d | 2010-09-26 | 2010-10-03 | 7d | 18d | 0d |  |
| 327 | Reinforcment WSD & BBL Approval | 7d | 2010-09-22 | 2010-09-29 | 4FS+10d | 2010-09-04 | 2010-09-16 | 7d | 6d |  |  |
| 328 | Reinforcment WSD & BBL Approval | 7d | 2010-09-22 | 2010-09-29 | 139FS+10d | 2010-09-16 | 2010-09-23 | 7d | 12d |  |  |
| 329 | Reinforcment WSD & BBL Approval | 7d | 2010-10-11 | 2010-10-18 | 141 | 2010-10-12 | 2010-10-19 | 7d | 20d | 6d |  |
| 330 | Layout & fances | 7d | 2010-10-17 | 2010-10-25 | 331SF-7d | 2010-10-17 | 2010-10-25 | 7d | 108d |  |  |
| 331 | Layout & fances | 90d | 2010-11-02 | 2011-02-21 |  | 2010-11-02 | 2011-02-21 | 90d | 11d | 0d | finish no earlier than 2011-02-21 |
| 332 | Procurment | 14d | 2010-11-02 | 2010-11-24 | 155 | 2010-11-03 | 2010-11-25 | 14d | 67d | 1d |  |
| 333 | Procurment | 14d | 2010-11-25 | 2010-12-11 | 159 | 2010-11-27 | 2010-12-12 | 14d | 55d | 12.64d | start no earlier than 2010-11-02 |
| 334 | Procurment | 14d | 2010-09-28 | 2010-10-13 | 163 | 2010-09-29 | 2010-10-14 | 14d | 102d | 9d |  |
| 335 | Procurment | 14d | 2010-10-27 | 2010-11-11 | 167 | 2010-10-28 | 2010-11-13 | 14d | 78d | 15d |  |
| 336 | Procurment | 14d | 2010-12-27 | 2011-01-11 | 171 | 2010-12-28 | 2011-01-12 | 14d | 25d | 0d | start no earlier than 2010-11-02 |
| 337 | Procurment | 14d | 2011-01-04 | 2011-01-19 | 175 | 2011-01-05 | 2011-01-20 | 14d | 14d | 11d |  |
| 338 | Procurment | 14d | 2011-01-15 | 2011-01-30 | 179 | 2011-01-16 | 2011-01-31 | 14d | 9d | 6d |  |
| 339 | Procurment | 14d | 2011-01-02 | 2011-01-17 | 183 | 2011-01-03 | 2011-01-18 | 14d | 29d | 0d |  |
| 340 | Excavation | 30d | 2010-10-16 | 2010-11-25 | 102FS+47d | 2010-10-17 | 2010-11-27 | 30d | 56d | 0d |  |
| 341 | Polythylene Water Proofing Membrane | 30d | 2010-11-27 | 2010-12-30 | 340 | 2010-11-28 | 2011-01-01 | 30d | 56d |  |  |
