# CONTRACT NO. JSTPP-M-CON-002 ERECTION OF SITE FABRICATED TANKS (PACKAGE 02)-Scenrio #2

Schedule from Primavera P6, 2014-01-30 to 2015-02-07, data date 2014-01-30.

## Calendars

- JFJS752-HHI Tanks (10 hrs/d without fridays): Mon-Thu 07:00-17:00; Fri off; Sat-Sun 07:00-17:00. Exceptions (off unless hours are given): 2014-06-28 to 2014-07-03 09:00-15:00, 2014-07-05 to 2014-07-10 09:00-15:00, 2014-07-12 to 2014-07-17 09:00-15:00, 2014-07-19 to 2014-07-24 09:00-15:00, 2014-07-26 to 2014-07-27 09:00-15:00, 2014-07-28 to 2014-07-29, 2014-08-01 09:30-14:30, 2014-08-08 09:30-14:30, 2014-08-15 09:30-14:30, 2014-08-22 09:30-14:30, 2014-08-29 09:30-14:30, 2014-09-05 09:30-14:30, 2014-09-12 09:30-14:30, 2014-09-23, 2014-10-04 to 2014-10-05.

## Schedule

| ID | WBS | Activity | Type | Duration | Start | Finish | Predecessors | Total float | Free float | Constraint |
| --- | --- | --- | --- | --- | --- | --- | --- | --- | --- | --- |
|  | 1 | **AREA B (6 TANKS SITE ERECTION WORKS)** |  |  | 2014-01-30 | 2015-02-07 |  |  |  |  |
|  | GHE | **Service & Fire Water Tank TANK#1(10GHE11BB001)& TANK#2(10GHE12BB001) (32.195 MTR D x 19.49 Mtr H)** |  |  | 2014-02-18 | 2014-12-08 |  |  |  |  |
|  | 1 | **Tank Foundation Handover To AZ** |  |  | 2014-02-18 | 2014-02-18 |  |  |  |  |
| HHI.1000 |  | HHI Hand over Tank#1(10GHE11BB001) Foundation to AZ | milestone | 0d | 2014-02-18 | 2014-02-18 |  | 0d |  | start on 2014-02-18 |
| HHI.1001 |  | AZ Check Tank#1 Foundation Levelness prior to Mechanical Works |  | 1d | 2014-02-18 | 2014-02-18 | HHI.1000 SS | 0d |  |  |
| HHI.1002 |  | HHI Hand over Tank#2(10GHE12BB001) Foundation to AZ | milestone | 0d | 2014-02-18 | 2014-02-18 | HHI.1000 SS | 6d | 0d |  |
| HHI.1003 |  | AZ Check Tank#2 Foundation Levelness prior to Mechanical Works |  | 1d | 2014-02-18 | 2014-02-18 | HHI.1002 SS | 6d |  |  |
|  | 2 | **MECHANICAL WORK** |  |  | 2014-02-18 | 2014-08-29 |  |  |  |  |
|  | 16 | **Tank#1** |  |  | 2014-02-18 | 2014-03-05 |  |  |  |  |
|  | 1 | **ANNULAR PLATE WORKS** |  |  | 2014-02-18 | 2014-02-19 |  |  |  |  |
| HHI.1004 |  | Install Sealent,Erect & Tack of Annular Plates |  | 1d | 2014-02-18 | 2014-02-18 | HHI.1001 SS | 0d |  |  |
| HHI.1006 |  | Quailty Check (Visual Inspection,PT & Vaccum Box Test) |  | 2d | 2014-02-18 | 2014-02-19 | HHI.1005 FF, HHI.1004 SS | 0d |  |  |
| HHI.1005 |  | Welding of Annular Plates |  | 1d | 2014-02-19 | 2014-02-19 | HHI.1004 | 0d |  |  |
|  | 11 | **BOTTOM PLATE WORKS** |  |  | 2014-02-20 | 2014-03-05 |  |  |  |  |
| HHI.1007 |  | Prepare & Lay Down Bottom Plates |  | 2d | 2014-02-20 | 2014-02-22 | HHI.1006 | 0d |  |  |
| HHI.1009 |  | Quailty Check (Visual Inspection& Vaccum Box Test) |  | 12d | 2014-02-20 | 2014-03-05 | HHI.1007 SS, HHI.1014 FF | 0d |  |  |
| HHI.1008 |  | Fit/Tack Bottom Plates-Short Seams |  | 2d | 2014-02-24 | 2014-02-25 | HHI.1007 FS+1d | 0d |  |  |
| HHI.1010 |  | Weld Short Seams |  | 2d | 2014-02-25 | 2014-02-26 | HHI.1008 SS+1d | 0d |  |  |
| HHI.1011 |  | Fit/Tack Bottom Plates-Long Seams |  | 2d | 2014-02-27 | 2014-03-01 | HHI.1010 | 0d |  |  |
| HHI.1012 |  | Erect,Fitup of Sump |  | 1d | 2014-03-01 | 2014-03-01 | HHI.1011 SS+1d | 3d |  |  |
| HHI.1013 |  | Weld Long Seams |  | 5d | 2014-03-01 | 2014-03-05 | HHI.1011 SS+1d | 0d |  |  |
| HHI.1014 |  | Weld Sump |  | 1d | 2014-03-05 | 2014-03-05 | HHI.1012, HHI.1013 SS+4d | 0d |  |  |
|  | 26 | **Tank#2** |  |  | 2014-02-25 | 2014-03-12 |  |  |  |  |
|  | 1 | **ANNULAR PLATE WORKS** |  |  | 2014-02-25 | 2014-02-26 |  |  |  |  |
| HHI.1015 |  | Install Sealent,Erect & Tack of Annular Plates |  | 1d | 2014-02-25 | 2014-02-25 | HHI.1003 SS, HHI.1009 SS+4d | 0d |  |  |
| HHI.1016 |  | Quailty Check (Visual Inspection,PT & Vaccum Box Test) |  | 2d | 2014-02-25 | 2014-02-26 | HHI.1015 SS, HHI.1017 FF | 0d |  |  |
| HHI.1017 |  | Welding of Annular Plates |  | 1d | 2014-02-26 | 2014-02-26 | HHI.1015 | 0d |  |  |

Notes:
- GHE: RECIEVED TANK COORIDNATES 7TH OF OCTOBER / 2012 FROM RADICON / WAITING FOR JUSTIFICATION LETTER FROM RADICON TO PRESENT TO MA'ADEN FOR / PROJECT TIME EXTENSION / DESIGN,ENGINEERING,SUPPLY OF / MATERIALS,MANUFACTURING,PREFABRICATION,ASSUMBLY,PAINTING&COATING,ERECTION,SHOP / TESTING,INSPECTION,PACKING AND DELIEVERY TO SITE,OPERATING & MAINTENANCE / MANUALS AND SPARE PARTS PACKADGE

| ID | WBS | Activity | Duration | Start | Finish | Predecessors | Total float |
| --- | --- | --- | --- | --- | --- | --- | --- |
|  | 2 | **RT FOR ANNULAR PLATES WELD JOINTS** |  | 2014-02-27 | 2014-02-27 |  |  |
| HHI.1019 |  | Perform RT for Tank#1 & #2 | 1d | 2014-02-27 | 2014-02-27 | HHI.1016 | 0d |
|  | 13 | **BOTTOM PLATE WORKS** |  | 2014-02-27 | 2014-03-12 |  |  |
| HHI.1018 |  | Prepare & Lay Down Bottom Plates | 2d | 2014-02-27 | 2014-03-01 | HHI.1019 SS | 0d |
| HHI.1021 |  | Quailty Check (Visual Inspection& Vaccum Box Test) | 12d | 2014-02-27 | 2014-03-12 | HHI.1018 SS, HHI.1026 FF | 0d |
| HHI.1020 |  | Fit/Tack Bottom Plates-Short Seams | 2d | 2014-03-03 | 2014-03-04 | HHI.1018 FS+1d | 0d |
| HHI.1022 |  | Weld Short Seams | 2d | 2014-03-04 | 2014-03-05 | HHI.1020 SS+1d | 0d |
| HHI.1023 |  | Fit/Tack Bottom Plates-Long Seams | 2d | 2014-03-06 | 2014-03-08 | HHI.1022 | 0d |
| HHI.1024 |  | Erect,Fitup of Sump | 1d | 2014-03-08 | 2014-03-08 | HHI.1023 SS+1d | 3d |
| HHI.1025 |  | Weld Long Seams | 5d | 2014-03-08 | 2014-03-12 | HHI.1023 SS+1d | 0d |
| HHI.1026 |  | Weld Sump | 1d | 2014-03-12 | 2014-03-12 | HHI.1024, HHI.1025 SS+4d | 0d |
|  | 3 | **SHELL COURSE #1/MANHOLE (M1) & NOZZLES(N10,N11,N5,N3,LT1,LT2,N7) WORKS** |  | 2014-03-13 | 2014-03-22 |  |  |
|  | 1 | **TANK #1** |  | 2014-03-13 | 2014-03-18 |  |  |
| HHI.1027 |  | Erect & Tack Shell Course # 1 & Install Stagging Brackets | 2d | 2014-03-13 | 2014-03-15 | HHI.1021 | 0d |
| HHI.1028 |  | Quailty Check(Visual Inspection & PT,Air Leak Test for Shell Manholes& Nozzles) | 5d | 2014-03-13 | 2014-03-18 | HHI.1033 FF, HHI.1027 SS | 0d |
| HHI.1029 |  | Fit up/Tack Shell #1 to Annular Plate | 1d | 2014-03-15 | 2014-03-15 | HHI.1027 SS+1d | 0d |
| HHI.1030 |  | Weld Outer Vertical Seam/Install the Stairways support on Shell | 1d | 2014-03-15 | 2014-03-15 | HHI.1029 SS | 0d |
| HHI.1031 |  | Backgouge,Grinding & NDT Inside Vertical Seam | 1d | 2014-03-16 | 2014-03-16 | HHI.1030 | 0d |
| HHI.1032 |  | Weld Inside Vertical Seam | 1d | 2014-03-17 | 2014-03-17 | HHI.1031 | 0d |
| HHI.1033 |  | Fit,Weld for Manhole ,Nozzles on Shell | 2d | 2014-03-17 | 2014-03-18 | HHI.1032 SS | 0d |
|  | 2 | **TANK #2** |  | 2014-03-16 | 2014-03-20 |  |  |
| HHI.1034 |  | Erect & Tack Shell Course # 1 &Install Stagging Brackets | 2d | 2014-03-16 | 2014-03-17 | HHI.1028 SS+2d | 0d |
| HHI.1035 |  | Quailty Check(Visual Inspection PT,Air Leak Test for Shell Manholes& Nozzles) | 5d | 2014-03-16 | 2014-03-20 | HHI.1040 FF, HHI.1034 SS | 0d |
| HHI.1036 |  | Fit up/Tack Shell #1 to Annular Plate | 1d | 2014-03-17 | 2014-03-17 | HHI.1034 SS+1d | 0d |
| HHI.1037 |  | Weld Outer Vertical Seam/Install the Stairways support on Shell | 1d | 2014-03-17 | 2014-03-17 | HHI.1036 SS | 0d |
| HHI.1038 |  | Backgouge,Grinding & NDT Inside Vertical Seam | 1d | 2014-03-18 | 2014-03-18 | HHI.1037 | 0d |
| HHI.1039 |  | Weld Inside Vertical Seam | 1d | 2014-03-19 | 2014-03-19 | HHI.1038 | 0d |
| HHI.1040 |  | Fit,Weld for Manhole ,Nozzles on Shell | 2d | 2014-03-19 | 2014-03-20 | HHI.1039 SS | 0d |

| ID | WBS | Activity | Duration | Start | Finish | Predecessors | Total float |
| --- | --- | --- | --- | --- | --- | --- | --- |
|  | 3 | **RT FOR SHELL COURSE #1 JOINTS** |  | 2014-03-22 | 2014-03-22 |  |  |
| HHI.1041 |  | Perform RT for Tank#1 & #2 | 1d | 2014-03-22 | 2014-03-22 | HHI.1035 | 0d |
|  | 4 | **SHELL COURSE#2 WORKS** |  | 2014-03-22 | 2014-04-09 |  |  |
|  | 1 | **TANK #1** |  | 2014-03-22 | 2014-04-06 |  |  |
| HHI.1042 |  | Erect & Tack Shell Course # 2 & Install Stagging Brackets | 1d | 2014-03-22 | 2014-03-22 | HHI.1041 SS | 0d |
| HHI.1052 |  | Quailty Check(Visual Inspection) | 14d | 2014-03-22 | 2014-04-06 | HHI.1042 SS, HHI.1051 FF | 0d |
| HHI.1043 |  | Weld Outer Vertical Seam/Install the Stairways support on Shell | 1d | 2014-03-23 | 2014-03-23 | HHI.1042 | 0d |
| HHI.1044 |  | Backgouge,Grinding & NDT Inside Vertical Seam | 1d | 2014-03-24 | 2014-03-24 | HHI.1043 | 0d |
| HHI.1045 |  | Weld Inside Vertical Seam | 1d | 2014-03-25 | 2014-03-25 | HHI.1044 | 0d |
| HHI.1046 |  | Weld Outer Horizontal Seam between / Shell Course # 1 & 2 | 3d | 2014-03-26 | 2014-03-29 | HHI.1045 | 0d |
| HHI.1047 |  | "Backgouge & NDT Inside Horizontal / Seam between Shell Course# 1 & 2" | 1d | 2014-03-30 | 2014-03-30 | HHI.1046 | 0d |
| HHI.1048 |  | Weld Inner Horizontal Seam between / Shell Course # 1 & 2" | 1d | 2014-03-31 | 2014-03-31 | HHI.1047 | 0d |
| HHI.1049 |  | Weld Shell Course# 1 to Annular Plate (from inside) | 1d | 2014-04-01 | 2014-04-01 | HHI.1048 | 0d |
| HHI.1050 |  | Perform PT from inside,Complete the welding from outside & Perform Vaccum Box Testing | 2d | 2014-04-02 | 2014-04-03 | HHI.1049 | 0d |
| HHI.1051 |  | Weld Bottom Sketch Plates to Annular Plate | 2d | 2014-04-05 | 2014-04-06 | HHI.1050 | 0d |
|  | 2 | **TANK #2** |  | 2014-03-24 | 2014-04-08 |  |  |
| HHI.1053 |  | Erect & Tack Shell Course # 2& Install Stagging Brackets | 1d | 2014-03-24 | 2014-03-24 | HHI.1052 SS+2d | 0d |
| HHI.1063 |  | Quailty Check(Visual Inspection) | 14d | 2014-03-24 | 2014-04-08 | HHI.1053 SS, HHI.1062 FF | 0d |
| HHI.1054 |  | Weld Outer Vertical Seam/Install the Stairways support on Shell | 1d | 2014-03-25 | 2014-03-25 | HHI.1053 | 0d |
| HHI.1055 |  | Backgouge,Grinding & NDT Inside Vertical Seam | 1d | 2014-03-26 | 2014-03-26 | HHI.1054 | 0d |
| HHI.1056 |  | Weld Inside Vertical Seam | 1d | 2014-03-27 | 2014-03-27 | HHI.1055 | 0d |
| HHI.1057 |  | Weld Outer Horizontal Seam between / Shell Course # 1 & 2 | 3d | 2014-03-29 | 2014-03-31 | HHI.1056 | 0d |
| HHI.1058 |  | Backgouge & NDT Inside Horizontal / Seam between Shell Course# 1 & 2 | 1d | 2014-04-01 | 2014-04-01 | HHI.1057 | 0d |
| HHI.1059 |  | Weld Inner Horizontal Seam between / Shell Course # 1 & 2" | 1d | 2014-04-02 | 2014-04-02 | HHI.1058 | 0d |
| HHI.1060 |  | Weld Shell Course# 1 to Annular Plate (from inside) | 1d | 2014-04-03 | 2014-04-03 | HHI.1059 | 0d |
| HHI.1061 |  | Perform PT from inside,Complete the welding from outside & Perform Vaccum Box Testing | 2d | 2014-04-05 | 2014-04-06 | HHI.1060 | 0d |
| HHI.1062 |  | Weld Bottom Sketch Plates to Annular Plate | 2d | 2014-04-07 | 2014-04-08 | HHI.1061 | 0d |

| ID | WBS | Activity | Duration | Start | Finish | Predecessors | Total float |
| --- | --- | --- | --- | --- | --- | --- | --- |
|  | 3 | **RT FOR SHELL COURSE #2 JOINTS** |  | 2014-04-09 | 2014-04-09 |  |  |
| HHI.1064 |  | Perform RT for Tank#1 & #2 | 1d | 2014-04-09 | 2014-04-09 | HHI.1063 | 0d |
|  | 5 | **SHELL COURSE#3 WORKS** |  | 2014-04-09 | 2014-04-21 |  |  |
|  | 1 | **TANK #1** |  | 2014-04-09 | 2014-04-17 |  |  |
| HHI.1065 |  | Erect & Tack Shell Course # 3 & Install Stagging Brackets | 1d | 2014-04-09 | 2014-04-09 | HHI.1064 SS | 0d |
| HHI.1072 |  | Quailty Check(Visual Inspection) | 8d | 2014-04-09 | 2014-04-17 | HHI.1065 SS, HHI.1071 FF | 0d |
| HHI.1066 |  | Weld Outer Vertical Seam/Install the Stairways support on Shell | 1d | 2014-04-10 | 2014-04-10 | HHI.1065 | 0d |
| HHI.1067 |  | Backgouge & NDT Inside Vertical Seam | 1d | 2014-04-12 | 2014-04-12 | HHI.1066 | 0d |
| HHI.1068 |  | Weld Inside Vertical Seam | 1d | 2014-04-13 | 2014-04-13 | HHI.1067 | 0d |
| HHI.1069 |  | Weld Outer Horizontal Seam between / Shell Course # 2 & 3" | 2d | 2014-04-14 | 2014-04-15 | HHI.1068 | 0d |
| HHI.1070 |  | Backgouge & NDT Inside Horizontal / Seam between Shell Course# 2 & 3" | 1d | 2014-04-16 | 2014-04-16 | HHI.1069 | 0d |
| HHI.1071 |  | Weld Inner Horizontal Seam between / Shell Course # 2 & 3" | 1d | 2014-04-17 | 2014-04-17 | HHI.1070 | 0d |
|  | 2 | **TANK #2** |  | 2014-04-12 | 2014-04-20 |  |  |
| HHI.1073 |  | Erect & Tack Shell Course # 3 & Install Stagging Brackets | 1d | 2014-04-12 | 2014-04-12 | HHI.1072 SS+2d | 0d |
| HHI.1080 |  | Quailty Check(Visual Inspection) | 8d | 2014-04-12 | 2014-04-20 | HHI.1079 FF, HHI.1073 SS | 0d |
| HHI.1074 |  | Weld Outer Vertical Seam/Install the Stairways support on Shell | 1d | 2014-04-13 | 2014-04-13 | HHI.1073 | 0d |
| HHI.1075 |  | Backgouge & NDT Inside Vertical Seam | 1d | 2014-04-14 | 2014-04-14 | HHI.1074 | 0d |
| HHI.1076 |  | Weld Inside Vertical Seam | 1d | 2014-04-15 | 2014-04-15 | HHI.1075 | 0d |
| HHI.1077 |  | Weld Outer Horizontal Seam between / Shell Course # 2 & 3" | 2d | 2014-04-16 | 2014-04-17 | HHI.1076 | 0d |
| HHI.1078 |  | Backgouge & NDT Inside Horizontal / Seam between Shell Course# 2 & 3" | 1d | 2014-04-19 | 2014-04-19 | HHI.1077 | 0d |
| HHI.1079 |  | Weld Inner Horizontal Seam between / Shell Course # 2 & 3" | 1d | 2014-04-20 | 2014-04-20 | HHI.1078 | 0d |
|  | 3 | **RT FOR SHELL COURSE #3 JOINTS** |  | 2014-04-21 | 2014-04-21 |  |  |
| HHI.1081 |  | Perform RT for Tank#1 & #2 | 1d | 2014-04-21 | 2014-04-21 | HHI.1080 | 0d |
|  | 6 | **SHELL COURSE#4/NOZZLE (N8) WORKS** |  | 2014-04-21 | 2014-05-03 |  |  |
|  | 1 | **TANK #1** |  | 2014-04-21 | 2014-04-29 |  |  |
| HHI.1082 |  | Erect & Tack Shell Course # 4 & Install Stagging Brackets | 1d | 2014-04-21 | 2014-04-21 | HHI.1081 SS | 0d |
| HHI.1089 |  | Quailty Check(Visual Inspection,PT,Air Leak Test for Shell Nozzle) | 8d | 2014-04-21 | 2014-04-29 | HHI.1088 FF, HHI.1082 SS | 0d |
| HHI.1083 |  | Weld Outer Vertical Seam/Install the Stairways support on Shell | 1d | 2014-04-22 | 2014-04-22 | HHI.1082 | 0d |
| HHI.1084 |  | Backgouge & NDT Inside Vertical Seam | 1d | 2014-04-23 | 2014-04-23 | HHI.1083 | 0d |
| HHI.1085 |  | Weld Inside Vertical Seam | 1d | 2014-04-24 | 2014-04-24 | HHI.1084 | 0d |
| HHI.1086 |  | Weld Outer Horizontal Seam between / Shell Course # 3 & 4" | 2d | 2014-04-26 | 2014-04-27 | HHI.1085 | 0d |
| HHI.1087 |  | Backgouge & NDT Inside Horizontal / Seam between Shell Course# 3 & 4" | 1d | 2014-04-28 | 2014-04-28 | HHI.1086 | 0d |
| HHI.1088 |  | Weld Inner Horizontal Seam between / Shell Course # 3 & 4"/Fit,Weld Nozzle on Shell | 1d | 2014-04-29 | 2014-04-29 | HHI.1087 | 0d |

| ID | WBS | Activity | Duration | Start | Finish | Predecessors | Total float |
| --- | --- | --- | --- | --- | --- | --- | --- |
|  | 2 | **TANK #2** |  | 2014-04-23 | 2014-05-01 |  |  |
| HHI.1090 |  | Erect & Tack Shell Course # 4 & Install Stagging Brackets | 1d | 2014-04-23 | 2014-04-23 | HHI.1089 SS+2d | 0d |
| HHI.1097 |  | Quailty Check(Visual Inspection,PT,Air Leak Test for Shell Nozzle)) | 8d | 2014-04-23 | 2014-05-01 | HHI.1096 FF, HHI.1090 SS | 0d |
| HHI.1091 |  | Weld Outer Vertical Seam/Install the Stairways support on Shell | 1d | 2014-04-24 | 2014-04-24 | HHI.1090 | 0d |
| HHI.1092 |  | Backgouge & NDT Inside Vertical Seam | 1d | 2014-04-26 | 2014-04-26 | HHI.1091 | 0d |
| HHI.1093 |  | Weld Inside Vertical Seam | 1d | 2014-04-27 | 2014-04-27 | HHI.1092 | 0d |
| HHI.1094 |  | Weld Outer Horizontal Seam between / Shell Course # 3 & 4" | 2d | 2014-04-28 | 2014-04-29 | HHI.1093 | 0d |
| HHI.1095 |  | Backgouge & NDT Inside Horizontal / Seam between Shell Course# 3 & 4" | 1d | 2014-04-30 | 2014-04-30 | HHI.1094 | 0d |
| HHI.1096 |  | Weld Inner Horizontal Seam between / Shell Course # 3 & 4"/Fit,Weld Nozzle on Shell | 1d | 2014-05-01 | 2014-05-01 | HHI.1095 | 0d |
|  | 3 | **RT FOR SHELL COURSE #4 JOINTS** |  | 2014-05-03 | 2014-05-03 |  |  |
| HHI.1098 |  | Perform RT for Tank#1 & #2 | 1d | 2014-05-03 | 2014-05-03 | HHI.1097 | 0d |
|  | 7 | **SHELL COURSE#5 WORKS** |  | 2014-05-03 | 2014-05-13 |  |  |
|  | 1 | **TANK #1** |  | 2014-05-03 | 2014-05-10 |  |  |
| HHI.1099 |  | Erect & Tack Shell Course # 5 & Install Stagging Brackets | 1d | 2014-05-03 | 2014-05-03 | HHI.1098 SS | 0d |
| HHI.1106 |  | Quailty Check(Visual Inspection) | 7d | 2014-05-03 | 2014-05-10 | HHI.1105 FF, HHI.1099 SS | 0d |
| HHI.1100 |  | Weld Outer Vertical Seam/Install the Stairways support on Shell | 1d | 2014-05-04 | 2014-05-04 | HHI.1099 | 0d |
| HHI.1101 |  | Backgouge & NDT Inside Vertical Seam | 1d | 2014-05-05 | 2014-05-05 | HHI.1100 | 0d |
| HHI.1102 |  | Weld Inside Vertical Seam | 1d | 2014-05-06 | 2014-05-06 | HHI.1101 | 0d |
| HHI.1103 |  | "Weld Outer Horizontal Seam between / Shell Course # 4 & 5" | 1d | 2014-05-07 | 2014-05-07 | HHI.1102 | 0d |
| HHI.1104 |  | "Backgouge & NDT Inside Horizontal / Seam between Shell Course# 4 & 5" | 1d | 2014-05-08 | 2014-05-08 | HHI.1103 | 0d |
| HHI.1105 |  | Weld Inner Horizontal Seam between / Shell Course # 4 & 5" | 1d | 2014-05-10 | 2014-05-10 | HHI.1104 | 0d |
|  | 2 | **TANK #2** |  | 2014-05-05 | 2014-05-12 |  |  |
| HHI.1107 |  | Erect & Tack Shell Course # 5 & Install Stagging Brackets | 1d | 2014-05-05 | 2014-05-05 | HHI.1106 SS+2d | 0d |
| HHI.1114 |  | Quailty Check(Visual Inspection) | 7d | 2014-05-05 | 2014-05-12 | HHI.1107 SS, HHI.1113 FF | 0d |
| HHI.1108 |  | Weld Outer Vertical Seam/Install the Stairways support on Shell | 1d | 2014-05-06 | 2014-05-06 | HHI.1107 | 0d |
| HHI.1109 |  | Backgouge & NDT Inside Vertical Seam | 1d | 2014-05-07 | 2014-05-07 | HHI.1108 | 0d |
| HHI.1110 |  | Weld Inside Vertical Seam | 1d | 2014-05-08 | 2014-05-08 | HHI.1109 | 0d |
| HHI.1111 |  | "Weld Outer Horizontal Seam between / Shell Course # 4 & 5" | 1d | 2014-05-10 | 2014-05-10 | HHI.1110 | 0d |
| HHI.1112 |  | "Backgouge & NDT Inside Horizontal / Seam between Shell Course# 4 & 5" | 1d | 2014-05-11 | 2014-05-11 | HHI.1111 | 0d |
| HHI.1113 |  | Weld Inner Horizontal Seam between / Shell Course #4 & 5" | 1d | 2014-05-12 | 2014-05-12 | HHI.1112 | 0d |

| ID | WBS | Activity | Duration | Start | Finish | Predecessors | Total float |
| --- | --- | --- | --- | --- | --- | --- | --- |
|  | 3 | **RT FOR SHELL COURSE #5 JOINTS** |  | 2014-05-13 | 2014-05-13 |  |  |
| HHI.1115 |  | Perform RT for Tank#1 & #2 | 1d | 2014-05-13 | 2014-05-13 | HHI.1114 | 0d |
|  | 8 | **ROOF COLUMNS WORKS** |  | 2014-05-11 | 2014-05-14 |  |  |
|  | 1 | **TANK #1** |  | 2014-05-11 | 2014-05-12 |  |  |
| HHI.1116 |  | Erect & Tack Columns | 2d | 2014-05-11 | 2014-05-12 | HHI.1106 | 0d |
|  | 2 | **TANK #2** |  | 2014-05-13 | 2014-05-14 |  |  |
| HHI.1117 |  | Erect & Tack Columns | 2d | 2014-05-13 | 2014-05-14 | HHI.1114 | 1d |
|  | 9 | **SHELL COURSE#6/NOZZLE (N4) WORKS** |  | 2014-05-13 | 2014-05-25 |  |  |
|  | 1 | **TANK #1** |  | 2014-05-13 | 2014-05-20 |  |  |
| HHI.1118 |  | Erect & Tack Shell Course # 6 & Instal Stagging Brackets | 1d | 2014-05-13 | 2014-05-13 | HHI.1115 SS, HHI.1116 | 0d |
| HHI.1119 |  | Weld Outer Vertical Seam/Install the Stairways support on Shell | 1d | 2014-05-14 | 2014-05-14 | HHI.1118 | 0d |
| HHI.1125 |  | Quailty Check(Visual Inspection,PT,Air Leak Test for Shell Nozzle)) | 6d | 2014-05-14 | 2014-05-20 | HHI.1124 FF, HHI.1118 SS | 0d |
| HHI.1120 |  | Backgouge & NDT Inside Vertical Seam | 1d | 2014-05-15 | 2014-05-15 | HHI.1119 | 0d |
| HHI.1121 |  | Weld Inside Vertical Seam | 1d | 2014-05-17 | 2014-05-17 | HHI.1120 | 0d |
| HHI.1122 |  | "Weld Outer Horizontal Seam between / Shell Course # 5 & 6" | 1d | 2014-05-18 | 2014-05-18 | HHI.1121 | 0d |
| HHI.1123 |  | "Backgouge & NDT Inside Horizontal / Seam between Shell Course# 5 & 6" | 1d | 2014-05-19 | 2014-05-19 | HHI.1122 | 0d |
| HHI.1124 |  | Weld Inner Horizontal Seam between / Shell Course # 5 & 6"/Fit,Weld Nozzle on Shell | 1d | 2014-05-20 | 2014-05-20 | HHI.1123 | 0d |
|  | 2 | **TANK #2** |  | 2014-05-17 | 2014-05-24 |  |  |
| HHI.1126 |  | Erect & Tack Shell Course # 6 & Install Stagging Brackets | 1d | 2014-05-17 | 2014-05-17 | HHI.1125 SS+2d, HHI.1117 | 0d |
| HHI.1127 |  | Weld Outer Vertical Seam/Install the Stairways support on Shell | 1d | 2014-05-18 | 2014-05-18 | HHI.1126 | 0d |
| HHI.1133 |  | Quailty Check(Visual Inspection,PT,Air Leak Test for Shell Nozzle)) | 6d | 2014-05-18 | 2014-05-24 | HHI.1132 FF, HHI.1126 SS | 0d |
| HHI.1128 |  | Backgouge & NDT Inside Vertical Seam | 1d | 2014-05-19 | 2014-05-19 | HHI.1127 | 0d |
| HHI.1129 |  | Weld Inside Vertical Seam | 1d | 2014-05-20 | 2014-05-20 | HHI.1128 | 0d |
| HHI.1130 |  | "Weld Outer Horizontal Seam between / Shell Course # 5 & 6" | 1d | 2014-05-21 | 2014-05-21 | HHI.1129 | 0d |
| HHI.1131 |  | "Backgouge & NDT Inside Horizontal / Seam between Shell Course# 5 & 6" | 1d | 2014-05-22 | 2014-05-22 | HHI.1130 | 0d |
| HHI.1132 |  | Weld Inner Horizontal Seam between / Shell Course # 5 & 6"/Fit,Weld Nozzle on Shell | 1d | 2014-05-24 | 2014-05-24 | HHI.1131 | 0d |

| ID | WBS | Activity | Duration | Start | Finish | Predecessors | Total float |
| --- | --- | --- | --- | --- | --- | --- | --- |
|  | 3 | **RT FOR SHELL COURSE #6 JOINTS** |  | 2014-05-25 | 2014-05-25 |  |  |
| HHI.1134 |  | Perform RT for Tank#1 & #2 | 1d | 2014-05-25 | 2014-05-25 | HHI.1133 | 0d |
|  | 10 | **SHELL COURSE#7/WIND GIRDER/ NOZZLE (N9) WORKS** |  | 2014-05-25 | 2014-06-15 |  |  |
|  | 1 | **TANK #1-SHELL COURSE#6** |  | 2014-05-25 | 2014-06-01 |  |  |
| HHI.1135 |  | Erect & Tack Shell Course # 6 & Internal Stagging Brackets | 1d | 2014-05-25 | 2014-05-25 | HHI.1134 SS | 0d |
| HHI.1136 |  | Weld Outer Vertical Seam /Install the Stairways support on Shell | 1d | 2014-05-26 | 2014-05-26 | HHI.1135 | 0d |
| HHI.1142 |  | Quailty Check(Visual Inspection,PT,Air Leak Test for Shell Nozzle)) | 6d | 2014-05-26 | 2014-06-01 | HHI.1135 SS, HHI.1141 FF | 0d |
| HHI.1137 |  | Backgouge & NDT Inside Vertical Seam | 1d | 2014-05-27 | 2014-05-27 | HHI.1136 | 0d |
| HHI.1138 |  | Weld Inside Vertical Seam | 1d | 2014-05-28 | 2014-05-28 | HHI.1137 | 0d |
| HHI.1139 |  | "Weld Outer Horizontal Seam between / Shell Course # 5 & 6" | 1d | 2014-05-29 | 2014-05-29 | HHI.1138 | 0d |
| HHI.1140 |  | "Backgouge & NDT Inside Horizontal / Seam between Shell Course# 5 & 6" | 1d | 2014-05-31 | 2014-05-31 | HHI.1139 | 0d |
| HHI.1141 |  | Weld Inner Horizontal Seam between / Shell Course # 5 & 6"/Fit,Weld Nozzle on Shell | 1d | 2014-06-01 | 2014-06-01 | HHI.1140 | 0d |
|  | 12 | **TANK #1-WIND GIRDER** |  | 2014-06-02 | 2014-06-03 |  |  |
| HHI.1143 |  | Erect & Tack Wind Girder | 1d | 2014-06-02 | 2014-06-02 | HHI.1142 | 0d |
| HHI.1145 |  | Quailty Check(Visual Inspection & PT) | 2d | 2014-06-02 | 2014-06-03 | HHI.1144 FF, HHI.1143 SS | 0d |
| HHI.1144 |  | Weld Wind Girder | 1d | 2014-06-03 | 2014-06-03 | HHI.1143 | 0d |
|  | 2 | **TANK #2-SHELL COURSE#6** |  | 2014-06-04 | 2014-06-11 |  |  |
| HHI.1146 |  | Erect & Tack Shell Course # 6 & Install Stagging Brackets | 1d | 2014-06-04 | 2014-06-04 | HHI.1145 SS+2d | 0d |
| HHI.1147 |  | Weld Outer Vertical Seam /Install the Stairways support on Shell | 1d | 2014-06-05 | 2014-06-05 | HHI.1146 | 0d |
| HHI.1153 |  | Quailty Check(Visual Inspection,PT,Air Leak Test for Shell Nozzle)) | 6d | 2014-06-05 | 2014-06-11 | HHI.1146 SS, HHI.1152 FF | 0d |
| HHI.1148 |  | Backgouge & NDT Inside Vertical Seam | 1d | 2014-06-07 | 2014-06-07 | HHI.1147 | 0d |
| HHI.1149 |  | Weld Inside Vertical Seam | 1d | 2014-06-08 | 2014-06-08 | HHI.1148 | 0d |
| HHI.1150 |  | "Weld Outer Horizontal Seam between / Shell Course # 5 & 6" | 1d | 2014-06-09 | 2014-06-09 | HHI.1149 | 0d |
| HHI.1151 |  | "Backgouge & NDT Inside Horizontal / Seam between Shell Course# 5 & 6" | 1d | 2014-06-10 | 2014-06-10 | HHI.1150 | 0d |
| HHI.1152 |  | Weld Inner Horizontal Seam between / Shell Course # 5 & 6"/Fit,Weld Nozzle on Shell | 1d | 2014-06-11 | 2014-06-11 | HHI.1151 | 0d |

| ID | WBS | Activity | Duration | Start | Finish | Predecessors | Total float |
| --- | --- | --- | --- | --- | --- | --- | --- |
|  | 13 | **TANK #2-WIND GIRDER** |  | 2014-06-12 | 2014-06-14 |  |  |
| HHI.1154 |  | Erect & Tack Wind Girder | 1d | 2014-06-12 | 2014-06-12 | HHI.1153 | 0d |
| HHI.1156 |  | Quailty Check(Visual Inspection & PT) | 2d | 2014-06-12 | 2014-06-14 | HHI.1154 SS, HHI.1155 FF | 0d |
| HHI.1155 |  | Weld Wind Girder | 1d | 2014-06-14 | 2014-06-14 | HHI.1154 | 0d |
|  | 3 | **RT FOR SHELL COURSE #6 JOINTS** |  | 2014-06-15 | 2014-06-15 |  |  |
| HHI.1157 |  | Perform RT for Tank#1 & #2 | 1d | 2014-06-15 | 2014-06-15 | HHI.1156 | 0d |
|  | 11 | **SHELL COURSE#8/NOZZLE (N6)WORKS** |  | 2014-06-15 | 2014-06-25 |  |  |
|  | 1 | **TANK #1** |  | 2014-06-15 | 2014-06-22 |  |  |
| HHI.1158 |  | Erect & Tack Shell Course # 7 & Install Stagging Brackets | 1d | 2014-06-15 | 2014-06-15 | HHI.1157 SS | 0d |
| HHI.1166 |  | Quailty Check(Visual Inspection & PT& Air Leak Test for Shell Nozzle & Pad) | 7d | 2014-06-15 | 2014-06-22 | HHI.1158 SS, HHI.1165 FF | 0d |
| HHI.1159 |  | Weld Outer Vertical Seam /Install the Stairways support on Shell | 1d | 2014-06-16 | 2014-06-16 | HHI.1158 | 0d |
| HHI.1160 |  | Backgouge & NDT Inside Vertical Seam | 1d | 2014-06-17 | 2014-06-17 | HHI.1159 | 0d |
| HHI.1161 |  | Weld Inside Vertical Seam | 1d | 2014-06-18 | 2014-06-18 | HHI.1160 | 0d |
| HHI.1162 |  | "Weld Outer Horizontal Seam between / Shell Course # 6 & 7" | 1d | 2014-06-19 | 2014-06-19 | HHI.1161 | 0d |
| HHI.1163 |  | "Backgouge & NDT Inside Horizontal / Seam between Shell Course# 6 & 7" | 1d | 2014-06-21 | 2014-06-21 | HHI.1162 | 0d |
| HHI.1164 |  | Weld Inner Horizontal Seam between / Shell Course # 6 & 7" | 1d | 2014-06-22 | 2014-06-22 | HHI.1163 | 0d |
| HHI.1165 |  | Fit,Weld Nozzle on Shell | 1d | 2014-06-22 | 2014-06-22 | HHI.1164 SS | 0d |
|  | 2 | **TANK #2** |  | 2014-06-17 | 2014-06-24 |  |  |
| HHI.1167 |  | Erect & Tack Shell Course # 7 & Install Stagging Brackets | 1d | 2014-06-17 | 2014-06-17 | HHI.1166 SS+2d | 0d |
| HHI.1175 |  | Quailty Check(Visual Inspection & PT for Shell Nozzle & Pad) | 7d | 2014-06-17 | 2014-06-24 | HHI.1167 SS, HHI.1174 FF | 0d |
| HHI.1168 |  | Weld Outer Vertical Seam/Install the Stairways support on Shell | 1d | 2014-06-18 | 2014-06-18 | HHI.1167 | 0d |
| HHI.1169 |  | Backgouge & NDT Inside Vertical Seam | 1d | 2014-06-19 | 2014-06-19 | HHI.1168 | 0d |
| HHI.1170 |  | Weld Inside Vertical Seam | 1d | 2014-06-21 | 2014-06-21 | HHI.1169 | 0d |
| HHI.1171 |  | "Weld Outer Horizontal Seam between / Shell Course # 6 & 7" | 1d | 2014-06-22 | 2014-06-22 | HHI.1170 | 0d |
| HHI.1172 |  | "Backgouge & NDT Inside Horizontal / Seam between Shell Course#6 & 7" | 1d | 2014-06-23 | 2014-06-23 | HHI.1171 | 0d |
| HHI.1173 |  | Weld Inner Horizontal Seam between / Shell Course #6 & 7" | 1d | 2014-06-24 | 2014-06-24 | HHI.1172 | 0d |
| HHI.1174 |  | Fit,Weld Nozzle on Shell | 1d | 2014-06-24 | 2014-06-24 | HHI.1173 SS | 0d |

| ID | WBS | Activity | Duration | Start | Finish | Predecessors | Total float | Free float |
| --- | --- | --- | --- | --- | --- | --- | --- | --- |
|  | 3 | **RT FOR SHELL COURSE #7 JOINTS** |  | 2014-06-25 | 2014-06-25 |  |  |  |
| HHI.1176 |  | Perform RT for Tank#1 & #2 | 1d | 2014-06-25 | 2014-06-25 | HHI.1175 | 0d |  |
|  | 12 | **TANK #1 (ROOF STRUCTURES/PLATES ASSEMBLY WITH TOP ANGLE ,PLATFROMS/STAIRWAYS & INTERNAL PIPING)** |  | 2014-06-25 | 2014-08-03 |  |  |  |
|  | 1 | **TOP CURB ANGLE** |  | 2014-06-25 | 2014-07-02 |  |  |  |
| HHI.1178 |  | "Fit & Tack / Shell Course # 8 & Top Curb Angle | 2d | 2014-06-25 | 2014-06-26 | HHI.1176 SS | 0d |  |
| HHI.1184 |  | Quailty Check (Visual Inspection) | 5d | 2014-06-25 | 2014-07-02 | HHI.1182 FF, HHI.1178 SS | 0d |  |
| HHI.1179 |  | Weld Outer Horizontal Seam between / Shell Course # 8 & Top Curb Angle | 1d | 2014-06-28 | 2014-06-29 | HHI.1178 | 1d | 0d |
| HHI.1180 |  | "Backgouge & NDT Inside Horizontal / Seam between Shell Course# 8 & Top Curb Angle | 1d | 2014-06-28 | 2014-06-29 | HHI.1179 SS | 1d |  |
| HHI.1181 |  | Fit up,Tack of Gusset Plates to Shell | 2d | 2014-06-28 | 2014-07-01 | HHI.1178 | 0d |  |
| HHI.1182 |  | Weld Inner Horizontal Seam between / Shell Course #8 & Top Curb Angle | 1d | 2014-07-01 | 2014-07-02 | HHI.1183 SS, HHI.1180 | 0d |  |
| HHI.1183 |  | Welding of Gusset Plates | 1d | 2014-07-01 | 2014-07-02 | HHI.1181 | 0d |  |
|  | 2 | **GIRDERS** |  | 2014-06-28 | 2014-07-01 |  |  |  |
| HHI.1185 |  | Erect, install Girders to Columns (1 Layers ,5 Girders) | 2d | 2014-06-28 | 2014-07-01 | HHI.1184 SS+2d | 0d |  |
|  | 3 | **RAFTERS** |  | 2014-06-29 | 2014-07-08 |  |  |  |
| HHI.1186 |  | Erect,& Install the Rafters (85 Rafters)/ Install Internal Piping Brackets/Piping | 5d | 2014-06-29 | 2014-07-08 | HHI.1185 SS+1d | 0d |  |
|  | 4 | **ROOF PLATES/ROOF MANHOLES(M2,M3) & NOZZLES (N1,N2,V1,V2,N13,N12,H,CP1,CP2,CP3,CP4,CP5,CP6,CP7)** |  | 2014-07-05 | 2014-07-26 |  |  |  |
| HHI.1189 |  | Prepare/Lay Down Roof Plates (38 Plates) | 2d | 2014-07-05 | 2014-07-08 | HHI.1186 SS+3d | 0d |  |
| HHI.1190 |  | Tacking of Roof Plates | 2d | 2014-07-05 | 2014-07-08 | HHI.1189 SS | 0d |  |
| HHI.1197 |  | Quailty Check (Visual Inspection& Vaccum Box Test,PT,Air Leak Test for Roof Manholes& Nozzles)) | 11d | 2014-07-05 | 2014-07-26 | HHI.1189 SS, HHI.1196 FF | 0d |  |
| HHI.1191 |  | Tack of Roof Plates to Curb Angle | 1d | 2014-07-09 | 2014-07-10 | HHI.1190 | 4d |  |
| HHI.1192 |  | Welding of Roof Plates (Short Seams) | 2d | 2014-07-09 | 2014-07-13 | HHI.1190 SS+2d | 0d |  |
| HHI.1193 |  | Welding of Roof Plates (Long Seams) | 3d | 2014-07-13 | 2014-07-19 | HHI.1192 | 0d |  |
| HHI.1194 |  | Welding of Roof Plates to Curb Angle | 1d | 2014-07-19 | 2014-07-20 | HHI.1193, HHI.1191 | 0d |  |
| HHI.1195 |  | Fit,Weld Manholes ,Nozzles & install Top Platform Supports on Roof | 2d | 2014-07-22 | 2014-07-26 | HHI.1194 SS+2d | 0d |  |
| HHI.1196 |  | Weld Internal Piping to Nozzle N1 | 1d | 2014-07-24 | 2014-07-26 | HHI.1195 SS+1d | 0d |  |

Notes:
- HHI.1185: Steps: 1st Group 5 girders; 2nd Group 10 girders

| ID | WBS | Activity | Duration | Start | Finish | Predecessors | Total float | Free float |
| --- | --- | --- | --- | --- | --- | --- | --- | --- |
|  | 6 | **PLATFORMS & STAIRWAYS ASSEMBLY** |  | 2014-07-27 | 2014-08-03 |  |  |  |
| HHI.1198 |  | Erect & Install Stairways & Platforms for Shell | 2d | 2014-07-27 | 2014-07-31 | HHI.1197 | 0d |  |
| HHI.1199 |  | Erect & Install Stairways & Platforms & Handrails for Roof | 2d | 2014-07-31 | 2014-08-02 | HHI.1198 | 0d |  |
| HHI.1200 |  | Quality Check | 1d | 2014-08-02 | 2014-08-03 | HHI.1199 | 0d |  |
|  | 13 | **TANK #2 (ROOF STRUCTURES/PLATES ASSEMBLY WITH TOP ANGLE ,PLATFROMS/STAIRWAYS & INTERNAL PIPING)-1** |  | 2014-08-03 | 2014-08-28 |  |  |  |
|  | 1 | **TOP CURB ANGLE** |  | 2014-08-03 | 2014-08-09 |  |  |  |
| HHI.1201 |  | "Fit & Tack / Shell Course # 8 & Top Curb Angle | 2d | 2014-08-03 | 2014-08-05 | HHI.1200 | 0d |  |
| HHI.1207 |  | Quailty Check (Visual Inspection) | 5d | 2014-08-03 | 2014-08-09 | HHI.1205 FF, HHI.1201 SS | 0d |  |
| HHI.1202 |  | Weld Outer Horizontal Seam between / Shell Course # 7 & Top Curb Angle | 1d | 2014-08-05 | 2014-08-06 | HHI.1201 | 1d | 0d |
| HHI.1203 |  | "Backgouge & NDT Inside Horizontal / Seam between Shell Course# 7 & Top Curb Angle | 1d | 2014-08-05 | 2014-08-06 | HHI.1202 SS | 1d |  |
| HHI.1204 |  | Fit up,Tack of Gusset Plates to Shell | 2d | 2014-08-05 | 2014-08-07 | HHI.1201 | 0d |  |
| HHI.1205 |  | Weld Inner Horizontal Seam between / Shell Course # 7 & Top Curb Angle | 1d | 2014-08-07 | 2014-08-09 | HHI.1206 SS, HHI.1203 | 0d |  |
| HHI.1206 |  | Welding of Gusset Plates | 1d | 2014-08-07 | 2014-08-09 | HHI.1204 | 0d |  |
|  | 2 | **GIRDERS** |  | 2014-08-05 | 2014-08-07 |  |  |  |
| HHI.1208 |  | Erect,& install Girders to Columns (1 Layer ,5 Girders) | 2d | 2014-08-05 | 2014-08-07 | HHI.1207 SS+2d | 0d |  |
|  | 3 | **RAFTERS** |  | 2014-08-06 | 2014-08-12 |  |  |  |
| HHI.1209 |  | Erect,& Install the Rafters (85 Rafters) /Install Internal Piping Brackets/Piping | 5d | 2014-08-06 | 2014-08-12 | HHI.1208 SS+1d | 0d |  |
|  | 4 | **ROOF PLATES/ROOF MANHOLES(M4,M3) & NOZZLES (N1,N2,V1,V2,H,CP1,CP2,CP3,CP4,CP5,CP6,CP7)** |  | 2014-08-10 | 2014-08-21 |  |  |  |
| HHI.1212 |  | Prepare/Lay Down Roof Plates (38 Plates) | 2d | 2014-08-10 | 2014-08-12 | HHI.1209 SS+3d | 0d |  |
| HHI.1213 |  | Tacking of Roof Plates | 2d | 2014-08-10 | 2014-08-12 | HHI.1212 SS | 0d |  |
| HHI.1220 |  | Quailty Check (Visual Inspection& Vaccum Box Test,PT,Air Leak Test for Roof Manholes& Nozzles)) | 11d | 2014-08-10 | 2014-08-21 | HHI.1219 FF, HHI.1212 SS | 0d |  |
| HHI.1214 |  | Tack of Roof Plates to Curb Angle | 1d | 2014-08-12 | 2014-08-13 | HHI.1213 | 4d |  |
| HHI.1215 |  | Welding of Roof Plates (Short Seams) | 2d | 2014-08-12 | 2014-08-14 | HHI.1213 SS+2d | 0d |  |
| HHI.1216 |  | Welding of Roof Plates (Long Seams) | 3d | 2014-08-14 | 2014-08-17 | HHI.1215 | 0d |  |
| HHI.1217 |  | Welding of Roof Plates to Curb Angle | 1d | 2014-08-17 | 2014-08-18 | HHI.1216, HHI.1214 | 0d |  |
| HHI.1218 |  | Fit,Weld Manholes ,Nozzles on Roof & install Top Platform Supports on Roof | 2d | 2014-08-19 | 2014-08-21 | HHI.1217 SS+2d | 0d |  |
| HHI.1219 |  | Weld Internal Piping to Nozzle N1 | 1d | 2014-08-20 | 2014-08-21 | HHI.1218 SS+1d | 0d |  |

Notes:
- HHI.1208: Steps: 1st Group 5 girders; 2nd Group 10 girders

| ID | WBS | Activity | Duration | Start | Finish | Predecessors | Total float | Free float |
| --- | --- | --- | --- | --- | --- | --- | --- | --- |
|  | 6 | **PLATFORMS & STAIRWAYS ASSEMBLY** |  | 2014-08-23 | 2014-08-28 |  |  |  |
| HHI.1221 |  | Erect & Install Stairways & Platforms for Shell | 2d | 2014-08-23 | 2014-08-25 | HHI.1220 FS+1d | 0d |  |
| HHI.1222 |  | Erect & Install Stairways & Platforms & Handrails for Roof | 2d | 2014-08-25 | 2014-08-27 | HHI.1221 | 0d |  |
| HHI.1223 |  | Quality Check | 1d | 2014-08-27 | 2014-08-28 | HHI.1222 | 0d |  |
|  | 14 | **MCC** |  | 2014-08-03 | 2014-08-29 |  |  |  |
|  | 1 | **TANK #1** |  | 2014-08-03 | 2014-08-04 |  |  |  |
| HHI.1224 |  | Mechanical Completion (MCC) & Final Isnpection Before Hydrotesting | 1d | 2014-08-03 | 2014-08-04 | HHI.1200 | 0d |  |
|  | 2 | **TANK #2** |  | 2014-08-28 | 2014-08-29 |  |  |  |
| HHI.1225 |  | Mechanical Completion (MCC) & Final Inspection Before Hydrotesting | 1d | 2014-08-28 | 2014-08-29 | HHI.1223 | 0d |  |
|  | 3 | **HYDROTESTING,PAINTING ,ATTACHMENTS/VALVES/INSTRUMENTS INSTALLATION** |  | 2014-08-03 | 2014-12-07 |  |  |  |
|  | 1 | **HYDROTESTING** |  | 2014-08-03 | 2014-11-02 |  |  |  |
|  | 1 | **TANK #1** |  | 2014-08-03 | 2014-10-06 |  |  |  |
| HHI.1226 |  | Remove Stagging Blanks/Brackets & Install Blind Flanges | 2d | 2014-08-03 | 2014-08-05 | HHI.1224 SS | 0d |  |
| HHI.1227 |  | Tank Water Filling & Settlement | 32d | 2014-08-05 | 2014-09-09 | HHI.1226 | 0d |  |
| HHI.1228 |  | Hold & Inspect Water for 24 Hours | 1d | 2014-09-09 | 2014-09-10 | HHI.1227 | 0d |  |
| HHI.1229 |  | Drain Water from Tank & Transfer Desanilated Water Tank #1 | 16d | 2014-09-10 | 2014-09-29 | HHI.1228 | 0d |  |
| HHI.1230 |  | Build Mobile Scaffolding,Internal CLeaning&Dismantling | 3d | 2014-09-29 | 2014-10-02 | HHI.1229 | 70d | 0d |
| HHI.1231 |  | Quailty Check | 1d | 2014-10-02 | 2014-10-06 | HHI.1230 | 70d | 0d |
|  | 2 | **TANK #2** |  | 2014-08-28 | 2014-11-02 |  |  |  |
| HHI.1232 |  | Remove Stagging Blanks/Brackets & Install Blind Flanges | 2d | 2014-08-28 | 2014-08-30 | HHI.1225 SS | 0d |  |
| HHI.1233 |  | Tank Water Filling/Settlement | 32d | 2014-08-30 | 2014-10-08 | HHI.1232 | 0d |  |
| HHI.1234 |  | Hold & Inspect Water for 24 Hours | 1d | 2014-10-08 | 2014-10-09 | HHI.1233 | 0d |  |
| HHI.1235 |  | Drain Water from Tank & Transfer to Demenarlized Tanks 1&2 | 16d | 2014-10-09 | 2014-10-28 | HHI.1234 | 0d |  |
| HHI.1236 |  | Build Mobile Scaffolding,Internal CLeaning&Dismantling/Quailty Check | 4d | 2014-10-28 | 2014-11-02 | HHI.1235 | 51d | 0d |

| ID | WBS | Activity | Duration | Start | Finish | Predecessors | Total float | Free float |
| --- | --- | --- | --- | --- | --- | --- | --- | --- |
|  | 2 | **ROOF COLUMNS WELDING & FINAL ALIGNMENT** |  | 2014-10-02 | 2014-10-30 |  |  |  |
|  | 1 | **TANK#1** |  | 2014-10-02 | 2014-10-07 |  |  |  |
| HHI.1237 |  | Weld & Align Roof Columns | 2d | 2014-10-02 | 2014-10-07 | HHI.1231 SS | 70d | 0d |
|  | 2 | **TANK#2** |  | 2014-10-28 | 2014-10-30 |  |  |  |
| HHI.1238 |  | Weld & Align Roof Columns | 2d | 2014-10-28 | 2014-10-30 | HHI.1236 SS | 51d | 0d |
|  | 3 | **TANK ATTACHMENTS** |  | 2014-10-02 | 2014-10-29 |  |  |  |
|  | 1 | **TANK #1** |  | 2014-10-02 | 2014-10-06 |  |  |  |
| HHI.1239 |  | Fit,Weld Name Plate brackets/Attachments on shell Course #1 | 1d | 2014-10-02 | 2014-10-06 | HHI.1237 SS | 70d | 0d |
|  | 2 | **TANK #2** |  | 2014-10-28 | 2014-10-29 |  |  |  |
| HHI.1240 |  | Fit,Weld Name Plate brackets/Attachments on shell Course #1 | 1d | 2014-10-28 | 2014-10-29 | HHI.1238 SS | 51d | 0d |
|  | 4 | **TANK#1 BLASTING/PAINTING** |  | 2014-10-06 | 2014-11-13 |  |  |  |
|  | 10 | **EXTERNAL SURFACE PAINTING** |  | 2014-10-06 | 2014-10-14 |  |  |  |
| HHI.1241 |  | Perform Shell Surface Preparation & Painting | 4d | 2014-10-06 | 2014-10-11 | HHI.1239 | 70d | 0d |
| HHI.1243 |  | Quailty Check | 7d | 2014-10-06 | 2014-10-14 | HHI.1242 FF, HHI.1241 SS | 73d | 3d |
| HHI.1242 |  | Perform Roof Surface Preparation & Painting | 3d | 2014-10-11 | 2014-10-14 | HHI.1241 | 73d | 0d |
|  | 12 | **INTERNAL SURFACE PAINTING** |  | 2014-10-06 | 2014-11-13 |  |  |  |
| HHI.1244 |  | Install Scaffoldings | 10d | 2014-10-06 | 2014-10-18 | HHI.1241 SS | 70d | 0d |
| HHI.1245 |  | Perform Roof Underside Surface Preparation & Painting | 6d | 2014-10-18 | 2014-10-25 | HHI.1244, HHI.1243 | 70d | 0d |
| HHI.1249 |  | Quailty Check (including Holiday Test) | 23d | 2014-10-18 | 2014-11-13 | HHI.1248 FF, HHI.1245 SS | 70d | 0d |
| HHI.1246 |  | Perform Shell course Surface Preparation & Painting | 8d | 2014-10-25 | 2014-11-03 | HHI.1245 | 71d | 0d |
| HHI.1247 |  | Dismantle Scaffoldings | 5d | 2014-11-03 | 2014-11-09 | HHI.1246 | 71d | 0d |
| HHI.1248 |  | Perform Bottom Surface Preparation & Painting | 3d | 2014-11-09 | 2014-11-12 | HHI.1247 | 71d | 1d |
|  | 5 | **TANK#2 BLASTING/PAINTING** |  | 2014-10-29 | 2014-12-06 |  |  |  |
|  | 10 | **EXTERNAL SURFACE PAINTING** |  | 2014-10-29 | 2014-11-06 |  |  |  |
| HHI.1250 |  | Perform Shell Surface Preparation & Painting | 4d | 2014-10-29 | 2014-11-03 | HHI.1240 | 51d | 0d |
| HHI.1252 |  | Quailty Check | 7d | 2014-10-29 | 2014-11-06 | HHI.1251 FF, HHI.1250 SS | 54d | 3d |
| HHI.1251 |  | Perform Roof Surface Preparation & Painting | 3d | 2014-11-03 | 2014-11-06 | HHI.1250 | 54d | 0d |

Notes:
- HHI.1241: Description: ï»¿ / Shell Course SA= 2100 x 2 coats= 4200 M2(2 painters) / Roof SA= 1900x2=3800 M2

| ID | WBS | Activity | Type | Duration | Start | Finish | Predecessors | Total float | Free float | Constraint |
| --- | --- | --- | --- | --- | --- | --- | --- | --- | --- | --- |
|  | 12 | **INTERNAL SURFACE PAINTING** |  |  | 2014-10-29 | 2014-12-06 |  |  |  |  |
| HHI.1253 |  | Install Scaffoldings |  | 10d | 2014-10-29 | 2014-11-10 | HHI.1250 SS | 51d | 0d |  |
| HHI.1254 |  | Perform Roof Underside Surface Preparation & Painting |  | 6d | 2014-11-10 | 2014-11-17 | HHI.1252, HHI.1253 | 51d | 0d |  |
| HHI.1258 |  | Quailty Check (including Holiday Test) |  | 22d | 2014-11-10 | 2014-12-06 | HHI.1254 SS, HHI.1257 FF | 51d | 0d |  |
| HHI.1255 |  | Perform Shell course Surface Preparation & Painting |  | 8d | 2014-11-17 | 2014-11-26 | HHI.1254 | 51d | 0d |  |
| HHI.1256 |  | Dismantle Scaffoldings |  | 5d | 2014-11-26 | 2014-12-02 | HHI.1255 | 51d | 0d |  |
| HHI.1257 |  | Perform Bottom Surface Preparation & Painting |  | 3d | 2014-12-02 | 2014-12-06 | HHI.1256 | 51d | 0d |  |
|  | 6 | **TANKS VALVES,INSTRUMENTS & INTERNAL CATHODIC PROTECTION** |  |  | 2014-11-13 | 2014-12-07 |  |  |  |  |
|  | 1 | **TANK#1** |  |  | 2014-11-13 | 2014-11-15 |  |  |  |  |
| JF752.1259 |  | Install Valves,instruments & Internal Cathodic System (Supplied by client) |  | 1d | 2014-11-13 | 2014-11-15 | HHI.1249 | 70d | 0d |  |
|  | 2 | **TANK #2** |  |  | 2014-12-06 | 2014-12-07 |  |  |  |  |
| JF752.1260 |  | Install Valves,instruments & Internal Cathodic System (Supplied by client) |  | 1d | 2014-12-06 | 2014-12-07 | HHI.1258 | 51d | 0d |  |
|  | 5 | **FINAL INSPECTION & HANDOVER TO CLIENT** |  |  | 2014-11-15 | 2014-12-08 |  |  |  |  |
|  | 1 | **TANK#1** |  |  | 2014-11-15 | 2014-11-16 |  |  |  |  |
| HHI.1261 |  | Perform Final Inspection & Handover to CLient |  | 1d | 2014-11-15 | 2014-11-16 | JF752.1259 | 70d |  |  |
|  | 2 | **TANK#2** |  |  | 2014-12-07 | 2014-12-08 |  |  |  |  |
| HHI.1262 |  | Perform Final Inspection & Handover to CLient |  | 1d | 2014-12-07 | 2014-12-08 | JF752.1260 | 51d |  |  |
|  | GDK | **Desanilated Water Storage Tank TANK#1(10GDK51BB001)& TANK#2(10GDK52BB001) (46.2 MTR D x 17.2 Mtr H)** |  |  | 2014-01-30 | 2015-02-05 |  |  |  |  |
|  | 1 | **Tank Foundation Handover To AZ** |  |  | 2014-01-30 | 2014-02-10 |  |  |  |  |
| HHI.1263 |  | HHI Hand over Tank#1(10GDK51BB001) Foundation to AZ | milestone | 0d | 2014-01-30 | 2014-01-30 |  | 0d |  | start on 2014-01-30 |
| HHI.1264 |  | AZ Check Tank#1 Foundation Levelness prior to Mechanical Works |  | 1d | 2014-01-30 | 2014-01-30 | HHI.1263 SS | 48d | 0d |  |
| HHI.1265 |  | HHI Hand over Tank#2(10GDK52BB001) Foundation to AZ | milestone | 0d | 2014-02-10 | 2014-02-10 | HHI.1263 FS+9d | 45d | 0d |  |
| HHI.1266 |  | AZ Check Tank#2 Foundation Levelness prior to Mechanical Works |  | 1d | 2014-02-10 | 2014-02-10 | HHI.1265 SS | 45d | 0d |  |
|  | 2 | **MECHANICAL WORK** |  |  | 2014-01-30 | 2014-08-17 |  |  |  |  |
|  | 4 | **Tank#1** |  |  | 2014-01-30 | 2014-02-18 |  |  |  |  |
|  | 1 | **ANNULAR PLATE WORKS** |  |  | 2014-01-30 | 2014-02-01 |  |  |  |  |
| HHI.1267 |  | Install Sealent,Erect & Tack of Annular Plates |  | 1d | 2014-01-30 | 2014-01-30 | HHI.1264 SS | 48d | 0d |  |
| HHI.1269 |  | Quailty Check (Visual Inspection,PT & Vaccum Box Test) |  | 2d | 2014-01-30 | 2014-02-01 | HHI.1267 SS, HHI.1268 FF | 48d | 0d |  |
| HHI.1268 |  | Welding of Annular Plates |  | 1d | 2014-02-01 | 2014-02-01 | HHI.1267 | 48d | 0d |  |

Notes:
- GDK: RECIEVED TANK COORIDNATES 7TH OF OCTOBER / 2012 FROM RADICON / WAITING FOR JUSTIFICATION LETTER FROM RADICON TO PRESENT TO MA'ADEN FOR / PROJECT TIME EXTENSION / DESIGN,ENGINEERING,SUPPLY OF / MATERIALS,MANUFACTURING,PREFABRICATION,ASSUMBLY,PAINTING&COATING,ERECTION,SHOP / TESTING,INSPECTION,PACKING AND DELIEVERY TO SITE,OPERATING & MAINTENANCE / MANUALS AND SPARE PARTS PACKADGE

| ID | WBS | Activity | Duration | Start | Finish | Predecessors | Total float | Free float |
| --- | --- | --- | --- | --- | --- | --- | --- | --- |
|  | 11 | **BOTTOM PLATE WORKS** |  | 2014-02-02 | 2014-02-18 |  |  |  |
| HHI.1270 |  | Prepare & Lay Down Bottom Plates | 2d | 2014-02-02 | 2014-02-03 | HHI.1269 | 48d | 0d |
| HHI.1277 |  | Quailty Check (Visual Inspection& Vaccum Box Test) | 15d | 2014-02-02 | 2014-02-18 | HHI.1270 SS, HHI.1276 FF | 48d | 3d |
| HHI.1271 |  | Fit/Tack Bottom Plates-Short Seams | 2d | 2014-02-05 | 2014-02-06 | HHI.1270 FS+1d | 48d | 0d |
| HHI.1272 |  | Weld Short Seams | 3d | 2014-02-06 | 2014-02-09 | HHI.1271 SS+1d | 48d | 0d |
| HHI.1273 |  | Fit/Tack Bottom Plates-Long Seams | 2d | 2014-02-10 | 2014-02-11 | HHI.1272 | 48d | 0d |
| HHI.1274 |  | Erect,Fitup of Sump | 1d | 2014-02-11 | 2014-02-11 | HHI.1273 SS+1d | 53d | 5d |
| HHI.1275 |  | Weld Long Seams | 7d | 2014-02-11 | 2014-02-18 | HHI.1273 SS+1d | 48d | 0d |
| HHI.1276 |  | Weld Sump | 1d | 2014-02-18 | 2014-02-18 | HHI.1275 SS+6d, HHI.1274 | 48d | 0d |
|  | 11 | **Tank#2** |  | 2014-02-10 | 2014-03-01 |  |  |  |
|  | 1 | **ANNULAR PLATE WORKS** |  | 2014-02-10 | 2014-02-11 |  |  |  |
| HHI.1278 |  | Install Sealent,Erect & Tack of Annular Plates | 1d | 2014-02-10 | 2014-02-10 | HHI.1266 SS, HHI.1277 SS+4d | 45d | 0d |
| HHI.1280 |  | Quailty Check (Visual Inspection,PT & Vaccum Box Test) | 2d | 2014-02-10 | 2014-02-11 | HHI.1278 SS, HHI.1279 FF | 45d | 0d |
| HHI.1279 |  | Welding of Annular Plates | 1d | 2014-02-11 | 2014-02-11 | HHI.1278 | 45d | 0d |
|  | 2 | **RT FOR ANNULAR PLATES WELD JOINTS** |  | 2014-02-12 | 2014-02-12 |  |  |  |
| HHI.1281 |  | Perform RT for Tank#1 & #2 | 1d | 2014-02-12 | 2014-02-12 | HHI.1280 | 45d | 0d |
|  | 13 | **BOTTOM PLATE WORKS** |  | 2014-02-12 | 2014-03-01 |  |  |  |
| HHI.1282 |  | Prepare & Lay Down Bottom Plates | 2d | 2014-02-12 | 2014-02-13 | HHI.1281 SS | 45d | 0d |
| HHI.1289 |  | Quailty Check (Visual Inspection& Vaccum Box Test) | 15d | 2014-02-12 | 2014-03-01 | HHI.1282 SS, HHI.1288 FF | 45d | 0d |
| HHI.1283 |  | Fit/Tack Bottom Plates-Short Seams | 2d | 2014-02-16 | 2014-02-17 | HHI.1282 FS+1d | 45d | 0d |
| HHI.1284 |  | Weld Short Seams | 3d | 2014-02-17 | 2014-02-19 | HHI.1283 SS+1d | 45d | 0d |
| HHI.1285 |  | Fit/Tack Bottom Plates-Long Seams | 2d | 2014-02-20 | 2014-02-22 | HHI.1284 | 45d | 0d |
| HHI.1286 |  | Erect,Fitup of Sump | 1d | 2014-02-22 | 2014-02-22 | HHI.1285 SS+1d | 50d | 5d |
| HHI.1287 |  | Weld Long Seams | 7d | 2014-02-22 | 2014-03-01 | HHI.1285 SS+1d | 45d | 0d |
| HHI.1288 |  | Weld Sump | 1d | 2014-03-01 | 2014-03-01 | HHI.1287 SS+6d, HHI.1286 | 45d | 0d |

| ID | WBS | Activity | Duration | Start | Finish | Predecessors | Total float | Free float |
| --- | --- | --- | --- | --- | --- | --- | --- | --- |
|  | 5 | **SHELL COURSE #1/MANHOLES (M1,M2) & NOZZLES(N5,N6,N3,LT1,LT2) WORKS** |  | 2014-03-02 | 2014-03-11 |  |  |  |
|  | 1 | **TANK #1** |  | 2014-03-02 | 2014-03-08 |  |  |  |
| HHI.1290 |  | Erect & Tack Shell Course # 1 & Install Stagging Brackets | 2d | 2014-03-02 | 2014-03-03 | HHI.1289 | 45d | 0d |
| HHI.1296 |  | Quailty Check(Visual Inspection & PT,Air Leak Test for Shell Manholes& Nozzles) | 6d | 2014-03-02 | 2014-03-08 | HHI.1290 SS, HHI.1295 FF | 45d | 0d |
| HHI.1291 |  | Weld Outer Vertical Seam / Install the Stairways support on Shell | 2d | 2014-03-03 | 2014-03-04 | HHI.1292 SS | 45d | 0d |
| HHI.1292 |  | Fit up/Tack Shell #1 to Annular Plate | 1d | 2014-03-03 | 2014-03-03 | HHI.1290 SS+1d | 45d | 0d |
| HHI.1293 |  | Backgouge,Grinding & NDT Inside Vertical Seam | 1d | 2014-03-05 | 2014-03-05 | HHI.1291 | 45d | 0d |
| HHI.1294 |  | Weld Inside Vertical Seam | 1d | 2014-03-06 | 2014-03-06 | HHI.1293 | 45d | 0d |
| HHI.1295 |  | Fit,Weld for Manhole ,Nozzles on Shell | 2d | 2014-03-06 | 2014-03-08 | HHI.1294 SS | 45d | 0d |
|  | 2 | **TANK #2** |  | 2014-03-04 | 2014-03-10 |  |  |  |
| HHI.1297 |  | Erect & Tack Shell Course # 1 &Install Stagging Brackets | 2d | 2014-03-04 | 2014-03-05 | HHI.1296 SS+2d | 45d | 0d |
| HHI.1303 |  | Quailty Check(Visual Inspection PT,Air Leak Test for Shell Manholes& Nozzles) | 6d | 2014-03-04 | 2014-03-10 | HHI.1297 SS, HHI.1302 FF | 45d | 0d |
| HHI.1298 |  | Weld Outer Vertical Seam /Install the Stairways support on Shell | 2d | 2014-03-05 | 2014-03-06 | HHI.1299 SS | 45d | 0d |
| HHI.1299 |  | Fit up/Tack Shell #1 to Annular Plate | 1d | 2014-03-05 | 2014-03-05 | HHI.1297 SS+1d | 45d | 0d |
| HHI.1300 |  | Backgouge,Grinding & NDT Inside Vertical Seam | 1d | 2014-03-08 | 2014-03-08 | HHI.1298 | 45d | 0d |
| HHI.1301 |  | Weld Inside Vertical Seam | 1d | 2014-03-09 | 2014-03-09 | HHI.1300 | 45d | 0d |
| HHI.1302 |  | Fit,Weld for Manhole ,Nozzles on Shell | 2d | 2014-03-09 | 2014-03-10 | HHI.1301 SS | 45d | 0d |
|  | 3 | **RT FOR SHELL COURSE #1 JOINTS** |  | 2014-03-11 | 2014-03-11 |  |  |  |
| HHI.1304 |  | Perform RT for Tank#1 & #2 | 1d | 2014-03-11 | 2014-03-11 | HHI.1303 | 45d | 0d |
|  | 6 | **SHELL COURSE#2** |  | 2014-03-11 | 2014-03-30 |  |  |  |
|  | 1 | **TANK #1** |  | 2014-03-11 | 2014-03-26 |  |  |  |
| HHI.1305 |  | Erect & Tack Shell Course # 2 & Install Stagging Brackets | 2d | 2014-03-11 | 2014-03-12 | HHI.1304 SS | 45d | 0d |
| HHI.1315 |  | Quailty Check(Visual Inspection) | 14d | 2014-03-11 | 2014-03-26 | HHI.1305 SS, HHI.1314 FF | 45d | 0d |
| HHI.1306 |  | Weld Outer Vertical Seam /Install the Stairways support on Shell | 1d | 2014-03-12 | 2014-03-12 | HHI.1305 SS+1d | 45d | 0d |
| HHI.1307 |  | Backgouge,Grinding & NDT Inside Vertical Seam | 1d | 2014-03-13 | 2014-03-13 | HHI.1306 | 45d | 0d |
| HHI.1308 |  | Weld Inside Vertical Seam | 1d | 2014-03-15 | 2014-03-15 | HHI.1307 | 45d | 0d |
| HHI.1309 |  | "Weld Outer Horizontal Seam between / Shell Course # 1 & 2" | 3d | 2014-03-16 | 2014-03-18 | HHI.1308 | 45d | 0d |
| HHI.1310 |  | "Backgouge & NDT Inside Horizontal / Seam between Shell Course# 1 & 2" | 1d | 2014-03-19 | 2014-03-19 | HHI.1309 | 45d | 0d |
| HHI.1311 |  | Weld Inner Horizontal Seam between / Shell Course # 1 & 2" | 2d | 2014-03-20 | 2014-03-22 | HHI.1310 | 45d | 0d |
| HHI.1312 |  | Weld Shell Course# 1 to Annular Plate (from inside) | 1d | 2014-03-23 | 2014-03-23 | HHI.1311 | 45d | 0d |
| HHI.1313 |  | Perform PT from inside,Complete the welding from outside & Perform Vaccum Box Testing | 2d | 2014-03-24 | 2014-03-25 | HHI.1312 | 45d | 0d |
| HHI.1314 |  | Weld Bottom Sketch Plates to Annular Plate | 1d | 2014-03-26 | 2014-03-26 | HHI.1313 | 45d | 0d |

| ID | WBS | Activity | Duration | Start | Finish | Predecessors | Total float | Free float |
| --- | --- | --- | --- | --- | --- | --- | --- | --- |
|  | 2 | **TANK #2** |  | 2014-03-13 | 2014-03-29 |  |  |  |
| HHI.1316 |  | Erect & Tack Shell Course # 2& Install Stagging Brackets | 2d | 2014-03-13 | 2014-03-15 | HHI.1315 SS+2d | 45d | 0d |
| HHI.1326 |  | Quailty Check(Visual Inspection) | 14d | 2014-03-13 | 2014-03-29 | HHI.1316 SS, HHI.1325 FF | 45d | 0d |
| HHI.1317 |  | Weld Outer Vertical Seam /Install the Stairways support on Shell | 1d | 2014-03-15 | 2014-03-15 | HHI.1316 SS+1d | 45d | 0d |
| HHI.1318 |  | Backgouge,Grinding & NDT Inside Vertical Seam | 1d | 2014-03-16 | 2014-03-16 | HHI.1317 | 45d | 0d |
| HHI.1319 |  | Weld Inside Vertical Seam | 1d | 2014-03-17 | 2014-03-17 | HHI.1318 | 45d | 0d |
| HHI.1320 |  | "Weld Outer Horizontal Seam between / Shell Course # 1 & 2" | 3d | 2014-03-18 | 2014-03-20 | HHI.1319 | 45d | 0d |
| HHI.1321 |  | "Backgouge & NDT Inside Horizontal / Seam between Shell Course# 1 & 2" | 1d | 2014-03-22 | 2014-03-22 | HHI.1320 | 45d | 0d |
| HHI.1322 |  | Weld Inner Horizontal Seam between / Shell Course # 1 & 2" | 2d | 2014-03-23 | 2014-03-24 | HHI.1321 | 45d | 0d |
| HHI.1323 |  | Weld Shell Course# 1 to Annular Plate (from inside) | 1d | 2014-03-25 | 2014-03-25 | HHI.1322 | 45d | 0d |
| HHI.1324 |  | Perform PT from inside,Complete the welding from outside & Perform Vaccum Box Testing | 2d | 2014-03-26 | 2014-03-27 | HHI.1323 | 45d | 0d |
| HHI.1325 |  | Weld Bottom Sketch Plates to Annular Plate | 1d | 2014-03-29 | 2014-03-29 | HHI.1324 | 45d | 0d |
|  | 3 | **RT FOR SHELL COURSE #2 JOINTS** |  | 2014-03-30 | 2014-03-30 |  |  |  |
| HHI.1327 |  | Perform RT for Tank#1 & #2 | 1d | 2014-03-30 | 2014-03-30 | HHI.1326 | 45d | 0d |
|  | 7 | **SHELL COURSE#3** |  | 2014-03-30 | 2014-04-12 |  |  |  |
|  | 1 | **TANK #1** |  | 2014-03-30 | 2014-04-08 |  |  |  |
| HHI.1328 |  | Erect & Tack Shell Course # 3 & Install Stagging Brackets | 2d | 2014-03-30 | 2014-03-31 | HHI.1327 SS | 45d | 0d |
| HHI.1335 |  | Quailty Check(Visual Inspection) | 9d | 2014-03-30 | 2014-04-08 | HHI.1328 SS, HHI.1334 FF | 45d | 0d |
| HHI.1329 |  | Weld Outer Vertical Seam /Install the Stairways support on Shell | 1d | 2014-03-31 | 2014-03-31 | HHI.1328 SS+1d | 45d | 0d |
| HHI.1330 |  | Backgouge & NDT Inside Vertical Seam | 1d | 2014-04-01 | 2014-04-01 | HHI.1329 | 45d | 0d |
| HHI.1331 |  | Weld Inside Vertical Seam | 1d | 2014-04-02 | 2014-04-02 | HHI.1330 | 45d | 0d |
| HHI.1332 |  | Weld Outer Horizontal Seam between / Shell Course # 2 & 3" | 3d | 2014-04-03 | 2014-04-06 | HHI.1331 | 45d | 0d |
| HHI.1333 |  | Backgouge & NDT Inside Horizontal / Seam between Shell Course# 2 & 3" | 1d | 2014-04-07 | 2014-04-07 | HHI.1332 | 45d | 0d |
| HHI.1334 |  | Weld Inner Horizontal Seam between / Shell Course # 2 & 3" | 1d | 2014-04-08 | 2014-04-08 | HHI.1333 | 45d | 0d |

| ID | WBS | Activity | Duration | Start | Finish | Predecessors | Total float | Free float |
| --- | --- | --- | --- | --- | --- | --- | --- | --- |
|  | 2 | **TANK #2** |  | 2014-04-01 | 2014-04-10 |  |  |  |
| HHI.1336 |  | Erect & Tack Shell Course # 3 & Install Stagging Brackets | 2d | 2014-04-01 | 2014-04-02 | HHI.1335 SS+2d | 45d | 0d |
| HHI.1343 |  | Quailty Check(Visual Inspection) | 9d | 2014-04-01 | 2014-04-10 | HHI.1336 SS, HHI.1342 FF | 45d | 0d |
| HHI.1337 |  | Weld Outer Vertical Seam /Install the Stairways support on Shell | 1d | 2014-04-02 | 2014-04-02 | HHI.1336 SS+1d | 45d | 0d |
| HHI.1338 |  | Backgouge & NDT Inside Vertical Seam | 1d | 2014-04-03 | 2014-04-03 | HHI.1337 | 45d | 0d |
| HHI.1339 |  | Weld Inside Vertical Seam | 1d | 2014-04-05 | 2014-04-05 | HHI.1338 | 45d | 0d |
| HHI.1340 |  | Weld Outer Horizontal Seam between / Shell Course # 2 & 3" | 3d | 2014-04-06 | 2014-04-08 | HHI.1339 | 45d | 0d |
| HHI.1341 |  | Backgouge & NDT Inside Horizontal / Seam between Shell Course# 2 & 3" | 1d | 2014-04-09 | 2014-04-09 | HHI.1340 | 45d | 0d |
| HHI.1342 |  | Weld Inner Horizontal Seam between / Shell Course # 2 & 3" | 1d | 2014-04-10 | 2014-04-10 | HHI.1341 | 45d | 0d |
|  | 3 | **RT FOR SHELL COURSE #3 JOINTS** |  | 2014-04-12 | 2014-04-12 |  |  |  |
| HHI.1344 |  | Perform RT for Tank#1 & #2 | 1d | 2014-04-12 | 2014-04-12 | HHI.1343 | 45d | 0d |
|  | 8 | **SHELL COURSE#4** |  | 2014-04-12 | 2014-04-22 |  |  |  |
|  | 1 | **TANK #1** |  | 2014-04-12 | 2014-04-19 |  |  |  |
| HHI.1345 |  | Erect & Tack Shell Course # 4 & Install Stagging Brackets | 2d | 2014-04-12 | 2014-04-13 | HHI.1344 SS | 45d | 0d |
| HHI.1352 |  | Quailty Check(Visual Inspection) | 7d | 2014-04-12 | 2014-04-19 | HHI.1345 SS, HHI.1351 FF | 45d | 0d |
| HHI.1346 |  | Weld Outer Vertical Seam /Install the Stairways support on Shell | 1d | 2014-04-13 | 2014-04-13 | HHI.1345 SS+1d | 45d | 0d |
| HHI.1347 |  | Backgouge & NDT Inside Vertical Seam | 1d | 2014-04-13 | 2014-04-13 | HHI.1346 SS | 45d | 0d |
| HHI.1348 |  | Weld Inside Vertical Seam | 1d | 2014-04-14 | 2014-04-14 | HHI.1347 | 45d | 0d |
| HHI.1349 |  | Weld Outer Horizontal Seam between / Shell Course # 3 & 4" | 2d | 2014-04-15 | 2014-04-16 | HHI.1348 | 45d | 0d |
| HHI.1350 |  | Backgouge & NDT Inside Horizontal / Seam between Shell Course# 3 & 4" | 1d | 2014-04-17 | 2014-04-17 | HHI.1349 | 45d | 0d |
| HHI.1351 |  | Weld Inner Horizontal Seam between / Shell Course # 3 & 4" | 1d | 2014-04-19 | 2014-04-19 | HHI.1350 | 45d | 0d |
|  | 2 | **TANK #2** |  | 2014-04-14 | 2014-04-21 |  |  |  |
| HHI.1353 |  | Erect & Tack Shell Course # 4 & Install Stagging Brackets | 2d | 2014-04-14 | 2014-04-15 | HHI.1352 SS+2d | 45d | 0d |
| HHI.1360 |  | Quailty Check(Visual Inspection) | 7d | 2014-04-14 | 2014-04-21 | HHI.1353 SS, HHI.1359 FF | 45d | 0d |
| HHI.1354 |  | Weld Outer Vertical Seam /Install the Stairways support on Shell | 1d | 2014-04-15 | 2014-04-15 | HHI.1353 SS+1d | 45d | 0d |
| HHI.1355 |  | Backgouge & NDT Inside Vertical Seam | 1d | 2014-04-15 | 2014-04-15 | HHI.1354 SS | 45d | 0d |
| HHI.1356 |  | Weld Inside Vertical Seam | 1d | 2014-04-16 | 2014-04-16 | HHI.1355 | 45d | 0d |
| HHI.1357 |  | Weld Outer Horizontal Seam between / Shell Course # 3 & 4" | 2d | 2014-04-17 | 2014-04-19 | HHI.1356 | 45d | 0d |
| HHI.1358 |  | Backgouge & NDT Inside Horizontal / Seam between Shell Course# 3 & 4" | 1d | 2014-04-20 | 2014-04-20 | HHI.1357 | 45d | 0d |
| HHI.1359 |  | Weld Inner Horizontal Seam between / Shell Course # 3 & 4" | 1d | 2014-04-21 | 2014-04-21 | HHI.1358 | 45d | 0d |

| ID | WBS | Activity | Duration | Start | Finish | Predecessors | Total float | Free float |
| --- | --- | --- | --- | --- | --- | --- | --- | --- |
|  | 3 | **RT FOR SHELL COURSE #4 JOINTS** |  | 2014-04-22 | 2014-04-22 |  |  |  |
| HHI.1361 |  | Perform RT for Tank#1 & #2 | 1d | 2014-04-22 | 2014-04-22 | HHI.1360 | 45d | 0d |
|  | 2 | **SHELL COURSE#5** |  | 2014-04-22 | 2014-05-03 |  |  |  |
|  | 1 | **TANK #1** |  | 2014-04-22 | 2014-04-29 |  |  |  |
| HHI.1362 |  | Erect & Tack Shell Course # 5 & Install Stagging Brackets | 2d | 2014-04-22 | 2014-04-23 | HHI.1361 SS | 45d | 0d |
| HHI.1369 |  | Quailty Check(Visual Inspection) | 7d | 2014-04-22 | 2014-04-29 | HHI.1362 SS, HHI.1368 FF | 45d | 0d |
| HHI.1363 |  | Weld Outer Vertical Seam /Install the Stairways support on Shell | 1d | 2014-04-23 | 2014-04-23 | HHI.1362 SS+1d | 45d | 0d |
| HHI.1364 |  | Backgouge & NDT Inside Vertical Seam | 1d | 2014-04-23 | 2014-04-23 | HHI.1363 SS | 45d | 0d |
| HHI.1365 |  | Weld Inside Vertical Seam | 1d | 2014-04-24 | 2014-04-24 | HHI.1364 | 45d | 0d |
| HHI.1366 |  | "Weld Outer Horizontal Seam between / Shell Course # 4 & 5" | 2d | 2014-04-26 | 2014-04-27 | HHI.1365 | 45d | 0d |
| HHI.1367 |  | "Backgouge & NDT Inside Horizontal / Seam between Shell Course# 4 & 5" | 1d | 2014-04-28 | 2014-04-28 | HHI.1366 | 45d | 0d |
| HHI.1368 |  | Weld Inner Horizontal Seam between / Shell Course # 4 & 5" | 1d | 2014-04-29 | 2014-04-29 | HHI.1367 | 45d | 0d |
|  | 2 | **TANK #2** |  | 2014-04-24 | 2014-05-01 |  |  |  |
| HHI.1370 |  | Erect & Tack Shell Course # 5 & Install Stagging Brackets | 2d | 2014-04-24 | 2014-04-26 | HHI.1369 SS+2d | 46d | 0d |
| HHI.1371 |  | Weld Outer Vertical Seam | 1d | 2014-04-26 | 2014-04-26 | HHI.1370 SS+1d | 46d | 0d |
| HHI.1372 |  | Backgouge & NDT Inside Vertical Seam | 1d | 2014-04-26 | 2014-04-26 | HHI.1371 SS | 46d | 0d |
| HHI.1377 |  | Quailty Check(Visual Inspection) | 6d | 2014-04-26 | 2014-05-01 | HHI.1376 FF, HHI.1370 SS | 46d | 0d |
| HHI.1373 |  | Weld Inside Vertical Seam | 1d | 2014-04-27 | 2014-04-27 | HHI.1372 | 46d | 0d |
| HHI.1374 |  | "Weld Outer Horizontal Seam between / Shell Course # 4 & 5" | 2d | 2014-04-28 | 2014-04-29 | HHI.1373 | 46d | 0d |
| HHI.1375 |  | "Backgouge & NDT Inside Horizontal / Seam between Shell Course# 4 & 5" | 1d | 2014-04-30 | 2014-04-30 | HHI.1374 | 46d | 0d |
| HHI.1376 |  | Weld Inner Horizontal Seam between / Shell Course #4 & 5" | 1d | 2014-05-01 | 2014-05-01 | HHI.1375 | 46d | 0d |
|  | 3 | **RT FOR SHELL COURSE #5 JOINTS** |  | 2014-05-03 | 2014-05-03 |  |  |  |
| HHI.1378 |  | Perform RT for Tank#1 & #2 | 1d | 2014-05-03 | 2014-05-03 | HHI.1377 | 46d | 1d |
|  | 27 | **ROOF COLUMNS** |  | 2014-04-30 | 2014-05-05 |  |  |  |
|  | 1 | **TANK #1** |  | 2014-04-30 | 2014-05-03 |  |  |  |
| HHI.1379 |  | Erect & Tack Columns | 3d | 2014-04-30 | 2014-05-03 | HHI.1369 | 45d | 0d |

| ID | WBS | Activity | Duration | Start | Finish | Predecessors | Total float | Free float |
| --- | --- | --- | --- | --- | --- | --- | --- | --- |
|  | 2 | **TANK #2** |  | 2014-05-03 | 2014-05-05 |  |  |  |
| HHI.1380 |  | Erect & Tack Columns | 3d | 2014-05-03 | 2014-05-05 | HHI.1377 | 54d | 9d |
|  | 3 | **SHELL COURSE#6/WIND GIRDER** |  | 2014-05-04 | 2014-05-29 |  |  |  |
|  | 1 | **TANK #1-SHELL COURSE#6** |  | 2014-05-04 | 2014-05-11 |  |  |  |
| HHI.1381 |  | Erect & Tack Shell Course # 6 & Instal Stagging Brackets | 2d | 2014-05-04 | 2014-05-05 | HHI.1379, HHI.1378 SS | 45d | 0d |
| HHI.1388 |  | Quailty Check(Visual Inspection) | 7d | 2014-05-04 | 2014-05-11 | HHI.1387 FF, HHI.1381 SS | 45d | 0d |
| HHI.1382 |  | Weld Outer Vertical Seam /Install the Stairways support on Shell | 1d | 2014-05-05 | 2014-05-05 | HHI.1381 SS+1d | 45d | 0d |
| HHI.1383 |  | Backgouge & NDT Inside Vertical Seam | 1d | 2014-05-05 | 2014-05-05 | HHI.1382 SS | 45d | 0d |
| HHI.1384 |  | Weld Inside Vertical Seam | 1d | 2014-05-06 | 2014-05-06 | HHI.1383 | 45d | 0d |
| HHI.1385 |  | "Weld Outer Horizontal Seam between / Shell Course # 5 & 6" | 2d | 2014-05-07 | 2014-05-08 | HHI.1384 | 45d | 0d |
| HHI.1386 |  | "Backgouge & NDT Inside Horizontal / Seam between Shell Course# 5 & 6" | 1d | 2014-05-10 | 2014-05-10 | HHI.1385 | 45d | 0d |
| HHI.1387 |  | Weld Inner Horizontal Seam between / Shell Course # 5 & 6" | 1d | 2014-05-11 | 2014-05-11 | HHI.1386 | 45d | 0d |
|  | 12 | **TANK #1-WIND GIRDER** |  | 2014-05-12 | 2014-05-15 |  |  |  |
| HHI.1389 |  | Erect & Tack Wind Girder | 1d | 2014-05-12 | 2014-05-12 | HHI.1388 | 45d | 0d |
| HHI.1391 |  | Quailty Check(Visual Inspection & PT) | 4d | 2014-05-12 | 2014-05-15 | HHI.1389 SS, HHI.1390 FF | 45d | 0d |
| HHI.1390 |  | Weld Wind Girder | 3d | 2014-05-13 | 2014-05-15 | HHI.1389 | 45d | 0d |
|  | 2 | **TANK #2-SHELL COURSE#6** |  | 2014-05-17 | 2014-05-24 |  |  |  |
| HHI.1392 |  | Erect & Tack Shell Course # 6 & Install Stagging Brackets | 2d | 2014-05-17 | 2014-05-18 | HHI.1380, HHI.1391 | 45d | 0d |
| HHI.1399 |  | Quailty Check(Visual Inspection) | 7d | 2014-05-17 | 2014-05-24 | HHI.1392 SS, HHI.1398 FF | 45d | 0d |
| HHI.1393 |  | Weld Outer Vertical Seam | 1d | 2014-05-18 | 2014-05-18 | HHI.1392 SS+1d | 45d | 0d |
| HHI.1394 |  | Backgouge & NDT Inside Vertical Seam | 1d | 2014-05-18 | 2014-05-18 | HHI.1393 SS | 45d | 0d |
| HHI.1395 |  | Weld Inside Vertical Seam | 1d | 2014-05-19 | 2014-05-19 | HHI.1394 | 45d | 0d |
| HHI.1396 |  | "Weld Outer Horizontal Seam between / Shell Course # 5 & 6" | 2d | 2014-05-20 | 2014-05-21 | HHI.1395 | 45d | 0d |
| HHI.1397 |  | "Backgouge & NDT Inside Horizontal / Seam between Shell Course# 5 & 6" | 1d | 2014-05-22 | 2014-05-22 | HHI.1396 | 45d | 0d |
| HHI.1398 |  | Weld Inner Horizontal Seam between / Shell Course # 5 & 6" | 1d | 2014-05-24 | 2014-05-24 | HHI.1397 | 45d | 0d |

| ID | WBS | Activity | Duration | Start | Finish | Predecessors | Total float | Free float |
| --- | --- | --- | --- | --- | --- | --- | --- | --- |
|  | 13 | **TANK #2-WIND GIRDER** |  | 2014-05-25 | 2014-05-28 |  |  |  |
| HHI.1400 |  | Erect & Tack Wind Girder | 1d | 2014-05-25 | 2014-05-25 | HHI.1399 | 45d | 0d |
| HHI.1402 |  | Quailty Check(Visual Inspection & PT) | 4d | 2014-05-25 | 2014-05-28 | HHI.1400 SS, HHI.1401 FF | 45d | 0d |
| HHI.1401 |  | Weld Wind Girder | 3d | 2014-05-26 | 2014-05-28 | HHI.1400 | 45d | 0d |
|  | 3 | **RT FOR SHELL COURSE #6 JOINTS** |  | 2014-05-29 | 2014-05-29 |  |  |  |
| HHI.1403 |  | Perform RT for Tank#1 & #2 | 1d | 2014-05-29 | 2014-05-29 | HHI.1402 | 45d | 0d |
|  | 21 | **SHELL COURSE#7/NOZZLE (N4)** |  | 2014-05-29 | 2014-06-12 |  |  |  |
|  | 1 | **TANK #1** |  | 2014-05-29 | 2014-06-04 |  |  |  |
| HHI.1404 |  | Erect & Tack Shell Course # 7 & Install Stagging Brackets | 2d | 2014-05-29 | 2014-05-31 | HHI.1403 SS | 45d | 0d |
| HHI.1412 |  | Quailty Check(Visual Inspection & PT& Air Leak Test for Shell Nozzle & Pad) | 6d | 2014-05-29 | 2014-06-04 | HHI.1411 FF, HHI.1404 SS | 45d | 0d |
| HHI.1405 |  | Weld Outer Vertical Seam /Install the Stairways support on Shell | 1d | 2014-05-31 | 2014-05-31 | HHI.1404 SS+1d | 45d | 0d |
| HHI.1406 |  | Backgouge & NDT Inside Vertical Seam | 1d | 2014-05-31 | 2014-05-31 | HHI.1405 SS | 45d | 0d |
| HHI.1407 |  | Weld Inside Vertical Seam | 1d | 2014-06-01 | 2014-06-01 | HHI.1406 | 45d | 0d |
| HHI.1408 |  | "Weld Outer Horizontal Seam between / Shell Course # 6 & 7" | 1d | 2014-06-02 | 2014-06-02 | HHI.1407 | 45d | 0d |
| HHI.1409 |  | "Backgouge & NDT Inside Horizontal / Seam between Shell Course# 6 & 7" | 1d | 2014-06-03 | 2014-06-03 | HHI.1408 | 45d | 0d |
| HHI.1410 |  | Weld Inner Horizontal Seam between / Shell Course # 6 & 7" | 1d | 2014-06-04 | 2014-06-04 | HHI.1409 | 45d | 0d |
| HHI.1411 |  | Fit,Weld Nozzle on Shell | 1d | 2014-06-04 | 2014-06-04 | HHI.1410 SS | 45d | 0d |
|  | 2 | **TANK #2** |  | 2014-06-05 | 2014-06-11 |  |  |  |
| HHI.1413 |  | Erect & Tack Shell Course # 7 & Install Stagging Brackets | 2d | 2014-06-05 | 2014-06-07 | HHI.1412 | 45d | 0d |
| HHI.1421 |  | Quailty Check(Visual Inspection & PT for Shell Nozzle & Pad) | 6d | 2014-06-05 | 2014-06-11 | HHI.1413 SS, HHI.1420 FF | 45d | 0d |
| HHI.1414 |  | Weld Outer Vertical Seam /Install the Stairways support on Shell | 1d | 2014-06-07 | 2014-06-07 | HHI.1413 SS+1d | 45d | 0d |
| HHI.1415 |  | Backgouge & NDT Inside Vertical Seam | 1d | 2014-06-07 | 2014-06-07 | HHI.1414 SS | 45d | 0d |
| HHI.1416 |  | Weld Inside Vertical Seam | 1d | 2014-06-08 | 2014-06-08 | HHI.1415 | 45d | 0d |
| HHI.1417 |  | "Weld Outer Horizontal Seam between / Shell Course # 6 & 7" | 1d | 2014-06-09 | 2014-06-09 | HHI.1416 | 45d | 0d |
| HHI.1418 |  | "Backgouge & NDT Inside Horizontal / Seam between Shell Course#6 & 7" | 1d | 2014-06-10 | 2014-06-10 | HHI.1417 | 45d | 0d |
| HHI.1419 |  | Weld Inner Horizontal Seam between / Shell Course #6 & 7" | 1d | 2014-06-11 | 2014-06-11 | HHI.1418 | 45d | 0d |
| HHI.1420 |  | Fit,Weld Nozzle on Shell | 1d | 2014-06-11 | 2014-06-11 | HHI.1419 SS | 45d | 0d |

| ID | WBS | Activity | Duration | Start | Finish | Predecessors | Total float | Free float |
| --- | --- | --- | --- | --- | --- | --- | --- | --- |
|  | 3 | **RT FOR SHELL COURSE #7 JOINTS** |  | 2014-06-12 | 2014-06-12 |  |  |  |
| HHI.1422 |  | Perform RT for Tank#1 & #2 | 1d | 2014-06-12 | 2014-06-12 | HHI.1421 | 45d | 0d |
|  | 1 | **TANK #1 (ROOF STRUCTURES/PLATES ASSEMBLY WITH TOP ANGLE ,PLATFROMS/STAIRWAYS & INTERNAL PIPING)** |  | 2014-06-12 | 2014-07-16 |  |  |  |
|  | 1 | **TOP CURB ANGLE** |  | 2014-06-12 | 2014-06-17 |  |  |  |
| HHI.1423 |  | Fit & Tack / Shell Course # 7 & Top Curb Angle | 2d | 2014-06-12 | 2014-06-14 | HHI.1422 SS | 45d | 0d |
| HHI.1429 |  | Quailty Check (Visual Inspection) | 5d | 2014-06-12 | 2014-06-17 | HHI.1427 FF, HHI.1423 SS | 45d | 0d |
| HHI.1424 |  | Weld Outer Horizontal Seam between / Shell Course # 7 & Top Curb Angle | 1d | 2014-06-15 | 2014-06-15 | HHI.1423 | 46d | 0d |
| HHI.1425 |  | Backgouge & NDT Inside Horizontal / Seam between Shell Course# 7 & Top Curb Angle | 1d | 2014-06-15 | 2014-06-15 | HHI.1424 SS | 46d | 1d |
| HHI.1426 |  | Fit up,Tack of Gusset Plates to Shell | 2d | 2014-06-15 | 2014-06-16 | HHI.1423 | 45d | 0d |
| HHI.1427 |  | Weld Inner Horizontal Seam between / Shell Course # 7 & Top Curb Angle | 1d | 2014-06-17 | 2014-06-17 | HHI.1428 SS, HHI.1425 | 45d | 0d |
| HHI.1428 |  | Welding of Gusset Plates | 1d | 2014-06-17 | 2014-06-17 | HHI.1426 | 45d | 0d |
|  | 2 | **GIRDERS** |  | 2014-06-15 | 2014-06-16 |  |  |  |
| HHI.1430 |  | Erect,Laydown & install Girders to Columns (2 Layers ,15 Girders) | 2d | 2014-06-15 | 2014-06-16 | HHI.1429 SS+2d | 45d | 0d |
|  | 3 | **RAFTERS** |  | 2014-06-16 | 2014-06-24 |  |  |  |
| HHI.1431 |  | Erect,Lay Down & Install the Rafters (170 Rafters)/Install Internal Piping Brackets/Piping | 8d | 2014-06-16 | 2014-06-24 | HHI.1430 SS+1d | 45d | 0d |
|  | 4 | **ROOF PLATES/ROOF MANHOLES(M4,M3) & NOZZLES (N1,N2,V1,V2,H)** |  | 2014-06-19 | 2014-07-08 |  |  |  |
| HHI.1432 |  | Prepare/Lay Down Roof Plates (80 Plates) | 6d | 2014-06-19 | 2014-06-25 | HHI.1431 SS+3d | 45d | 0d |
| HHI.1433 |  | Tacking of Roof Plates | 6d | 2014-06-19 | 2014-06-25 | HHI.1432 SS | 45d | 0d |
| HHI.1440 |  | Quailty Check (Visual Inspection& Vaccum Box Test,PT,Air Leak Test for Roof Manholes& Nozzles)) | 13d | 2014-06-19 | 2014-07-08 | HHI.1431 SS+3d, HHI.1439 FF | 45d | 0d |
| HHI.1434 |  | Welding of Roof Plates (Short Seams) | 2d | 2014-06-22 | 2014-06-23 | HHI.1433 SS+2d | 45d | 0d |
| HHI.1435 |  | Welding of Roof Plates (Long Seams) | 5d | 2014-06-24 | 2014-07-01 | HHI.1434 | 45d | 0d |
| HHI.1436 |  | Tack of Roof Plates to Curb Angle | 2d | 2014-06-26 | 2014-06-29 | HHI.1433 | 46d | 1d |
| HHI.1437 |  | Welding of Roof Plates to Curb Angle | 2d | 2014-07-01 | 2014-07-05 | HHI.1436, HHI.1435 | 45d | 0d |
| HHI.1438 |  | Fit,Weld Manholes ,Nozzles on Roof /install Top Platform Supports on Roof | 2d | 2014-07-05 | 2014-07-08 | HHI.1437 SS+2d | 45d | 0d |
| HHI.1439 |  | Weld Internal Piping to Nozzle N1 | 1d | 2014-07-07 | 2014-07-08 | HHI.1438 SS+1d | 45d | 0d |

Notes:
- HHI.1430: Steps: 1st Group 5 girders; 2nd Group 10 girders

| ID | WBS | Activity | Duration | Start | Finish | Predecessors | Total float | Free float |
| --- | --- | --- | --- | --- | --- | --- | --- | --- |
|  | 6 | **PLATFORMS & STAIRWAYS ASSEMBLY** |  | 2014-07-09 | 2014-07-16 |  |  |  |
| HHI.1441 |  | Erect & Install Stairways & Platforms for Shell | 2d | 2014-07-09 | 2014-07-13 | HHI.1440 | 45d | 0d |
| HHI.1442 |  | Erect & Install Stairways & Platforms & Handrails for Roof | 2d | 2014-07-13 | 2014-07-16 | HHI.1441 | 45d | 0d |
| HHI.1443 |  | Quality Check | 1d | 2014-07-13 | 2014-07-14 | HHI.1442 SS | 45d | 0d |
|  | 9 | **TANK #2 (ROOF STRUCTURES/PLATES ASSEMBLY WITH TOP ANGLE ,PLATFROMS/STAIRWAYS & INTERNAL PIPING)-1** |  | 2014-07-15 | 2014-08-16 |  |  |  |
|  | 1 | **TOP CURB ANGLE** |  | 2014-07-15 | 2014-07-24 |  |  |  |
| HHI.1444 |  | "Fit & Tack / Shell Course # 7 & Top Curb Angle | 2d | 2014-07-15 | 2014-07-19 | HHI.1443 | 63d | 0d |
| HHI.1450 |  | Quailty Check (Visual Inspection) | 5d | 2014-07-15 | 2014-07-24 | HHI.1444 SS, HHI.1448 FF | 63d | 0d |
| HHI.1445 |  | Weld Outer Horizontal Seam between / Shell Course # 7 & Top Curb Angle | 1d | 2014-07-19 | 2014-07-20 | HHI.1444 | 64d | 0d |
| HHI.1446 |  | "Backgouge & NDT Inside Horizontal / Seam between Shell Course# 7 & Top Curb Angle | 1d | 2014-07-19 | 2014-07-20 | HHI.1445 SS | 64d | 1d |
| HHI.1447 |  | Fit up,Tack of Gusset Plates to Shell | 2d | 2014-07-19 | 2014-07-22 | HHI.1444 | 63d | 0d |
| HHI.1448 |  | Weld Inner Horizontal Seam between / Shell Course # 7 & Top Curb Angle | 1d | 2014-07-22 | 2014-07-24 | HHI.1446, HHI.1449 SS | 63d | 0d |
| HHI.1449 |  | Welding of Gusset Plates | 1d | 2014-07-22 | 2014-07-24 | HHI.1447 | 63d | 0d |
|  | 2 | **GIRDERS** |  | 2014-07-19 | 2014-07-22 |  |  |  |
| HHI.1451 |  | Erect,Laydown & install Girders to Columns (2 Layers ,15 Girders) | 2d | 2014-07-19 | 2014-07-22 | HHI.1450 SS+2d | 63d | 0d |
|  | 3 | **RAFTERS** |  | 2014-07-21 | 2014-08-03 |  |  |  |
| HHI.1452 |  | Erect,Lay Down & Install the Rafters (170 Rafters)/ Install Internal Piping Brackets/Piping | 8d | 2014-07-21 | 2014-08-03 | HHI.1451 SS+1d | 63d | 0d |
|  | 4 | **ROOF PLATES/ROOF MANHOLES(M4,M3) & NOZZLES (N1,N2,V1,V2,H)** |  | 2014-07-27 | 2014-08-12 |  |  |  |
| HHI.1453 |  | Prepare/Lay Down Roof Plates (80 Plates) | 6d | 2014-07-27 | 2014-08-04 | HHI.1452 SS+3d | 63d | 0d |
| HHI.1454 |  | Tacking of Roof Plates | 6d | 2014-07-27 | 2014-08-04 | HHI.1453 SS | 63d | 0d |
| HHI.1461 |  | Quailty Check (Visual Inspection& Vaccum Box Test,PT,Air Leak Test for Roof Manholes& Nozzles)) | 13d | 2014-07-27 | 2014-08-12 | HHI.1460 FF, HHI.1453 SS | 63d | 0d |
| HHI.1455 |  | Welding of Roof Plates (Short Seams) | 2d | 2014-07-31 | 2014-08-02 | HHI.1454 SS+2d | 63d | 0d |
| HHI.1456 |  | Welding of Roof Plates (Long Seams) | 5d | 2014-08-02 | 2014-08-07 | HHI.1455 | 63d | 0d |
| HHI.1457 |  | Tack of Roof Plates to Curb Angle | 2d | 2014-08-04 | 2014-08-06 | HHI.1454 | 64d | 1d |
| HHI.1458 |  | Welding of Roof Plates to Curb Angle | 2d | 2014-08-07 | 2014-08-10 | HHI.1456, HHI.1457 | 63d | 0d |
| HHI.1459 |  | Fit,Weld Manholes ,Nozzles on Roof /install Top Platform Supports on Roof | 2d | 2014-08-10 | 2014-08-12 | HHI.1458 SS+2d | 63d | 0d |
| HHI.1460 |  | Weld Internal Piping to Nozzle N1 | 1d | 2014-08-11 | 2014-08-12 | HHI.1459 SS+1d | 63d | 0d |

Notes:
- HHI.1451: Steps: 1st Group 5 girders; 2nd Group 10 girders

| ID | WBS | Activity | Duration | Start | Finish | Predecessors | Total float | Free float |
| --- | --- | --- | --- | --- | --- | --- | --- | --- |
|  | 6 | **PLATFORMS & STAIRWAYS ASSEMBLY** |  | 2014-08-12 | 2014-08-16 |  |  |  |
| HHI.1462 |  | Erect & Install Stairways & Platforms for Shell | 2d | 2014-08-12 | 2014-08-14 | HHI.1461 | 63d | 0d |
| HHI.1463 |  | Erect & Install Stairways & Platforms & Handrails for Roof | 2d | 2014-08-14 | 2014-08-16 | HHI.1462 | 63d | 0d |
| HHI.1464 |  | Quality Check | 1d | 2014-08-14 | 2014-08-15 | HHI.1463 SS | 63d | 0d |
|  | 19 | **MCC** |  | 2014-07-15 | 2014-08-17 |  |  |  |
|  | 1 | **TANK #1** |  | 2014-07-15 | 2014-07-19 |  |  |  |
| HHI.1465 |  | Mechanical Completion (MCC) & Final Isnpection Before Hydrotesting | 2d | 2014-07-15 | 2014-07-19 | HHI.1443 | 45d | 0d |
|  | 2 | **TANK #2** |  | 2014-08-15 | 2014-08-17 |  |  |  |
| HHI.1466 |  | Mechanical Completion (MCC) & Final Inspection Before Hydrotesting | 2d | 2014-08-15 | 2014-08-17 | HHI.1464 | 63d | 0d |
|  | 3 | **HYDROTESTING,PAINTING ,ATTACHMENTS/VALVES/INSTRUMENTS INSTALLATION** |  | 2014-07-15 | 2015-02-03 |  |  |  |
|  | 13 | **HYDROTESTING** |  | 2014-07-15 | 2014-12-21 |  |  |  |
|  | 1 | **TANK #1** |  | 2014-07-15 | 2014-11-26 |  |  |  |
| HHI.1467 |  | Remove Stagging Blanks/Brackets & Install Blind Flanges | 2d | 2014-07-15 | 2014-07-19 | HHI.1465 SS | 45d |  |
| HHI.1468 |  | Tank Water Filling & Settlement from Service & Fire Water Tanks | 38d | 2014-09-11 | 2014-10-28 | HHI.1467, HHI.1229 SS+1d, HHI.1235 FF | 0d |  |
| HHI.1469 |  | Hold & Inspect Water for 24 Hours | 1d | 2014-10-28 | 2014-10-29 | HHI.1468 | 0d |  |
| HHI.1470 |  | Drain Water from Tank & Transfer to Desanilated water Tank#2 | 19d | 2014-10-29 | 2014-11-20 | HHI.1469 | 0d |  |
| HHI.1471 |  | Build Mobile Scaffolding,Internal CLeaning&Dismantling | 4d | 2014-11-20 | 2014-11-25 | HHI.1470 | 22d | 0d |
| HHI.1472 |  | Quailty Check | 1d | 2014-11-25 | 2014-11-26 | HHI.1471 | 22d | 0d |
|  | 2 | **TANK #2** |  | 2014-08-15 | 2014-12-21 |  |  |  |
| HHI.1473 |  | Remove Stagging Blanks/Brackets & Install Blind Flanges | 2d | 2014-08-15 | 2014-08-17 | HHI.1466 SS | 63d |  |
| HHI.1474 |  | Tank Water Filling/Settlement from Desanilated Water Tank #1 | 19d | 2014-10-30 | 2014-11-22 | HHI.1473, HHI.1470 SS+1d | 0d |  |
| HHI.1475 |  | Hold & Inspect Water for 24 Hours | 1d | 2014-11-22 | 2014-11-23 | HHI.1474 | 0d |  |
| HHI.1476 |  | Drain Water from Tank & Transfer to Deminarlized water Tanks 1&2 | 19d | 2014-11-23 | 2014-12-15 | HHI.1475 | 0d |  |
| HHI.1477 |  | Build Mobile Scaffolding,Internal CLeaning&Dismantling/Quailty Check | 5d | 2014-12-15 | 2014-12-21 | HHI.1476 | 0d |  |

| ID | WBS | Activity | Duration | Start | Finish | Predecessors | Total float | Free float |
| --- | --- | --- | --- | --- | --- | --- | --- | --- |
|  | 3 | **ROOF COLUMNS WELDING & FINAL ALIGNMENT** |  | 2014-11-25 | 2014-12-22 |  |  |  |
|  | 1 | **TANK#1** |  | 2014-11-25 | 2014-11-27 |  |  |  |
| HHI.1478 |  | Weld & Align Roof Columns | 2d | 2014-11-25 | 2014-11-27 | HHI.1472 SS | 22d | 0d |
|  | 2 | **TANK#2** |  | 2014-12-20 | 2014-12-22 |  |  |  |
| HHI.1479 |  | Weld & Align Roof Columns | 2d | 2014-12-20 | 2014-12-22 | HHI.1477 SS+4d | 0d |  |
|  | 28 | **TANK ATTACHMENTS** |  | 2014-11-25 | 2014-12-21 |  |  |  |
|  | 1 | **TANK #1** |  | 2014-11-25 | 2014-11-26 |  |  |  |
| HHI.1480 |  | Install Name Plate/Attachments on shell Course #1 | 1d | 2014-11-25 | 2014-11-26 | HHI.1478 SS | 22d | 0d |
|  | 2 | **TANK #2** |  | 2014-12-20 | 2014-12-21 |  |  |  |
| HHI.1481 |  | Install Name Plate/Attachments on shell Course #1 | 1d | 2014-12-20 | 2014-12-21 | HHI.1479 SS | 0d |  |
|  | 14 | **TANK#1 BLASTING/PAINTING** |  | 2014-11-26 | 2015-01-08 |  |  |  |
|  | 10 | **EXTERNAL SURFACE PAINTING** |  | 2014-11-26 | 2014-12-07 |  |  |  |
| HHI.1482 |  | Perform Shell Surface Preparation & Painting | 5d | 2014-11-26 | 2014-12-02 | HHI.1480 | 22d | 0d |
| HHI.1484 |  | Quailty Check | 9d | 2014-11-26 | 2014-12-07 | HHI.1483 FF, HHI.1482 SS | 23d | 1d |
| HHI.1483 |  | Perform Roof Surface Preparation & Painting | 4d | 2014-12-02 | 2014-12-07 | HHI.1482 | 23d | 0d |
|  | 12 | **INTERNAL SURFACE PAINTING** |  | 2014-11-26 | 2015-01-08 |  |  |  |
| HHI.1485 |  | Install Scaffoldings | 10d | 2014-11-26 | 2014-12-08 | HHI.1482 SS | 22d | 0d |
| HHI.1486 |  | Perform Roof Underside Surface Preparation & Painting | 8d | 2014-12-08 | 2014-12-17 | HHI.1484, HHI.1485 | 22d | 0d |
| HHI.1490 |  | Quailty Check (including Holiday Test) | 27d | 2014-12-08 | 2015-01-08 | HHI.1486 SS, HHI.1489 FF | 22d | 0d |
| HHI.1487 |  | Perform Shell course Surface Preparation & Painting | 10d | 2014-12-17 | 2014-12-29 | HHI.1486 | 22d | 0d |
| HHI.1488 |  | Dismantle Scaffoldings | 5d | 2014-12-29 | 2015-01-04 | HHI.1487 | 22d | 0d |
| HHI.1489 |  | Perform Bottom Surface Preparation & Painting | 4d | 2015-01-04 | 2015-01-08 | HHI.1488 | 22d | 0d |
|  | 1 | **TANK#2 BLASTING/PAINTING** |  | 2014-12-21 | 2015-02-03 |  |  |  |
|  | 10 | **EXTERNAL SURFACE PAINTING** |  | 2014-12-21 | 2014-12-31 |  |  |  |
| HHI.1491 |  | Perform Shell Surface Preparation & Painting | 5d | 2014-12-21 | 2014-12-27 | HHI.1481 | 0d |  |
| HHI.1493 |  | Quailty Check | 9d | 2014-12-21 | 2014-12-31 | HHI.1492 FF, HHI.1491 SS | 1d |  |
| HHI.1492 |  | Perform Roof Surface Preparation & Painting | 4d | 2014-12-27 | 2014-12-31 | HHI.1491 | 1d | 0d |

Notes:
- HHI.1482: Description: ï»¿ / SA for Shells for 1 coat=2500 M2 (1 painter could perform 1250 / M2/day)
- HHI.1491: Description: ï»¿ / SA for Shells for 1 coat=2500 M2 (1 painter could perform 1250 / M2/day)

| ID | WBS | Activity | Type | Duration | Start | Finish | Predecessors | Total float | Free float | Constraint |
| --- | --- | --- | --- | --- | --- | --- | --- | --- | --- | --- |
|  | 12 | **INTERNAL SURFACE PAINTING** |  |  | 2014-12-21 | 2015-02-03 |  |  |  |  |
| HHI.1494 |  | Install Scaffoldings |  | 10d | 2014-12-21 | 2015-01-01 | HHI.1491 SS | 0d |  |  |
| HHI.1495 |  | Perform Roof Underside Surface Preparation & Painting |  | 8d | 2015-01-01 | 2015-01-11 | HHI.1493, HHI.1494 | 0d |  |  |
| HHI.1499 |  | Quailty Check (including Holiday Test) |  | 27d | 2015-01-03 | 2015-02-03 | HHI.1495 SS, HHI.1498 FF | 0d |  |  |
| HHI.1496 |  | Perform Shell course Surface Preparation & Painting |  | 10d | 2015-01-11 | 2015-01-22 | HHI.1495 | 0d |  |  |
| HHI.1497 |  | Dismantle Scaffoldings |  | 5d | 2015-01-22 | 2015-01-28 | HHI.1496 | 0d |  |  |
| HHI.1498 |  | Perform Bottom Surface Preparation & Painting |  | 5d | 2015-01-28 | 2015-02-03 | HHI.1497 | 0d |  |  |
|  | 6 | **TANKS VALVES,INSTRUMENTS & INTERNAL CATHODIC PROTECTION** |  |  | 2015-01-08 | 2015-02-04 |  |  |  |  |
|  | 1 | **TANK#1** |  |  | 2015-01-08 | 2015-01-10 |  |  |  |  |
| JF752.1500 |  | Install Valves,instruments (Supplied by client) |  | 1d | 2015-01-08 | 2015-01-10 | HHI.1490 | 22d | 0d |  |
|  | 2 | **TANK #2** |  |  | 2015-02-03 | 2015-02-04 |  |  |  |  |
| JF752.1501 |  | Install Valves,instruments (Supplied by client) |  | 1d | 2015-02-03 | 2015-02-04 | HHI.1499 | 0d |  |  |
|  | 5 | **FINAL INSPECTION & HANDOVER TO CLIENT** |  |  | 2015-01-10 | 2015-02-05 |  |  |  |  |
|  | 1 | **TANK#1** |  |  | 2015-01-10 | 2015-01-11 |  |  |  |  |
| HHI.1502 |  | Perform Final Inspection & Handover to CLient |  | 1d | 2015-01-10 | 2015-01-11 | JF752.1500 | 22d |  |  |
|  | 2 | **TANK#2** |  |  | 2015-02-04 | 2015-02-05 |  |  |  |  |
| HHI.1503 |  | Perform Final Inspection & Handover to CLient |  | 1d | 2015-02-04 | 2015-02-05 | JF752.1501 | 0d |  |  |
|  | GHC | **Deminarlized Water Tanks TANK#1(10GHC11BB001)& TANK#2(10GHC12BB001) (27.190 MTR D x 19.51 Mtr H)** |  |  | 2014-03-01 | 2015-01-24 |  |  |  |  |
|  | 1 | **Tank Foundation Handover To AZ** |  |  | 2014-03-01 | 2014-03-12 |  |  |  |  |
| HHI.1504 |  | HHI Hand over Tank#1(10GHE11BB001) Foundation to AZ | milestone | 0d | 2014-03-01 | 2014-03-01 |  | 0d |  | start on 2014-03-01 |
| HHI.1505 |  | AZ Check Tank#1 Foundation Levelness prior to Mechanical Works |  | 1d | 2014-03-01 | 2014-03-01 | HHI.1504 SS | 49d | 0d |  |
| HHI.1506 |  | HHI Hand over Tank#2(10GHE12BB001) Foundation to AZ | milestone | 0d | 2014-03-12 | 2014-03-12 | HHI.1504 FS+10d | 45d | 0d |  |
| HHI.1507 |  | AZ Check Tank#2 Foundation Levelness prior to Mechanical Works |  | 1d | 2014-03-12 | 2014-03-12 | HHI.1506 SS | 45d | 0d |  |
|  | 2 | **MECHANICAL WORK** |  |  | 2014-03-01 | 2014-10-23 |  |  |  |  |
|  | 16 | **Tank#1** |  |  | 2014-03-01 | 2014-03-15 |  |  |  |  |
|  | 1 | **ANNULAR PLATE WORKS** |  |  | 2014-03-01 | 2014-03-02 |  |  |  |  |
| HHI.1508 |  | Install Sealent,Erect & Tack of Annular Plates |  | 1d | 2014-03-01 | 2014-03-01 | HHI.1505 SS | 49d | 0d |  |
| HHI.1510 |  | Quailty Check (Visual Inspection,PT & Vaccum Box Test) |  | 2d | 2014-03-01 | 2014-03-02 | HHI.1509 FF, HHI.1508 SS | 49d | 0d |  |
| HHI.1509 |  | Welding of Annular Plates |  | 1d | 2014-03-02 | 2014-03-02 | HHI.1508 | 49d | 0d |  |

| ID | WBS | Activity | Duration | Start | Finish | Predecessors | Total float | Free float |
| --- | --- | --- | --- | --- | --- | --- | --- | --- |
|  | 11 | **BOTTOM PLATE WORKS** |  | 2014-03-03 | 2014-03-15 |  |  |  |
| HHI.1511 |  | Prepare & Lay Down Bottom Plates | 2d | 2014-03-03 | 2014-03-04 | HHI.1510 | 49d | 0d |
| HHI.1518 |  | Quailty Check (Visual Inspection& Vaccum Box Test) | 11d | 2014-03-03 | 2014-03-15 | HHI.1511 SS, HHI.1513 FF | 49d | 4d |
| HHI.1514 |  | Fit/Tack Bottom Plates-Short Seams | 2d | 2014-03-06 | 2014-03-08 | HHI.1511 FS+1d | 49d | 0d |
| HHI.1515 |  | Weld Short Seams | 2d | 2014-03-08 | 2014-03-09 | HHI.1514 SS+1d | 49d | 0d |
| HHI.1516 |  | Fit/Tack Bottom Plates-Long Seams | 2d | 2014-03-10 | 2014-03-11 | HHI.1515 | 49d | 0d |
| HHI.1512 |  | Erect,Fitup of Sump | 1d | 2014-03-11 | 2014-03-11 | HHI.1516 SS+1d | 51d | 2d |
| HHI.1517 |  | Weld Long Seams | 4d | 2014-03-11 | 2014-03-15 | HHI.1516 SS+1d | 49d | 0d |
| HHI.1513 |  | Weld Sump | 1d | 2014-03-15 | 2014-03-15 | HHI.1512, HHI.1517 SS+3d | 49d | 0d |
|  | 26 | **Tank#2** |  | 2014-03-12 | 2014-03-26 |  |  |  |
|  | 1 | **ANNULAR PLATE WORKS** |  | 2014-03-12 | 2014-03-13 |  |  |  |
| HHI.1519 |  | Install Sealent,Erect & Tack of Annular Plates | 1d | 2014-03-12 | 2014-03-12 | HHI.1518 SS+4d, HHI.1507 SS | 45d | 0d |
| HHI.1521 |  | Quailty Check (Visual Inspection,PT & Vaccum Box Test) | 2d | 2014-03-12 | 2014-03-13 | HHI.1520 FF, HHI.1519 SS | 45d | 0d |
| HHI.1520 |  | Welding of Annular Plates | 1d | 2014-03-13 | 2014-03-13 | HHI.1519 | 45d | 0d |
|  | 2 | **RT FOR ANNULAR PLATES WELD JOINTS** |  | 2014-03-15 | 2014-03-15 |  |  |  |
| HHI.1522 |  | Perform RT for Tank#1 & #2 | 1d | 2014-03-15 | 2014-03-15 | HHI.1521 | 45d | 0d |
|  | 13 | **BOTTOM PLATE WORKS** |  | 2014-03-15 | 2014-03-26 |  |  |  |
| HHI.1523 |  | Prepare & Lay Down Bottom Plates | 2d | 2014-03-15 | 2014-03-16 | HHI.1522 SS | 45d | 0d |
| HHI.1530 |  | Quailty Check (Visual Inspection& Vaccum Box Test) | 11d | 2014-03-15 | 2014-03-26 | HHI.1529 FF, HHI.1523 SS | 45d | 0d |
| HHI.1524 |  | Fit/Tack Bottom Plates-Short Seams | 2d | 2014-03-18 | 2014-03-19 | HHI.1523 FS+1d | 45d | 0d |
| HHI.1525 |  | Weld Short Seams | 2d | 2014-03-19 | 2014-03-20 | HHI.1524 SS+1d | 45d | 0d |
| HHI.1526 |  | Fit/Tack Bottom Plates-Long Seams | 2d | 2014-03-22 | 2014-03-23 | HHI.1525 | 45d | 0d |
| HHI.1527 |  | Erect,Fitup of Sump | 1d | 2014-03-23 | 2014-03-23 | HHI.1526 SS+1d | 47d | 2d |
| HHI.1528 |  | Weld Long Seams | 4d | 2014-03-23 | 2014-03-26 | HHI.1526 SS+1d | 45d | 0d |
| HHI.1529 |  | Weld Sump | 1d | 2014-03-26 | 2014-03-26 | HHI.1527, HHI.1528 SS+3d | 45d | 0d |

| ID | WBS | Activity | Duration | Start | Finish | Predecessors | Total float | Free float |
| --- | --- | --- | --- | --- | --- | --- | --- | --- |
|  | 3 | **SHELL COURSE #1/MANHOLE (M1) & NOZZLES(N4,N6,N7,N8,N10)WORKS** |  | 2014-03-27 | 2014-04-10 |  |  |  |
|  | 1 | **TANK #1** |  | 2014-03-27 | 2014-04-02 |  |  |  |
| HHI.1531 |  | Erect & Tack Shell Course # 1 & Install Stagging Brackets | 2d | 2014-03-27 | 2014-03-29 | HHI.1530 | 45d | 0d |
| HHI.1537 |  | Quailty Check(Visual Inspection & PT,Air Leak Test for Shell Manholes& Nozzles) | 6d | 2014-03-27 | 2014-04-02 | HHI.1536 FF, HHI.1531 SS | 45d | 0d |
| HHI.1532 |  | Weld Outer Vertical Seam/Install the Stairways support on Shell | 1d | 2014-03-29 | 2014-03-29 | HHI.1533 SS | 46d | 0d |
| HHI.1533 |  | Fit up/Tack Shell #1 to Annular Plate | 1d | 2014-03-29 | 2014-03-29 | HHI.1531 SS+1d | 46d | 0d |
| HHI.1534 |  | Backgouge,Grinding & NDT Inside Vertical Seam | 1d | 2014-03-30 | 2014-03-30 | HHI.1532 | 46d | 0d |
| HHI.1535 |  | Weld Inside Vertical Seam | 1d | 2014-03-31 | 2014-03-31 | HHI.1534 | 46d | 0d |
| HHI.1536 |  | Fit,Weld for Manhole ,Nozzles on Shell | 2d | 2014-03-31 | 2014-04-01 | HHI.1535 SS | 46d | 1d |
|  | 2 | **TANK #2** |  | 2014-04-03 | 2014-04-09 |  |  |  |
| HHI.1538 |  | Erect & Tack Shell Course # 1 &Install Stagging Brackets | 2d | 2014-04-03 | 2014-04-05 | HHI.1537 | 45d | 0d |
| HHI.1544 |  | Quailty Check(Visual Inspection PT,Air Leak Test for Shell Manholes& Nozzles) | 6d | 2014-04-03 | 2014-04-09 | HHI.1538 SS, HHI.1543 FF | 45d | 0d |
| HHI.1539 |  | Weld Outer Vertical Seam/Install the Stairways support on Shell | 1d | 2014-04-05 | 2014-04-05 | HHI.1540 SS | 46d | 0d |
| HHI.1540 |  | Fit up/Tack Shell #1 to Annular Plate | 1d | 2014-04-05 | 2014-04-05 | HHI.1538 SS+1d | 46d | 0d |
| HHI.1541 |  | Backgouge,Grinding & NDT Inside Vertical Seam | 1d | 2014-04-06 | 2014-04-06 | HHI.1539 | 46d | 0d |
| HHI.1542 |  | Weld Inside Vertical Seam | 1d | 2014-04-07 | 2014-04-07 | HHI.1541 | 46d | 0d |
| HHI.1543 |  | Fit,Weld for Manhole ,Nozzles on Shell | 2d | 2014-04-07 | 2014-04-08 | HHI.1542 SS | 46d | 1d |
|  | 3 | **RT FOR SHELL COURSE #1 JOINTS** |  | 2014-04-10 | 2014-04-10 |  |  |  |
| HHI.1545 |  | Perform RT for Tank#1 & #2 | 1d | 2014-04-10 | 2014-04-10 | HHI.1544 | 45d | 0d |
|  | 4 | **SHELL COURSE#2 WORKS** |  | 2014-04-10 | 2014-05-08 |  |  |  |
|  | 1 | **TANK #1** |  | 2014-04-10 | 2014-04-23 |  |  |  |
| HHI.1546 |  | Erect & Tack Shell Course # 2 & Install Stagging Brackets | 1d | 2014-04-10 | 2014-04-10 | HHI.1545 SS | 45d | 0d |
| HHI.1556 |  | Quailty Check(Visual Inspection) | 12d | 2014-04-10 | 2014-04-23 | HHI.1555 FF, HHI.1546 SS | 45d | 0d |
| HHI.1547 |  | Weld Outer Vertical Seam/Install the Stairways support on Shell | 1d | 2014-04-12 | 2014-04-12 | HHI.1546 | 45d | 0d |
| HHI.1548 |  | Backgouge,Grinding & NDT Inside Vertical Seam | 1d | 2014-04-13 | 2014-04-13 | HHI.1547 | 45d | 0d |
| HHI.1549 |  | Weld Inside Vertical Seam | 1d | 2014-04-14 | 2014-04-14 | HHI.1548 | 45d | 0d |
| HHI.1550 |  | "Weld Outer Horizontal Seam between / Shell Course # 1 & 2" | 2d | 2014-04-15 | 2014-04-16 | HHI.1549 | 45d | 0d |
| HHI.1551 |  | "Backgouge & NDT Inside Horizontal / Seam between Shell Course# 1 & 2" | 1d | 2014-04-17 | 2014-04-17 | HHI.1550 | 45d | 0d |
| HHI.1552 |  | Weld Inner Horizontal Seam between / Shell Course # 1 & 2" | 2d | 2014-04-19 | 2014-04-20 | HHI.1551 | 45d | 0d |
| HHI.1553 |  | Weld Shell Course# 1 to Annular Plate (from inside) | 1d | 2014-04-21 | 2014-04-21 | HHI.1552 | 45d | 0d |
| HHI.1554 |  | Perform PT from inside,Complete the welding from outside & Perform Vaccum Box Testing | 1d | 2014-04-22 | 2014-04-22 | HHI.1553 | 45d | 0d |
| HHI.1555 |  | Weld Bottom Sketch Plates to Annular Plate | 1d | 2014-04-23 | 2014-04-23 | HHI.1554 | 45d | 0d |

| ID | WBS | Activity | Duration | Start | Finish | Predecessors | Total float | Free float |
| --- | --- | --- | --- | --- | --- | --- | --- | --- |
|  | 2 | **TANK #2** |  | 2014-04-24 | 2014-05-07 |  |  |  |
| HHI.1557 |  | Erect & Tack Shell Course # 2& Install Stagging Brackets | 1d | 2014-04-24 | 2014-04-24 | HHI.1556 | 45d | 0d |
| HHI.1567 |  | Quailty Check(Visual Inspection) | 12d | 2014-04-24 | 2014-05-07 | HHI.1557 SS, HHI.1566 FF | 45d | 0d |
| HHI.1558 |  | Weld Outer Vertical Seam/Install the Stairways support on Shell | 1d | 2014-04-26 | 2014-04-26 | HHI.1557 | 45d | 0d |
| HHI.1559 |  | Backgouge,Grinding & NDT Inside Vertical Seam | 1d | 2014-04-27 | 2014-04-27 | HHI.1558 | 45d | 0d |
| HHI.1560 |  | Weld Inside Vertical Seam | 1d | 2014-04-28 | 2014-04-28 | HHI.1559 | 45d | 0d |
| HHI.1561 |  | "Weld Outer Horizontal Seam between / Shell Course # 1 & 2" | 2d | 2014-04-29 | 2014-04-30 | HHI.1560 | 45d | 0d |
| HHI.1562 |  | "Backgouge & NDT Inside Horizontal / Seam between Shell Course# 1 & 2" | 1d | 2014-05-01 | 2014-05-01 | HHI.1561 | 45d | 0d |
| HHI.1563 |  | Weld Inner Horizontal Seam between / Shell Course # 1 & 2" | 2d | 2014-05-03 | 2014-05-04 | HHI.1562 | 45d | 0d |
| HHI.1564 |  | Weld Shell Course# 1 to Annular Plate (from inside) | 1d | 2014-05-05 | 2014-05-05 | HHI.1563 | 45d | 0d |
| HHI.1565 |  | Perform PT from inside,Complete the welding from outside & Perform Vaccum Box Testing | 1d | 2014-05-06 | 2014-05-06 | HHI.1564 | 45d | 0d |
| HHI.1566 |  | Weld Bottom Sketch Plates to Annular Plate | 1d | 2014-05-07 | 2014-05-07 | HHI.1565 | 45d | 0d |
|  | 3 | **RT FOR SHELL COURSE #2 JOINTS** |  | 2014-05-08 | 2014-05-08 |  |  |  |
| HHI.1568 |  | Perform RT for Tank#1 & #2 | 1d | 2014-05-08 | 2014-05-08 | HHI.1567 | 45d | 0d |
|  | 5 | **SHELL COURSE#3 WORKS** |  | 2014-05-08 | 2014-05-19 |  |  |  |
|  | 1 | **TANK #1** |  | 2014-05-08 | 2014-05-15 |  |  |  |
| HHI.1569 |  | Erect & Tack Shell Course # 3 & Install Stagging Brackets | 1d | 2014-05-08 | 2014-05-08 | HHI.1568 SS | 45d | 0d |
| HHI.1576 |  | Quailty Check(Visual Inspection) | 7d | 2014-05-08 | 2014-05-15 | HHI.1569 SS, HHI.1575 FF | 45d | 0d |
| HHI.1570 |  | Weld Outer Vertical Seam/Install the Stairways support on Shell | 1d | 2014-05-10 | 2014-05-10 | HHI.1569 | 45d | 0d |
| HHI.1571 |  | Backgouge & NDT Inside Vertical Seam | 1d | 2014-05-11 | 2014-05-11 | HHI.1570 | 45d | 0d |
| HHI.1572 |  | Weld Inside Vertical Seam | 1d | 2014-05-12 | 2014-05-12 | HHI.1571 | 45d | 0d |
| HHI.1573 |  | Weld Outer Horizontal Seam between / Shell Course # 2 & 3" | 1d | 2014-05-13 | 2014-05-13 | HHI.1572 | 45d | 0d |
| HHI.1574 |  | Backgouge & NDT Inside Horizontal / Seam between Shell Course# 2 & 3" | 1d | 2014-05-14 | 2014-05-14 | HHI.1573 | 45d | 0d |
| HHI.1575 |  | Weld Inner Horizontal Seam between / Shell Course # 2 & 3" | 1d | 2014-05-15 | 2014-05-15 | HHI.1574 | 45d | 0d |

| ID | WBS | Activity | Duration | Start | Finish | Predecessors | Total float | Free float |
| --- | --- | --- | --- | --- | --- | --- | --- | --- |
|  | 2 | **TANK #2** |  | 2014-05-11 | 2014-05-18 |  |  |  |
| HHI.1577 |  | Erect & Tack Shell Course # 3 & Install Stagging Brackets | 1d | 2014-05-11 | 2014-05-11 | HHI.1576 SS+2d | 45d | 0d |
| HHI.1584 |  | Quailty Check(Visual Inspection) | 7d | 2014-05-11 | 2014-05-18 | HHI.1577 SS, HHI.1583 FF | 45d | 0d |
| HHI.1578 |  | Weld Outer Vertical Seam/Install the Stairways support on Shell | 1d | 2014-05-12 | 2014-05-12 | HHI.1577 | 45d | 0d |
| HHI.1579 |  | Backgouge & NDT Inside Vertical Seam | 1d | 2014-05-13 | 2014-05-13 | HHI.1578 | 45d | 0d |
| HHI.1580 |  | Weld Inside Vertical Seam | 1d | 2014-05-14 | 2014-05-14 | HHI.1579 | 45d | 0d |
| HHI.1581 |  | Weld Outer Horizontal Seam between / Shell Course # 2 & 3" | 1d | 2014-05-15 | 2014-05-15 | HHI.1580 | 45d | 0d |
| HHI.1582 |  | Backgouge & NDT Inside Horizontal / Seam between Shell Course# 2 & 3" | 1d | 2014-05-17 | 2014-05-17 | HHI.1581 | 45d | 0d |
| HHI.1583 |  | Weld Inner Horizontal Seam between / Shell Course # 2 & 3" | 1d | 2014-05-18 | 2014-05-18 | HHI.1582 | 45d | 0d |
|  | 3 | **RT FOR SHELL COURSE #3 JOINTS** |  | 2014-05-19 | 2014-05-19 |  |  |  |
| HHI.1585 |  | Perform RT for Tank#1 & #2 | 1d | 2014-05-19 | 2014-05-19 | HHI.1584 | 45d | 0d |
|  | 6 | **SHELL COURSE#4/WIND GIRDER/NOZZLE (N11) WORKS** |  | 2014-05-19 | 2014-06-10 |  |  |  |
|  | 1 | **TANK #1** |  | 2014-05-19 | 2014-05-26 |  |  |  |
| HHI.1586 |  | Erect & Tack Shell Course # 4 & Install Stagging Brackets | 1d | 2014-05-19 | 2014-05-19 | HHI.1585 SS | 45d | 0d |
| HHI.1594 |  | Quailty Check(Visual Inspection,PT,Air Leak Test for Shell Nozzle) | 7d | 2014-05-19 | 2014-05-26 | HHI.1593 FF, HHI.1586 SS | 45d | 0d |
| HHI.1587 |  | Weld Outer Vertical Seam/Install the Stairways support on Shell | 1d | 2014-05-20 | 2014-05-20 | HHI.1586 | 45d | 0d |
| HHI.1588 |  | Backgouge & NDT Inside Vertical Seam | 1d | 2014-05-21 | 2014-05-21 | HHI.1587 | 45d | 0d |
| HHI.1589 |  | Weld Inside Vertical Seam | 1d | 2014-05-22 | 2014-05-22 | HHI.1588 | 45d | 0d |
| HHI.1590 |  | Weld Outer Horizontal Seam between / Shell Course # 3 & 4" | 1d | 2014-05-24 | 2014-05-24 | HHI.1589 | 45d | 0d |
| HHI.1591 |  | Backgouge & NDT Inside Horizontal / Seam between Shell Course# 3 & 4" | 1d | 2014-05-25 | 2014-05-25 | HHI.1590 | 45d | 0d |
| HHI.1592 |  | Weld Inner Horizontal Seam between / Shell Course # 3 & 4" | 1d | 2014-05-26 | 2014-05-26 | HHI.1591 | 45d | 0d |
| HHI.1593 |  | Fit,Weld Nozzle on Shell | 1d | 2014-05-26 | 2014-05-26 | HHI.1592 SS | 45d | 0d |
|  | 4 | **TANK #1-WIND GIRDER-1** |  | 2014-05-27 | 2014-05-29 |  |  |  |
| HHI.1596 |  | Erect & Tack Wind Girder | 1d | 2014-05-27 | 2014-05-27 | HHI.1594 | 45d | 0d |
| HHI.1598 |  | Quailty Check(Visual Inspection & PT) | 3d | 2014-05-27 | 2014-05-29 | HHI.1597 FF, HHI.1596 SS | 45d | 0d |
| HHI.1597 |  | Weld Wind Girder | 2d | 2014-05-28 | 2014-05-29 | HHI.1596 | 45d | 0d |

| ID | WBS | Activity | Duration | Start | Finish | Predecessors | Total float | Free float |
| --- | --- | --- | --- | --- | --- | --- | --- | --- |
|  | 12 | **TANK #2-WIND GIRDER** |  | 2014-06-07 | 2014-06-09 |  |  |  |
| HHI.1608 |  | Erect & Tack Wind Girder | 1d | 2014-06-07 | 2014-06-07 | HHI.1607 | 45d | 0d |
| HHI.1610 |  | Quailty Check(Visual Inspection & PT) | 3d | 2014-06-07 | 2014-06-09 | HHI.1609 FF, HHI.1608 SS | 45d | 0d |
| HHI.1609 |  | Weld Wind Girder | 2d | 2014-06-08 | 2014-06-09 | HHI.1608 | 45d | 0d |
|  | 2 | **TANK #2** |  | 2014-05-29 | 2014-06-05 |  |  |  |
| HHI.1599 |  | Erect & Tack Shell Course # 4 & Install Stagging Brackets | 1d | 2014-05-29 | 2014-05-29 | HHI.1598 SS+2d | 45d | 0d |
| HHI.1607 |  | Quailty Check(Visual Inspection,PT,Air Leak Test for Shell Nozzle) | 7d | 2014-05-29 | 2014-06-05 | HHI.1599 SS, HHI.1606 FF | 45d | 0d |
| HHI.1600 |  | Weld Outer Vertical Seam/Install the Stairways support on Shell | 1d | 2014-05-31 | 2014-05-31 | HHI.1599 | 45d | 0d |
| HHI.1601 |  | Backgouge & NDT Inside Vertical Seam | 1d | 2014-06-01 | 2014-06-01 | HHI.1600 | 45d | 0d |
| HHI.1602 |  | Weld Inside Vertical Seam | 1d | 2014-06-02 | 2014-06-02 | HHI.1601 | 45d | 0d |
| HHI.1603 |  | Weld Outer Horizontal Seam between / Shell Course # 3 & 4" | 1d | 2014-06-03 | 2014-06-03 | HHI.1602 | 45d | 0d |
| HHI.1604 |  | Backgouge & NDT Inside Horizontal / Seam between Shell Course# 3 & 4" | 1d | 2014-06-04 | 2014-06-04 | HHI.1603 | 45d | 0d |
| HHI.1605 |  | Weld Inner Horizontal Seam between / Shell Course # 3 & 4" | 1d | 2014-06-05 | 2014-06-05 | HHI.1604 | 45d | 0d |
| HHI.1606 |  | Fit,Weld Nozzle on Shell | 1d | 2014-06-05 | 2014-06-05 | HHI.1605 SS | 45d | 0d |
|  | 3 | **RT FOR SHELL COURSE #4 JOINTS** |  | 2014-06-10 | 2014-06-10 |  |  |  |
| HHI.1611 |  | Perform RT for Tank#1 & #2 | 1d | 2014-06-10 | 2014-06-10 | HHI.1610 | 45d | 0d |
|  | 7 | **SHELL COURSE#5/NOZZLE (N9) WORKS** |  | 2014-06-10 | 2014-06-21 |  |  |  |
|  | 1 | **TANK #1** |  | 2014-06-10 | 2014-06-17 |  |  |  |
| HHI.1612 |  | Erect & Tack Shell Course # 5 & Install Stagging Brackets | 1d | 2014-06-10 | 2014-06-10 | HHI.1611 SS | 45d | 0d |
| HHI.1620 |  | Quailty Check(Visual Inspection,PT,Air Leak Test for Shell Nozzle) | 7d | 2014-06-10 | 2014-06-17 | HHI.1612 SS, HHI.1619 FF | 45d | 0d |
| HHI.1613 |  | Weld Outer Vertical Seam/Install the Stairways support on Shell | 1d | 2014-06-11 | 2014-06-11 | HHI.1612 | 45d | 0d |
| HHI.1614 |  | Backgouge & NDT Inside Vertical Seam | 1d | 2014-06-12 | 2014-06-12 | HHI.1613 | 45d | 0d |
| HHI.1615 |  | Weld Inside Vertical Seam | 1d | 2014-06-14 | 2014-06-14 | HHI.1614 | 45d | 0d |
| HHI.1616 |  | "Weld Outer Horizontal Seam between / Shell Course # 4 & 5" | 1d | 2014-06-15 | 2014-06-15 | HHI.1615 | 45d | 0d |
| HHI.1617 |  | "Backgouge & NDT Inside Horizontal / Seam between Shell Course# 4 & 5" | 1d | 2014-06-16 | 2014-06-16 | HHI.1616 | 45d | 0d |
| HHI.1618 |  | Weld Inner Horizontal Seam between / Shell Course # 4 & 5" | 1d | 2014-06-17 | 2014-06-17 | HHI.1617 | 45d | 0d |
| HHI.1619 |  | Fit,Weld Nozzle on Shell | 1d | 2014-06-17 | 2014-06-17 | HHI.1618 SS | 45d | 0d |

| ID | WBS | Activity | Duration | Start | Finish | Predecessors | Total float | Free float |
| --- | --- | --- | --- | --- | --- | --- | --- | --- |
|  | 2 | **TANK #2** |  | 2014-06-12 | 2014-06-19 |  |  |  |
| HHI.1621 |  | Erect & Tack Shell Course # 5 & Install Stagging Brackets | 1d | 2014-06-12 | 2014-06-12 | HHI.1620 SS+2d | 45d | 0d |
| HHI.1629 |  | Quailty Check(Visual Inspection,PT,Air Leak Test for Shell Nozzle) | 7d | 2014-06-12 | 2014-06-19 | HHI.1621 SS, HHI.1628 FF | 45d | 0d |
| HHI.1622 |  | Weld Outer Vertical Seam/Install the Stairways support on Shell | 1d | 2014-06-14 | 2014-06-14 | HHI.1621 | 45d | 0d |
| HHI.1623 |  | Backgouge & NDT Inside Vertical Seam | 1d | 2014-06-15 | 2014-06-15 | HHI.1622 | 45d | 0d |
| HHI.1624 |  | Weld Inside Vertical Seam | 1d | 2014-06-16 | 2014-06-16 | HHI.1623 | 45d | 0d |
| HHI.1625 |  | "Weld Outer Horizontal Seam between / Shell Course # 4 & 5" | 1d | 2014-06-17 | 2014-06-17 | HHI.1624 | 45d | 0d |
| HHI.1626 |  | "Backgouge & NDT Inside Horizontal / Seam between Shell Course# 4 & 5" | 1d | 2014-06-18 | 2014-06-18 | HHI.1625 | 45d | 0d |
| HHI.1627 |  | Weld Inner Horizontal Seam between / Shell Course #4 & 5" | 1d | 2014-06-19 | 2014-06-19 | HHI.1626 | 45d | 0d |
| HHI.1628 |  | Fit,Weld Nozzle on Shell | 1d | 2014-06-19 | 2014-06-19 | HHI.1627 SS | 45d | 0d |
|  | 3 | **RT FOR SHELL COURSE #5 JOINTS** |  | 2014-06-21 | 2014-06-21 |  |  |  |
| HHI.1630 |  | Perform RT for Tank#1 & #2 | 1d | 2014-06-21 | 2014-06-21 | HHI.1629 | 45d | 0d |
|  | 8 | **ROOF COLUMNS WORKS** |  | 2014-06-18 | 2014-06-22 |  |  |  |
|  | 1 | **TANK #1** |  | 2014-06-18 | 2014-06-19 |  |  |  |
| HHI.1631 |  | Erect & Tack Columns | 2d | 2014-06-18 | 2014-06-19 | HHI.1620 | 45d | 0d |
|  | 2 | **TANK #2** |  | 2014-06-21 | 2014-06-22 |  |  |  |
| HHI.1632 |  | Erect & Tack Columns | 2d | 2014-06-21 | 2014-06-22 | HHI.1629 | 52d | 7d |
|  | 9 | **SHELL COURSE#6/WIND GIRDER/NOZZLE (N4) WORKS** |  | 2014-06-21 | 2014-07-22 |  |  |  |
|  | 1 | **TANK #1** |  | 2014-06-21 | 2014-06-29 |  |  |  |
| HHI.1633 |  | Erect & Tack Shell Course # 6 & Instal Stagging Brackets | 1d | 2014-06-21 | 2014-06-21 | HHI.1631, HHI.1630 SS | 45d | 0d |
| HHI.1634 |  | Weld Outer Vertical Seam/Install the Stairways support on Shell | 1d | 2014-06-22 | 2014-06-22 | HHI.1633 | 45d | 0d |
| HHI.1641 |  | Quailty Check(Visual Inspection,PT,Air Leak Test for Shell Nozzle) | 6d | 2014-06-22 | 2014-06-29 | HHI.1633 SS, HHI.1640 FF | 45d | 0d |
| HHI.1635 |  | Backgouge & NDT Inside Vertical Seam | 1d | 2014-06-23 | 2014-06-23 | HHI.1634 | 45d | 0d |
| HHI.1636 |  | Weld Inside Vertical Seam | 1d | 2014-06-24 | 2014-06-24 | HHI.1635 | 45d | 0d |
| HHI.1637 |  | "Weld Outer Horizontal Seam between / Shell Course # 5 & 6" | 1d | 2014-06-25 | 2014-06-25 | HHI.1636 | 45d | 0d |
| HHI.1638 |  | "Backgouge & NDT Inside Horizontal / Seam between Shell Course# 5 & 6" | 1d | 2014-06-26 | 2014-06-26 | HHI.1637 | 45d | 0d |
| HHI.1639 |  | Weld Inner Horizontal Seam between / Shell Course # 5 & 6" | 1d | 2014-06-28 | 2014-06-29 | HHI.1638 | 45d | 0d |
| HHI.1640 |  | Fit,Weld Nozzle on Shell | 1d | 2014-06-28 | 2014-06-29 | HHI.1639 SS | 45d | 0d |

| ID | WBS | Activity | Duration | Start | Finish | Predecessors | Total float | Free float |
| --- | --- | --- | --- | --- | --- | --- | --- | --- |
|  | 4 | **TANK #1-WIND GIRDER** |  | 2014-06-29 | 2014-07-02 |  |  |  |
| HHI.1642 |  | Erect & Tack Wind Girder | 1d | 2014-06-29 | 2014-07-01 | HHI.1641 | 45d | 0d |
| HHI.1644 |  | Quailty Check(Visual Inspection & PT) | 2d | 2014-06-29 | 2014-07-02 | HHI.1643 FF, HHI.1642 SS | 45d | 0d |
| HHI.1643 |  | Weld Wind Girder | 1d | 2014-07-01 | 2014-07-02 | HHI.1642 | 45d | 0d |
|  | 2 | **TANK #2** |  | 2014-07-03 | 2014-07-16 |  |  |  |
| HHI.1645 |  | Erect & Tack Shell Course # 6 & Install Stagging Brackets | 1d | 2014-07-03 | 2014-07-05 | HHI.1644 SS+2d, HHI.1632 | 45d | 0d |
| HHI.1646 |  | Weld Outer Vertical Seam/Install the Stairways support on Shell | 1d | 2014-07-05 | 2014-07-07 | HHI.1645 | 45d | 0d |
| HHI.1653 |  | Quailty Check(Visual Inspection,PT,Air Leak Test for Shell Nozzle) | 6d | 2014-07-05 | 2014-07-16 | HHI.1645 SS, HHI.1652 FF | 45d | 0d |
| HHI.1647 |  | Backgouge & NDT Inside Vertical Seam | 1d | 2014-07-07 | 2014-07-08 | HHI.1646 | 45d | 0d |
| HHI.1648 |  | Weld Inside Vertical Seam | 1d | 2014-07-09 | 2014-07-10 | HHI.1647 | 45d | 0d |
| HHI.1649 |  | "Weld Outer Horizontal Seam between / Shell Course # 5 & 6" | 1d | 2014-07-10 | 2014-07-13 | HHI.1648 | 45d | 0d |
| HHI.1650 |  | "Backgouge & NDT Inside Horizontal / Seam between Shell Course# 5 & 6" | 1d | 2014-07-13 | 2014-07-14 | HHI.1649 | 45d | 0d |
| HHI.1651 |  | Weld Inner Horizontal Seam between / Shell Course # 5 & 6" | 1d | 2014-07-15 | 2014-07-16 | HHI.1650 | 45d | 0d |
| HHI.1652 |  | Fit,Weld Nozzle on Shell | 1d | 2014-07-15 | 2014-07-16 | HHI.1651 SS | 45d | 0d |
|  | 12 | **TANK #2-WIND GIRDER** |  | 2014-07-16 | 2014-07-20 |  |  |  |
| HHI.1654 |  | Erect & Tack Wind Girder | 1d | 2014-07-16 | 2014-07-19 | HHI.1653 | 45d | 0d |
| HHI.1656 |  | Quailty Check(Visual Inspection & PT) | 2d | 2014-07-16 | 2014-07-20 | HHI.1655 FF, HHI.1654 SS | 45d | 0d |
| HHI.1655 |  | Weld Wind Girder | 1d | 2014-07-19 | 2014-07-20 | HHI.1654 | 45d | 0d |
|  | 3 | **RT FOR SHELL COURSE #6 JOINTS** |  | 2014-07-21 | 2014-07-22 |  |  |  |
| HHI.1657 |  | Perform RT for Tank#1 & #2 | 1d | 2014-07-21 | 2014-07-22 | HHI.1656 | 45d | 0d |
|  | 10 | **SHELL COURSE#7/WIND GIRDER/ NOZZLE (N12) WORKS** |  | 2014-07-21 | 2014-08-17 |  |  |  |
|  | 1 | **TANK #1-SHELL COURSE#6** |  | 2014-07-21 | 2014-08-02 |  |  |  |
| HHI.1658 |  | Erect & Tack Shell Course # 7 & Internal Stagging Brackets | 1d | 2014-07-21 | 2014-07-22 | HHI.1657 SS | 45d | 0d |
| HHI.1659 |  | Weld Outer Vertical Seam /Install the Stairways support on Shell | 1d | 2014-07-22 | 2014-07-24 | HHI.1658 | 45d | 0d |
| HHI.1666 |  | Quailty Check(Visual Inspection,PT,Air Leak Test for Shell Nozzle) | 6d | 2014-07-22 | 2014-08-02 | HHI.1658 SS, HHI.1665 FF | 45d | 0d |
| HHI.1660 |  | Backgouge & NDT Inside Vertical Seam | 1d | 2014-07-24 | 2014-07-26 | HHI.1659 | 45d | 0d |
| HHI.1661 |  | Weld Inside Vertical Seam | 1d | 2014-07-27 | 2014-07-30 | HHI.1660 | 45d | 0d |
| HHI.1662 |  | "Weld Outer Horizontal Seam between / Shell Course # 6 & 7 | 1d | 2014-07-30 | 2014-07-31 | HHI.1661 | 45d | 0d |
| HHI.1663 |  | "Backgouge & NDT Inside Horizontal / Seam between Shell Course# 6 & 7 | 1d | 2014-07-31 | 2014-08-01 | HHI.1662 | 45d | 0d |
| HHI.1664 |  | Weld Inner Horizontal Seam between / Shell Course # 6 & 7 | 1d | 2014-08-01 | 2014-08-02 | HHI.1663 | 45d | 0d |
| HHI.1665 |  | Fit,Weld Nozzle on Shell | 1d | 2014-08-01 | 2014-08-02 | HHI.1664 SS | 45d | 0d |

| ID | WBS | Activity | Duration | Start | Finish | Predecessors | Total float | Free float |
| --- | --- | --- | --- | --- | --- | --- | --- | --- |
|  | 12 | **TANK #1-WIND GIRDER** |  | 2014-08-02 | 2014-08-05 |  |  |  |
| HHI.1667 |  | Erect & Tack Wind Girder | 1d | 2014-08-02 | 2014-08-03 | HHI.1666 | 45d | 0d |
| HHI.1669 |  | Quailty Check(Visual Inspection & PT) | 3d | 2014-08-02 | 2014-08-05 | HHI.1668 FF, HHI.1667 SS | 45d | 0d |
| HHI.1668 |  | Weld Wind Girder | 2d | 2014-08-03 | 2014-08-05 | HHI.1667 | 45d | 0d |
|  | 2 | **TANK #2-SHELL COURSE#6** |  | 2014-08-04 | 2014-08-13 |  |  |  |
| HHI.1670 |  | Erect & Tack Shell Course # 7 & Install Stagging Brackets | 1d | 2014-08-04 | 2014-08-05 | HHI.1669 SS+2d | 45d | 0d |
| HHI.1671 |  | Weld Outer Vertical Seam /Install the Stairways support on Shell | 1d | 2014-08-05 | 2014-08-06 | HHI.1670 | 45d | 0d |
| HHI.1672 |  | Backgouge & NDT Inside Vertical Seam | 1d | 2014-08-06 | 2014-08-07 | HHI.1671 | 45d | 0d |
| HHI.1678 |  | Quailty Check(Visual Inspection,PT,Air Leak Test for Shell Nozzle) | 6d | 2014-08-06 | 2014-08-13 | HHI.1677 FF, HHI.1670 SS | 45d | 0d |
| HHI.1673 |  | Weld Inside Vertical Seam | 1d | 2014-08-07 | 2014-08-09 | HHI.1672 | 45d | 0d |
| HHI.1674 |  | "Weld Outer Horizontal Seam between / Shell Course # 6 & 7 | 1d | 2014-08-09 | 2014-08-10 | HHI.1673 | 45d | 0d |
| HHI.1675 |  | "Backgouge & NDT Inside Horizontal / Seam between Shell Course# 6 & 7 | 1d | 2014-08-10 | 2014-08-11 | HHI.1674 | 45d | 0d |
| HHI.1676 |  | Weld Inner Horizontal Seam between / Shell Course # 6 & 7 | 1d | 2014-08-11 | 2014-08-12 | HHI.1675 | 45d | 0d |
| HHI.1677 |  | Fit,Weld Nozzle on Shell | 1d | 2014-08-12 | 2014-08-13 | HHI.1676 | 45d | 0d |
|  | 13 | **TANK #2-WIND GIRDER** |  | 2014-08-13 | 2014-08-16 |  |  |  |
| HHI.1679 |  | Erect & Tack Wind Girder | 1d | 2014-08-13 | 2014-08-14 | HHI.1678 | 45d | 0d |
| HHI.1681 |  | Quailty Check(Visual Inspection & PT) | 3d | 2014-08-13 | 2014-08-16 | HHI.1679 SS, HHI.1680 FF | 45d | 0d |
| HHI.1680 |  | Weld Wind Girder | 2d | 2014-08-14 | 2014-08-16 | HHI.1679 | 45d | 0d |
|  | 3 | **RT FOR SHELL COURSE #6 JOINTS** |  | 2014-08-16 | 2014-08-17 |  |  |  |
| HHI.1682 |  | Perform RT for Tank#1 & #2 | 1d | 2014-08-16 | 2014-08-17 | HHI.1681 | 45d | 0d |
|  | 11 | **SHELL COURSE#8/NOZZLE (N5)WORKS** |  | 2014-08-16 | 2014-08-31 |  |  |  |
|  | 1 | **TANK #1** |  | 2014-08-16 | 2014-08-24 |  |  |  |
| HHI.1683 |  | Erect & Tack Shell Course # 8 & Install Stagging Brackets | 1d | 2014-08-16 | 2014-08-17 | HHI.1682 SS | 45d | 0d |
| HHI.1691 |  | Quailty Check(Visual Inspection & PT& Air Leak Test for Shell Nozzle & Pad) | 7d | 2014-08-16 | 2014-08-24 | HHI.1683 SS, HHI.1690 FF | 50d | 0d |
| HHI.1684 |  | Weld Outer Vertical Seam /Install the Stairways support on Shell | 1d | 2014-08-17 | 2014-08-18 | HHI.1683 | 45d | 0d |
| HHI.1685 |  | Backgouge & NDT Inside Vertical Seam | 1d | 2014-08-18 | 2014-08-19 | HHI.1684 | 45d | 0d |
| HHI.1686 |  | Weld Inside Vertical Seam | 1d | 2014-08-19 | 2014-08-20 | HHI.1685 | 45d | 0d |
| HHI.1687 |  | "Weld Outer Horizontal Seam between / Shell Course # 7 & 8 | 1d | 2014-08-20 | 2014-08-21 | HHI.1686 | 45d | 0d |
| HHI.1688 |  | "Backgouge & NDT Inside Horizontal / Seam between Shell Course# 7 & 8 | 1d | 2014-08-21 | 2014-08-23 | HHI.1687 | 45d | 0d |
| HHI.1689 |  | Weld Inner Horizontal Seam between / Shell Course # 7 & 8 | 1d | 2014-08-23 | 2014-08-24 | HHI.1688 | 45d | 0d |
| HHI.1690 |  | Fit,Weld Nozzle on Shell | 1d | 2014-08-23 | 2014-08-24 | HHI.1689 SS | 50d | 0d |

| ID | WBS | Activity | Duration | Start | Finish | Predecessors | Total float | Free float |
| --- | --- | --- | --- | --- | --- | --- | --- | --- |
|  | 2 | **TANK #2** |  | 2014-08-18 | 2014-08-30 |  |  |  |
| HHI.1692 |  | Erect & Tack Shell Course # 8 & Install Stagging Brackets | 1d | 2014-08-18 | 2014-08-19 | HHI.1691 SS+2d | 50d | 5d |
| HHI.1693 |  | Weld Outer Vertical Seam/Install the Stairways support on Shell | 1d | 2014-08-24 | 2014-08-25 | HHI.1689 | 45d | 0d |
| HHI.1700 |  | Quailty Check(Visual Inspection & PT for Shell Nozzle & Pad) | 6d | 2014-08-24 | 2014-08-30 | HHI.1692 SS, HHI.1699 FF | 45d | 0d |
| HHI.1694 |  | Backgouge & NDT Inside Vertical Seam | 1d | 2014-08-25 | 2014-08-26 | HHI.1693 | 45d | 0d |
| HHI.1695 |  | Weld Inside Vertical Seam | 1d | 2014-08-26 | 2014-08-27 | HHI.1694 | 45d | 0d |
| HHI.1696 |  | "Weld Outer Horizontal Seam between / Shell Course # 7 & 8 | 1d | 2014-08-27 | 2014-08-28 | HHI.1695 | 45d | 0d |
| HHI.1697 |  | "Backgouge & NDT Inside Horizontal / Seam between Shell Course#7 & 8 | 1d | 2014-08-28 | 2014-08-29 | HHI.1696 | 45d | 0d |
| HHI.1698 |  | Weld Inner Horizontal Seam between / Shell Course #7 & 8 | 1d | 2014-08-29 | 2014-08-30 | HHI.1697 | 45d | 0d |
| HHI.1699 |  | Fit,Weld Nozzle on Shell | 1d | 2014-08-29 | 2014-08-30 | HHI.1698 SS | 45d | 0d |
|  | 3 | **RT FOR SHELL COURSE #7 JOINTS** |  | 2014-08-30 | 2014-08-31 |  |  |  |
| HHI.1701 |  | Perform RT for Tank#1 & #2 | 1d | 2014-08-30 | 2014-08-31 | HHI.1700 | 45d | 0d |
|  | 12 | **TANK #1 (ROOF STRUCTURES/PLATES ASSEMBLY WITH TOP ANGLE ,PLATFROMS/STAIRWAYS & INTERNAL PIPING)** |  | 2014-08-30 | 2014-09-24 |  |  |  |
|  | 1 | **COMPRESSION RING** |  | 2014-08-30 | 2014-09-04 |  |  |  |
| HHI.1702 |  | "Fit & Tack / Shell Course # 8 & Compression Ring | 2d | 2014-08-30 | 2014-09-01 | HHI.1701 SS | 45d | 0d |
| HHI.1708 |  | Quailty Check (Visual Inspection) | 5d | 2014-08-30 | 2014-09-04 | HHI.1706 FF, HHI.1702 SS | 45d | 0d |
| HHI.1703 |  | Weld Outer Horizontal Seam between / Shell Course # 8 & Top Curb Angle | 1d | 2014-09-01 | 2014-09-02 | HHI.1702 | 46d | 0d |
| HHI.1704 |  | "Backgouge & NDT Inside Horizontal / Seam between Shell Course# 8 & Top Curb Angle | 1d | 2014-09-01 | 2014-09-02 | HHI.1703 SS | 46d | 1d |
| HHI.1705 |  | Fit up,Tack of Gusset Plates to Shell | 2d | 2014-09-01 | 2014-09-03 | HHI.1702 | 45d | 0d |
| HHI.1706 |  | Weld Inner Horizontal Seam between / Shell Course #8 & Top Curb Angle | 1d | 2014-09-03 | 2014-09-04 | HHI.1707 SS, HHI.1704 | 45d | 0d |
| HHI.1707 |  | Welding of Gusset Plates | 1d | 2014-09-03 | 2014-09-04 | HHI.1705 | 45d | 0d |
|  | 2 | **GIRDERS** |  | 2014-09-01 | 2014-09-03 |  |  |  |
| HHI.1709 |  | Erect,Laydown & install Girders to Columns (1 Layers ,5 Girders) | 2d | 2014-09-01 | 2014-09-03 | HHI.1708 SS+2d | 45d | 0d |
|  | 3 | **RAFTERS** |  | 2014-09-02 | 2014-09-08 |  |  |  |
| HHI.1710 |  | Erect,Lay Down & Install the Rafters (75 Rafters)/ Install Internal Piping Brackets/Piping | 5d | 2014-09-02 | 2014-09-08 | HHI.1709 SS+1d | 45d | 0d |

Notes:
- HHI.1709: Steps: 1st Group 5 girders; 2nd Group 10 girders

| ID | WBS | Activity | Duration | Start | Finish | Predecessors | Total float | Free float |
| --- | --- | --- | --- | --- | --- | --- | --- | --- |
|  | 4 | **ROOF PLATES/ROOF MANHOLES(M2,M3) & NOZZLES (N1,N2,PT,N13,N14,V1,V2,N3,LT1,LT2,H)** |  | 2014-09-06 | 2014-09-17 |  |  |  |
| HHI.1711 |  | Prepare/Lay Down Roof Plates (27 Plates) | 2d | 2014-09-06 | 2014-09-08 | HHI.1710 SS+3d | 45d | 0d |
| HHI.1712 |  | Tacking of Roof Plates | 2d | 2014-09-06 | 2014-09-08 | HHI.1711 SS | 45d | 0d |
| HHI.1719 |  | Quailty Check (Visual Inspection& Vaccum Box Test,PT,Air Leak Test for Roof Manholes& Nozzles)) | 11d | 2014-09-06 | 2014-09-17 | HHI.1711 SS, HHI.1718 FF | 45d | 0d |
| HHI.1713 |  | Welding of Roof Plates (Short Seams) | 2d | 2014-09-08 | 2014-09-10 | HHI.1712 SS+2d | 45d | 0d |
| HHI.1714 |  | Tack of Roof Plates to Curb Angle | 1d | 2014-09-08 | 2014-09-09 | HHI.1712 | 49d | 4d |
| HHI.1715 |  | Welding of Roof Plates (Long Seams) | 3d | 2014-09-10 | 2014-09-13 | HHI.1713 | 45d | 0d |
| HHI.1716 |  | Welding of Roof Plates to Compression Ring | 2d | 2014-09-13 | 2014-09-15 | HHI.1715, HHI.1714 | 45d | 0d |
| HHI.1717 |  | Fit,Weld Manholes ,Nozzles & install Top Platform Supports on Roof | 2d | 2014-09-15 | 2014-09-17 | HHI.1716 SS+2d | 45d | 0d |
| HHI.1718 |  | Weld Internal Piping to Nozzle N1 | 1d | 2014-09-16 | 2014-09-17 | HHI.1717 SS+1d | 45d | 0d |
|  | 6 | **PLATFORMS & STAIRWAYS ASSEMBLY** |  | 2014-09-17 | 2014-09-24 |  |  |  |
| HHI.1720 |  | Erect & Install Stairways & Platforms for Shell | 2d | 2014-09-17 | 2014-09-20 | HHI.1719 | 45d | 0d |
| HHI.1721 |  | Erect & Install Stairways & Platforms & Handrails for Roof | 2d | 2014-09-20 | 2014-09-22 | HHI.1720 | 45d | 0d |
| HHI.1722 |  | Quality Check | 1d | 2014-09-22 | 2014-09-24 | HHI.1721 | 45d | 0d |
|  | 1 | **TANK #2 (ROOF STRUCTURES/PLATES ASSEMBLY WITH TOP ANGLE ,PLATFROMS/STAIRWAYS & INTERNAL PIPING)** |  | 2014-09-24 | 2014-10-22 |  |  |  |
|  | 1 | **COMPRESSION RING** |  | 2014-09-24 | 2014-09-30 |  |  |  |
| HHI.1723 |  | "Fit & Tack / Shell Course # 8 & Compression Ring | 2d | 2014-09-24 | 2014-09-27 | HHI.1722 | 45d | 0d |
| HHI.1729 |  | Quailty Check (Visual Inspection) | 5d | 2014-09-24 | 2014-09-30 | HHI.1727 FF, HHI.1723 SS | 45d | 0d |
| HHI.1724 |  | Weld Outer Horizontal Seam between / Shell Course # 8 & Top Curb Angle | 1d | 2014-09-27 | 2014-09-28 | HHI.1723 | 46d | 0d |
| HHI.1725 |  | "Backgouge & NDT Inside Horizontal / Seam between Shell Course# 8 & Top Curb Angle | 1d | 2014-09-27 | 2014-09-28 | HHI.1724 SS | 46d | 1d |
| HHI.1726 |  | Fit up,Tack of Gusset Plates to Shell | 2d | 2014-09-27 | 2014-09-29 | HHI.1723 | 45d | 0d |
| HHI.1727 |  | Weld Inner Horizontal Seam between / Shell Course #8 & Top Curb Angle | 1d | 2014-09-29 | 2014-09-30 | HHI.1728 SS, HHI.1725 | 45d | 0d |
| HHI.1728 |  | Welding of Gusset Plates | 1d | 2014-09-29 | 2014-09-30 | HHI.1726 | 45d | 0d |
|  | 2 | **GIRDERS** |  | 2014-09-27 | 2014-09-29 |  |  |  |
| HHI.1730 |  | Erect,Laydown & install Girders to Columns (1 Layers ,5 Girders) | 2d | 2014-09-27 | 2014-09-29 | HHI.1729 SS+2d | 45d | 0d |

Notes:
- HHI.1730: Steps: 1st Group 5 girders; 2nd Group 10 girders

| ID | WBS | Activity | Duration | Start | Finish | Predecessors | Total float | Free float |
| --- | --- | --- | --- | --- | --- | --- | --- | --- |
|  | 3 | **RAFTERS** |  | 2014-09-28 | 2014-10-06 |  |  |  |
| HHI.1731 |  | Erect,Lay Down & Install the Rafters (75 Rafters)/ Install Internal Piping Brackets/Piping | 5d | 2014-09-28 | 2014-10-06 | HHI.1730 SS+1d | 45d | 0d |
|  | 4 | **ROOF PLATES/ROOF MANHOLES(M2,M3) & NOZZLES (N1,N2,PT,N13,N14,V1,V2,N3,LT1,LT2,H)** |  | 2014-10-01 | 2014-10-16 |  |  |  |
| HHI.1732 |  | Prepare/Lay Down Roof Plates (27 Plates) | 2d | 2014-10-01 | 2014-10-06 | HHI.1731 SS+3d | 45d | 0d |
| HHI.1733 |  | Tacking of Roof Plates | 2d | 2014-10-01 | 2014-10-06 | HHI.1732 SS | 45d | 0d |
| HHI.1740 |  | Quailty Check (Visual Inspection& Vaccum Box Test,PT,Air Leak Test for Roof Manholes& Nozzles)) | 11d | 2014-10-01 | 2014-10-16 | HHI.1732 SS, HHI.1739 FF | 45d | 0d |
| HHI.1734 |  | Welding of Roof Plates (Short Seams) | 2d | 2014-10-06 | 2014-10-08 | HHI.1733 SS+2d | 45d | 0d |
| HHI.1735 |  | Tack of Roof Plates to Curb Angle | 1d | 2014-10-06 | 2014-10-07 | HHI.1733 | 49d | 4d |
| HHI.1736 |  | Welding of Roof Plates (Long Seams) | 3d | 2014-10-08 | 2014-10-12 | HHI.1734 | 45d | 0d |
| HHI.1737 |  | Welding of Roof Plates to Compression Ring | 2d | 2014-10-12 | 2014-10-14 | HHI.1735, HHI.1736 | 45d | 0d |
| HHI.1738 |  | Fit,Weld Manholes ,Nozzles & install Top Platform Supports on Roof | 2d | 2014-10-14 | 2014-10-16 | HHI.1737 SS+2d | 45d | 0d |
| HHI.1739 |  | Weld Internal Piping to Nozzle N1 | 1d | 2014-10-15 | 2014-10-16 | HHI.1738 SS+1d | 45d | 0d |
|  | 6 | **PLATFORMS & STAIRWAYS ASSEMBLY** |  | 2014-10-16 | 2014-10-22 |  |  |  |
| HHI.1741 |  | Erect & Install Stairways & Platforms for Shell | 2d | 2014-10-16 | 2014-10-19 | HHI.1740 | 45d | 0d |
| HHI.1742 |  | Erect & Install Stairways & Platforms & Handrails for Roof | 2d | 2014-10-19 | 2014-10-21 | HHI.1741 | 45d | 0d |
| HHI.1743 |  | Quality Check | 1d | 2014-10-21 | 2014-10-22 | HHI.1742 | 45d | 0d |
|  | 14 | **MCC** |  | 2014-09-24 | 2014-10-23 |  |  |  |
|  | 1 | **TANK #1** |  | 2014-09-24 | 2014-09-25 |  |  |  |
| HHI.1744 |  | Mechanical Completion (MCC) & Final Isnpection Before Hydrotesting | 1d | 2014-09-24 | 2014-09-25 | HHI.1722 | 66d | 0d |
|  | 2 | **TANK #2** |  | 2014-10-22 | 2014-10-23 |  |  |  |
| HHI.1745 |  | Mechanical Completion (MCC) & Final Inspection Before Hydrotesting | 1d | 2014-10-22 | 2014-10-23 | HHI.1743 | 45d | 0d |
|  | 3 | **HYDROTESTING,PAINTING ,ATTACHMENTS/VALVES/INSTRUMENTS INSTALLATION** |  | 2014-09-24 | 2015-01-22 |  |  |  |
|  | 1 | **HYDROTESTING** |  | 2014-09-24 | 2014-12-25 |  |  |  |
|  | 1 | **TANK #1** |  | 2014-09-24 | 2014-12-17 |  |  |  |
| HHI.1746 |  | Remove Stagging Blanks/Brackets & Install Blind Flanges | 2d | 2014-09-24 | 2014-09-27 | HHI.1744 SS | 66d | 48d |
| HHI.1747 |  | Tank Water Filling & Settlement from Desanilated Water Tank #2 | 10d | 2014-11-24 | 2014-12-06 | HHI.1476 SS+1d, HHI.1746 | 18d | 0d |
| HHI.1748 |  | Hold & Inspect Water for 24 Hours | 1d | 2014-12-06 | 2014-12-07 | HHI.1747 | 18d | 0d |
| HHI.1749 |  | Drain Water from Tank | 5d | 2014-12-07 | 2014-12-13 | HHI.1748 | 18d | 0d |
| HHI.1750 |  | Build Mobile Scaffolding,Internal CLeaning&Dismantling | 3d | 2014-12-13 | 2014-12-16 | HHI.1749 | 18d | 0d |
| HHI.1751 |  | Quailty Check | 1d | 2014-12-16 | 2014-12-17 | HHI.1750 | 18d | 0d |

| ID | WBS | Activity | Duration | Start | Finish | Predecessors | Total float | Free float |
| --- | --- | --- | --- | --- | --- | --- | --- | --- |
|  | 2 | **TANK #2** |  | 2014-10-22 | 2014-12-25 |  |  |  |
| HHI.1752 |  | Remove Stagging Blanks/Brackets & Install Blind Flanges | 2d | 2014-10-22 | 2014-10-25 | HHI.1745 SS | 45d | 34d |
| HHI.1753 |  | Tank Water Filling/Settlement from Desanilated Water Tank #2 | 10d | 2014-12-03 | 2014-12-15 | HHI.1476 SS+9d, HHI.1752 | 11d | 0d |
| HHI.1754 |  | Hold & Inspect Water for 24 Hours/Drain Water | 5d | 2014-12-15 | 2014-12-21 | HHI.1753 | 11d | 0d |
| HHI.1755 |  | Build Mobile Scaffolding,Internal CLeaning&Dismantling | 3d | 2014-12-21 | 2014-12-24 | HHI.1754 | 11d | 0d |
| HHI.1756 |  | Quailty Check | 1d | 2014-12-24 | 2014-12-25 | HHI.1755 | 11d | 0d |
|  | 2 | **ROOF COLUMNS WELDING & FINAL ALIGNMENT** |  | 2014-12-16 | 2014-12-27 |  |  |  |
|  | 1 | **TANK#1** |  | 2014-12-16 | 2014-12-18 |  |  |  |
| HHI.1757 |  | Weld & Align Roof Columns | 2d | 2014-12-16 | 2014-12-18 | HHI.1751 SS | 18d | 0d |
|  | 2 | **TANK#2** |  | 2014-12-24 | 2014-12-27 |  |  |  |
| HHI.1758 |  | Weld & Align Roof Columns | 2d | 2014-12-24 | 2014-12-27 | HHI.1756 SS | 11d | 0d |
|  | 3 | **TANK ATTACHMENTS** |  | 2014-12-16 | 2014-12-25 |  |  |  |
|  | 1 | **TANK #1** |  | 2014-12-16 | 2014-12-17 |  |  |  |
| HHI.1759 |  | Fit,Weld Name Plate brackets/Attachments on shell Course #1 | 1d | 2014-12-16 | 2014-12-17 | HHI.1757 SS | 18d | 0d |
|  | 2 | **TANK #2** |  | 2014-12-24 | 2014-12-25 |  |  |  |
| HHI.1760 |  | Fit,Weld Name Plate brackets/Attachments on shell Course #1 | 1d | 2014-12-24 | 2014-12-25 | HHI.1758 SS | 11d | 0d |
|  | 4 | **TANK#1 BLASTING/PAINTING** |  | 2014-12-17 | 2015-01-13 |  |  |  |
|  | 10 | **EXTERNAL SURFACE PAINTING** |  | 2014-12-17 | 2014-12-23 |  |  |  |
| HHI.1762 |  | Perform Shell Surface Preparation & Painting | 3d | 2014-12-17 | 2014-12-21 | HHI.1759 | 18d | 0d |
| HHI.1764 |  | Quailty Check | 5d | 2014-12-17 | 2014-12-23 | HHI.1763 FF, HHI.1762 SS | 21d | 3d |
| HHI.1763 |  | Perform Roof Surface Preparation & Painting | 2d | 2014-12-21 | 2014-12-23 | HHI.1762 | 21d | 0d |
|  | 12 | **INTERNAL SURFACE PAINTING** |  | 2014-12-17 | 2015-01-13 |  |  |  |
| HHI.1765 |  | Install Scaffoldings | 8d | 2014-12-17 | 2014-12-27 | HHI.1762 SS | 18d | 0d |
| HHI.1766 |  | Perform Roof Underside Surface Preparation & Painting | 4d | 2014-12-27 | 2014-12-31 | HHI.1765, HHI.1764 | 18d | 0d |
| HHI.1770 |  | Quailty Check (including Holiday Test) | 15d | 2014-12-27 | 2015-01-13 | HHI.1769 FF, HHI.1766 SS | 18d | 0d |
| HHI.1767 |  | Perform Shell course Surface Preparation & Painting | 5d | 2014-12-31 | 2015-01-06 | HHI.1766 | 18d | 0d |
| HHI.1768 |  | Dismantle Scaffoldings | 4d | 2015-01-06 | 2015-01-11 | HHI.1767 | 18d | 0d |
| HHI.1769 |  | Perform Bottom Surface Preparation & Painting | 2d | 2015-01-11 | 2015-01-13 | HHI.1768 | 18d | 0d |

Notes:
- HHI.1762: Description: ï»¿ / Shell Course SA= 1700 x 2 coats= 3400 M2(2 painters) / Roof SA= 1200 x 2=2400 M2

| ID | WBS | Activity | Duration | Start | Finish | Predecessors | Total float | Free float |
| --- | --- | --- | --- | --- | --- | --- | --- | --- |
|  | 5 | **TANK#2 BLASTING/PAINTING** |  | 2014-12-25 | 2015-01-21 |  |  |  |
|  | 10 | **EXTERNAL SURFACE PAINTING** |  | 2014-12-25 | 2014-12-31 |  |  |  |
| HHI.1771 |  | Perform Shell Surface Preparation & Painting | 3d | 2014-12-25 | 2014-12-29 | HHI.1760 | 11d | 0d |
| HHI.1773 |  | Quailty Check | 5d | 2014-12-25 | 2014-12-31 | HHI.1772 FF, HHI.1771 SS | 14d | 3d |
| HHI.1772 |  | Perform Roof Surface Preparation & Painting | 2d | 2014-12-29 | 2014-12-31 | HHI.1771 | 14d | 0d |
|  | 12 | **INTERNAL SURFACE PAINTING** |  | 2014-12-25 | 2015-01-21 |  |  |  |
| HHI.1774 |  | Install Scaffoldings | 8d | 2014-12-25 | 2015-01-04 | HHI.1771 SS | 11d | 0d |
| HHI.1775 |  | Perform Roof Underside Surface Preparation & Painting | 4d | 2015-01-04 | 2015-01-08 | HHI.1773, HHI.1774 | 11d | 0d |
| HHI.1779 |  | Quailty Check (including Holiday Test) | 15d | 2015-01-04 | 2015-01-21 | HHI.1775 SS, HHI.1778 FF | 11d | 0d |
| HHI.1776 |  | Perform Shell course Surface Preparation & Painting | 5d | 2015-01-08 | 2015-01-14 | HHI.1775 | 11d | 0d |
| HHI.1777 |  | Dismantle Scaffoldings | 4d | 2015-01-14 | 2015-01-19 | HHI.1776 | 11d | 0d |
| HHI.1778 |  | Perform Bottom Surface Preparation & Painting | 2d | 2015-01-19 | 2015-01-21 | HHI.1777 | 11d | 0d |
|  | 6 | **TANKS VALVES,INSTRUMENTS & INTERNAL CATHODIC PROTECTION** |  | 2015-01-13 | 2015-01-22 |  |  |  |
|  | 1 | **TANK#1** |  | 2015-01-13 | 2015-01-14 |  |  |  |
| HHI.1780 |  | Install Valves,instruments (Supplied by client) | 1d | 2015-01-13 | 2015-01-14 | HHI.1770 | 18d | 0d |
|  | 2 | **TANK #2** |  | 2015-01-21 | 2015-01-22 |  |  |  |
| HHI.1782 |  | Install Valves,instruments (Supplied by client) | 1d | 2015-01-21 | 2015-01-22 | HHI.1779 | 11d | 0d |
|  | 5 | **FINAL INSPECTION & HANDOVER TO CLIENT** |  | 2015-01-14 | 2015-01-24 |  |  |  |
|  | 1 | **TANK#1** |  | 2015-01-14 | 2015-01-15 |  |  |  |
| HHI.1781 |  | Perform Final Inspection & Handover to CLient | 1d | 2015-01-14 | 2015-01-15 | HHI.1780 | 18d |  |
|  | 2 | **TANK#2** |  | 2015-01-22 | 2015-01-24 |  |  |  |
| HHI.1783 |  | Perform Final Inspection & Handover to CLient | 1d | 2015-01-22 | 2015-01-24 | HHI.1782 | 11d |  |
|  | 1 | **AREA B HANDOVER TO CLIENT (6 WATER STORAGE TANKS)** |  | 2015-02-05 | 2015-02-07 |  |  |  |
| HHI.1784 |  | AZ Handovers Area to Client | 1d | 2015-02-05 | 2015-02-07 | HHI.1261, HHI.1503, HHI.1262, HHI.1781, HHI.1783, HHI.1502 | 0d |  |

| ID | WBS | Activity | Type | Duration | Start | Finish | Predecessors | Total float | Free float | Constraint |
| --- | --- | --- | --- | --- | --- | --- | --- | --- | --- | --- |
|  | 2 | **AREA P (1 TANK SITE ERECTION WORKS)** |  |  | 2014-04-03 | 2014-08-01 |  |  |  |  |
|  | LDP | **CPP Regeneration Water Tank (10LDP10BB001) (12.176 MTR D x 9.425 Mtr H)** |  |  | 2014-04-03 | 2014-07-31 |  |  |  |  |
|  | 1 | **Tank Foundation Handover To AZ** |  |  | 2014-04-03 | 2014-04-03 |  |  |  |  |
| HHI.3001 |  | HHI Hand over Tank (10LDP10BB001) Foundation to AZ | milestone | 0d | 2014-04-03 | 2014-04-03 |  | 0d |  | start on 2014-04-03 |
| HHI.3002 |  | AZ Check Tank Foundation Levelness prior to Mechanical Works |  | 1d | 2014-04-03 | 2014-04-03 | HHI.3001 SS | 163d | 0d |  |
|  | 2 | **MECHANICAL WORK** |  |  | 2014-04-03 | 2014-06-08 |  |  |  |  |
|  | 3 | **ANNULAR PLATE WORKS** |  |  | 2014-04-03 | 2014-04-05 |  |  |  |  |
| HHI.3003 |  | Install Sealent,Erect & Tack of Annular Plates |  | 1d | 2014-04-03 | 2014-04-03 | HHI.3002 SS | 163d | 0d |  |
| HHI.3004 |  | Welding of Annular Plates |  | 1d | 2014-04-03 | 2014-04-03 | HHI.3003 SS | 164d | 1d |  |
| HHI.3005 |  | Quailty Check (Visual Inspection,PT & Vaccum Box Test) |  | 2d | 2014-04-03 | 2014-04-05 | HHI.3004 FF, HHI.3003 SS | 163d | 0d |  |
|  | 10 | **RT FOR ANNULAR PLATES WELD JOINTS** |  |  | 2014-04-06 | 2014-04-06 |  |  |  |  |
| HHI.3006 |  | Perform RT |  | 1d | 2014-04-06 | 2014-04-06 | HHI.3005 | 163d | 0d |  |
|  | 11 | **BOTTOM PLATE WORKS** |  |  | 2014-04-06 | 2014-04-12 |  |  |  |  |
| HHI.3007 |  | Prepare & Lay Down Bottom Plates |  | 1d | 2014-04-06 | 2014-04-06 | HHI.3006 SS | 163d | 0d |  |
| HHI.3014 |  | Quailty Check (Visual Inspection& Vaccum Box Test) |  | 6d | 2014-04-06 | 2014-04-12 | HHI.3013 FF, HHI.3007 SS | 163d | 0d |  |
| HHI.3008 |  | Fit/Tack Bottom Plates-Short Seams |  | 1d | 2014-04-07 | 2014-04-07 | HHI.3007 SS+1d | 163d | 0d |  |
| HHI.3009 |  | Weld Short Seams |  | 1d | 2014-04-08 | 2014-04-08 | HHI.3008 | 163d | 0d |  |
| HHI.3010 |  | Fit/Tack Bottom Plates-Long Seams |  | 1d | 2014-04-08 | 2014-04-08 | HHI.3009 SS | 163d | 0d |  |
| HHI.3011 |  | Erect,Fitup of Sump |  | 1d | 2014-04-09 | 2014-04-09 | HHI.3010 SS+1d | 164d | 1d |  |
| HHI.3012 |  | Weld Long Seams |  | 2d | 2014-04-10 | 2014-04-12 | HHI.3010 FS+1d | 163d | 0d |  |
| HHI.3013 |  | Weld Sump |  | 1d | 2014-04-12 | 2014-04-12 | HHI.3011, HHI.3012 SS+1d | 163d | 0d |  |
|  | 4 | **SHELL COURSE #1/MANHOLE (M1) & NOZZLES(N5,N3,LT1,LT2) WORKS** |  |  | 2014-04-13 | 2014-04-17 |  |  |  |  |
| HHI.3015 |  | Erect & Tack Shell Course # 1 & Install Stagging Brackets |  | 2d | 2014-04-13 | 2014-04-14 | HHI.3014 | 163d | 0d |  |
| HHI.3021 |  | Quailty Check(Visual Inspection & PT,Air Leak Test for Shell Manholes& Nozzles) |  | 5d | 2014-04-13 | 2014-04-17 | HHI.3015 SS, HHI.3020 FF | 163d | 0d |  |
| HHI.3016 |  | Fit up/Tack Shell #1 to Annular Plate |  | 1d | 2014-04-14 | 2014-04-14 | HHI.3015 SS+1d | 164d | 0d |  |
| HHI.3017 |  | Weld Outer Vertical Seam / Install the Stairways support on Shell |  | 1d | 2014-04-14 | 2014-04-14 | HHI.3016 SS | 164d | 0d |  |
| HHI.3018 |  | Backgouge,Grinding & NDT Inside Vertical Seam |  | 1d | 2014-04-14 | 2014-04-14 | HHI.3017 SS | 164d | 0d |  |
| HHI.3019 |  | Weld Inside Vertical Seam |  | 1d | 2014-04-15 | 2014-04-15 | HHI.3018 | 164d | 0d |  |
| HHI.3020 |  | Fit,Weld for Manhole ,Nozzles on Shell |  | 2d | 2014-04-15 | 2014-04-16 | HHI.3019 SS | 164d | 1d |  |

Notes:
- LDP: RECIEVED TANK COORIDNATES 7TH OF OCTOBER / 2012 FROM RADICON / WAITING FOR JUSTIFICATION LETTER FROM RADICON TO PRESENT TO MA'ADEN FOR / PROJECT TIME EXTENSION / DESIGN,ENGINEERING,SUPPLY OF / MATERIALS,MANUFACTURING,PREFABRICATION,ASSUMBLY,PAINTING&COATING,ERECTION,SHOP / TESTING,INSPECTION,PACKING AND DELIEVERY TO SITE,OPERATING & MAINTENANCE / MANUALS AND SPARE PARTS PACKADGE

| ID | WBS | Activity | Duration | Start | Finish | Predecessors | Total float | Free float |
| --- | --- | --- | --- | --- | --- | --- | --- | --- |
|  | 9 | **RT FOR SHELL COURSE #1 JOINTS** |  | 2014-04-19 | 2014-04-19 |  |  |  |
| HHI.3022 |  | Perform RT | 1d | 2014-04-19 | 2014-04-19 | HHI.3021 | 163d | 0d |
|  | 5 | **SHELL COURSE#2** |  | 2014-04-19 | 2014-04-28 |  |  |  |
| HHI.3023 |  | Erect & Tack Shell Course # 2 & Install Stagging Brackets | 2d | 2014-04-19 | 2014-04-20 | HHI.3022 SS | 163d | 0d |
| HHI.3033 |  | Quailty Check(Visual Inspection) | 9d | 2014-04-19 | 2014-04-28 | HHI.3032 FF, HHI.3023 SS | 163d | 0d |
| HHI.3024 |  | Weld Outer Vertical Seam /Install the Stairways support on Shell | 1d | 2014-04-20 | 2014-04-20 | HHI.3023 SS+1d | 163d | 0d |
| HHI.3025 |  | Backgouge,Grinding & NDT Inside Vertical Seam | 1d | 2014-04-20 | 2014-04-20 | HHI.3024 SS | 163d | 0d |
| HHI.3026 |  | Weld Inside Vertical Seam | 1d | 2014-04-21 | 2014-04-21 | HHI.3025 | 163d | 0d |
| HHI.3027 |  | "Weld Outer Horizontal Seam between / Shell Course # 1 & 2" | 1d | 2014-04-22 | 2014-04-22 | HHI.3026 | 163d | 0d |
| HHI.3028 |  | "Backgouge & NDT Inside Horizontal / Seam between Shell Course# 1 & 2" | 1d | 2014-04-22 | 2014-04-22 | HHI.3027 SS | 163d | 0d |
| HHI.3029 |  | Weld Inner Horizontal Seam between / Shell Course # 1 & 2" | 1d | 2014-04-23 | 2014-04-23 | HHI.3028 | 163d | 0d |
| HHI.3030 |  | Weld Shell Course# 1 to Annular Plate (from inside) | 1d | 2014-04-24 | 2014-04-24 | HHI.3029 | 163d | 0d |
| HHI.3031 |  | Perform PT from inside,Complete the welding from outside & Perform Vaccum Box Testing | 2d | 2014-04-26 | 2014-04-27 | HHI.3030 | 163d | 0d |
| HHI.3032 |  | Weld Bottom Plates to Annular Plate | 1d | 2014-04-28 | 2014-04-28 | HHI.3031 | 163d | 0d |
|  | 12 | **RT FOR SHELL COURSE #2 JOINTS** |  | 2014-04-29 | 2014-04-29 |  |  |  |
| HHI.3034 |  | Perform RT | 1d | 2014-04-29 | 2014-04-29 | HHI.3033 | 163d | 0d |
|  | 6 | **SHELL COURSE#3** |  | 2014-04-29 | 2014-05-04 |  |  |  |
| HHI.3035 |  | Erect & Tack Shell Course # 3 & Install Stagging Brackets | 2d | 2014-04-29 | 2014-04-30 | HHI.3034 SS | 163d | 0d |
| HHI.3042 |  | Quailty Check(Visual Inspection) | 5d | 2014-04-29 | 2014-05-04 | HHI.3041 FF, HHI.3035 SS | 163d | 0d |
| HHI.3036 |  | Weld Outer Vertical Seam /Install the Stairways support on Shell | 1d | 2014-04-30 | 2014-04-30 | HHI.3035 SS+1d | 163d | 0d |
| HHI.3037 |  | Backgouge & NDT Inside Vertical Seam | 1d | 2014-04-30 | 2014-04-30 | HHI.3036 SS | 163d | 0d |
| HHI.3038 |  | Weld Inside Vertical Seam | 1d | 2014-05-01 | 2014-05-01 | HHI.3037 | 163d | 0d |
| HHI.3039 |  | Weld Outer Horizontal Seam between / Shell Course # 2 & 3" | 1d | 2014-05-03 | 2014-05-03 | HHI.3038 | 163d | 0d |
| HHI.3040 |  | Backgouge & NDT Inside Horizontal / Seam between Shell Course# 2 & 3" | 1d | 2014-05-03 | 2014-05-03 | HHI.3039 SS | 163d | 0d |
| HHI.3041 |  | Weld Inner Horizontal Seam between / Shell Course # 2 & 3" | 1d | 2014-05-04 | 2014-05-04 | HHI.3040 | 163d | 0d |

| ID | WBS | Activity | Duration | Start | Finish | Predecessors | Total float | Free float |
| --- | --- | --- | --- | --- | --- | --- | --- | --- |
|  | 13 | **RT FOR SHELL COURSE #3 JOINTS** |  | 2014-05-05 | 2014-05-05 |  |  |  |
| HHI.3043 |  | Perform RT | 1d | 2014-05-05 | 2014-05-05 | HHI.3042 | 163d | 0d |
|  | 14 | **SHELL COURSE#4** |  | 2014-05-05 | 2014-05-10 |  |  |  |
| HHI.3044 |  | Erect & Tack Shell Course # 4 & Install Stagging Brackets | 2d | 2014-05-05 | 2014-05-06 | HHI.3043 SS | 163d | 0d |
| HHI.3051 |  | Quailty Check(Visual Inspection) | 5d | 2014-05-05 | 2014-05-10 | HHI.3050 FF, HHI.3044 SS | 163d | 0d |
| HHI.3045 |  | Weld Outer Vertical Seam /Install the Stairways support on Shell | 1d | 2014-05-06 | 2014-05-06 | HHI.3044 SS+1d | 163d | 0d |
| HHI.3046 |  | Backgouge & NDT Inside Vertical Seam | 1d | 2014-05-06 | 2014-05-06 | HHI.3045 SS | 163d | 0d |
| HHI.3047 |  | Weld Inside Vertical Seam | 1d | 2014-05-07 | 2014-05-07 | HHI.3046 | 163d | 0d |
| HHI.3048 |  | Weld Outer Horizontal Seam between / Shell Course # 3 & 4" | 1d | 2014-05-08 | 2014-05-08 | HHI.3047 | 163d | 0d |
| HHI.3049 |  | Backgouge & NDT Inside Horizontal / Seam between Shell Course# 3 & 4" | 1d | 2014-05-08 | 2014-05-08 | HHI.3048 SS | 163d | 0d |
| HHI.3050 |  | Weld Inner Horizontal Seam between / Shell Course # 3 & 4" | 1d | 2014-05-10 | 2014-05-10 | HHI.3049 | 163d | 0d |
|  | 7 | **RT FOR SHELL COURSE #4 JOINTS** |  | 2014-05-11 | 2014-05-11 |  |  |  |
| HHI.3052 |  | Perform RT | 1d | 2014-05-11 | 2014-05-11 | HHI.3051 | 163d | 0d |
|  | 8 | **SHELL COURSE#5/NOZZLE(N4) WORKS** |  | 2014-05-11 | 2014-05-15 |  |  |  |
| HHI.3053 |  | Erect & Tack Shell Course # 5 & Install Stagging Brackets | 2d | 2014-05-11 | 2014-05-12 | HHI.3052 SS | 163d | 0d |
| HHI.3061 |  | Quailty Check(Visual Inspection,PT,Air Leak Test for Shell Nozzle)) | 5d | 2014-05-11 | 2014-05-15 | HHI.3060 FF, HHI.3053 SS | 163d | 0d |
| HHI.3054 |  | Weld Outer Vertical Seam /Install the Stairways support on Shell | 1d | 2014-05-12 | 2014-05-12 | HHI.3053 SS+1d | 163.2d | 0d |
| HHI.3055 |  | Backgouge & NDT Inside Vertical Seam | 1d | 2014-05-12 | 2014-05-12 | HHI.3054 SS | 163.2d | 0d |
| HHI.3056 |  | Weld Inside Vertical Seam | 1d | 2014-05-13 | 2014-05-13 | HHI.3055 | 163.2d | 0d |
| HHI.3057 |  | "Weld Outer Horizontal Seam between / Shell Course # 4 & 5" | 1d | 2014-05-14 | 2014-05-14 | HHI.3056 | 163.2d | 0d |
| HHI.3058 |  | "Backgouge & NDT Inside Horizontal / Seam between Shell Course# 4 & 5" | 1d | 2014-05-14 | 2014-05-14 | HHI.3057 SS | 163.2d | 0d |
| HHI.3059 |  | Weld Inner Horizontal Seam between / Shell Course # 4 & 5" | 1d | 2014-05-15 | 2014-05-15 | HHI.3058 | 163.2d | 0d |
| HHI.3060 |  | Fit,Weld Nozzle on Shell | 0.8d | 2014-05-15 | 2014-05-15 | HHI.3059 SS | 163.2d | 0.2d |
|  | 15 | **RT FOR SHELL COURSE #5 JOINTS** |  | 2014-05-17 | 2014-05-17 |  |  |  |
| HHI.3062 |  | Perform RT | 1d | 2014-05-17 | 2014-05-17 | HHI.3061 | 163d | 0d |

| ID | WBS | Activity | Duration | Start | Finish | Predecessors | Total float | Free float |
| --- | --- | --- | --- | --- | --- | --- | --- | --- |
|  | 1 | **ROOF STRUCTURES/PLATES ASSEMBLY WITH TOP ANGLE ,PLATFROMS/STAIRWAYS & INTERNAL PIPING** |  | 2014-05-17 | 2014-06-07 |  |  |  |
|  | 1 | **TOP ANGLE** |  | 2014-05-17 | 2014-05-20 |  |  |  |
| HHI.3063 |  | Fit & Tack / Shell Course #5 & Top Angle | 1d | 2014-05-17 | 2014-05-17 | HHI.3062 SS | 163d | 0d |
| HHI.3069 |  | Quailty Check (Visual Inspection) | 4d | 2014-05-17 | 2014-05-20 | HHI.3063 SS, HHI.3068 FF | 163d | 0d |
| HHI.3064 |  | Weld Outer Horizontal Seam between / Shell Course # 5 & Top Angle | 1d | 2014-05-18 | 2014-05-18 | HHI.3063 | 163d | 0d |
| HHI.3066 |  | Fit up,Tack of Gusset Plates to Shell | 1d | 2014-05-18 | 2014-05-18 | HHI.3063 | 164d | 1d |
| HHI.3065 |  | "Backgouge & NDT Inside Horizontal / Seam between Shell Course# 7 & Top Angle | 1d | 2014-05-19 | 2014-05-19 | HHI.3064 | 163d | 0d |
| HHI.3067 |  | Weld Inner Horizontal Seam between / Shell Course # 7 & Top Angle | 1d | 2014-05-20 | 2014-05-20 | HHI.3065 | 163d | 0d |
| HHI.3068 |  | Welding of Gusset Plates | 1d | 2014-05-20 | 2014-05-20 | HHI.3066, HHI.3067 SS | 163d | 0d |
|  | 3 | **CENTER RING,RAFTERS& PURLINS** |  | 2014-05-19 | 2014-05-22 |  |  |  |
| HHI.3070 |  | Assembly of Center Ring with Rafters & Purlins | 2d | 2014-05-19 | 2014-05-20 | HHI.3069 SS+2d | 163d | 0d |
| HHI.3071 |  | Erect & Install Rafters to Gusset Plates /Install Internal Piping Brackets/Piping | 3d | 2014-05-20 | 2014-05-22 | HHI.3070 SS+1d | 163d | 0d |
|  | 4 | **ROOF PLATES/ROOF MANHOLES (M2,M3) & NOZZLES (N1,N2,V1,V2,H)** |  | 2014-05-24 | 2014-06-01 |  |  |  |
| HHI.3072 |  | Prepare/Lay Down Roof Plates (6 Plates) | 1d | 2014-05-24 | 2014-05-24 | HHI.3071 | 163d | 0d |
| HHI.3073 |  | Tacking of Roof Plates | 1d | 2014-05-24 | 2014-05-24 | HHI.3072 SS | 163d | 0d |
| HHI.3080 |  | Quailty Check (Visual Inspection& Vaccum Box Test,PT,Air Leak Test for Roof Manholes& Nozzles)) | 8d | 2014-05-24 | 2014-06-01 | HHI.3072 SS, HHI.3079 FF | 163d | 0d |
| HHI.3076 |  | Tack of Roof Plates to Curb Angle | 1d | 2014-05-25 | 2014-05-25 | HHI.3073 | 165d | 2d |
| HHI.3074 |  | Welding of Roof Plates (Short Seams) | 1d | 2014-05-26 | 2014-05-26 | HHI.3073 SS+2d | 163d | 0d |
| HHI.3075 |  | Welding of Roof Plates (Long Seams) | 2d | 2014-05-26 | 2014-05-27 | HHI.3074 SS | 163d | 0d |
| HHI.3077 |  | Welding of Roof Plates to Top Angle | 1d | 2014-05-28 | 2014-05-28 | HHI.3076, HHI.3075 | 163d | 0d |
| HHI.3078 |  | Fit,Weld Manholes ,Nozzles on Roof /install Top Platform Supports on Roof | 2d | 2014-05-31 | 2014-06-01 | HHI.3077 SS+2d | 163d | 0d |
| HHI.3079 |  | Weld Internal Piping to Nozzle N1 | 1d | 2014-06-01 | 2014-06-01 | HHI.3078 SS+1d | 163d | 0d |
|  | 6 | **PLATFORMS & STAIRWAYS ASSEMBLY** |  | 2014-06-02 | 2014-06-07 |  |  |  |
| HHI.3081 |  | Erect & Install Stairways & Platforms for Shell | 2d | 2014-06-02 | 2014-06-03 | HHI.3080 | 163d | 0d |
| HHI.3082 |  | Erect & Install Stairways & Platforms & Handrails for Roof | 2d | 2014-06-04 | 2014-06-05 | HHI.3081 | 163d | 0d |
| HHI.3083 |  | Quality Check | 1d | 2014-06-07 | 2014-06-07 | HHI.3082 | 163d | 0d |

| ID | WBS | Activity | Duration | Start | Finish | Predecessors | Total float | Free float |
| --- | --- | --- | --- | --- | --- | --- | --- | --- |
|  | 2 | **MCC** |  | 2014-06-08 | 2014-06-08 |  |  |  |
| HHI.3084 |  | Mechanical Completion (MCC) & Final Isnpection Before Hydrotesting | 1d | 2014-06-08 | 2014-06-08 | HHI.3083 | 163d | 0d |
|  | 3 | **HYDROTESTING,PAINTING ,ATTACHMENTS/VALVES/INSTRUMENTS INSTALLATION** |  | 2014-06-08 | 2014-07-30 |  |  |  |
|  | 1 | **HYDROTESTING** |  | 2014-06-08 | 2014-06-24 |  |  |  |
| HHI.3085 |  | Remove Stagging Blanks/Brackets & Install Blind Flanges | 1d | 2014-06-08 | 2014-06-08 | HHI.3084 SS | 163d | 0d |
| HHI.3086 |  | Tank Water Filling & Settlement | 6d | 2014-06-09 | 2014-06-15 | HHI.3085 | 163d | 0d |
| HHI.3087 |  | Hold & Inspect Water for 24 Hours | 1d | 2014-06-16 | 2014-06-16 | HHI.3086 | 163d | 0d |
| HHI.3088 |  | Drain Water from Tank & Transfer to other Tank | 3d | 2014-06-17 | 2014-06-19 | HHI.3087 | 163d | 0d |
| HHI.3089 |  | Install Mobile Scaffolding ,Internal Tank Cleaning & Dismantling Scaffolding | 3d | 2014-06-21 | 2014-06-23 | HHI.3088 | 163d | 0d |
| HHI.3090 |  | Quailty Check | 1d | 2014-06-24 | 2014-06-24 | HHI.3089 | 163d | 0d |
|  | 2 | **TANK ATTACHMENTS & ANCHOR BOLTS** |  | 2014-06-25 | 2014-06-26 |  |  |  |
| HHI.3091 |  | Install Name Plate Brackets/Attachments on shell Course #1 & Anchor Bolts | 2d | 2014-06-25 | 2014-06-26 | HHI.3090 | 163d | 0d |
|  | 10 | **EXTERNAL SURFACE PAINTING** |  | 2014-06-28 | 2014-07-05 |  |  |  |
| HHI.3092 |  | Perform Shell Surface Preparation & Painting | 2d | 2014-06-28 | 2014-07-01 | HHI.3091 | 163d | 0d |
| HHI.3094 |  | Quailty Check | 4d | 2014-06-28 | 2014-07-05 | HHI.3092 SS, HHI.3093 FF | 163d | 0d |
| HHI.3093 |  | Perform Roof Surface Preparation & Painting | 2d | 2014-07-01 | 2014-07-05 | HHI.3092 | 163d | 0d |
|  | 12 | **INTERNAL SURFACE PAINTING** |  | 2014-06-28 | 2014-07-26 |  |  |  |
| HHI.3095 |  | Install Scaffoldings | 3d | 2014-06-28 | 2014-07-02 | HHI.3092 SS | 164d | 1d |
| HHI.3096 |  | Perform Roof Underside Surface Preparation & Painting | 3d | 2014-07-05 | 2014-07-10 | HHI.3094, HHI.3095 | 163d | 0d |
| HHI.3100 |  | Quailty Check (including Holiday Test) | 11d | 2014-07-05 | 2014-07-26 | HHI.3099 FF, HHI.3096 SS | 163d | 0d |
| HHI.3097 |  | Perform Shell course Surface Preparation & Painting | 2d | 2014-07-10 | 2014-07-14 | HHI.3096 | 163d | 0d |
| HHI.3098 |  | Dismantle Scaffoldings | 3d | 2014-07-15 | 2014-07-20 | HHI.3097 | 163d | 0d |
| HHI.3099 |  | Perform Bottom Surface Preparation & Painting | 3d | 2014-07-21 | 2014-07-26 | HHI.3098 | 163d | 0d |
|  | 4 | **TANKS VALVES,INSTRUMENTS** |  | 2014-07-27 | 2014-07-30 |  |  |  |
| JF752.3101 |  | Install Valves,instruments (Supplied by client) | 1d | 2014-07-27 | 2014-07-30 | HHI.3100 | 163d | 0d |

Notes:
- HHI.3092: Description: ï»¿ / SA for Shells for 1 coat=2500 M2 (1 painter could perform 1250 / M2/day)

| ID | WBS | Activity | Duration | Start | Finish | Predecessors | Total float | Free float |
| --- | --- | --- | --- | --- | --- | --- | --- | --- |
|  | 6 | **FINAL INSPECTION & HANDOVER TO CLIENT** |  | 2014-07-30 | 2014-07-31 |  |  |  |
| HHI.3102 |  | Perform Final Inspection & Handover to CLient | 1d | 2014-07-30 | 2014-07-31 | JF752.3101 | 163d | 0d |
|  | 1 | **AREA P HANDOVER TO CLIENT (6 WATER STORAGE TANKS)** |  | 2014-07-31 | 2014-08-01 |  |  |  |
| HHI.3103 |  | AZ Handovers Area to Client | 1d | 2014-07-31 | 2014-08-01 | HHI.3102 | 163d |  |

## Risks

| ID | Risk | Status |
| --- | --- | --- |
| RISK1 | Delay in Water Supply | RS_Propose |
