# NACITA-6TH OF OCTOBER

Schedule from Primavera P6, 2012-10-01 to 2013-09-29, data date 2012-09-26, costs in EGP.
Must finish by 2013-10-01

## Calendars

- 7-Day Workweek(TENDER CALENDAR): Mon-Sun 08:00-12:00, 13:00-17:00.

## Resources

| Resource | Group | Rate |
| --- | --- | --- |
| cash | material | 1 |
| CASH-2 | material |  |
| R.C. CONCRETE | material |  |

## Schedule

| ID | WBS | Activity | Type | Duration | Start | Finish | Predecessors | Total float | Free float | Resources | Cost |
| --- | --- | --- | --- | --- | --- | --- | --- | --- | --- | --- | --- |
|  | 5 | **MILESTONES** |  |  | 2012-10-01 | 2013-09-27 |  |  |  |  |  |
| A-3 |  | Letter of acceptance | milestone | 0d | 2012-10-01 | 2012-10-01 |  | 1d | 0d |  |  |
| A-4 |  | Site handing over | milestone | 0d | 2012-10-01 | 2012-10-01 | A-3 | 1d | 0d |  |  |
| A-5 |  | Contract agreement | milestone | 0d | 2012-10-01 | 2012-10-01 | A-4 | 1d | 0d |  |  |
| A-6 |  | Advanced payment | milestone | 0d | 2012-10-01 | 2012-10-01 | A-5 | 1d | 0d |  |  |
| A-7 |  | Commencement date | milestone | 0d | 2012-10-01 | 2012-10-01 | A-6 | 1d | 0d |  |  |
| A-140 |  | Project handing over | milestone | 0d | 2013-09-27 | 2013-09-27 | A-136, A-137 | 3d | 0d |  |  |
|  | 4 | **MOBILIZATION** |  |  | 2012-10-01 | 2013-09-27 |  |  |  |  |  |
| A-2 |  | Mobilization |  | 14d | 2012-10-01 | 2012-10-14 | A-7 | 1d | 0d |  |  |
| A-139 |  | Demobilization |  | 7d | 2013-09-21 | 2013-09-27 | A-140 FF | 3d | 2d |  |  |
|  | 3 | **ENGINEERING** |  |  | 2012-10-08 | 2012-11-01 |  |  |  |  |  |
| A1110 |  | Concrete works Submittal |  | 20d | 2012-10-08 | 2012-10-27 | A-2 SS+7d | 333d | 0d |  |  |
| A1120 |  | Concrete works approval |  | 20d | 2012-10-13 | 2012-11-01 | A1110 SS+5d | 333d | 332d |  |  |
|  | 2 | **CONSTRUCTION** |  |  | 2012-10-06 | 2013-09-29 |  |  |  |  |  |
|  | - | **Adminstration Building** |  |  | 2012-10-06 | 2013-09-29 |  |  |  |  |  |
|  | Civil Works | **Civil Works** |  |  | 2012-10-06 | 2013-06-17 |  |  |  |  |  |
|  | Ground Floor | **Basement Floor** |  |  | 2012-10-06 | 2013-02-15 |  |  |  |  |  |
| A-15 |  | Excavation |  | 10d | 2012-10-06 | 2012-10-15 | A-2 SS+5d | 1d | 0d | cash [197118] | 197,118 |
| A-20 |  | Soil replacement |  | 10d | 2012-10-16 | 2012-10-25 | A-15 | 1d | 0d | cash [41738] | 41,738 |
| A-25 |  | P.C footings |  | 10d | 2012-10-26 | 2012-11-04 | A-20 | 1d | 0d | cash [45576] | 45,576 |
| A-31 |  | R.C footings |  | 14d | 2012-11-05 | 2012-11-18 | A-25 | 1d | 0d | cash [182635] | 182,635 |
| A-40 |  | R.C columns&walls |  | 20d | 2012-11-19 | 2012-12-08 | A-31 | 1d | 0d | cash [143664] | 143,664 |
| A-48 |  | Bituminous insulation |  | 10d | 2012-12-09 | 2012-12-18 | A-40 | 1d | 0d | cash [11800] | 11,800 |
| A-53 |  | Masonry under slab on grade |  | 20d | 2012-12-19 | 2013-01-07 | A-48 | 1d | 0d | cash |  |
| A-58 |  | Backfilling around foundation |  | 7d | 2013-01-08 | 2013-01-14 | A-53 | 1d | 0d | cash [54014] | 54,014 |
| A-65 |  | Slab on grade |  | 7d | 2013-01-15 | 2013-01-21 | A-58 | 1d | 0d | cash [33000]; cash [150000]; cash [10000] | 193,000 |
| A-70 |  | Basement floor R.C slab |  | 25d | 2013-01-22 | 2013-02-15 | A-65 | 1d | 0d | cash [173396]; cash [11611]; cash [71860] | 256,867 |

| ID | WBS | Activity | Duration | Start | Finish | Predecessors | Total float | Free float | Resources | Cost |
| --- | --- | --- | --- | --- | --- | --- | --- | --- | --- | --- |
|  | First Floor | **Ground Floor** |  | 2013-02-16 | 2013-03-26 |  |  |  |  |  |
| A-83 |  | Ground floor columns | 14d | 2013-02-16 | 2013-03-01 | A-70 | 1d | 0d | cash [26982] | 26,982 |
| A-88 |  | Ground floor slab | 25d | 2013-03-02 | 2013-03-26 | A-83 | 1d | 0d | cash [159531] | 159,531 |
|  | Second Floor | **First Floor** |  | 2013-03-27 | 2013-05-04 |  |  |  |  |  |
| A-98 |  | First floor columns | 14d | 2013-03-27 | 2013-04-09 | A-88 | 1d | 0d | cash [24073] | 24,073 |
| A-100 |  | First floor slab | 25d | 2013-04-10 | 2013-05-04 | A-98 | 1d | 0d | cash [73662]; cash [250144] | 323,806 |
|  | Third Floor | **Second Floor** |  | 2013-05-05 | 2013-06-10 |  |  |  |  |  |
| A-106 |  | Second floor columns | 12d | 2013-05-05 | 2013-05-16 | A-100 | 1d | 0d | cash [19503] | 19,503 |
| A-108 |  | Second floor slab | 25d | 2013-05-17 | 2013-06-10 | A-106 | 1d | 0d | cash [248519] | 248,519 |
|  | Roof | **Roof** |  | 2013-06-11 | 2013-06-17 |  |  |  |  |  |
| A-115 |  | Roof Parapet | 7d | 2013-06-11 | 2013-06-17 | A-108 | 55d | 0d | cash |  |
|  | Arch. Works | **Architecture Works** |  | 2013-04-10 | 2013-09-29 |  |  |  |  |  |
|  | Ground Floor | **Ground Floor** |  | 2013-04-10 | 2013-07-15 |  |  |  |  |  |
| A-101 |  | Masonry Works | 20d | 2013-04-10 | 2013-04-29 | A-88 FS+14d | 39d | 0d | cash [203547]; cash [41000] | 244,547 |
| A-105 |  | Internal Plaster Works | 25d | 2013-04-30 | 2013-05-24 | A-101 | 39d | 0d | cash [60000] | 60,000 |
| A-111 |  | Floors Works( Ceramic, Marble) | 25d | 2013-05-25 | 2013-06-18 | A-105 | 77d | 0d | cash [200000]; cash [35000] | 235,000 |
| A-116 |  | Stairs finishes | 10d | 2013-06-16 | 2013-06-25 | A-111 FF+7d | 97d | 96d | cash [117000]; cash [40206] | 157,206 |
| A-118 |  | Metal Works | 15d | 2013-06-18 | 2013-07-02 | A-111 FS-1d | 77d | 0d | cash |  |
| A-119 |  | Suspend Ceilings works | 12d | 2013-06-19 | 2013-06-30 | A-111 | 87d | 8d | cash [6000] | 6,000 |
| A-120 |  | Paints Works | 25d | 2013-06-19 | 2013-07-13 | A-119 FF+5d, A-111, A-105 | 79d | 78d | cash [40000] | 40,000 |
| A-113 |  | Doors&windows Works | 16d | 2013-06-30 | 2013-07-15 | A-111 SS+12d, A-118 FS-3d | 77d | 76d | cash [120000]; cash [41000]; cash [30800] | 232,800 |
|  | First Floor | **First Floor** |  | 2013-05-19 | 2013-08-23 |  |  |  |  |  |
| A-109 |  | Masonry Works | 20d | 2013-05-19 | 2013-06-07 | A-100 FS+14d | 38d | 0d | cash [203547]; cash [41000] | 244,547 |
| A-114 |  | Internal Plaster Works | 25d | 2013-06-08 | 2013-07-02 | A-109 | 38d | 0d | cash [60000] | 60,000 |
| A-122 |  | Floors Works( Ceramic, Marble) | 25d | 2013-07-03 | 2013-07-27 | A-114 | 38d | 0d | cash [200000]; cash [35000] | 235,000 |
| A-126 |  | Stairs finishes | 10d | 2013-07-25 | 2013-08-03 | A-122 FF+7d | 58d | 57d | cash [117000] | 117,000 |
| A-127 |  | Metal Works | 15d | 2013-07-27 | 2013-08-10 | A-122 FS-1d | 38d | 0d | cash |  |
| A-128 |  | Suspend Ceilings works | 12d | 2013-07-28 | 2013-08-08 | A-122 | 48d | 8d | cash [6000] | 6,000 |
| A-129 |  | Paints Works | 25d | 2013-07-28 | 2013-08-21 | A-128 FF+5d, A-122, A-114 | 40d | 39d | cash [40000] | 40,000 |
| A-123 |  | Doors&windows Works | 16d | 2013-08-08 | 2013-08-23 | A-122 SS+12d, A-127 FS-3d | 38d | 37d | cash [120000]; cash [41000] | 202,000 |

| ID | WBS | Activity | Duration | Start | Finish | Predecessors | Total float | Free float | Resources | Cost | user_text1 | TYPE OF WORK | FLOOR LEVEL | PET FILLING BUILDING |
| --- | --- | --- | --- | --- | --- | --- | --- | --- | --- | --- | --- | --- | --- | --- |
|  | Second Floor | **Second Floor** |  | 2013-06-25 | 2013-09-29 |  |  |  |  |  |  |  |  |  |
| A-121 |  | Masonry Works | 20d | 2013-06-25 | 2013-07-14 | A-108 FS+14d | 1d | 0d | cash [203547]; cash [41000] | 244,547 |  |  |  |  |
| A-124 |  | Internal Plaster Works | 25d | 2013-07-15 | 2013-08-08 | A-121 | 1d | 0d | cash [60000] | 60,000 |  |  |  |  |
| A-130 |  | Floors Works( Ceramic, Marble) | 25d | 2013-08-09 | 2013-09-02 | A-124 | 1d | 0d | cash [187000]; cash [22106]; cash [35000] | 244,106 |  |  |  |  |
| A-133 |  | Stairs finishes | 10d | 2013-08-31 | 2013-09-09 | A-130 FF+7d | 21d | 20d | cash [117000] | 117,000 |  |  |  |  |
| A-134 |  | Metal Works | 15d | 2013-09-02 | 2013-09-16 | A-130 FS-1d | 1d | 0d | cash |  |  |  |  |  |
| A-135 |  | Suspend Ceilings works | 12d | 2013-09-03 | 2013-09-14 | A-130 | 11d | 8d | cash [6000] | 6,000 |  |  |  |  |
| A-136 |  | Paints Works | 25d | 2013-09-03 | 2013-09-27 | A-135 FF+5d, A-130, A-124 | 3d | 0d | cash [40000] | 40,000 |  |  |  |  |
| A-138 |  | Plumbing works | 20d | 2013-09-08 | 2013-09-27 | A-136 SS+5d | 3d | 2d | cash |  |  |  |  |  |
| A-132 |  | Doors&windows Works | 16d | 2013-09-14 | 2013-09-29 | A-130 SS+12d, A-134 FS-3d | 1d | 0d | cash [120000]; cash [41000] | 202,000 |  |  |  |  |
|  | Roof & Elevations | **Roof and Elevations** |  | 2013-06-18 | 2013-09-27 |  |  |  |  |  |  |  |  |  |
| A-117 |  | Insulation works for roof | 30d | 2013-06-18 | 2013-07-17 | A-115 | 55d | 0d | cash [54250]; cash [33418]; cash [55093] | 142,761 |  |  |  |  |
| A-125 |  | Roof tiles | 20d | 2013-07-18 | 2013-08-06 | A-117 | 55d | 54d | cash [26000] | 26,000 |  |  |  |  |
| A-131 |  | External Plaster works | 30d | 2013-08-09 | 2013-09-07 | A-124 | 3d | 0d | cash [50000] | 50,000 |  |  |  |  |
| A-147 |  | Curtain wall erection | 30d | 2013-08-29 | 2013-09-27 | A-131 FS-10d | 3d | 2d | cash [308450] | 308,450 |  |  |  |  |
| A-137 |  | Dry mix painting | 20d | 2013-09-08 | 2013-09-27 | A-131 | 3d | 0d | cash |  |  |  |  |  |
|  | 1 | **MEP WORKS** |  | 2013-04-30 | 2013-08-22 |  |  |  |  |  |  |  |  |  |
| A1010 |  | Electrical works | 90d | 2013-04-30 | 2013-07-28 | A-101 | 64d | 63d | cash [2000000] | 2,000,000 |  |  |  |  |
| A1000 |  | Mechanical works | 90d | 2013-05-25 | 2013-08-22 | A-105 | 39d | 38d | cash [4000000] | 4,000,000 |  |  |  |  |
|  | 1 | **Storage building** |  | 2012-10-06 | 2013-09-26 |  |  |  |  |  |  |  |  |  |
|  | 1 | **Zone-1 (from axe 14 to axe17)** |  | 2012-10-06 | 2013-05-22 |  |  |  |  |  |  |  |  |  |
| A-16 |  | Excavation | 10d | 2012-10-06 | 2012-10-15 | A-2 SS+5d | 4d | 0d | cash [74000] | 74,000 | PET-C110 | civil | FOOTING | PET-Z 1 |
| A-18 |  | Replacement under fottings | 7d | 2012-10-16 | 2012-10-22 | A-16 | 4d | 0d | cash [270000] | 270,000 |  |  |  |  |
| A-21 |  | Plain Concrete footings | 14d | 2012-10-23 | 2012-11-05 | A-18 | 28d | 0d | cash [35000] | 35,000 | PET-C200 | civil | FOOTING | PET-Z 1 |
| A-27 |  | R.C. footings & tie beams | 15d | 2012-11-06 | 2012-11-20 | A-21 | 28d | 0d | cash [195000] | 195,000 | PET-C220 | civil | FOOTING | PET-Z 1 |
| A-36 |  | RC for pedestals | 14d | 2012-11-21 | 2012-12-04 | A-27 | 55d | 0d |  |  | PET-C260 | civil | FOOTING | PET-Z 1 |
| A-37 |  | Anchors for steel structure(by others) | 14d | 2012-11-21 | 2012-12-04 | A-36 FF | 55d | 0d | CASH-2 [80] |  | PET-C270 | civil | GROUND | PET-Z 1 |
| A-38 |  | R.C walls | 20d | 2012-11-21 | 2012-12-10 | A-27 | 56d | 1d |  |  |  |  |  |  |
| A-41 |  | Masonry works between pedestals | 14d | 2012-11-25 | 2012-12-08 | A-37 FS-10d | 55d | 0d |  |  |  |  |  |  |
| A-46 |  | Bituminous waterproofing for foundations | 7d | 2012-12-09 | 2012-12-15 | A-27 FS+3d, A-41, A-38 FS-3d | 55d | 0d | cash [9000] | 9,000 | PET-C240 | civil | FOOTING | PET-Z 1 |
| A-50 |  | Backfilling Between foundations | 7d | 2012-12-16 | 2012-12-22 | A-46 | 55d | 0d | cash [50000] | 50,000 | PET-C280 | civil | GROUND | PET-Z 1 |
| A-54 |  | Steel structure erection (BY OTHERS) | 20d | 2012-12-23 | 2013-01-11 | A-50 | 55d | 0d |  |  |  |  |  |  |
| A-63 |  | Erection of roofing works(by others) | 10d | 2013-01-12 | 2013-01-21 | A-54 | 131d | 0d |  |  |  |  |  |  |
| A-67 |  | Erection of walls linear sheeting(by others) | 10d | 2013-01-22 | 2013-01-31 | A-63 | 131d | 0d |  |  |  |  |  |  |
| A-74 |  | P.C Slab on grade | 7d | 2013-02-01 | 2013-02-07 | A-54, A-67 | 131d | 0d | cash [211333] | 211,333 |  |  |  |  |
| A-78 |  | R.C slab on grade | 14d | 2013-02-08 | 2013-02-21 | A-74 | 131d | 0d | cash [1200337] | 1,200,337 |  |  |  |  |

| ID | WBS | Activity | Duration | Start | Finish | Predecessors | Total float | Free float | Resources | Cost | user_text1 | TYPE OF WORK | FLOOR LEVEL | PET FILLING BUILDING |
| --- | --- | --- | --- | --- | --- | --- | --- | --- | --- | --- | --- | --- | --- | --- |
|  | 4 | **MEP WORKS** |  | 2013-02-22 | 2013-05-22 |  |  |  |  |  |  |  |  |  |
| A1040 |  | Mechanical works | 90d | 2013-02-22 | 2013-05-22 | A-78 | 131d | 127d | cash [2000000] | 2,000,000 |  |  |  |  |
| A1050 |  | Electrical works | 90d | 2013-02-22 | 2013-05-22 | A-78 | 131d | 127d | cash [1000000] | 1,000,000 |  |  |  |  |
|  | 2 | **Zone-2 (from axe 14 to axe 11)** |  | 2012-10-23 | 2013-06-08 |  |  |  |  |  |  |  |  |  |
| A-22 |  | Excavation | 20d | 2012-10-23 | 2012-11-11 | A-18 | 4d | 0d | cash [74000] | 74,000 | PET-C110 | civil | FOOTING | PET-Z 1 |
| A-26 |  | Replacement under fottings | 7d | 2012-11-12 | 2012-11-18 | A-22 | 4d | 0d | cash [27000] | 27,000 |  |  |  |  |
| A-28 |  | Plain Concrete footings | 14d | 2012-11-19 | 2012-12-02 | A-26 | 16d | 0d | cash [35000] | 35,000 | PET-C200 | civil | FOOTING | PET-Z 1 |
| A-39 |  | R.C. footings & tie beams | 15d | 2012-12-03 | 2012-12-17 | A-28, A-27 | 16d | 0d | cash [195000] | 195,000 | PET-C220 | civil | FOOTING | PET-Z 1 |
| A-43 |  | RC for pedestals | 14d | 2012-12-18 | 2012-12-31 | A-39 | 48d | 0d |  |  | PET-C260 | civil | FOOTING | PET-Z 1 |
| A-44 |  | Anchors for steel structure(by others) | 14d | 2012-12-18 | 2012-12-31 | A-43 FF | 48d | 0d | CASH-2 [80] |  | PET-C270 | civil | GROUND | PET-Z 1 |
| A-45 |  | R.C walls | 20d | 2012-12-18 | 2013-01-06 | A-39 | 49d | 1d |  |  |  |  |  |  |
| A-47 |  | Masonry works between pedestals | 14d | 2012-12-22 | 2013-01-04 | A-44 FS-10d | 48d | 0d |  |  |  |  |  |  |
| A-55 |  | Bituminous waterproofing for foundations | 7d | 2013-01-05 | 2013-01-11 | A-39 FS+3d, A-47, A-45 FS-3d | 48d | 0d | cash [9000]; cash [28000] | 37,000 | PET-C240 | civil | FOOTING | PET-Z 1 |
| A-56 |  | Backfilling Between foundations | 7d | 2013-01-12 | 2013-01-18 | A-55 | 48d | 0d | cash [50000] | 50,000 | PET-C280 | civil | GROUND | PET-Z 1 |
| A-62 |  | Steel structure erection (BY OTHERS) | 10d | 2013-01-19 | 2013-01-28 | A-56, A-54 | 48d | 0d |  |  |  |  |  |  |
| A-68 |  | Erection of roofing works(by others) | 10d | 2013-01-29 | 2013-02-07 | A-62 | 89d | 0d |  |  |  |  |  |  |
| A-75 |  | Erection of walls linear sheeting(by others) | 10d | 2013-02-08 | 2013-02-17 | A-68 | 89d | 0d |  |  |  |  |  |  |
| A-80 |  | P.C Slab on grade | 7d | 2013-02-18 | 2013-02-24 | A-62, A-75 | 89d | 0d | cash [211333] | 211,333 |  |  |  |  |
| A-82 |  | R.C slab on grade | 14d | 2013-02-25 | 2013-03-10 | A-80 | 89d | 0d | cash [1200337] | 1,200,337 |  |  |  |  |
|  | 4 | **MEP WORKS** |  | 2013-03-11 | 2013-06-08 |  |  |  |  |  |  |  |  |  |
| A1060 |  | Mechanical works | 90d | 2013-03-11 | 2013-06-08 | A-82 | 89d | 85d | cash [2000000] | 2,000,000 |  |  |  |  |
| A1070 |  | Electrical works | 90d | 2013-03-11 | 2013-06-08 | A-82 | 89d | 85d | cash [1000000] | 1,000,000 |  |  |  |  |
|  | 3 | **Zone-3 (from axe 11 to axe 1)** |  | 2012-11-19 | 2013-09-26 |  |  |  |  |  |  |  |  |  |
| A-29 |  | Excavation | 14d | 2012-11-19 | 2012-12-02 | A-26 | 4d | 0d | cash [74000] | 74,000 | PET-C110 | civil | FOOTING | PET-Z 1 |
| A-34 |  | Replacement under fottings | 7d | 2012-12-03 | 2012-12-09 | A-29 | 4d | 0d | cash [27000] | 27,000 |  |  |  |  |
| A-42 |  | Plain Concrete footings | 20d | 2012-12-10 | 2012-12-29 | A-34 | 4d | 0d | cash [35000] | 35,000 | PET-C200 | civil | FOOTING | PET-Z 1 |
| A-52 |  | R.C. footings & tie beams | 25d | 2012-12-30 | 2013-01-23 | A-42, A-39 | 4d | 0d | cash [195000] | 195,000 | PET-C220 | civil | FOOTING | PET-Z 1 |
| A-59 |  | RC for pedestals | 25d | 2013-01-24 | 2013-02-17 | A-52 | 4d | 0d | R.C. CONCRETE [8] |  | PET-C260 | civil | FOOTING | PET-Z 1 |
| A-60 |  | Anchors for steel structure(by others) | 25d | 2013-01-24 | 2013-02-17 | A-59 FF | 4d | 0d | CASH-2 [80] |  | PET-C270 | civil | GROUND | PET-Z 1 |
| A-61 |  | R.C walls | 20d | 2013-01-24 | 2013-02-12 | A-52 | 16d | 12d |  |  |  |  |  |  |
| A-72 |  | Masonry works between pedestals | 14d | 2013-02-08 | 2013-02-21 | A-60 FS-10d | 4d | 0d |  |  |  |  |  |  |
| A-79 |  | Bituminous waterproofing for foundations | 10d | 2013-02-22 | 2013-03-03 | A-52 FS+3d, A-72, A-61 FS-3d | 4d | 0d | cash [10000] | 10,000 | PET-C240 | civil | FOOTING | PET-Z 1 |
| A-84 |  | Backfilling Between foundations | 10d | 2013-03-04 | 2013-03-13 | A-79 | 4d | 0d | cash [50000] | 50,000 | PET-C280 | civil | GROUND | PET-Z 1 |
| A-86 |  | Steel structure erection (BY OTHERS) | 20d | 2013-03-14 | 2013-04-02 | A-84, A-62 | 4d | 0d |  |  |  |  |  |  |
| A-93 |  | Erection of roofing works(by others) | 14d | 2013-04-03 | 2013-04-16 | A-86 | 4d | 0d |  |  |  |  |  |  |
| A-99 |  | Erection of walls linear sheeting(by others) | 14d | 2013-04-17 | 2013-04-30 | A-93 | 4d | 0d |  |  |  |  |  |  |
| A-103 |  | P.C Slab on grade | 10d | 2013-05-01 | 2013-05-10 | A-86, A-99 | 4d | 0d | cash [211333] | 211,333 |  |  |  |  |
| A-104 |  | R.C slab on grade | 24d | 2013-05-11 | 2013-06-03 | A-103 | 4d | 0d | cash [1200337] | 1,200,337 |  |  |  |  |
| A-110 |  | Epoxy Flooring on S.O.G zones(1&2&3) | 25d | 2013-09-02 | 2013-09-26 | A-104, A1030, A1020, A1040 FF, A1050 FF, A1070, A1060 | 4d | 3d |  |  |  |  |  |  |
| A-148 |  | Metal works | 20d | 2013-09-02 | 2013-09-21 | A1030 | 9d | 8d | cash [220638]; cash [392431] | 613,069 |  |  |  |  |

| ID | WBS | Activity | Duration | Start | Finish | Predecessors | Total float | Free float | Resources | Cost |
| --- | --- | --- | --- | --- | --- | --- | --- | --- | --- | --- |
|  | 4 | **MEP WORKS** |  | 2013-06-04 | 2013-09-01 |  |  |  |  |  |
| A1020 |  | Electrical works | 90d | 2013-06-04 | 2013-09-01 | A-104 | 4d | 0d | cash [1000000] | 1,000,000 |
| A1030 |  | Mechanical works | 90d | 2013-06-04 | 2013-09-01 | A-104 | 4d | 0d | cash [2000000] | 2,000,000 |
|  | Electrical rooms | **Electrical Rooms** |  | 2013-01-13 | 2013-07-23 |  |  |  |  |  |
|  | Civil Works | **Civil Works** |  | 2013-01-13 | 2013-04-14 |  |  |  |  |  |
| A-64 |  | Excavation | 7d | 2013-01-13 | 2013-01-19 | A-2 FS+90d | 69d | 0d | cash [17545] | 17,545 |
| A-69 |  | Soil replacement | 7d | 2013-01-20 | 2013-01-26 | A-64 | 69d | 0d | cash [8019] | 8,019 |
| A-73 |  | P.C footings | 7d | 2013-01-27 | 2013-02-02 | A-69 | 69d | 0d | cash [6456] | 6,456 |
| A-77 |  | R.C footings | 14d | 2013-02-03 | 2013-02-16 | A-73 | 69d | 0d | cash [30000] | 30,000 |
| A-85 |  | R.C columns | 10d | 2013-02-17 | 2013-02-26 | A-77 | 69d | 0d | cash [27000] | 27,000 |
| A-87 |  | Bituminous insulation | 5d | 2013-02-27 | 2013-03-03 | A-85 | 69d | 0d | cash [1500] | 1,500 |
| A-90 |  | Masonry under slab on grade | 10d | 2013-03-04 | 2013-03-13 | A-87 | 69d | 0d | cash |  |
| A-92 |  | Backfilling around foundation | 5d | 2013-03-14 | 2013-03-18 | A-90 | 69d | 0d | cash [11761] | 11,761 |
| A-94 |  | Slab on grade | 7d | 2013-03-19 | 2013-03-25 | A-92 | 69d | 0d | cash [50658]; cash [166288]; cash [5492] | 222,438 |
| A-97 |  | Ground floor R.C slab | 20d | 2013-03-26 | 2013-04-14 | A-94 | 69d | 0d | cash [27000] | 27,000 |
|  | Arch. Works | **Architecture Works** |  | 2013-04-15 | 2013-07-23 |  |  |  |  |  |
| A-102 |  | Masonry works | 20d | 2013-04-15 | 2013-05-04 | A-97 | 69d | 0d | cash [146836] | 146,836 |
| A-107 |  | Plaster works | 20d | 2013-05-05 | 2013-05-24 | A-102 | 69d | 0d | cash [31764] | 31,764 |
| A-112 |  | Finishing works | 60d | 2013-05-25 | 2013-07-23 | A-107 | 69d | 68d | cash [28944]; cash [10967]; cash [8000]; cash [27000] | 74,911 |
|  | Underground Water ta | **Underground Water Tank** |  | 2013-03-14 | 2013-09-20 |  |  |  |  |  |
| A-19 |  | Excavation | 10d | 2013-03-14 | 2013-03-23 | A-2 FS+150d | 10d | 0d | cash [70740] | 70,740 |
| A-23 |  | Soil replacement | 12d | 2013-03-24 | 2013-04-04 | A-19 | 10d | 0d | cash [8712] | 8,712 |
| A-32 |  | P.C footings | 15d | 2013-04-05 | 2013-04-19 | A-23 | 10d | 0d | cash [19000] | 19,000 |
| A-35 |  | R.C footings | 25d | 2013-04-20 | 2013-05-14 | A-32 | 10d | 0d | cash [135000] | 135,000 |
| A-49 |  | R.C walls | 40d | 2013-05-15 | 2013-06-23 | A-35 | 10d | 0d | cash [135000] | 135,000 |
| A-71 |  | R.C slab | 20d | 2013-06-24 | 2013-07-13 | A-49 | 10d | 0d | cash [135000] | 135,000 |
| A-81 |  | Masonry works | 25d | 2013-07-14 | 2013-08-07 | A-71 | 10d | 0d |  |  |
| A-91 |  | Insulation works | 30d | 2013-08-08 | 2013-09-06 | A-81 | 10d | 0d | cash [40545]; cash [46412]; cash [8259]; cash [35658]; cash [100684] | 231,558 |
| A-141 |  | Metal works | 14d | 2013-09-07 | 2013-09-20 | A-91 | 10d | 9d | cash [18700] | 18,700 |
| A-151 |  | Backfilling works | 4d | 2013-09-07 | 2013-09-10 | A-91 | 20d | 19d | cash [13068] | 13,068 |

| ID | WBS | Activity | Duration | Start | Finish | Predecessors | Total float | Free float | Resources | Cost |
| --- | --- | --- | --- | --- | --- | --- | --- | --- | --- | --- |
|  | 2 | **External works** |  | 2013-05-19 | 2013-09-15 |  |  |  |  |  |
| A1080 |  | Roads & pavement works | 60d | 2013-05-19 | 2013-07-17 | A-7 FS+230d | 15d | 0d | cash [813386] | 813,386 |
| A1100 |  | Curb stones works | 60d | 2013-06-18 | 2013-08-16 | A1080 SS+30d | 15d | 0d | cash [50000] | 50,000 |
| A1090 |  | Interlook works | 60d | 2013-07-18 | 2013-09-15 | A1100 SS+30d | 15d | 14d | cash [100000] | 100,000 |
|  | Site Works | **Fence & gates** |  | 2013-02-12 | 2013-09-04 |  |  |  |  |  |
| A-1 |  | Excavation | 20d | 2013-02-12 | 2013-03-03 | A-2 FS+120d | 26d | 0d | cash [21294] | 21,294 |
| A-24 |  | P.C footings | 30d | 2013-03-04 | 2013-04-02 | A-1 | 26d | 0d | cash [37220] | 37,220 |
| A-30 |  | R.C footings | 30d | 2013-03-14 | 2013-04-12 | A-24 SS+10d | 26d | 0d | cash [100000] | 100,000 |
| A-33 |  | R.C columns | 30d | 2013-03-24 | 2013-04-22 | A-30 SS+10d | 26d | 0d | cash [65563] | 65,563 |
| A-51 |  | Bituminous insulation | 15d | 2013-04-23 | 2013-05-07 | A-33 | 26d | 0d | cash [7653] | 7,653 |
| A-57 |  | Backfilling around foundation | 20d | 2013-05-08 | 2013-05-27 | A-51 | 26d | 0d | cash [11000] | 11,000 |
| A-66 |  | Masonry works | 20d | 2013-05-28 | 2013-06-16 | A-57 | 26d | 0d | cash |  |
| A-76 |  | Stainless steel pipes | 30d | 2013-06-17 | 2013-07-16 | A-66 | 26d | 0d | cash [31500] | 31,500 |
| A-89 |  | Plaster works | 25d | 2013-07-17 | 2013-08-10 | A-76 | 26d | 0d | cash [128327] | 128,327 |
| A-95 |  | Gates erection | 25d | 2013-08-11 | 2013-09-04 | A-89 | 26d | 25d | cash |  |
| A-96 |  | dry mix paintings | 20d | 2013-08-11 | 2013-08-30 | A-89 | 31d | 30d | cash [84100] | 84,100 |

## Activity codes

| Code | Value | Meaning |
| --- | --- | --- |
| FLOOR LEVEL | FOOTING | FOOTING LEVEL |
| FLOOR LEVEL | GROUND | GROUND LEVEL |
| PET FILLING BUILDING | PET-Z 1 | ZONE 1 |
| TYPE OF WORK | civil | civil works |
