# Pharma Pack Project+finishes

Schedule from Primavera P6, 2012-06-02 to 2013-10-30, data date 2012-06-01.
Tender Schedule

## Calendars

- 6 DAYS WORK WEEK: Mon-Thu 08:00-12:00, 13:00-17:00; Fri off; Sat-Sun 08:00-12:00, 13:00-17:00.

## Schedule

| ID | WBS | Activity | Type | Duration | Start | Finish | Predecessors | Total float | Free float |
| --- | --- | --- | --- | --- | --- | --- | --- | --- | --- |
|  | Mobilization | **Mobilization** |  |  | 2012-06-02 | 2012-07-05 |  |  |  |
| A1000 |  | Mobilization |  | 30d | 2012-06-02 | 2012-07-05 |  | 413d |  |
| A1010 |  | Demobilization |  | 7d | 2012-06-02 | 2012-06-09 |  | 88d | 0d |
|  | Co. | **Construction** |  |  | 2012-06-02 | 2013-10-30 |  |  |  |
|  | Engineering & Utilit | **Engineering & Utilities Buildings** |  |  | 2012-06-02 | 2013-06-06 |  |  |  |
|  | Civil Works | **Civil Works** |  |  | 2012-06-02 | 2012-12-06 |  |  |  |
| A1340 |  | Excavation |  | 10d | 2012-06-02 | 2012-06-12 |  | 0d |  |
| A1350 |  | Soil Replacement |  | 10d | 2012-06-13 | 2012-06-24 | A1340 | 125d | 0d |
| A1360 |  | P.C footings |  | 10d | 2012-06-25 | 2012-07-05 | A1350 | 125d | 0d |
| A1390 |  | Bituminous insulation |  | 10d | 2012-07-07 | 2012-07-17 | A1360 | 125d | 0d |
| A1370 |  | R.C footings |  | 14d | 2012-07-18 | 2012-08-02 | A1390 | 125d | 0d |
| A1380 |  | R.C columns Ground floor |  | 14d | 2012-08-04 | 2012-08-19 | A1370 | 125d | 0d |
| A2180 |  | Ground floor R.C slab |  | 20d | 2012-08-20 | 2012-09-11 | A1380 | 125d | 0d |
| A2190 |  | First floor columns |  | 14d | 2012-09-12 | 2012-09-27 | A2180 | 125d | 0d |
| A2160 |  | Backfilling around foundation |  | 7d | 2012-09-29 | 2012-10-06 | A2190 | 151d | 0d |
| A2200 |  | First floor slab |  | 20d | 2012-09-29 | 2012-10-21 | A2190 | 125d | 0d |
| A2170 |  | Slab on grade |  | 7d | 2012-10-07 | 2012-10-14 | A2160 | 151d | 26d |
| A2210 |  | Steel structure erection |  | 20d | 2012-10-22 | 2012-11-13 | A2200 | 125d | 0d |
| A2220 |  | Corrugated sheets installation |  | 20d | 2012-11-14 | 2012-12-06 | A2210 | 281d | 156d |
|  | Arch.Wroks | **Architecture Works** |  |  | 2012-11-14 | 2013-06-06 |  |  |  |
| A2230 |  | Masonry works |  | 60d | 2012-11-14 | 2013-01-22 | A2170, A2210 | 125d | 0d |
| A2640 |  | Insulation works for roof |  | 14d | 2012-11-20 | 2012-12-05 | A2200 FS+25d | 272d | 0d |
| A2760 |  | Terrazo tiles for roofs |  | 10d | 2012-12-06 | 2012-12-17 | A2640 | 272d | 147d |
| A2630 |  | Membrane Insulation 4mm for toilets |  | 20d | 2013-01-23 | 2013-02-14 | A2230 | 197d | 0d |
| A2650 |  | Internal Plaster works for wallls |  | 50d | 2013-01-23 | 2013-03-21 | A2230 | 125d | 0d |
| A2660 |  | External plaster Works (Dry Mix) |  | 36d | 2013-01-23 | 2013-03-05 | A2230 | 205d | 80d |
| A2780 |  | Marble for External Elevations walls |  | 10d | 2013-02-10 | 2013-02-20 | A2230 FS+15d | 216d | 91d |
| A2690 |  | Ceramic works for floors |  | 8d | 2013-02-16 | 2013-02-24 | A2630 | 197d | 0d |
| A2700 |  | Ceramic works for walls |  | 10d | 2013-02-25 | 2013-03-07 | A2690 | 197d | 0d |
| A2740 |  | Partition for Bathrooms |  | 6d | 2013-03-09 | 2013-03-14 | A2700 | 197d | 72d |
| A2670 |  | Internal Paints for walls |  | 21d | 2013-03-23 | 2013-04-15 | A2650, A2680 FF+5d, A2750 FF | 125d | 0d |
| A2680 |  | Suspend Ceiling works |  | 16d | 2013-03-23 | 2013-04-09 | A2650 | 125d | 0d |
| A2750 |  | Aluminum Windows |  | 7d | 2013-03-23 | 2013-03-30 | A2650 | 139d | 14d |
| A2770 |  | Glass partitions for secaretary room |  | 3d | 2013-04-10 | 2013-04-13 | A2680 | 172d | 47d |
| A2710 |  | Epoxy paints for floors |  | 15d | 2013-04-16 | 2013-05-02 | A2650, A2670 | 125d | 0d |
| A2820 |  | Marble for stairs |  | 12d | 2013-04-16 | 2013-04-29 | A2670 | 146d | 0d |
| A2790 |  | Metal Works (handrails) |  | 12d | 2013-04-30 | 2013-05-13 | A2820 | 146d | 21d |
| A2720 |  | Steel Doors |  | 30d | 2013-05-04 | 2013-06-06 | A2670, A2710 | 125d | 0d |
| A2730 |  | Timber Doors |  | 12d | 2013-05-04 | 2013-05-16 | A2670, A2710 | 143d | 18d |
| A2810 |  | Complete finishing works | milestone | 0d | 2013-06-06 | 2013-06-06 | A2740 FF, A2720 FF, A2730 FF, A2790 FF, A2760 FF, A2220, A2780 FF, A2770 FF, A2660 FF | 125d |  |

| ID | WBS | Activity | Type | Duration | Start | Finish | Predecessors | Total float | Free float |
| --- | --- | --- | --- | --- | --- | --- | --- | --- | --- |
|  | Production Buildings | **Production Buildings** |  |  | 2012-07-01 | 2013-08-31 |  |  |  |
|  | Hi Solutions Buildin | **Hi Solutions Building** |  |  | 2012-11-06 | 2013-08-31 |  |  |  |
|  | Civil Works | **Civil Works** |  |  | 2012-11-06 | 2013-05-08 |  |  |  |
| A1020 |  | Excavation |  | 10d | 2012-11-06 | 2012-11-17 | A1180 FS+20d | 0d |  |
| A1030 |  | Soil Replacement |  | 10d | 2012-11-18 | 2012-11-28 | A1020 | 52d | 0d |
| A1040 |  | P.C footings |  | 10d | 2012-11-29 | 2012-12-10 | A1030 | 52d | 0d |
| A1050 |  | R.C footings |  | 14d | 2012-12-11 | 2012-12-26 | A1040 | 52d | 0d |
| A1060 |  | R.C columns |  | 14d | 2012-12-27 | 2013-01-12 | A1050 | 52d | 0d |
| A1630 |  | Bituminous insulation |  | 7d | 2013-01-13 | 2013-01-20 | A1060 | 52d | 0d |
| A1640 |  | Masonry under slab on grade |  | 20d | 2013-01-21 | 2013-02-12 | A1630 | 52d | 0d |
| A1650 |  | Backfilling around foundation |  | 14d | 2013-02-13 | 2013-02-28 | A1640 | 52d | 0d |
| A1660 |  | Slab on grade |  | 14d | 2013-03-02 | 2013-03-17 | A1650 | 52d | 0d |
| A1670 |  | Ground floor R.C slab |  | 20d | 2013-03-18 | 2013-04-09 | A1660 | 52d | 0d |
| A1680 |  | Steel structure erection |  | 25d | 2013-04-10 | 2013-05-08 | A1670 | 52d | 0d |
|  | Arch. Works | **Architecture Works** |  |  | 2013-04-10 | 2013-08-31 |  |  |  |
| A3050 |  | Insulation works for roof |  | 12d | 2013-04-10 | 2013-04-23 | A1670 | 151d | 0d |
| A3060 |  | Terrazo tiles for roofs |  | 12d | 2013-04-24 | 2013-05-07 | A3050 | 151d | 99d |
| A3240 |  | Corrugated sheets cladding |  | 16d | 2013-05-09 | 2013-05-27 | A1680 | 52d | 0d |
| A3040 |  | Masonry works |  | 12d | 2013-05-28 | 2013-06-10 | A1670, A3240 | 52d | 0d |
| A3080 |  | Internal Plaster works for wallls |  | 20d | 2013-06-11 | 2013-07-03 | A3040 | 52d | 0d |
| A3090 |  | External plaster Works + Dry Mix |  | 30d | 2013-06-11 | 2013-07-15 | A3040 | 92d | 40d |
| A3100 |  | Marble for External Elevations walls |  | 2d | 2013-06-29 | 2013-06-30 | A3040 FS+15d | 105d | 53d |
| A3140 |  | Internal Paints for walls |  | 18d | 2013-07-04 | 2013-07-24 | A3080, A3160 FF, A3080 FF+5d | 52d | 0d |
| A3160 |  | Aluminum Windows |  | 14d | 2013-07-04 | 2013-07-20 | A3080 | 56d | 4d |
| A3180 |  | Epoxy paints for floors |  | 20d | 2013-07-25 | 2013-08-17 | A3080, A3140 | 52d | 0d |
| A3210 |  | Steel Doors |  | 12d | 2013-08-18 | 2013-08-31 | A3140, A3180 | 52d | 0d |
| A3230 |  | Complete finishing works | milestone | 0d | 2013-08-31 | 2013-08-31 | A3210 FF, A3060 FF, A3100 FF, A3090 FF | 52d |  |

| ID | WBS | Activity | Type | Duration | Start | Finish | Predecessors | Total float | Free float |
| --- | --- | --- | --- | --- | --- | --- | --- | --- | --- |
|  | Liquids Building | **Liquids Building** |  |  | 2012-08-16 | 2013-06-06 |  |  |  |
|  | CivilWorks | **Civil Works** |  |  | 2012-08-16 | 2013-02-09 |  |  |  |
| A1070 |  | Excavation |  | 10d | 2012-08-16 | 2012-08-27 | A1220 FS+30d | 0d |  |
| A1080 |  | Soil Replacement |  | 7d | 2012-08-28 | 2012-09-04 | A1070 | 125d | 0d |
| A1090 |  | P.C footings |  | 10d | 2012-09-05 | 2012-09-16 | A1080 | 125d | 0d |
| A1100 |  | R.C footings |  | 14d | 2012-09-17 | 2012-10-02 | A1090 | 125d | 0d |
| A1110 |  | R.C columns |  | 14d | 2012-10-03 | 2012-10-18 | A1100 | 125d | 0d |
| A1120 |  | Bituminous insulation |  | 7d | 2012-10-20 | 2012-10-27 | A1110 | 125d | 0d |
| A1130 |  | Masonry under slab on grade |  | 14d | 2012-10-28 | 2012-11-12 | A1120 | 125d | 0d |
| A1140 |  | Backfilling around foundation |  | 14d | 2012-11-13 | 2012-11-28 | A1130 | 125d | 0d |
| A1150 |  | Slab on grade |  | 14d | 2012-11-29 | 2012-12-15 | A1140 | 125d | 0d |
| A1160 |  | Ground floor R.C slab |  | 18d | 2012-12-16 | 2013-01-05 | A1150 | 125d | 0d |
| A1170 |  | Steel structure erection |  | 30d | 2013-01-06 | 2013-02-09 | A1160 | 125d | 0d |
|  | Arch. works | **Architecture Works** |  |  | 2013-01-29 | 2013-06-06 |  |  |  |
| A3250 |  | Insulation works for roof |  | 12d | 2013-01-29 | 2013-02-11 | A1160 FS+20d | 206d | 0d |
| A3270 |  | Corrugated sheets cladding |  | 16d | 2013-02-10 | 2013-02-27 | A1170 | 125d | 0d |
| A3260 |  | Terrazo tiles for roofs |  | 18d | 2013-02-12 | 2013-03-04 | A3250 | 206d | 81d |
| A3280 |  | Masonry works |  | 12d | 2013-02-28 | 2013-03-13 | A3270 | 125d | 0d |
| A3290 |  | Internal Plaster works for wallls |  | 20d | 2013-03-14 | 2013-04-06 | A3280 | 125d | 0d |
| A3300 |  | External plaster Works + Dry Mix |  | 30d | 2013-03-14 | 2013-04-17 | A3280 | 168d | 43d |
| A3310 |  | Marble for External Elevations walls |  | 3d | 2013-04-01 | 2013-04-03 | A3280 FS+15d | 180d | 55d |
| A3320 |  | Internal Paints for walls |  | 18d | 2013-04-07 | 2013-04-27 | A3290, A3330 FF, A3290 FF+5d | 125d | 0d |
| A3330 |  | Aluminum Windows |  | 14d | 2013-04-07 | 2013-04-22 | A3290 | 129d | 4d |
| A3340 |  | Epoxy paints for floors |  | 25d | 2013-04-28 | 2013-05-26 | A3290, A3320 | 125d | 0d |
| A3350 |  | Steel Doors |  | 10d | 2013-05-27 | 2013-06-06 | A3320, A3340 | 125d | 0d |
| A3360 |  | Complete finishing works | milestone | 0d | 2013-06-06 | 2013-06-06 | A3350 FF, A3260 FF, A3310 FF, A3300 FF | 125d |  |

| ID | WBS | Activity | Type | Duration | Start | Finish | Predecessors | Total float | Free float |
| --- | --- | --- | --- | --- | --- | --- | --- | --- | --- |
|  | Soft Shell Building | **Soft Shell Building** |  |  | 2012-10-02 | 2013-07-10 |  |  |  |
|  | Civil Works | **Civil Works** |  |  | 2012-10-02 | 2013-03-30 |  |  |  |
| A1180 |  | Excavation |  | 10d | 2012-10-02 | 2012-10-13 | A1070 FS+30d | 0d |  |
| A1190 |  | Soil Replacement |  | 7d | 2012-10-14 | 2012-10-21 | A1180 | 96d | 0d |
| A1200 |  | P.C footings |  | 10d | 2012-10-22 | 2012-11-01 | A1190 | 96d | 0d |
| A1210 |  | R.C footings |  | 14d | 2012-11-03 | 2012-11-18 | A1200 | 96d | 0d |
| A1740 |  | R.C columns |  | 14d | 2012-11-19 | 2012-12-04 | A1210 | 96d | 0d |
| A1750 |  | Bituminous insulation |  | 7d | 2012-12-05 | 2012-12-12 | A1740 | 96d | 0d |
| A1760 |  | Masonry under slab on grade |  | 14d | 2012-12-13 | 2012-12-29 | A1750 | 96d | 0d |
| A1770 |  | Backfilling around foundation |  | 14d | 2012-12-30 | 2013-01-14 | A1760 | 96d | 0d |
| A1780 |  | Slab on grade |  | 14d | 2013-01-15 | 2013-01-30 | A1770 | 96d | 0d |
| A1790 |  | Ground floor R.C slab |  | 20d | 2013-01-31 | 2013-02-23 | A1780 | 96d | 0d |
| A1800 |  | Steel structure erection |  | 30d | 2013-02-24 | 2013-03-30 | A1790 | 96d | 0d |
|  | Arch. Works | **Architecture Works** |  |  | 2013-03-03 | 2013-07-10 |  |  |  |
| A3370 |  | Insulation works for roof |  | 16d | 2013-03-03 | 2013-03-20 | A1790 FS+6d | 172d | 0d |
| A3390 |  | Terrazo tiles for roofs |  | 20d | 2013-03-21 | 2013-04-13 | A3370 | 172d | 76d |
| A1810 |  | Corrugated sheets installation |  | 20d | 2013-03-31 | 2013-04-22 | A1800 | 164d |  |
| A3380 |  | Corrugated sheets cladding |  | 16d | 2013-03-31 | 2013-04-17 | A1800 | 96d | 0d |
| A3400 |  | Masonry works |  | 12d | 2013-04-18 | 2013-05-01 | A3380 | 96d | 0d |
| A3410 |  | Internal Plaster works for wallls |  | 14d | 2013-05-02 | 2013-05-18 | A3400 | 96d | 0d |
| A3420 |  | External plaster Works + Dry Mix |  | 25d | 2013-05-02 | 2013-05-30 | A3400 | 131d | 35d |
| A3440 |  | Internal Paints for walls |  | 18d | 2013-05-19 | 2013-06-08 | A3410, A3410 FF+5d | 96d | 0d |
| A3430 |  | Marble for External Elevations walls |  | 12d | 2013-05-20 | 2013-06-02 | A3400 FS+15d | 129d | 33d |
| A3460 |  | Epoxy paints for floors |  | 25d | 2013-06-09 | 2013-07-07 | A3410, A3440 | 96d | 0d |
| A3470 |  | Steel Doors |  | 3d | 2013-07-08 | 2013-07-10 | A3440, A3460 | 96d | 0d |
| A3480 |  | Complete finishing works | milestone | 0d | 2013-07-10 | 2013-07-10 | A3470 FF, A3390 FF, A3430 FF, A3420 FF | 96d |  |

| ID | WBS | Activity | Type | Duration | Start | Finish | Predecessors | Total float | Free float |
| --- | --- | --- | --- | --- | --- | --- | --- | --- | --- |
|  | Solids Building | **Solids Building** |  |  | 2012-07-01 | 2013-06-13 |  |  |  |
|  | Civil Works | **Civil Works** |  |  | 2012-07-01 | 2012-12-26 |  |  |  |
| A1220 |  | Excavation |  | 10d | 2012-07-01 | 2012-07-11 | A1340 FS+15d | 0d |  |
| A1230 |  | Soil replacement |  | 7d | 2012-07-12 | 2012-07-19 | A1220 | 119d | 0d |
| A1240 |  | P.C footings |  | 10d | 2012-07-21 | 2012-07-31 | A1230 | 119d | 0d |
| A1820 |  | R.C footings |  | 14d | 2012-08-01 | 2012-08-16 | A1240 | 119d | 0d |
| A1830 |  | R.C columns |  | 14d | 2012-08-18 | 2012-09-02 | A1820 | 119d | 0d |
| A1840 |  | Bituminous insulation |  | 7d | 2012-09-03 | 2012-09-10 | A1830 | 119d | 0d |
| A1850 |  | Masonry under slab on grade |  | 14d | 2012-09-11 | 2012-09-26 | A1840 | 119d | 0d |
| A1860 |  | Backfilling around foundation |  | 14d | 2012-09-27 | 2012-10-13 | A1850 | 119d | 0d |
| A1870 |  | Slab on grade |  | 14d | 2012-10-14 | 2012-10-29 | A1860 | 119d | 0d |
| A1880 |  | Ground floor R.C slab |  | 20d | 2012-10-30 | 2012-11-21 | A1870 | 119d | 0d |
| A1890 |  | Steel structure erection |  | 30d | 2012-11-22 | 2012-12-26 | A1880 | 119d | 0d |
|  | Arch. Works | **Architecture Works** |  |  | 2012-12-04 | 2013-06-13 |  |  |  |
| A3490 |  | Insulation works for roof |  | 30d | 2012-12-04 | 2013-01-07 | A1880 FS+10d | 219d | 0d |
| A3510 |  | Corrugated sheets cladding |  | 25d | 2012-12-30 | 2013-01-27 | A1890 FS+2d | 119d | 0d |
| A3500 |  | Terrazo tiles for roofs |  | 35d | 2013-01-08 | 2013-02-17 | A3490 | 219d | 100d |
| A3520 |  | Masonry works |  | 14d | 2013-01-28 | 2013-02-12 | A3510 | 119d | 0d |
| A3530 |  | Internal Plaster works for wallls |  | 30d | 2013-02-13 | 2013-03-19 | A3520 | 119d | 0d |
| A3540 |  | External plaster Works + Dry Mix |  | 40d | 2013-02-13 | 2013-03-31 | A3520 | 183d | 64d |
| A3550 |  | Marble Cladding for External Elevations walls |  | 8d | 2013-03-03 | 2013-03-11 | A3520 FS+15d | 200d | 81d |
| A3560 |  | Internal Paints for walls |  | 20d | 2013-03-20 | 2013-04-11 | A3530, A3570 FF, A3530 FF+5d | 119d | 0d |
| A3570 |  | Aluminum Windows |  | 12d | 2013-03-20 | 2013-04-02 | A3530 | 127d | 8d |
| A3580 |  | Epoxy paints for floors |  | 40d | 2013-04-13 | 2013-05-28 | A3530, A3560 | 119d | 0d |
| A3590 |  | Steel Doors |  | 14d | 2013-05-29 | 2013-06-13 | A3560, A3580 | 119d | 0d |
| A3600 |  | Complete finishing works | milestone | 0d | 2013-06-13 | 2013-06-13 | A3590 FF, A3500 FF, A3550 FF, A3540 FF | 119d |  |

| ID | WBS | Activity | Duration | Start | Finish | Predecessors | Total float | Free float |
| --- | --- | --- | --- | --- | --- | --- | --- | --- |
|  | Adminstration Buildi | **Adminstration Building** |  | 2012-06-02 | 2013-10-30 |  |  |  |
|  | Civil Works | **Civil Works** |  | 2012-11-29 | 2013-08-11 |  |  |  |
|  | Ground Floor | **Ground Floor** |  | 2012-11-29 | 2013-04-15 |  |  |  |
| A1250 |  | Excavation | 10d | 2012-11-29 | 2012-12-10 | A1020 FS+10d | 0d |  |
| A1260 |  | Soil replacement | 10d | 2012-12-11 | 2012-12-22 | A1250 | 0d |  |
| A1270 |  | P.C footings | 10d | 2012-12-23 | 2013-01-02 | A1260 | 0d |  |
| A1280 |  | R.C footings | 14d | 2013-01-03 | 2013-01-19 | A1270 | 0d |  |
| A1920 |  | R.C columns | 14d | 2013-01-20 | 2013-02-04 | A1280 | 0d |  |
| A1930 |  | Bituminous insulation | 10d | 2013-02-05 | 2013-02-16 | A1920 | 0d |  |
| A1940 |  | Masonry under slab on grade | 20d | 2013-02-17 | 2013-03-11 | A1930 | 0d |  |
| A1950 |  | Backfilling around foundation | 7d | 2013-03-12 | 2013-03-19 | A1940 | 0d |  |
| A1960 |  | Slab on grade | 3d | 2013-03-20 | 2013-03-23 | A1950 | 0d |  |
| A1970 |  | Ground floor R.C slab | 20d | 2013-03-24 | 2013-04-15 | A1960 | 0d |  |
|  | First Floor | **First Floor** |  | 2013-04-16 | 2013-05-25 |  |  |  |
| A1980 |  | First floor columns | 14d | 2013-04-16 | 2013-05-01 | A1970 | 0d |  |
| A1990 |  | First floor slab | 20d | 2013-05-02 | 2013-05-25 | A1980 | 0d |  |
|  | Second Floor | **Second Floor** |  | 2013-05-26 | 2013-07-01 |  |  |  |
| A2000 |  | Second floor columns | 14d | 2013-05-26 | 2013-06-10 | A1990 | 0d |  |
| A2010 |  | Second floor slab | 18d | 2013-06-11 | 2013-07-01 | A2000 | 0d |  |
|  | Third Floor | **Third Floor** |  | 2013-07-02 | 2013-08-03 |  |  |  |
| A2020 |  | Third floor columns | 12d | 2013-07-02 | 2013-07-15 | A2010 | 0d |  |
| A2030 |  | Third floor slab | 16d | 2013-07-16 | 2013-08-03 | A2020 | 0d |  |
|  | Roof | **Roof** |  | 2013-08-04 | 2013-08-11 |  |  |  |
| A3810 |  | Roof Parapet | 7d | 2013-08-04 | 2013-08-11 | A2030 | 45d | 0d |

| ID | WBS | Activity | Type | Duration | Start | Finish | Predecessors | Total float | Free float |
| --- | --- | --- | --- | --- | --- | --- | --- | --- | --- |
|  | Arch. Works | **Architecture Works** |  |  | 2012-06-02 | 2013-10-30 |  |  |  |
| A3640 |  | Membrane Insulation for toilets |  | 20d | 2012-06-02 | 2012-06-24 |  | 399d | 0d |
| A3650 |  | Internal Plaster works for wallls |  | 50d | 2012-06-02 | 2012-07-29 |  | 327d | 0d |
| A3660 |  | External plaster Works (Dry Mix) |  | 36d | 2012-06-02 | 2012-07-12 |  | 407d | 362d |
| A3670 |  | Marble for External Elevations walls |  | 10d | 2012-06-02 | 2012-06-12 |  | 433d | 388d |
| A3680 |  | Ceramic works for floors |  | 8d | 2012-06-25 | 2012-07-03 | A3640 | 399d | 0d |
| A3690 |  | Ceramic works for walls |  | 10d | 2012-07-04 | 2012-07-15 | A3680 | 399d | 0d |
| A3700 |  | Partition for Bathrooms |  | 6d | 2012-07-16 | 2012-07-22 | A3690 | 399d | 354d |
| A3710 |  | Internal Paints for walls |  | 21d | 2012-07-30 | 2012-08-22 | A3650, A3720 FF+5d, A3730 FF | 327d | 0d |
| A3720 |  | Suspend Ceiling works |  | 16d | 2012-07-30 | 2012-08-16 | A3650 | 327d | 0d |
| A3730 |  | Aluminum Windows |  | 7d | 2012-07-30 | 2012-08-06 | A3650 | 341d | 14d |
| A3740 |  | Glass partitions for secaretary room |  | 3d | 2012-08-18 | 2012-08-20 | A3720 | 374d | 329d |
| A3750 |  | Epoxy paints for floors |  | 15d | 2012-08-23 | 2012-09-09 | A3650, A3710 | 327d | 0d |
| A3760 |  | Marble for stairs |  | 12d | 2012-08-23 | 2012-09-05 | A3710 | 348d | 0d |
| A3770 |  | Metal Works (handrails) |  | 12d | 2012-09-06 | 2012-09-19 | A3760 | 348d | 303d |
| A3780 |  | Steel Doors |  | 30d | 2012-09-10 | 2012-10-14 | A3710, A3750 | 327d | 282d |
| A3790 |  | Timber Doors |  | 12d | 2012-09-10 | 2012-09-23 | A3710, A3750 | 345d | 300d |
| A3800 |  | Complete finishing works | milestone | 0d | 2013-09-08 | 2013-09-08 | A3700 FF, A3780 FF, A3790 FF, A3770 FF, A3630 FF, A3670 FF, A3740 FF, A3660 FF | 45d |  |
|  | Ground Floor | **Ground Floor** |  |  | 2013-04-16 | 2013-07-13 |  |  |  |
| A3820 |  | Masonry Works |  | 14d | 2013-04-16 | 2013-05-01 | A1970 | 94d | 0d |
| A3870 |  | Internal Plaster Works |  | 25d | 2013-05-02 | 2013-05-30 | A3820 | 100d | 0d |
| A3880 |  | Insulation Works for floors |  | 6d | 2013-05-02 | 2013-05-08 | A3820 | 94d | 0d |
| A3920 |  | Suspend Ceilings works |  | 12d | 2013-05-02 | 2013-05-15 | A3820 | 133d | 39d |
| A3950 |  | Windows Works |  | 12d | 2013-05-02 | 2013-05-15 | A3870 SS | 144d | 22d |
| A3890 |  | Floors Works( Ceramic, Marble) |  | 25d | 2013-05-09 | 2013-06-06 | A3880 | 94d | 0d |
| A3940 |  | Doors Works ( Glass, Wood) |  | 16d | 2013-05-23 | 2013-06-10 | A3890 SS+12d, A3950 FF | 122d |  |
| A3900 |  | Stairs finishes |  | 10d | 2013-06-08 | 2013-06-18 | A3930 SS | 105d | 0d |
| A3930 |  | Paints Works |  | 25d | 2013-06-08 | 2013-07-06 | A3870, A3920 FF+5d, A3890 | 94d | 0d |
| A3910 |  | Marble for Counters |  | 10d | 2013-06-10 | 2013-06-20 | A3890 FF+12d | 113d |  |
| A4080 |  | Metal Works |  | 10d | 2013-06-19 | 2013-06-30 | A3900 | 105d |  |
| A3960 |  | HDF floors |  | 6d | 2013-07-07 | 2013-07-13 | A3930 | 94d |  |

| ID | WBS | Activity | Duration | Start | Finish | Predecessors | Total float | Free float |
| --- | --- | --- | --- | --- | --- | --- | --- | --- |
|  | First Floor | **First Floor** |  | 2013-05-26 | 2013-08-21 |  |  |  |
| A3980 |  | Masonry Works | 14d | 2013-05-26 | 2013-06-10 | A1990 | 60d | 0d |
| A3970 |  | Suspend Ceilings works | 12d | 2013-06-11 | 2013-06-24 | A3980 | 99d | 39d |
| A3990 |  | Internal Plaster Works | 25d | 2013-06-11 | 2013-07-09 | A3980 | 66d | 0d |
| A4000 |  | Insulation Works for floors | 6d | 2013-06-11 | 2013-06-17 | A3980 | 60d | 0d |
| A4010 |  | Windows Works | 12d | 2013-06-11 | 2013-06-24 | A3990 SS | 110d | 22d |
| A4020 |  | Floors Works( Ceramic, Marble) | 25d | 2013-06-18 | 2013-07-16 | A4000 | 60d | 0d |
| A4030 |  | Doors Works ( Glass, Wood) | 16d | 2013-07-02 | 2013-07-20 | A4020 SS+12d, A4010 FF | 88d |  |
| A4040 |  | Stairs finishes | 10d | 2013-07-17 | 2013-07-28 | A4050 SS | 71d | 0d |
| A4050 |  | Paints Works | 25d | 2013-07-17 | 2013-08-14 | A3990, A3970 FF+5d, A4020 | 60d | 0d |
| A4060 |  | Marble for Counters | 10d | 2013-07-20 | 2013-07-30 | A4020 FF+12d | 79d |  |
| A4090 |  | Metal Works | 10d | 2013-07-29 | 2013-08-08 | A4040 | 71d |  |
| A4070 |  | HDF floors | 6d | 2013-08-15 | 2013-08-21 | A4050 | 60d |  |
|  | Second Floor | **Second Floor** |  | 2013-07-02 | 2013-09-28 |  |  |  |
| A4100 |  | Masonry Works | 14d | 2013-07-02 | 2013-07-17 | A2010 | 28d | 0d |
| A4110 |  | Internal Plaster Works | 25d | 2013-07-18 | 2013-08-15 | A4100 | 34d | 0d |
| A4120 |  | Insulation Works for floors | 6d | 2013-07-18 | 2013-07-24 | A4100 | 28d | 0d |
| A4130 |  | Suspend Ceilings works | 12d | 2013-07-18 | 2013-07-31 | A4100 | 67d | 39d |
| A4140 |  | Windows Works | 12d | 2013-07-18 | 2013-07-31 | A4110 SS | 78d | 22d |
| A4150 |  | Floors Works( Ceramic, Marble) | 25d | 2013-07-25 | 2013-08-22 | A4120 | 28d | 0d |
| A4160 |  | Doors Works ( Glass, Wood) | 16d | 2013-08-08 | 2013-08-26 | A4150 SS+12d, A4140 FF | 56d |  |
| A4170 |  | Stairs finishes | 10d | 2013-08-24 | 2013-09-03 | A4180 SS | 39d | 0d |
| A4180 |  | Paints Works | 25d | 2013-08-24 | 2013-09-21 | A4110, A4130 FF+5d, A4150 | 28d | 0d |
| A4190 |  | Marble for Counters | 10d | 2013-08-26 | 2013-09-05 | A4150 FF+12d | 47d |  |
| A4200 |  | Metal Works | 10d | 2013-09-04 | 2013-09-15 | A4170 | 39d |  |
| A4210 |  | HDF floors | 6d | 2013-09-22 | 2013-09-28 | A4180 | 28d |  |

| ID | WBS | Activity | Duration | Start | Finish | Predecessors | Total float | Free float |
| --- | --- | --- | --- | --- | --- | --- | --- | --- |
|  | Third Floor | **Third Floor** |  | 2013-08-04 | 2013-10-30 |  |  |  |
| A4220 |  | Masonry Works | 14d | 2013-08-04 | 2013-08-19 | A2030 | 0d |  |
| A4230 |  | Internal Plaster Works | 25d | 2013-08-20 | 2013-09-17 | A4220 | 6d | 0d |
| A4240 |  | Insulation Works for floors | 6d | 2013-08-20 | 2013-08-26 | A4220 | 0d |  |
| A4250 |  | Suspend Ceilings works | 12d | 2013-08-20 | 2013-09-02 | A4220 | 39d |  |
| A4260 |  | Windows Works | 12d | 2013-08-20 | 2013-09-02 | A4230 SS | 50d | 22d |
| A4270 |  | Floors Works( Ceramic, Marble) | 25d | 2013-08-27 | 2013-09-24 | A4240 | 0d |  |
| A4280 |  | Doors Works ( Glass, Wood) | 16d | 2013-09-10 | 2013-09-28 | A4270 SS+12d, A4260 FF | 28d |  |
| A4290 |  | Stairs finishes | 10d | 2013-09-25 | 2013-10-06 | A4300 SS | 11d | 0d |
| A4300 |  | Paints Works | 25d | 2013-09-25 | 2013-10-23 | A4230, A4250 FF+5d, A4270 | 0d |  |
| A4310 |  | Marble for Counters | 10d | 2013-09-28 | 2013-10-08 | A4270 FF+12d | 19d |  |
| A4320 |  | Metal Works | 10d | 2013-10-07 | 2013-10-17 | A4290 | 11d |  |
| A4330 |  | HDF floors | 6d | 2013-10-24 | 2013-10-30 | A4300 | 0d |  |
|  | Roof & Elevations | **Roof and Elevations** |  | 2012-06-02 | 2013-09-08 |  |  |  |
| A4340 |  | New Activity | 1d | 2012-06-02 | 2012-06-02 |  |  |  |
| A3620 |  | Insulation works for roof | 14d | 2013-08-12 | 2013-08-27 | A3810 | 45d | 0d |
| A3630 |  | Terrazo tiles for roofs | 10d | 2013-08-28 | 2013-09-08 | A3620 | 45d | 0d |
|  | Cafeteria Building | **Cafeteria Building** |  | 2012-12-05 | 2013-07-22 |  |  |  |
|  | Civil Works | **Civil Works** |  | 2012-12-05 | 2013-02-20 |  |  |  |
| A1290 |  | Excavation | 7d | 2012-12-05 | 2012-12-12 | A1020 FS+15d | 86d | 0d |
| A1300 |  | Soil Replacement | 7d | 2012-12-13 | 2012-12-20 | A1290 | 86d | 0d |
| A1310 |  | P.C footings | 7d | 2012-12-22 | 2012-12-29 | A1300 | 86d | 0d |
| A1320 |  | R.C footings | 14d | 2012-12-30 | 2013-01-14 | A1310 | 86d | 0d |
| A2070 |  | Bituminous insulation | 5d | 2013-01-15 | 2013-01-20 | A1320 | 105d | 0d |
| A1330 |  | R.C columns Ground floor | 10d | 2013-01-17 | 2013-01-28 | A1320 FS+2d | 86d | 0d |
| A2090 |  | Backfilling around foundation | 5d | 2013-01-21 | 2013-01-26 | A2070 | 105d | 0d |
| A2080 |  | Masonry under slab on grade | 14d | 2013-01-27 | 2013-02-11 | A2090 | 224d |  |
| A2100 |  | Slab on grade | 3d | 2013-01-27 | 2013-01-29 | A2090 | 105d | 19d |
| A2110 |  | Ground floor R.C slab | 20d | 2013-01-29 | 2013-02-20 | A1330 | 86d | 0d |

| ID | WBS | Activity | Duration | Start | Finish | Predecessors | Total float | Free float |
| --- | --- | --- | --- | --- | --- | --- | --- | --- |
|  | Arch. works | **Architecture Works** |  | 2013-02-21 | 2013-07-22 |  |  |  |
| A2120 |  | Masonry works | 20d | 2013-02-21 | 2013-03-16 | A2110, A2100 | 86d | 0d |
| A2130 |  | Plaster works | 20d | 2013-03-17 | 2013-04-08 | A2120 | 86d | 0d |
| A2140 |  | Finishing works | 90d | 2013-04-09 | 2013-07-22 | A2130 | 86d |  |
|  | Warehouse | **Steel Structure Warehouse** |  | 2012-12-11 | 2013-08-31 |  |  |  |
|  | Civil Works | **Civil Works** |  | 2012-12-11 | 2013-06-04 |  |  |  |
| A1400 |  | Excavation | 10d | 2012-12-11 | 2012-12-22 | A1340 FS+155d | 52d | 0d |
| A1420 |  | Soil Replacement | 12d | 2012-12-23 | 2013-01-05 | A1400 | 52d | 0d |
| A1430 |  | P.C footings | 10d | 2013-01-06 | 2013-01-16 | A1420 | 52d | 0d |
| A1440 |  | R.C footings | 16d | 2013-01-17 | 2013-02-04 | A1430 | 52d | 0d |
| A1410 |  | Backfilling around foundation | 12d | 2013-02-05 | 2013-02-18 | A1440 | 52d | 0d |
| A2550 |  | R.C for Pedestals | 18d | 2013-02-05 | 2013-02-25 | A1440 | 62d | 10d |
| A2560 |  | R.C for tie beams | 20d | 2013-02-19 | 2013-03-13 | A2550 SS+2d, A1440, A1410 | 52d | 0d |
| A2580 |  | Bituminous emulsion Insulation | 10d | 2013-03-14 | 2013-03-25 | A2560, A2550 | 52d | 0d |
| A2530 |  | Polyethyllen Insulation under S.O.G | 8d | 2013-03-26 | 2013-04-03 | A2580, A1410 | 52d | 0d |
| A2540 |  | R.C Slab on grade | 25d | 2013-03-27 | 2013-04-24 | A2560, A2530 SS+1d | 52d | 0d |
| A2570 |  | Steel Structure Erection | 35d | 2013-04-25 | 2013-06-04 | A2540 | 52d | 0d |
| A2590 |  | R.C for deck slab | 12d | 2013-05-19 | 2013-06-01 | A2570 SS+20d | 114d | 3d |
|  | Arch. Works | **Architecture Works** |  | 2013-06-05 | 2013-08-31 |  |  |  |
| A2600 |  | Cladding for walls & Roof | 16d | 2013-06-05 | 2013-06-23 | A2570, A2590 | 111d |  |
| A2610 |  | Masonry works | 25d | 2013-06-05 | 2013-07-03 | A2570 | 52d | 0d |
| A2620 |  | Finishes | 60d | 2013-06-23 | 2013-08-31 | A2610 SS+15d | 52d |  |
|  | Electrical rooms | **Electrical Rooms** |  | 2013-01-09 | 2013-08-15 |  |  |  |
|  | Civil Works | **Civil Works** |  | 2013-01-09 | 2013-04-21 |  |  |  |
| A1450 |  | Excavation | 7d | 2013-01-09 | 2013-01-16 | A1340 FS+180d | 55d | 0d |
| A1460 |  | Soil replacement | 7d | 2013-01-17 | 2013-01-24 | A1450 | 65d | 0d |
| A1470 |  | P.Cfootings | 7d | 2013-01-26 | 2013-02-02 | A1460 | 65d | 0d |
| A1480 |  | R.C footings | 14d | 2013-02-03 | 2013-02-18 | A1470 | 65d | 0d |
| A1490 |  | R.C columns | 10d | 2013-02-19 | 2013-03-02 | A1480 | 65d | 0d |
| A1500 |  | Bituminous insulation | 5d | 2013-03-03 | 2013-03-07 | A1490 | 65d | 0d |
| A2250 |  | Masonry under slab on grade | 10d | 2013-03-09 | 2013-03-19 | A1500 | 65d | 0d |
| A2260 |  | Backfilling around foundation | 5d | 2013-03-20 | 2013-03-25 | A2250 | 65d | 0d |
| A2270 |  | Slab on grade | 3d | 2013-03-26 | 2013-03-28 | A2260 | 65d | 0d |
| A2280 |  | Ground floor R.C slab | 20d | 2013-03-30 | 2013-04-21 | A2270 | 65d | 0d |

| ID | WBS | Activity | Duration | Start | Finish | Predecessors | Total float | Free float |
| --- | --- | --- | --- | --- | --- | --- | --- | --- |
|  | Arch. Works | **Architecture Works** |  | 2013-04-22 | 2013-08-15 |  |  |  |
| A2290 |  | Masonry works | 20d | 2013-04-22 | 2013-05-14 | A2280 | 65d | 0d |
| A2300 |  | Plaster works | 20d | 2013-05-15 | 2013-06-06 | A2290 | 65d | 0d |
| A2310 |  | Finishing works | 60d | 2013-06-08 | 2013-08-15 | A2300 | 65d |  |
|  | Distribution Room | **Disribution Room** |  | 2013-01-09 | 2013-08-15 |  |  |  |
|  | Civil Works | **Civil Works** |  | 2013-01-09 | 2013-04-21 |  |  |  |
| A2320 |  | Excavation | 7d | 2013-01-09 | 2013-01-16 | A1450 SS | 65d | 0d |
| A2330 |  | Soil replacement | 7d | 2013-01-17 | 2013-01-24 | A2320, A2320 FF | 65d | 0d |
| A2340 |  | P.Cfootings | 7d | 2013-01-26 | 2013-02-02 | A2330, A2330 FF | 65d | 0d |
| A2350 |  | R.C footings | 14d | 2013-02-03 | 2013-02-18 | A2340, A2340 FF | 65d | 0d |
| A2360 |  | R.C columns | 10d | 2013-02-19 | 2013-03-02 | A2350 FF, A2350 | 65d | 0d |
| A2370 |  | Bituminous insulation | 5d | 2013-03-03 | 2013-03-07 | A2360, A2360 FF | 65d | 0d |
| A2380 |  | Masonry under slab on grade | 10d | 2013-03-09 | 2013-03-19 | A2370 FF, A2370 | 65d | 0d |
| A2390 |  | Backfilling around foundation | 5d | 2013-03-20 | 2013-03-25 | A2380 FF, A2380 | 65d | 0d |
| A2400 |  | Slab on grade | 3d | 2013-03-26 | 2013-03-28 | A2390, A2390 FF | 65d | 0d |
| A2410 |  | Ground floor R.C slab | 20d | 2013-03-30 | 2013-04-21 | A2400 FF, A2400 | 65d | 0d |
|  | Arch. Works | **Architecture Works** |  | 2013-04-22 | 2013-08-15 |  |  |  |
| A2420 |  | Masonry works | 20d | 2013-04-22 | 2013-05-14 | A2410 FF, A2410 | 65d | 0d |
| A2430 |  | Plaster works | 20d | 2013-05-15 | 2013-06-06 | A2420, A2420 FF | 65d | 0d |
| A2440 |  | Finishing works | 60d | 2013-06-08 | 2013-08-15 | A2430, A2430 FF | 65d |  |
|  | Underground Water ta | **Underground Water Tank** |  | 2013-01-09 | 2013-07-21 |  |  |  |
| A1510 |  | Excavation | 10d | 2013-01-09 | 2013-01-20 | A1340 FS+180d | 87d | 0d |
| A1520 |  | Soil replacement | 12d | 2013-01-21 | 2013-02-03 | A1510 | 87d | 0d |
| A1530 |  | P.C footings | 12d | 2013-02-04 | 2013-02-17 | A1520 | 87d | 0d |
| A1540 |  | R.C footings | 25d | 2013-02-18 | 2013-03-18 | A1530 | 87d | 0d |
| A1550 |  | R.C walls | 40d | 2013-03-19 | 2013-05-04 | A1540 | 87d | 0d |
| A1560 |  | R.C slab | 20d | 2013-05-05 | 2013-05-27 | A1550 | 87d | 0d |
| A2450 |  | Insulation work | 22d | 2013-05-28 | 2013-06-22 | A1560 | 87d | 0d |
| A2460 |  | Masonry works | 25d | 2013-06-23 | 2013-07-21 | A2450 | 87d |  |

| ID | WBS | Activity | Duration | Start | Finish | Predecessors | Total float | Free float |
| --- | --- | --- | --- | --- | --- | --- | --- | --- |
|  | Site Works | **Site Works: Fence & Gates, Hardscape, etc...** |  | 2013-01-09 | 2013-08-27 |  |  |  |
| A1570 |  | Excavation | 12d | 2013-01-09 | 2013-01-22 | A1450 SS | 55d | 0d |
| A1580 |  | Soil replacement | 12d | 2013-01-23 | 2013-02-05 | A1570 | 55d | 0d |
| A1590 |  | P.C footings | 30d | 2013-02-06 | 2013-03-12 | A1580 | 55d | 0d |
| A1600 |  | R.C footings | 30d | 2013-02-18 | 2013-03-24 | A1590 SS+10d | 55d | 0d |
| A1610 |  | R.C columns | 30d | 2013-03-02 | 2013-04-04 | A1600 SS+10d | 55d | 0d |
| A1620 |  | Bituminous insulation | 15d | 2013-04-06 | 2013-04-22 | A1610 | 55d | 0d |
| A2470 |  | Backfilling around foundation | 20d | 2013-04-23 | 2013-05-15 | A1620 | 55d | 0d |
| A2480 |  | Masonry works | 14d | 2013-05-16 | 2013-06-01 | A2470 | 55d | 0d |
| A2490 |  | Stainless steel pipes | 30d | 2013-06-02 | 2013-07-06 | A2480 | 55d | 0d |
| A2500 |  | Plaster works | 20d | 2013-07-07 | 2013-07-29 | A2490 | 55d | 0d |
| A2510 |  | Gates erection | 25d | 2013-07-30 | 2013-08-27 | A2500 | 55d |  |
| A2520 |  | dry mix paintings | 20d | 2013-07-30 | 2013-08-21 | A2500 | 60d |  |
|  | Quality Internal Aud | **Quality Internal Audit** |  | 2012-09-09 | 2013-07-20 |  |  |  |
| QA3 |  | The 1st Internal Quality Audit on site | 3d | 2012-09-09 | 2012-09-11 | A1010 FS+78d | 355d |  |
| QA8 |  | The 2nd Internal Quality Audit on site | 5d | 2013-01-13 | 2013-01-17 | A1010 FS+186d | 245d |  |
| QA13 |  | The 3rd Internal Quality Audit on site | 8d | 2013-07-11 | 2013-07-20 | A1010 FS+340d | 88d |  |
