# SEEG PROJECT-EGYPT-FENCE

Schedule from Primavera P6, 2012-08-07 to 2012-10-20, data date 2012-08-07.
Must finish by 2012-10-22

## Calendars

- 7-Day Workweek(TENDER CALENDAR): Mon-Sun 08:00-12:00, 13:00-17:00.

## Schedule

| ID | WBS | Activity | Type | Duration | Start | Finish | Predecessors | Total float | Free float |
| --- | --- | --- | --- | --- | --- | --- | --- | --- | --- |
|  | 1 | **MILESTONES** |  |  | 2012-08-07 | 2012-10-20 |  |  |  |
| A1080 |  | Letter of acceptance | milestone | 0d | 2012-08-07 | 2012-08-07 |  | 1d | 0d |
| A1090 |  | Site handing over | milestone | 0d | 2012-08-07 | 2012-08-07 | A1080 | 1d | 0d |
| A1100 |  | Contract agreement | milestone | 0d | 2012-08-07 | 2012-08-07 | A1090 | 1d | 0d |
| A1120 |  | Receive advanced payment | milestone | 0d | 2012-08-07 | 2012-08-07 | A1100 | 1d | 0d |
| A1150 |  | Commencement date | milestone | 0d | 2012-08-07 | 2012-08-07 | A1120 | 1d | 0d |
| A1110 |  | Project handing over | milestone | 0d | 2012-10-20 | 2012-10-20 | A1070 | 1d | 0d |
|  | 2 | **MOBILIZATION** |  |  | 2012-08-07 | 2012-10-20 |  |  |  |
| A1130 |  | Mobilization |  | 5d | 2012-08-07 | 2012-08-11 | A1150 | 1d | 0d |
| A1140 |  | Demobilization |  | 4d | 2012-10-17 | 2012-10-20 | A1070 FF | 1d | 0d |
|  | 3 | **ENGINEERING** |  |  | 2012-08-07 | 2012-08-08 |  |  |  |
|  | 1 | **MATERIAL** |  |  | 2012-08-07 | 2012-08-08 |  |  |  |
| A1190 |  | All material submittals |  | 1d | 2012-08-07 | 2012-08-07 | A1130 SS | 5d | 0d |
| A1200 |  | All material approvals |  | 1d | 2012-08-08 | 2012-08-08 | A1190 | 5d | 4d |
|  | 4 | **CONSTRUCTION** |  |  | 2012-08-10 | 2012-10-20 |  |  |  |
|  | 2 | **FENCE AND GATE** |  |  | 2012-08-10 | 2012-10-20 |  |  |  |
| A1000 |  | Excavation |  | 47d | 2012-08-10 | 2012-09-25 | A1130 SS+3d | 1d | 0d |
| A1210 |  | Soil replacement&compaction |  | 47d | 2012-08-13 | 2012-09-28 | A1000 SS+3d, A1200 | 1d | 0d |
| A1010 |  | Lean concrete under foundation |  | 47d | 2012-08-16 | 2012-10-01 | A1210 SS+3d | 1d | 0d |
| A1020 |  | R.C foundation |  | 47d | 2012-08-19 | 2012-10-04 | A1010 SS+3d | 1d | 0d |
| A1030 |  | R.C for retaining wall |  | 47d | 2012-08-22 | 2012-10-07 | A1020 SS+3d | 7d | 6d |
| A1180 |  | R.C columns |  | 47d | 2012-08-22 | 2012-10-07 | A1020 SS+3d | 1d | 0d |
| A1040 |  | Masonry works for brick wall |  | 47d | 2012-08-25 | 2012-10-10 | A1180 SS+3d | 1d | 0d |
| A1050 |  | Concrete beam over brick wall |  | 47d | 2012-08-28 | 2012-10-13 | A1040 SS+3d | 1d | 0d |
| A1060 |  | Bituminous insulation |  | 47d | 2012-08-31 | 2012-10-16 | A1050 SS+3d, A1030 SS+3d | 1d | 0d |
| A1070 |  | Backfilling around foundations |  | 48d | 2012-09-03 | 2012-10-20 | A1060 SS+3d | 1d | 0d |
