# electrical schedule

Schedule from MS Project, 2011-03-03 to 2011-09-04.

## Calendars

- Standard: Mon-Thu 08:00-12:00, 13:00-17:00; Fri off; Sat-Sun 08:00-17:00.

## Schedule

| ID | WBS | Task | Duration | Start | Finish | Total slack | Constraint |
| --- | --- | --- | --- | --- | --- | --- | --- |
| 1 | 1 | **مبنى إدارة المبيعات** | 78d | 2011-03-03 | 2011-05-29 | 0d |  |
| 2 | 1.1 | **الدور الأرضي** | 78d | 2011-03-03 | 2011-05-29 | 0d |  |
| 3 | 1.1.1 | مد الخراطيم في الأسقف | 2d | 2011-03-03 | 2011-03-05 | 0d | start no earlier than 2011-03-03 |
| 4 | 1.1.2 | دق و تركيب العلب و المواسير بالحوائط لجميع الأنظمة | 5d | 2011-03-20 | 2011-03-24 | 0d | start no earlier than 2011-03-20 |
| 5 | 1.1.3 | تركيب حوامل الكابلات | 2d | 2011-04-02 | 2011-04-03 | 0d | start no earlier than 2011-04-02 |
| 6 | 1.1.4 | سحب أسلاك و كابلات للكهرباء و التيار الضعيف | 2d | 2011-04-02 | 2011-04-03 | 0d | start no earlier than 2011-04-02 |
| 7 | 1.1.5 | تركيب المفاتيح و البرايز و الكشافات و مفاتيح الفصل و فريمات التليفونات و لوحات الكهرباء | 3d | 2011-05-21 | 2011-05-23 | 0d | start no earlier than 2011-05-21 |
| 8 | 1.1.6 | ups+data patch panel تركيب جهاز | 5d | 2011-05-24 | 2011-05-29 | 0d | start no earlier than 2011-05-24 |
| 9 | 1.2 | **الدور الأول** | 67.5d | 2011-03-09 | 2011-05-23 | 0d |  |
| 10 | 1.2.1 | مد الخراطيم في الأسقف | 2d | 2011-03-09 | 2011-03-10 | 0d | start no earlier than 2011-03-09 |
| 11 | 1.2.2 | دق و تركيب العلب و المواسير بالحوائط للكهرباء و التيار الضعيف | 5d | 2011-04-04 | 2011-04-09 | 0d | start no earlier than 2011-04-04 |
| 12 | 1.2.3 | تركيب حوامل الكابلات | 2d | 2011-04-18 | 2011-04-19 | 0d | start no earlier than 2011-04-18 |
| 13 | 1.2.4 | سحب أسلاك و كابلات للكهرباء و التيار الضعيف | 3d | 2011-04-18 | 2011-04-20 | 0d | start no earlier than 2011-04-18 |
| 14 | 1.2.5 | تركيب المفاتيح و البرايز و الكشافات و مفاتيح الفصل و فريمات التليفونات و لوحات الكهرباء | 3d | 2011-05-21 | 2011-05-23 | 0d | start no earlier than 2011-05-21 |
| 15 | 1.3 | **السطح** | 58.25d | 2011-03-17 | 2011-05-21 | 0d |  |
| 16 | 1.3.1 | مد الخراطيم في الأسقف | 1d | 2011-03-17 | 2011-03-17 | 0d | start no earlier than 2011-03-17 |
| 17 | 1.3.2 | دق و تركيب العلب و المواسير بالحوائط لجميع الأنظمة | 1d | 2011-04-02 | 2011-04-02 | 0d | start no earlier than 2011-04-02 |
| 18 | 1.3.3 | سحب أسلاك و كابلات للكهرباء و التيار الضعيف | 1d | 2011-04-10 | 2011-04-10 | 0d | start no earlier than 2011-04-10 |
| 19 | 1.3.4 | تركيب المفاتيح و البرايز و الكشافات و مفاتيح الفصل و فريمات التليفونات | 1d | 2011-05-21 | 2011-05-21 | 0d | start no earlier than 2011-05-21 |
| 99 | 2 | **تجديدالمبنى الإداري القائم** | 56d | 2011-07-04 | 2011-09-04 | 0d |  |
| 100 | 2.1 | **الدور الأرضي** | 56d | 2011-07-04 | 2011-09-04 | 0d |  |
| 101 | 2.1.1 | دق و تركيب العلب و المواسير بالحوائط للكهرباء و التيار الضعيف | 10d | 2011-07-04 | 2011-07-14 | 0d | start no earlier than 2011-07-04 |
| 102 | 2.1.2 | تركيب حوامل الكابلات | 4d | 2011-07-10 | 2011-07-13 | 0d | start no earlier than 2011-07-10 |
| 103 | 2.1.3 | سحب أسلاك و كابلات للكهرباء و التيار الضعيف | 5d | 2011-07-13 | 2011-07-18 | 0d | start no earlier than 2011-07-13 |
| 104 | 2.1.4 | تركيب المفاتيح و البرايز و الكشافات و مفاتيح الفصل و فريمات التليفونات | 4d | 2011-08-18 | 2011-08-22 | 0d | start no earlier than 2011-08-18 |
| 105 | 2.1.5 | ups+data patch panel تركيب جهاز | 5d | 2011-08-22 | 2011-08-27 | 0d | start no earlier than 2011-08-22 |
| 106 | 2.1.6 | تركيب أنظمة التيار الضعيف | 3d | 2011-08-27 | 2011-08-29 | 0d | start no earlier than 2011-08-27 |
| 107 | 2.1.7 | تركيب لوحات الكهرباء | 5d | 2011-08-30 | 2011-09-04 | 0d | start no earlier than 2011-08-30 |

| ID | WBS | Task | Duration | Start | Finish | Predecessors | Total slack | Constraint |
| --- | --- | --- | --- | --- | --- | --- | --- | --- |
| 108 | 2.2 | **السطح** | 8.25d | 2011-07-23 | 2011-07-31 |  | 0d |  |
| 109 | 2.2.1 | تركيب حوامل الكابلات | 3d | 2011-07-23 | 2011-07-25 |  | 0d | start no earlier than 2011-07-23 |
| 110 | 2.2.2 | تمديد الكابلات | 2d | 2011-07-26 | 2011-07-27 |  | 0d | start no earlier than 2011-07-26 |
| 111 | 2.2.3 | تركيب مفاتيح الفصل | 2d | 2011-07-30 | 2011-07-31 |  | 0d | start no earlier than 2011-07-30 |
| 20 | 3 | **مبنى مخازن المنتج التام** | 49.88d | 2011-03-26 | 2011-05-19 |  | 0d |  |
| 21 | 3.1 | تركيب شبكة مواسير الإنارة | 4d | 2011-03-26 | 2011-03-29 |  | 0d | start no earlier than 2011-03-26 |
| 22 | 3.2 | تمديد كابلات شبكةالإنارة | 4d | 2011-03-31 | 2011-04-04 |  | 0d | start no earlier than 2011-03-31 |
| 28 | 3.3 | تركيب الكشافات | 2d | 2011-05-14 | 2011-05-15 |  | 0d | start no earlier than 2011-05-14 |
| 23 | 3.4 | تركيب شبكة مواسير إنذار الحريق | 3d | 2011-03-31 | 2011-04-03 |  | 0d | start no earlier than 2011-03-31 |
| 24 | 3.5 | تركيب شبكة اسلاك إنذار الحريق | 3d | 2011-04-04 | 2011-04-06 |  | 0d | start no earlier than 2011-04-04 |
| 29 | 3.6 | تركيب الحساسات و الأجراس و الكواسر | 5d | 2011-05-15 | 2011-05-19 |  | 0d | start no earlier than 2011-05-15 |
| 25 | 3.7 | تركيب حوامل الكابلات | 4d | 2011-05-08 | 2011-05-11 |  | 0d | start no earlier than 2011-05-08 |
| 26 | 3.8 | تمديد كابلات الماكينات و البرايز | 3d | 2011-05-09 | 2011-05-11 |  | 0d | start no earlier than 2011-05-09 |
| 27 | 3.9 | تركيب المفاتيح و البرايز | 2d | 2011-05-12 | 2011-05-14 |  | 0d | start no earlier than 2011-05-12 |
| 30 | 3.10 | تركيب لوحة الكهرباء | 2d | 2011-05-15 | 2011-05-16 |  | 0d | start no earlier than 2011-05-15 |
| 40 | 4 | **أعمال تطويرمبنى التصنيع و التغليف و منطقة الخدمات** | 83d | 2011-04-05 | 2011-07-06 |  | 0d |  |
| 41 | 4.1 | **الدورالأرضي** | 83d | 2011-04-05 | 2011-07-06 |  | 0d |  |
| 42 | 4.1.1 | تركيب شبكة مواسير الإنارة | 20d | 2011-04-05 | 2011-04-27 |  | 0d | start no earlier than 2011-04-05 |
| 46 | 4.1.2 | تركيب شبكة أسلاك الإنارة | 10d | 2011-04-27 | 2011-05-08 |  | 0d | start no earlier than 2011-04-27 |
| 45 | 4.1.3 | تركيب شبكة كابلات مواسير الإنارة | 9d | 2011-04-27 | 2011-05-07 |  | 0d | start no earlier than 2011-04-27 |
| 51 | 4.1.4 | تركيب الكشافات | 10d | 2011-06-11 | 2011-06-21 |  | 0d | start no earlier than 2011-06-11 |
| 43 | 4.1.5 | تركيب شبكة مواسير إنذار الحريق | 15d | 2011-04-05 | 2011-04-21 |  | 0d | start no earlier than 2011-04-05 |
| 44 | 4.1.6 | تركيب شبكة كابلات إنذار الحريق | 15d | 2011-04-20 | 2011-05-07 |  | 0d | start no earlier than 2011-04-20 |
| 52 | 4.1.7 | تركيب الحساسات و الأجراس و الكواسر | 7d | 2011-06-11 | 2011-06-18 |  | 0d | start no earlier than 2011-06-11 |
| 47 | 4.1.8 | تركيب سلة الكابلات | 25d | 2011-04-30 | 2011-05-26 |  | 0d | start no earlier than 2011-04-30 |
| 48 | 4.1.9 | تمديد كابلات الماكينات و البرايز | 20d | 2011-05-10 | 2011-06-01 |  | 0d | start no earlier than 2011-05-10 |
| 49 | 4.1.10 | تركيب المفاتيح و البرايز | 4d | 2011-06-01 | 2011-06-05 |  | 0d | start no earlier than 2011-06-01 |
| 50 | 4.1.11 | تركيب شبكة مواسير الكاميرات | 5d | 2011-06-05 | 2011-06-11 | 49 | 0d |  |
| 53 | 4.1.12 | تركيب شبكة أسلاك مواسير الكاميرات | 5d | 2011-06-11 | 2011-06-16 | 50 | 0d |  |
| 54 | 4.1.13 | تركيب الشمعات | 4d | 2011-06-16 | 2011-06-21 | 53 | 0d |  |
| 55 | 4.1.14 | تركيب الكاميرات | 4d | 2011-06-21 | 2011-06-26 | 54 | 0d |  |
| 56 | 4.1.15 | تركيب اللوحات | 10d | 2011-06-26 | 2011-07-06 | 55 | 0d | start no earlier than 2011-06-01 |

| ID | WBS | Task | Duration | Start | Finish | Predecessors | Total slack | Constraint |
| --- | --- | --- | --- | --- | --- | --- | --- | --- |
| 57 | 4.2 | **السطح** | 9.25d | 2011-04-05 | 2011-04-14 |  | 0d |  |
| 58 | 4.2.1 | تركيب حوامل الكابلات | 5d | 2011-04-05 | 2011-04-10 |  | 0d | start no earlier than 2011-04-05 |
| 59 | 4.2.2 | تمديد الكابلات | 4d | 2011-04-09 | 2011-04-12 |  | 0d | start no earlier than 2011-04-09 |
| 60 | 4.2.3 | تركيب مفاتيح الفصل | 2d | 2011-04-11 | 2011-04-12 |  | 0d | start no earlier than 2011-04-11 |
| 61 | 4.2.4 | تركيب اللوحة | 2d | 2011-04-13 | 2011-04-14 |  | 0d | start no earlier than 2011-04-13 |
| 62 | 4.3 | **مبنى الخدمات** | 20.75d | 2011-04-05 | 2011-04-27 |  | 0d |  |
| 63 | 4.3.1 | دق و تركيب مواسير وعلب جميع الأنظمة على السقف و على الحوائط | 10d | 2011-04-05 | 2011-04-16 |  | 0d | start no earlier than 2011-04-05 |
| 64 | 4.3.2 | سحب أسلاك وكابلات للكهرباء و التيار الضعيف | 5d | 2011-04-16 | 2011-04-20 |  | 0d | start no earlier than 2011-04-16 |
| 65 | 4.3.3 | تركيب المفاتيح و البرايز و الكشافات و مفاتيح الفصل و فريمات التليفونات | 4d | 2011-04-20 | 2011-04-24 |  | 0d | start no earlier than 2011-04-20 |
| 66 | 4.3.4 | تركيب اللوحة | 3d | 2011-04-25 | 2011-04-27 |  | 0d | start no earlier than 2011-04-25 |
| 67 | 5 | **أعمال الموقع العام** | 58d | 2011-04-17 | 2011-06-20 |  | 0d |  |
| 68 | 5.1 | أعمال تركيب مواسير الكهرباء | 15d | 2011-04-17 | 2011-05-03 |  | 0d | start no earlier than 2011-04-17 |
| 69 | 5.2 | أعمال تركيب مواسيرالتيار الضعيف | 15d | 2011-04-21 | 2011-05-09 | 68SS+5d | 0d |  |
| 70 | 5.3 | أعمال مد كابلات الضغط المتوسط | 20d | 2011-05-09 | 2011-05-31 | 69 | 0d |  |
| 71 | 5.4 | أعمال مد كابلات الضغط المنخفض | 20d | 2011-05-14 | 2011-06-05 | 70SS+4d | 0d |  |
| 72 | 5.5 | أعمال مد كابلات التيار الخفيف | 20d | 2011-05-17 | 2011-06-09 | 71SS+4d | 0d |  |
| 73 | 5.6 | أعمال تركيب أعمدة الإنارة و الكشافات | 10d | 2011-06-09 | 2011-06-20 | 72 | 0d |  |
| 93 | 6 | **غرفة الأمن و البوابات** | 19.62d | 2011-05-23 | 2011-06-13 |  | 0d |  |
| 94 | 6.1 | مد الخراطيم في الأسقف | 1d | 2011-05-23 | 2011-05-23 |  | 0d | start no earlier than 2011-05-23 |
| 95 | 6.2 | دق و تركيب العلب و المواسير بالحوائط للكهرباء و التيار الضعيف | 1d | 2011-05-29 | 2011-05-29 |  | 0d | start no earlier than 2011-05-29 |
| 96 | 6.3 | سحب أسلاك و كابلات للكهرباء و التيار الضعيف | 1d | 2011-06-01 | 2011-06-01 |  | 0d | start no earlier than 2011-06-01 |
| 97 | 6.4 | تركيب المفاتيح و البرايز و الكشافات | 1d | 2011-06-11 | 2011-06-11 |  | 0d | start no earlier than 2011-06-11 |
| 98 | 6.5 | تركيب اللوحة | 2d | 2011-06-12 | 2011-06-13 |  | 0d | start no earlier than 2011-06-12 |
| 31 | 7 | **غرفةالمحولات-داخل المصنع** | 39.5d | 2011-04-03 | 2011-05-16 |  | 0d |  |
| 37 | 7.1 | تركيب المحول | 2d | 2011-05-14 | 2011-05-15 |  | 0d | start no earlier than 2011-05-14 |
| 38 | 7.2 | تركيب المولد | 2d | 2011-05-15 | 2011-05-16 |  | 0d | start no earlier than 2011-05-15 |
| 32 | 7.3 | مد الخراطيم في الأسقف | 1d | 2011-04-03 | 2011-04-03 |  | 0d | start no earlier than 2011-04-03 |
| 33 | 7.4 | دق و تركيب العلب و المواسير بالحوائط للكهرباء و التيار الضعيف | 1d | 2011-04-19 | 2011-04-19 |  | 0d | start no earlier than 2011-04-19 |
| 34 | 7.5 | سحب أسلاك و كابلات للكهرباء و التيار الضعيف | 1d | 2011-05-03 | 2011-05-03 |  | 0d | start no earlier than 2011-05-03 |
| 35 | 7.6 | تركيب المفاتيح و البرايز و الكشافات | 1d | 2011-05-11 | 2011-05-11 |  | 0d | start no earlier than 2011-05-11 |
| 36 | 7.7 | تركيب لوحة الضغط المتوسط و الكابلات | 2d | 2011-05-12 | 2011-05-14 |  | 0d | start no earlier than 2011-05-12 |
| 39 | 7.8 | تركيب لوحة الضغط المنخفض و الكابلات | 2d | 2011-05-15 | 2011-05-16 |  | 0d | start no earlier than 2011-05-15 |

| ID | WBS | Task | Duration | Start | Finish | Predecessors | Total slack | Constraint |
| --- | --- | --- | --- | --- | --- | --- | --- | --- |
| 74 | 8 | **غرفة وحدة الحلقة الرئيسية-خلف مبنى التصنيع** | 37.12d | 2011-05-08 | 2011-06-18 |  | 0d |  |
| 75 | 8.1 | مد الخراطيم في الأسقف | 1d | 2011-05-08 | 2011-05-08 |  | 0d | start no earlier than 2011-05-08 |
| 76 | 8.2 | دق و تركيب العلب و المواسير بالحوائط للكهرباء و التيار الضعيف | 1d | 2011-05-25 | 2011-05-25 |  | 0d | start no earlier than 2011-05-25 |
| 78 | 8.3 | سحب أسلاك و كابلات للكهرباء و التيار الضعيف | 1d | 2011-06-07 | 2011-06-07 |  | 0d | start no earlier than 2011-06-07 |
| 79 | 8.4 | أعمال تركيب لوحات التيار المتوسط | 10d | 2011-06-07 | 2011-06-18 |  | 0d | start no earlier than 2011-06-07 |
| 77 | 8.5 | تركيب المفاتيح و البرايز و الكشافات | 1d | 2011-06-01 | 2011-06-01 |  | 0d | start no earlier than 2011-06-01 |
| 80 | 9 | **مبنى معدات التبريد** | 50.88d | 2011-05-09 | 2011-07-04 |  | 0d |  |
| 81 | 9.1 | مد الخراطيم في الأسقف | 1d | 2011-05-09 | 2011-05-09 |  | 0d | start no earlier than 2011-05-09 |
| 82 | 9.2 | دق و تركيب العلب و المواسير بالحوائط للكهرباء و التيار الضعيف | 1d | 2011-05-28 | 2011-05-28 |  | 0d | start no earlier than 2011-05-28 |
| 83 | 9.3 | سحب أسلاك و كابلات للكهرباء و التيار الضعيف | 1d | 2011-06-09 | 2011-06-09 |  | 0d | start no earlier than 2011-06-09 |
| 84 | 9.4 | تركيب المفاتيح و البرايز و الكشافات | 1d | 2011-07-02 | 2011-07-02 |  | 0d | start no earlier than 2011-07-02 |
| 85 | 9.5 | تركيب اللوحة | 2d | 2011-07-03 | 2011-07-04 |  | 0d | start no earlier than 2011-07-03 |
| 86 | 10 | **غرفة توزيع رقم 2** | 13.38d | 2011-05-15 | 2011-05-29 |  | 0d |  |
| 87 | 10.1 | تركيب المحول | 3d | 2011-05-15 | 2011-05-17 |  | 0d | start no earlier than 2011-05-15 |
| 88 | 10.2 | تركيب المولد | 3d | 2011-05-17 | 2011-05-21 | 87 | 0d |  |
| 89 | 10.3 | تركيب كابلات الضغط المنخفض | 3d | 2011-05-21 | 2011-05-24 | 88 | 0d |  |
| 90 | 10.4 | تركيب كابلات الضغط المتوسط | 3d | 2011-05-24 | 2011-05-28 | 89 | 0d |  |
| 91 | 10.5 | تركيب لوحة الضغط المتوسط و الكابلات | 2d | 2011-05-28 | 2011-05-29 |  | 0d | start no earlier than 2011-05-28 |
| 92 | 10.6 | تركيب لوحة الضغط المنخفض و الكابلات | 2d | 2011-05-28 | 2011-05-29 |  | 0d | start no earlier than 2011-05-28 |
