# FARM FRITES FACTORY

Schedule from Primavera P6, 2012-10-01 to 2013-03-31, data date 2012-09-18, costs in EGP, A marks actual dates.

## Calendars

- 7-Day Workweek(TENDER CALENDAR): Mon-Sun 08:00-12:00, 13:00-17:00.

## Resources

| Resource | Group | Rate |
| --- | --- | --- |
| CASH | material | 1 |

## Schedule

| ID | WBS | Activity | Type | Duration | Start | Finish | Predecessors | Total float | Free float |
| --- | --- | --- | --- | --- | --- | --- | --- | --- | --- |
|  | 4 | **MILESTONES** |  |  | 2012-10-01 | 2013-03-30 |  |  |  |
| A1140 |  | Letter of acceptance | milestone | 0d | 2012-10-01 | 2012-10-01 |  | 0d |  |
| A1150 |  | Site handing over | milestone | 0d | 2012-10-01 | 2012-10-01 | A1140 | 0d |  |
| A1160 |  | Contract agreement | milestone | 0d | 2012-10-01 | 2012-10-01 | A1150 | 0d |  |
| A1170 |  | Advanced payment | milestone | 0d | 2012-10-01 | 2012-10-01 | A1160 | 0d |  |
| A1180 |  | Commencement date | milestone | 0d | 2012-10-01 | 2012-10-01 | A1170 | 0d |  |
| A1190 |  | Project handing over | milestone | 0d | 2013-03-30 | 2013-03-30 | A1590, A1340, A1360, A1350, A1370 | 1d | 0d |
|  | 3 | **MOBILIZATION** |  |  | 2012-10-01 | 2013-03-30 |  |  |  |
| A1120 |  | Mobilization |  | 14d | 2012-10-01 | 2012-10-14 | A1180 | 0d |  |
| A1130 |  | Demobilization |  | 7d | 2013-03-24 | 2013-03-30 | A1190 FF | 1d |  |
|  | 1 | **PROCUREMENT** |  |  | 2012-10-30 | 2013-02-10 |  |  |  |
|  | 1 | **Purchase order** |  |  | 2012-10-30 | 2012-12-14 |  |  |  |
| A1390 |  | Steel structure | milestone | 0d | 2012-10-30 | 2012-10-30 | A1120 FS+15d | 3d | 0d |
| A1430 |  | Fans | milestone | 0d | 2012-11-03 | 2012-11-03 | A1120 FS+20d | 4d | 0d |
| A1400 |  | Corrugated sheets | milestone | 0d | 2012-12-14 | 2012-12-14 | A1120 FS+60d | 5d | 0d |
|  | 2 | **Delivery dates** |  |  | 2012-12-23 | 2013-02-10 |  |  |  |
| A1410 |  | Steel structure |  | 7d | 2012-12-23 | 2012-12-29 | A1650 FS+45d | 3d | 0d |
| A1420 |  | Corrugated sheets | milestone | 0d | 2013-01-21 | 2013-01-21 | A1400, A1670 FS+30d | 5d | 2d |
| A1440 |  | Fans | milestone | 0d | 2013-02-10 | 2013-02-10 | A1660 FS+90d | 4d | 1d |
|  | 5 | **ENGINEERING** |  |  | 2012-10-30 | 2012-12-22 |  |  |  |
|  | 1 | **Submittal** |  |  | 2012-10-30 | 2012-12-14 |  |  |  |
| A1620 |  | Steel structure |  | 1d | 2012-10-30 | 2012-10-30 | A1390 | 3d | 0d |
| A1630 |  | Fans |  | 1d | 2012-11-04 | 2012-11-04 | A1430 | 4d | 0d |
| A1640 |  | Corrugated sheets |  | 1d | 2012-12-14 | 2012-12-14 | A1400 | 5d | 0d |

| ID | WBS | Activity | Duration | Start | Finish | Predecessors | Remaining | Planned start | Planned finish | Total float | Free float | Resources | Cost |
| --- | --- | --- | --- | --- | --- | --- | --- | --- | --- | --- | --- | --- | --- |
|  | 2 | **Approval** |  | 2012-11-07 | 2012-12-22 |  |  |  |  |  |  |  |  |
| A1650 |  | Steel structure | 1d | 2012-11-07 | 2012-11-07 | A1620 FS+7d |  |  |  | 3d | 0d |  |  |
| A1660 |  | Fans | 1d | 2012-11-12 | 2012-11-12 | A1630 FS+7d |  |  |  | 4d | 0d |  |  |
| A1670 |  | Corrugated sheets | 1d | 2012-12-22 | 2012-12-22 | A1640 FS+7d |  |  |  | 5d | 0d |  |  |
|  | 2 | **CONSTRUCTION** |  | 2012-10-06 | 2013-03-31 |  |  |  |  |  |  |  |  |
|  | 2 | **REFRIGERATOR BUILDING** |  | 2012-10-06 | 2013-03-28 |  |  |  |  |  |  |  |  |
|  | 1 | **Civil works** |  | 2012-10-06 | 2013-03-26 |  |  |  |  |  |  |  |  |
| A1200 |  | Demolishing works | 10d | 2012-10-06 | 2012-10-15 | A1120 SS+5d |  |  |  | 4d | 0d | CASH [5512] | 5,512 |
| A1210 |  | Excavation | 7d | 2012-10-16 | 2012-10-22 | A1200 |  |  |  | 4d | 0d | CASH [18200] | 18,200 |
| A1220 |  | P.C footings | 10d | 2012-10-23 | 2012-11-01 | A1210 |  |  |  | 4d | 0d | CASH [78065] | 78,065 |
| A1230 |  | R.C footings | 20d | 2012-11-01 A | 2012-11-16 | A1220 SS+5d | 20d | 2012-11-01 | 2012-11-20 | 4d | 0d | CASH [260705] | 260,705 |
| A1240 |  | R.C for pedestalls | 15d | 2012-11-07 | 2012-11-21 | A1230 SS+10d |  |  |  | 4d | 0d | CASH [31275] | 31,275 |
| A1250 |  | Footings insulations | 15d | 2012-11-17 | 2012-12-01 | A1240 SS+10d |  |  |  | 4d | 0d | CASH [18420] | 18,420 |
| A1260 |  | Masonry under S.O.G | 18d | 2012-11-21 | 2012-12-08 | A1250 SS+4d |  |  |  | 4d | 0d | CASH [53913] | 53,913 |
| A1270 |  | Backfilling between foundations | 20d | 2012-12-09 | 2012-12-28 | A1260 |  |  |  | 4d | 1d | CASH [100470] | 100,470 |
| A1280 |  | Steel Structure erection | 30d | 2012-12-30 | 2013-01-28 | A1270, A1410 |  |  |  | 3d | 0d | CASH [1719555] | 1,719,555 |
| A1290 |  | R.C for S.O.G | 20d | 2013-01-09 | 2013-01-28 | A1280 SS+10d |  |  |  | 3d | 0d | CASH [41904]; CASH [291550]; CASH [69000]; CASH [7770] | 410,224 |
| A1550 |  | Corrugated sheets erection | 24d | 2013-01-24 | 2013-02-16 | A1280 FS-5d, A1290 FS-5d, A1420 |  |  |  | 3d | 0d | CASH [166950]; CASH [205840]; CASH [209160] | 581,950 |
| A1310 |  | Sandwich panel erection | 25d | 2013-01-29 | 2013-02-22 | A1290, A1280 SS+20d |  |  |  | 17d | 0d | CASH [1054360] | 1,054,360 |
| A1330 |  | Masonry works | 14d | 2013-01-29 | 2013-02-11 | A1280 |  |  |  | 4d | 0d |  |  |
| A1380 |  | Plaster works | 14d | 2013-02-12 | 2013-02-25 | A1330 |  |  |  | 4d | 0d | CASH [18300] | 18,300 |
| A1300 |  | Checkered plate erection | 20d | 2013-02-23 | 2013-03-14 | A1310 |  |  |  | 17d |  | CASH [154560] | 154,560 |
| A1320 |  | Doors &windows erection | 14d | 2013-02-23 | 2013-03-08 | A1310 |  |  |  | 23d |  | CASH [4632]; CASH [198059]; CASH [11645] | 214,336 |
| A1570 |  | Steel ladder erection | 10d | 2013-02-26 | 2013-03-07 | A1380 |  |  |  | 24d |  | CASH [23723] | 23,723 |
| A1690 |  | False ceiling erection | 15d | 2013-02-26 | 2013-03-12 | A1380 |  |  |  | 5d | 0d | CASH [11600] | 11,600 |
| A1340 |  | Painting works | 24d | 2013-03-03 | 2013-03-26 | A1380, A1690 SS+5d |  |  |  | 5d | 4d | CASH [10800] | 10,800 |

| ID | WBS | Activity | Duration | Start | Finish | Predecessors | Total float | Free float | Resources | Cost |
| --- | --- | --- | --- | --- | --- | --- | --- | --- | --- | --- |
|  | 2 | **MEP WORKS** |  | 2013-02-07 | 2013-03-28 |  |  |  |  |  |
| A1360 |  | ELECTRICAL WORKS | 50d | 2013-02-07 | 2013-03-28 | A1280 SS+20d, A1290 SS+10d, A1550 FS-10d | 3d | 2d | CASH [201405] | 201,405 |
| A1350 |  | HVAC WORKS | 45d | 2013-02-12 | 2013-03-28 | A1290, A1280 SS+20d, A1440, A1550 FS-5d | 3d | 2d | CASH [153636] | 153,636 |
| A1370 |  | Plumbing works | 30d | 2013-02-26 | 2013-03-27 | A1380 | 4d | 3d | CASH [159222] | 159,222 |
|  | 1 | **STORAGE BUILDING** |  | 2012-10-08 | 2013-03-31 |  |  |  |  |  |
|  | 1 | **Civil works** |  | 2012-10-08 | 2013-03-30 |  |  |  |  |  |
| A1450 |  | Demolishing works | 5d | 2012-10-08 | 2012-10-12 | A1120 SS+7d | 0d |  | CASH [306] | 306 |
| A1460 |  | Excavation | 14d | 2012-10-13 | 2012-10-26 | A1450 | 0d |  | CASH [5460] | 5,460 |
| A1470 |  | P.C footings | 20d | 2012-10-27 | 2012-11-15 | A1460 | 0d |  | CASH [22980] | 22,980 |
| A1480 |  | R.C footings | 25d | 2012-11-01 | 2012-11-25 | A1470 SS+5d | 0d |  | CASH [90135] | 90,135 |
| A1490 |  | R.C for pedestalls | 25d | 2012-11-11 | 2012-12-05 | A1480 SS+10d | 0d |  | CASH [8897] | 8,897 |
| A1500 |  | Footings insulations | 14d | 2012-11-21 | 2012-12-04 | A1490 SS+10d | 0d |  | CASH [6120] | 6,120 |
| A1510 |  | Masonry under S.O.G | 20d | 2012-11-25 | 2012-12-14 | A1500 SS+4d | 0d |  | CASH |  |
| A1520 |  | Backfilling between foundations | 20d | 2012-12-15 | 2013-01-03 | A1510 | 0d |  | CASH [38760] | 38,760 |
| A1530 |  | Steel Structure erection | 25d | 2013-01-04 | 2013-01-28 | A1520, A1410 | 0d |  | CASH [355770] | 355,770 |
| A1560 |  | Masonry works | 20d | 2013-01-29 | 2013-02-17 | A1530 | 32d | 31d | CASH [1344]; CASH [4416] | 5,760 |
| A1610 |  | P.C for S.O.G | 15d | 2013-02-13 | 2013-02-27 | A1530, A1700 | 0d |  | CASH |  |
| A1540 |  | R.C for S.O.G | 25d | 2013-02-23 | 2013-03-19 | A1530 SS+10d, A1610 SS+10d | 1d | 0d | CASH [103054]; CASH [2532] | 105,586 |
| A1580 |  | Sandwich panel erection | 20d | 2013-03-10 | 2013-03-29 | A1530 SS+20d, A1540 SS+15d | 1d | 0d | CASH [649780]; CASH [6140] | 655,920 |
| A1600 |  | Corrugated sheets erection | 20d | 2013-03-10 | 2013-03-29 | A1540 FS-10d, A1420 | 1d | 0d | CASH [53420]; CASH [64020] | 117,440 |
| A1590 |  | Doors &windows erection | 10d | 2013-03-21 | 2013-03-30 | A1580 FS-9d, A1600 FS-9d, A1560 | 1d | 0d | CASH [9011] | 9,011 |
|  | 2 | **MEP WORKS** |  | 2013-01-29 | 2013-03-31 |  |  |  |  |  |
| A1700 |  | Plumbing works | 15d | 2013-01-29 | 2013-02-12 | A1520, A1530 | 0d |  | CASH [17700]; CASH [5764] | 23,464 |
| A1680 |  | HVAC WORKS | 40d | 2013-02-20 | 2013-03-31 | A1530, A1610 SS+7d | 0d |  | CASH [28035] | 28,035 |
