# ΜενδΙ 1

Schedule from Primavera P6, 2011-12-01 to 2012-09-30, data date 2011-11-26, costs in EGP.

## Calendars

- Calendar 1: Mon 08:00-16:00; Tue-Thu 08:00-12:00, 13:00-17:00; Fri off; Sat 08:00-12:00, 13:00-17:00; Sun 08:00-16:00.

## Resources

| Resource | Group | Unit | Rate |
| --- | --- | --- | --- |
| zezo | material | ea | 500 |

## Schedule

| ID | WBS | Activity | Type | Duration | Start | Finish | Predecessors | Total float | Free float | Cost | TYPE OF WORK | (New) |
| --- | --- | --- | --- | --- | --- | --- | --- | --- | --- | --- | --- | --- |
|  | Milestones | **Project Milestones** |  |  | 2011-12-01 | 2012-09-30 |  |  |  |  |  |  |
| A1060 |  | Project Start | milestone | 0d | 2011-12-01 | 2011-12-01 |  | 0d |  |  |  |  |
| A1070 |  | Project Finish | milestone | 0d | 2012-09-30 | 2012-09-30 | A1470, A1440, A1520, A1530, A1380, A1480, A1340, A1350, A1500, A1320, A1210, A1240 | 0d |  |  |  |  |
|  | Mobilization | **Mobilization** |  |  | 2011-12-01 | 2011-12-29 |  |  |  |  |  |  |
| A1050 |  | Site Preparation Works |  | 25d | 2011-12-01 | 2011-12-29 | A1060 | 0d |  | 45,000 |  |  |
|  | Engineering | **Engineering** |  |  | 2011-12-31 | 2012-07-21 |  |  |  |  |  |  |
|  | Shop drawings | **Shop drawings** |  |  | 2011-12-31 | 2012-07-21 |  |  |  |  |  |  |
|  | Plain | **Concrete Works** |  |  | 2011-12-31 | 2012-02-08 |  |  |  |  |  |  |
| A120 |  | Shop Drawings submittal |  | 30d | 2011-12-31 | 2012-02-02 | A1050 | 1d | 0d |  | civil |  |
| A170 |  | Shop Drawings Approval |  | 30d | 2012-01-05 | 2012-02-08 | A120 SS+5d | 1d | 0d |  | civil |  |
|  | Masonry | **Masonry** |  |  | 2012-02-09 | 2012-03-03 |  |  |  |  |  |  |
| A180 |  | Shop Drawings submittal |  | 15d | 2012-02-09 | 2012-02-26 | A170 | 1d | 0d |  | arch |  |
| A270 |  | Shop Drawings Approval |  | 15d | 2012-02-15 | 2012-03-03 | A180 SS+5d | 1d | 0d |  | arch |  |
|  | Metal | **Structure Steel** |  |  | 2012-03-04 | 2012-04-18 |  |  |  |  |  |  |
| A160 |  | Shop Drawings submittal |  | 20d | 2012-03-04 | 2012-03-26 | A270 | 1d | 0d |  | civil | 1000 |
| A260 |  | Shop Drawings Approval |  | 20d | 2012-03-27 | 2012-04-18 | A160 | 1d | 0d |  | civil |  |
|  | Finishes | **Finishes** |  |  | 2012-04-19 | 2012-06-04 |  |  |  |  |  |  |
| A300 |  | Shop Drawings submittal |  | 20d | 2012-04-19 | 2012-05-12 | A260 | 1d | 0d |  | civil |  |
| A310 |  | Shop Drawings Approval |  | 20d | 2012-05-13 | 2012-06-04 | A300 | 1d | 0d |  | civil |  |
|  | MEP | **MEP** |  |  | 2012-06-05 | 2012-07-21 |  |  |  |  |  |  |
| A340 |  | Shop Drawings submittal |  | 20d | 2012-06-05 | 2012-06-27 | A310 | 1d | 0d |  | civil |  |
| A350 |  | Shop Drawings Approval |  | 20d | 2012-06-28 | 2012-07-21 | A340 | 1d | 0d |  | civil |  |
|  | Construction | **Construction** |  |  | 2011-12-31 | 2012-09-30 |  |  |  |  |  |  |
|  | Civil | **Civil works** |  |  | 2011-12-31 | 2012-08-25 |  |  |  |  |  |  |
|  | Earth | **Earth works** |  |  | 2011-12-31 | 2012-04-24 |  |  |  |  |  |  |
| A1020 |  | Excavation Works & Pile Wall |  | 30d | 2011-12-31 | 2012-02-02 | A1050 | 0d |  | 748,800 |  |  |
| A1040 |  | Backfill Works |  | 25d | 2012-03-27 | 2012-04-24 | A1120 SS+5d | 0d |  | 390,000 |  |  |

Notes:
- A1050: Expenses: (New Expense Item) 45000
- A1020: Expenses: (New Expense Item) 640000; (New Expense Item)1 108800
- A1040: Expenses: (New Expense Item) 390000

| ID | WBS | Activity | Duration | Start | Finish | Predecessors | Total float | Free float | Resources | Cost |
| --- | --- | --- | --- | --- | --- | --- | --- | --- | --- | --- |
|  | Concrete | **Concrete Works** |  | 2012-02-04 | 2012-08-07 |  |  |  |  |  |
| A1090 |  | Plain Concrete For Footings | 20d | 2012-02-04 | 2012-02-26 | A170 SS+5d, A1020 | 0d |  |  | 517,000 |
| A1100 |  | Reinforced Concrete For Footings , Columns & Retaining Wall | 40d | 2012-02-15 | 2012-04-01 | A1090 SS+10d | 0d |  |  | 4,804,800 |
| A1160 |  | Basement Slab | 30d | 2012-04-08 | 2012-05-12 | A1040 SS+10d | 0d |  |  | 4,965,430 |
| A1140 |  | Slab On Grade | 20d | 2012-06-23 | 2012-07-15 | A1130 SS+5d | 1d | 0d |  | 933,650 |
| A1150 |  | Reinforced Concrete Slab Above Steel Platform | 15d | 2012-07-22 | 2012-08-07 | A1190 | 31d | 0d |  | 132,430 |
|  | Masonry | **Masonry Works** |  | 2012-03-10 | 2012-08-19 |  |  |  |  |  |
| A1230 |  | Masonry For Substructure | 30d | 2012-03-10 | 2012-04-12 | A270, A1100 SS+20d | 0d |  |  | 105,690 |
| A1490 |  | Masonry For Superstructure | 30d | 2012-07-16 | 2012-08-19 | A1160, A1140 | 1d | 0d |  | 629,320 |
|  | Proofing | **Damp proofing & Insulation** |  | 2012-03-21 | 2012-08-25 |  |  |  |  |  |
| A1120 |  | Cold Bitumen For UnderGround | 25d | 2012-03-21 | 2012-04-18 | A1230 SS+10d | 0d |  |  | 108,000 |
| A1130 |  | Polythene Sheets Under Slab On Grade | 10d | 2012-06-17 | 2012-06-27 | A1160 FS+30d | 1d | 0d |  | 49,000 |
| A1240 |  | Insulation For Concrete Building Roof | 15d | 2012-08-08 | 2012-08-25 | A1150 | 31d |  |  | 10,835 |
|  | Steel | **Structural Steel** |  | 2012-05-13 | 2012-08-25 |  |  |  |  |  |
| A1170 |  | Steel Structure Erection | 45d | 2012-05-13 | 2012-07-03 | A260, A1160 | 0d |  |  | 971,620 |
| A1180 |  | Roof Cladding | 45d | 2012-07-04 | 2012-08-25 | A1170 | 1d | 0d |  | 545,400 |
| A1190 |  | Steel Platform Erection For Mezzanine | 15d | 2012-07-04 | 2012-07-21 | A1170 | 31d | 0d |  | 306,510 |
| A1200 |  | Vertical Cladding | 30d | 2012-07-04 | 2012-08-07 | A1170 | 36d | 0d |  | 79,800 |
| A1220 |  | Thermal Insulation For Vertical Wall | 30d | 2012-07-10 | 2012-08-13 | A1200 SS+5d | 36d | 0d |  | 31,500 |
| A1210 |  | Vertical Liner | 30d | 2012-07-16 | 2012-08-19 | A1220 SS+5d | 36d |  |  | 79,800 |
|  | Arch | **Arch works** |  | 2012-07-28 | 2012-09-29 |  |  |  |  |  |
|  | Finishes | **Finishes Works** |  | 2012-07-28 | 2012-09-11 |  |  |  |  |  |
| A1280 |  | Internal Plaster | 30d | 2012-07-28 | 2012-08-30 | A1490 SS+10d, A310 | 1d | 0d | zezo [40 ea] | 64,000 |
| A1320 |  | Flooring Works | 30d | 2012-08-02 | 2012-09-05 | A1280 SS+5d | 21d |  |  | 217,320 |
| A1300 |  | Internal Painting | 30d | 2012-08-08 | 2012-09-11 | A1280 SS+10d | 1d | 0d |  | 69,920 |
| A1500 |  | False Ceiling | 25d | 2012-08-08 | 2012-09-05 | A1280 SS+10d | 21d |  |  | 231,920 |

Notes:
- A1090: Expenses: (New Expense Item) 517000
- A1100: Expenses: (New Expense Item) 4804800
- A1160: Expenses: (New Expense Item) 4937500; (New Expense Item)1 27930
- A1140: Expenses: (New Expense Item) 23750; (New Expense Item)1 803400; (New Expense Item)2 106500
- A1150: Expenses: (New Expense Item) 78030; (New Expense Item)1 54400
- A1230: Expenses: (New Expense Item) 105690
- A1490: Expenses: (New Expense Item) 629320
- A1120: Expenses: (New Expense Item) 108000
- A1130: Expenses: (New Expense Item) 49000
- A1240: Expenses: (New Expense Item) 10835
- A1170: Expenses: (New Expense Item) 971620
- A1180: Expenses: (New Expense Item) 545400
- A1190: Expenses: (New Expense Item) 306510
- A1200: Expenses: (New Expense Item) 79800
- A1220: Expenses: (New Expense Item) 31500
- A1210: Expenses: (New Expense Item) 79800
- A1280: Expenses: (New Expense Item) 44000
- A1320: Expenses: (New Expense Item) 217320
- A1300: Expenses: (New Expense Item) 69920
- A1500: Expenses: (New Expense Item) 231920

| ID | WBS | Activity | Duration | Start | Finish | Predecessors | Total float | Free float | Cost |
| --- | --- | --- | --- | --- | --- | --- | --- | --- | --- |
|  | Aluminium | **Doors & Windows** |  | 2012-09-12 | 2012-09-29 |  |  |  |  |
| A1330 |  | Windows Erection | 10d | 2012-09-12 | 2012-09-23 | A1300 | 1d | 0d | 405,938 |
| A1350 |  | Doors Erection | 10d | 2012-09-18 | 2012-09-29 | A1330 SS+5d | 1d |  | 2,681,567 |
|  | Site | **Site Works** |  | 2012-09-01 | 2012-09-29 |  |  |  |  |
| A1340 |  | Site Works | 25d | 2012-09-01 | 2012-09-29 | A1280 | 1d |  | 679,280 |
|  | MEP | **MEP Works** |  | 2012-07-22 | 2012-09-29 |  |  |  |  |
|  | 2 | **Electrical Works** |  | 2012-08-14 | 2012-09-29 |  |  |  |  |
| A1450 |  | Fire alarm system | 20d | 2012-08-14 | 2012-09-05 | A1180 FS-10d, A350 | 1d | 0d | 1,000,000 |
| A1460 |  | Lighting works | 20d | 2012-08-26 | 2012-09-17 | A1450 SS+10d | 1d | 0d | 900,000 |
| A1470 |  | Switch board erection | 10d | 2012-09-18 | 2012-09-29 | A1460 | 1d |  | 66,499 |
|  | 1 | **Mechanical Works** |  | 2012-07-22 | 2012-09-29 |  |  |  |  |
|  | HVAC&FFWorks | **HVAC & Fire Fighting Works** |  | 2012-08-20 | 2012-09-29 |  |  |  |  |
| A1480 |  | HVAC Works | 35d | 2012-08-20 | 2012-09-29 | A1490, A350 | 1d |  | 1,120,176 |
| A1380 |  | Fire Fighting Works | 20d | 2012-09-06 | 2012-09-29 | A1300 FS-5d | 1d |  | 2,618,016 |
|  | 2 | **Plumbing Works** |  | 2012-07-22 | 2012-09-29 |  |  |  |  |
| A1420 |  | Supply works | 25d | 2012-07-22 | 2012-08-19 | A350, A1490 SS+5d | 1d | 0d | 300,000 |
| A1430 |  | Drainage works | 25d | 2012-08-20 | 2012-09-17 | A1420 | 1d | 0d | 200,000 |
| A1440 |  | Plumbing equipments | 10d | 2012-09-18 | 2012-09-29 | A1430 | 1d |  | 30,581 |
|  | WT&PR | **Water Tank & Pump Room** |  | 2012-07-04 | 2012-09-30 |  |  |  |  |
| A1510 |  | Civil Works | 40d | 2012-07-04 | 2012-08-19 | A1170 | 0d |  | 1,968,500 |
| A1520 |  | Architectural Works | 35d | 2012-08-20 | 2012-09-29 | A1510 | 1d |  | 1,000,000 |
| A1530 |  | MEP Works | 35d | 2012-08-21 | 2012-09-30 | A1510 FS+1d | 0d |  | 1,108,690 |

Notes:
- A1330: Expenses: (New Expense Item) 405938
- A1350: Expenses: (New Expense Item) 65960; (New Expense Item)1 2615607
- A1340: Expenses: (New Expense Item) 679280
- A1450: Expenses: (New Expense Item) 1000000
- A1460: Expenses: (New Expense Item) 900000
- A1470: Expenses: (New Expense Item) 66499
- A1480: Expenses: (New Expense Item) 1120176
- A1380: Expenses: (New Expense Item) 2618016
- A1420: Expenses: (New Expense Item) 300000
- A1430: Expenses: (New Expense Item) 200000
- A1440: Expenses: (New Expense Item) 30581
- A1510: Expenses: (New Expense Item) 886950; (New Expense Item)1 1081550
- A1520: Expenses: (New Expense Item) 1000000
- A1530: Expenses: (New Expense Item) 1108690

## Activity codes

| Code | Value | Meaning |
| --- | --- | --- |
| TYPE OF WORK | arch | arch works |
| TYPE OF WORK | civil | civil works |
