# House of fresh

Schedule from Primavera P6, 2012-01-01 to 2012-09-30, data date 2012-01-01, costs in EGP.

## Calendars

- 7-Day Workweek: Mon-Sun 08:00-12:00, 13:00-17:00.
- 6days work: Mon-Thu 08:00-16:00; Fri off; Sat-Sun 08:00-16:00.

## Resources

| Resource | Group | Rate |
| --- | --- | --- |
| CASH | material | 1 |

## Schedule

| ID | WBS | Activity | Type | Duration | Start | Finish | Predecessors | Total float | Free float | Calendar | Cost | TYPE OF WORK | (New) |
| --- | --- | --- | --- | --- | --- | --- | --- | --- | --- | --- | --- | --- | --- |
|  | Milestones | **Project Milestones** |  |  | 2012-01-01 | 2012-09-30 |  |  |  |  |  |  |  |
| A1060 |  | Project Start | milestone | 0d | 2012-01-01 | 2012-01-01 |  | 0d |  |  |  |  |  |
| A1070 |  | Project Finish | milestone | 0d | 2012-09-30 | 2012-09-30 | A1340, A1480, A1350, A1440, A1670, A1470, A1300, A1380, A1880, A1910, A1990, A1860, A2000 | 0d |  |  |  |  |  |
|  | Mobilization | **Mobilization** |  |  | 2012-01-01 | 2012-01-15 |  |  |  |  |  |  |  |
| A1050 |  | Site Preparation Works |  | 15d | 2012-01-01 | 2012-01-15 | A1060 | 0d |  |  | 45,000 |  |  |
|  | Engineering | **Engineering** |  |  | 2012-01-08 | 2012-05-02 |  |  |  |  |  |  |  |
|  | Shop drawings | **Shop drawings** |  |  | 2012-01-08 | 2012-05-02 |  |  |  |  |  |  |  |
|  | Plain | **Concrete Works** |  |  | 2012-01-08 | 2012-01-19 |  |  |  |  |  |  |  |
| A120 |  | Shop Drawings submittal |  | 7d | 2012-01-08 | 2012-01-14 | A1050 SS+7d | 23d | 0d |  |  | civil |  |
| A170 |  | Shop Drawings Approval |  | 7d | 2012-01-13 | 2012-01-19 | A120 SS+5d | 23d | 0d |  |  | civil |  |
|  | Masonry | **Masonry** |  |  | 2012-01-20 | 2012-01-31 |  |  |  |  |  |  |  |
| A180 |  | Shop Drawings submittal |  | 7d | 2012-01-20 | 2012-01-26 | A170 | 54d | 0d |  |  | arch |  |
| A270 |  | Shop Drawings Approval |  | 7d | 2012-01-25 | 2012-01-31 | A180 SS+5d | 54d | 0d |  |  | arch |  |
|  | Metal | **Structure Steel** |  |  | 2012-02-01 | 2012-02-14 |  |  |  |  |  |  |  |
| A160 |  | Shop Drawings submittal |  | 7d | 2012-02-01 | 2012-02-07 | A270 | 80d | 0d |  |  | civil | 1000 |
| A260 |  | Shop Drawings Approval |  | 7d | 2012-02-08 | 2012-02-14 | A160 | 80d | 0d |  |  | civil |  |
|  | Finishes | **Finishes** |  |  | 2012-03-06 | 2012-03-19 |  |  |  |  |  |  |  |
| A300 |  | Shop Drawings submittal |  | 7d | 2012-03-06 | 2012-03-12 | A260 FS+20d | 96d | 0d |  |  | civil |  |
| A310 |  | Shop Drawings Approval |  | 7d | 2012-03-13 | 2012-03-19 | A300 | 96d | 0d |  |  | civil |  |
|  | MEP | **MEP** |  |  | 2012-04-19 | 2012-05-02 |  |  |  |  |  |  |  |
| A340 |  | Shop Drawings submittal |  | 7d | 2012-04-19 | 2012-04-25 | A310 FS+30d | 96d | 0d |  |  | civil |  |
| A350 |  | Shop Drawings Approval |  | 7d | 2012-04-26 | 2012-05-02 | A340 | 96d | 62d |  |  | civil |  |
|  | Construction | **Construction** |  |  | 2012-01-11 | 2012-09-30 |  |  |  |  |  |  |  |
|  | 2 | **Admin building** |  |  | 2012-01-11 | 2012-09-27 |  |  |  |  |  |  |  |
|  | 1 | **CIVIL WORKS** |  |  | 2012-01-11 | 2012-07-14 |  |  |  |  |  |  |  |
|  | 1 | **EARTH WORKS** |  |  | 2012-01-11 | 2012-06-14 |  |  |  |  |  |  |  |
| A1770 |  | Excavation |  | 7d | 2012-01-11 | 2012-01-18 | A1050 SS+10d | 2d | 0d | 6days work |  |  |  |
| A1780 |  | Sand replacement |  | 10d | 2012-01-19 | 2012-01-30 | A1770 | 2d | 0d | 6days work |  |  |  |
| A1850 |  | Backfilling under S.O.G |  | 10d | 2012-06-04 | 2012-06-14 | A1830 | 79d | 0d | 6days work |  |  |  |

Notes:
- A1050: Expenses: (New Expense Item) 45000

| ID | WBS | Activity | Duration | Start | Finish | Predecessors | Total float | Free float | Calendar | Resources | Cost |
| --- | --- | --- | --- | --- | --- | --- | --- | --- | --- | --- | --- |
|  | 2 | **CONCRETE WORKS** |  | 2012-01-31 | 2012-06-30 |  |  |  |  |  |  |
| A1790 |  | P.c footing | 10d | 2012-01-31 | 2012-02-11 | A1780 | 2d | 0d | 6days work |  |  |
| A1800 |  | R.C footing | 21d | 2012-02-12 | 2012-03-06 | A1790 | 2d | 0d | 6days work |  |  |
| A1710 |  | Columns for ground floors | 10d | 2012-03-06 | 2012-03-16 | A1800 | 2.12d | 0d |  | CASH [132724] | 132,724 |
| A1290 |  | Ground floor slab | 20d | 2012-03-16 | 2012-04-05 | A1710 | 2.12d | 0d |  | CASH [199086] | 199,086 |
| A1730 |  | First floor columns | 10d | 2012-04-05 | 2012-04-15 | A1290 | 2.12d | 0d |  | CASH [132724] | 132,724 |
| A1740 |  | First floor slab | 20d | 2012-04-15 | 2012-05-05 | A1730 | 2.12d | 0d |  | CASH [199086] | 199,086 |
| A1750 |  | Second floor columns | 10d | 2012-05-05 | 2012-05-15 | A1740 | 46.12d | 0d |  | CASH [132724] | 132,724 |
| A1760 |  | Second floor slab | 20d | 2012-05-15 | 2012-06-04 | A1750 | 46.12d | 0.12d |  | CASH [199086] | 199,086 |
| A2010 |  | Roof columns | 7d | 2012-06-05 | 2012-06-12 | A1760 | 39d | 0d | 6days work |  |  |
| A2020 |  | Roof slab | 10d | 2012-06-13 | 2012-06-24 | A2010 | 39d | 0d | 6days work |  |  |
| A1860 |  | Slab on grade | 10d | 2012-06-19 | 2012-06-30 | A1840 | 79d |  | 6days work |  |  |
|  | 3 | **Masonry Works** |  | 2012-05-06 | 2012-07-14 |  |  |  |  |  |  |
| A1810 |  | Masonry works under S.O.G | 20d | 2012-05-06 | 2012-05-28 | A1740 | 79d | 0d | 6days work |  |  |
| A1820 |  | Masonry works | 60d | 2012-05-06 | 2012-07-14 | A1740, A270 | 2d | 0d | 6days work |  |  |
|  | 4 | **Damp proofing & Insulation** |  | 2012-05-29 | 2012-06-18 |  |  |  |  |  |  |
| A1830 |  | Footing insulation | 5d | 2012-05-29 | 2012-06-03 | A1810 | 79d | 0d | 6days work |  |  |
| A1840 |  | Polyethylene sheet under S.O.G | 3d | 2012-06-16 | 2012-06-18 | A1850 | 79d | 0d | 6days work |  |  |
|  | 2 | **ARCH WORKS** |  | 2012-05-29 | 2012-09-27 |  |  |  |  |  |  |
| A1870 |  | Plaster works | 60d | 2012-05-29 | 2012-08-06 | A1820 SS+20d | 2d | 0d | 6days work |  |  |
| A1890 |  | Flooring works | 60d | 2012-06-21 | 2012-08-29 | A1870 SS+20d, A310 | 2d | 0d | 6days work |  |  |
| A1990 |  | Roof finish | 45d | 2012-06-25 | 2012-08-15 | A2020 | 39d |  | 6days work |  |  |
| A1900 |  | Doors&windows | 30d | 2012-08-07 | 2012-09-10 | A1890 SS+40d | 2d | 0d | 6days work |  |  |
| A1910 |  | Gypsum board | 40d | 2012-08-07 | 2012-09-22 | A1870 | 7d |  | 6days work |  |  |
| A1880 |  | Paint works | 40d | 2012-08-13 | 2012-09-27 | A1900 SS+5d | 2d |  | 6days work |  |  |

| ID | WBS | Activity | Duration | Start | Finish | Predecessors | Total float | Free float | Calendar | Cost |
| --- | --- | --- | --- | --- | --- | --- | --- | --- | --- | --- |
|  | WT&PR | **Utilities buildings** |  | 2012-01-11 | 2012-06-20 |  |  |  |  |  |
|  | Civil works | **Civil works** |  | 2012-01-11 | 2012-04-11 |  |  |  |  |  |
| A1540 |  | Excavation Works | 20d | 2012-01-11 | 2012-01-30 | A1050 SS+10d | 102d | 0d |  |  |
| A1550 |  | Plain Concrete For Footings | 10d | 2012-01-31 | 2012-02-09 | A1540 | 102d | 0d |  |  |
| A1560 |  | Reinforced Concrete For Footings | 20d | 2012-02-10 | 2012-02-29 | A1550 | 102d | 0d |  |  |
| A1600 |  | Ground floor columns | 7d | 2012-03-01 | 2012-03-07 | A1560 | 102d | 0d |  |  |
| A1610 |  | Ground floor roof | 15d | 2012-03-08 | 2012-03-22 | A1600 | 102d | 0d |  |  |
| A1570 |  | Backfill Works | 10d | 2012-03-23 | 2012-04-01 | A1610 | 102d | 0d |  |  |
| A1590 |  | S.O.G for ground floors | 10d | 2012-04-02 | 2012-04-11 | A1570 | 102d | 0d |  |  |
|  | 1 | **Arch works** |  | 2012-04-12 | 2012-06-20 |  |  |  |  |  |
| A1640 |  | Masonry works | 20d | 2012-04-12 | 2012-05-01 | A1590 | 102d | 0d |  |  |
| A1650 |  | Plaster works | 30d | 2012-05-02 | 2012-05-31 | A1640 | 102d | 0d |  |  |
| A1660 |  | Flooring works | 20d | 2012-06-01 | 2012-06-20 | A1650 | 102d | 0d |  |  |
| A1670 |  | Painting works | 15d | 2012-06-06 | 2012-06-20 | A1660 SS+5d | 102d |  |  |  |
|  | 3 | **UNDER GROUND TANK** |  | 2012-01-16 | 2012-08-29 |  |  |  |  |  |
| A1920 |  | Excavation | 14d | 2012-01-16 | 2012-01-31 | A1050 | 27d | 0d | 6days work |  |
| A1930 |  | Compaction & testing for Ex. Level | 10d | 2012-02-01 | 2012-02-12 | A1920 | 27d | 0d | 6days work |  |
| A1940 |  | Plain Concrete Footing | 14d | 2012-02-13 | 2012-02-28 | A1930 | 27d | 0d | 6days work |  |
| A1950 |  | Reinforced Concrete Footing | 20d | 2012-02-29 | 2012-03-22 | A1940 | 27d | 0d | 6days work |  |
| A1960 |  | Insulation for Foundation | 7d | 2012-03-24 | 2012-03-31 | A1950 | 27d | 0d | 6days work |  |
| A1970 |  | Tank walls | 30d | 2012-04-01 | 2012-05-05 | A1960 | 27d | 0d | 6days work |  |
| A1980 |  | Tank roof | 20d | 2012-05-06 | 2012-05-28 | A1970 | 27d | 0d | 6days work |  |
| A2000 |  | Tank finish works | 80d | 2012-05-29 | 2012-08-29 | A1980 | 27d |  | 6days work |  |
|  | 1 | **Warehouse building** |  | 2012-01-11 | 2012-09-30 |  |  |  |  |  |
|  | Civil | **Civil works** |  | 2012-01-11 | 2012-09-03 |  |  |  |  |  |
|  | Earth | **Earth works** |  | 2012-01-11 | 2012-05-04 |  |  |  |  |  |
| A1020 |  | Excavation Works | 15d | 2012-01-11 | 2012-01-25 | A1050 SS+10d | 0d |  |  | 582,400 |
| A1080 |  | Soil replacement&backfilling | 15d | 2012-01-26 | 2012-02-09 | A1020 | 0d |  |  |  |
| A1040 |  | Backfill Works | 15d | 2012-04-20 | 2012-05-04 | A1120 FS-5d | 0d |  |  | 64,350 |

Notes:
- A1020: Expenses: (New Expense Item) 582400
- A1040: Expenses: (New Expense Item) 64350

| ID | WBS | Activity | Duration | Start | Finish | Predecessors | Total float | Free float | Cost |
| --- | --- | --- | --- | --- | --- | --- | --- | --- | --- |
|  | Concrete | **Concrete Works** |  | 2012-02-10 | 2012-07-20 |  |  |  |  |
| A1090 |  | Plain Concrete Footings | 20d | 2012-02-10 | 2012-02-29 | A170 SS+5d, A1080 | 0d |  | 491,150 |
| A1100 |  | Reinforced Concrete Footings | 20d | 2012-02-20 | 2012-03-10 | A1090 SS+10d | 0d |  | 4,804,800 |
| A1680 |  | R.C for pedestals&retaining walls | 25d | 2012-03-01 | 2012-03-25 | A1100 SS+10d | 0d |  |  |
| A1140 |  | Slab On Grade(100mm) | 10d | 2012-06-14 | 2012-06-23 | A1170 | 0d |  | 1,200,150 |
| A1150 |  | Reinforced Concrete Slab Above Mezzanine | 7d | 2012-06-14 | 2012-06-20 | A1190 | 77d | 75d | 132,430 |
| A1690 |  | Slab On Grade(150mm) | 20d | 2012-07-01 | 2012-07-20 | A1130 | 0d |  |  |
|  | Masonry | **Masonry Works** |  | 2012-03-26 | 2012-08-14 |  |  |  |  |
| A1230 |  | Masonry under S.O.G | 20d | 2012-03-26 | 2012-04-14 | A270, A1680 | 0d |  | 105,690 |
| A1490 |  | Masonry For Superstructure | 30d | 2012-07-16 | 2012-08-14 | A1690 FS-5d | 0d |  | 629,320 |
|  | Proofing | **Damp proofing & Insulation** |  | 2012-04-10 | 2012-06-30 |  |  |  |  |
| A1120 |  | Cold Bitumen insulation | 15d | 2012-04-10 | 2012-04-24 | A1230 FS-5d | 0d |  | 108,000 |
| A1130 |  | Polystyrene Sheets Under Slab On Grade | 7d | 2012-06-24 | 2012-06-30 | A1700 FS-7d | 0d |  | 1,130,550 |
| A1700 |  | Polyethylene sheet(400micron) | 7d | 2012-06-24 | 2012-06-30 | A1140 | 0d |  |  |
|  | Steel | **Structural Steel** |  | 2012-05-05 | 2012-09-03 |  |  |  |  |
| A1170 |  | Steel Structure Erection | 40d | 2012-05-05 | 2012-06-13 | A1040, A260 | 0d |  | 971,620 |
| A1190 |  | Mezzanine erection | 15d | 2012-05-30 | 2012-06-13 | A1170 FF | 77d | 0d | 306,510 |
| A1180 |  | Roof Cladding | 30d | 2012-06-04 | 2012-07-03 | A1170 FF+20d | 34d | 0d | 545,400 |
| A1200 |  | Wall Cladding | 20d | 2012-08-15 | 2012-09-03 | A1490 | 2d | 0d | 79,800 |
|  | Arch | **Arch works** |  | 2012-08-15 | 2012-09-28 |  |  |  |  |
|  | Finishes | **Finishes Works** |  | 2012-08-15 | 2012-09-28 |  |  |  |  |
| A1280 |  | Internal Plaster | 20d | 2012-08-15 | 2012-09-03 | A1490 | 0d |  | 44,000 |
| A1320 |  | Acrylicon flooring | 30d | 2012-08-30 | 2012-09-28 | A1280 FS-5d | 2d | 0d | 151,735 |
| A1300 |  | Internal Painting | 20d | 2012-09-09 | 2012-09-28 | A1320 SS+10d | 2d |  | 69,920 |

Notes:
- A1090: Expenses: (New Expense Item) 491150
- A1100: Expenses: (New Expense Item) 4804800
- A1140: Expenses: (New Expense Item) 1200150
- A1150: Expenses: (New Expense Item) 78030; (New Expense Item)1 54400
- A1230: Expenses: (New Expense Item) 105690
- A1490: Expenses: (New Expense Item) 629320
- A1120: Expenses: (New Expense Item) 108000
- A1130: Expenses: (New Expense Item) 1130550
- A1170: Expenses: (New Expense Item) 971620
- A1190: Expenses: (New Expense Item) 306510
- A1180: Expenses: (New Expense Item) 545400
- A1200: Expenses: (New Expense Item) 79800
- A1280: Expenses: (New Expense Item) 44000
- A1320: Expenses: (New Expense Item) 151735
- A1300: Expenses: (New Expense Item) 69920

| ID | WBS | Activity | Duration | Start | Finish | Predecessors | Total float | Free float | Cost |
| --- | --- | --- | --- | --- | --- | --- | --- | --- | --- |
|  | Aluminium | **Doors & Windows** |  | 2012-09-04 | 2012-09-28 |  |  |  |  |
| A1330 |  | Windows Erection | 20d | 2012-09-04 | 2012-09-23 | A1150, A1200 | 2d | 0d | 372,798 |
| A1350 |  | Doors Erection | 20d | 2012-09-09 | 2012-09-28 | A1330 SS+5d | 2d |  | 1,591,688 |
|  | MEP | **MEP Works** |  | 2012-07-04 | 2012-09-30 |  |  |  |  |
|  | 2 | **Electrical Works** |  | 2012-07-04 | 2012-08-27 |  |  |  |  |
| A1450 |  | Fire alarm system | 30d | 2012-07-04 | 2012-08-02 | A1180, A350 | 34d | 0d | 1,000,000 |
| A1460 |  | Lighting works | 30d | 2012-07-19 | 2012-08-17 | A1450 SS+15d | 34d | 0d | 803,139 |
| A1470 |  | Switch board erection | 20d | 2012-08-08 | 2012-08-27 | A1460 SS+20d | 34d |  | 66,499 |
|  | 1 | **Mechanical Works** |  | 2012-07-04 | 2012-09-30 |  |  |  |  |
|  | HVAC&FFWorks | **HVAC & Fire Fighting Works** |  | 2012-07-04 | 2012-09-30 |  |  |  |  |
| A1480 |  | HVAC Works | 30d | 2012-07-04 | 2012-08-02 | A350, A1180 | 59d |  | 533,299 |
| A1380 |  | Fire Fighting Works | 30d | 2012-09-01 | 2012-09-30 | A1280 FS-3d | 0d |  | 2,272,711 |
|  | 2 | **Plumbing Works** |  | 2012-08-15 | 2012-09-28 |  |  |  |  |
| A1420 |  | Supply works | 15d | 2012-08-15 | 2012-08-29 | A1490, A350 | 2d | 0d | 300,000 |
| A1430 |  | Drainage works | 20d | 2012-08-25 | 2012-09-13 | A1420 SS+10d | 2d | 0d | 200,000 |
| A1440 |  | Plumbing equipments | 15d | 2012-09-14 | 2012-09-28 | A1430 | 2d |  | 34,883 |
|  | Site | **Site Works** |  | 2012-08-09 | 2012-09-27 |  |  |  |  |
| A1340 |  | Site Works | 50d | 2012-08-09 | 2012-09-27 | A1490 FS-6d | 3d |  | 693,152 |

Notes:
- A1330: Expenses: (New Expense Item) 372798
- A1350: Expenses: (New Expense Item)1 57188; (New Expense Item) 1534500
- A1450: Expenses: (New Expense Item) 1000000
- A1460: Expenses: (New Expense Item) 800000; (New Expense Item)1 3139
- A1470: Expenses: (New Expense Item) 66499
- A1480: Expenses: (New Expense Item) 533299
- A1380: Expenses: (New Expense Item) 2272711
- A1420: Expenses: (New Expense Item) 300000
- A1430: Expenses: (New Expense Item) 200000
- A1440: Expenses: (New Expense Item) 30581; (New Expense Item)1 4302
- A1340: Expenses: (New Expense Item) 693152

## Activity codes

| Code | Value | Meaning |
| --- | --- | --- |
| TYPE OF WORK | arch | arch works |
| TYPE OF WORK | civil | civil works |
