# DIEGO Factory

Schedule from Primavera P6, 2012-01-01 to 2012-05-31, data date 2011-12-07.

## Calendars

- Diego Calendar: Mon-Sun 08:00-16:00.

## Schedule

| ID | WBS | Activity | Type | Duration | Start | Finish | Predecessors | Total float | Free float | TYPE OF WORK |
| --- | --- | --- | --- | --- | --- | --- | --- | --- | --- | --- |
|  | Milestones | **Project Milestones** |  |  | 2012-01-01 | 2012-05-31 |  |  |  |  |
| A1040 |  | Project Start | milestone | 0d | 2012-01-01 | 2012-01-01 |  | 0d |  |  |
| A1050 |  | Project Finish | milestone | 0d | 2012-05-31 | 2012-05-31 | A1260, A1420, A3680, A3670, A1320, A1290, A1020 | 0d |  |  |
|  | Mobilization | **Mobilization** |  |  | 2012-01-01 | 2012-01-14 |  |  |  |  |
| A1360 |  | Mobilization |  | 7d | 2012-01-01 | 2012-01-07 | A1040 | 0d |  |  |
| A1370 |  | Steel Fence & Signboards |  | 7d | 2012-01-08 | 2012-01-14 | A1360 | 0d |  |  |
|  | Engineering | **Engineering** |  |  | 2012-01-15 | 2012-04-02 |  |  |  |  |
|  | Civil Works | **Civil Works** |  |  | 2012-01-15 | 2012-01-29 |  |  |  |  |
| SD 100 |  | Shop Drawings submittal |  | 10d | 2012-01-15 | 2012-01-24 | A1370 | 5d | 0d | civil |
| SD 150 |  | Shop Drawings Approval |  | 10d | 2012-01-20 | 2012-01-29 | SD 100 SS+5d | 5d | 0d | civil |
|  | Arch Works | **Arch Works** |  |  | 2012-01-30 | 2012-02-12 |  |  |  |  |
| SD 120 |  | Shop Drawings submittal |  | 7d | 2012-01-30 | 2012-02-05 | SD 150 | 16d | 0d | civil |
| SD 180 |  | Shop Drawings Approval |  | 7d | 2012-02-06 | 2012-02-12 | SD 120 | 16d | 0d | civil |
|  | MEP Works | **MEP Works** |  |  | 2012-03-14 | 2012-04-02 |  |  |  |  |
| SD 260 |  | Shop Drawings submittal |  | 10d | 2012-03-14 | 2012-03-23 | SD 180 FS+30d | 31d | 0d | civil |
| SD 270 |  | Shop Drawings Approval |  | 10d | 2012-03-24 | 2012-04-02 | SD 260 | 31d | 0d | civil |
|  | Construction | **Construction** |  |  | 2012-01-15 | 2012-05-31 |  |  |  |  |
|  | Site Preparing | **Site Preparation** |  |  | 2012-01-15 | 2012-05-03 |  |  |  |  |
| A1400 |  | Demolishing & Removing Roof Tiles |  | 10d | 2012-01-15 | 2012-01-24 | A1370 | 0d |  |  |
| A1410 |  | Demolishing & Removing Roof R.C Bed Stales (26) |  | 10d | 2012-01-25 | 2012-02-03 | A1400 | 0d |  |  |
| A1390 |  | Demolishing & Removing R.C Floor Concrete |  | 10d | 2012-04-17 | 2012-04-26 | A1250 FS-6d | 1d | 0d |  |
| A1380 |  | Demolishing & Removing Asphalt Layers |  | 10d | 2012-04-24 | 2012-05-03 | A1370 FS+100d | 0d |  |  |
|  | Concrete | **Concrete Works** |  |  | 2012-02-04 | 2012-05-12 |  |  |  |  |
| A1130 |  | Floor Reinforced Concrete At Levet (+5.70) |  | 25d | 2012-02-04 | 2012-02-28 | A1410, SD 150 | 0d |  |  |
| A1140 |  | Floor Reinforced Concrete At Levet (+10.30) |  | 12d | 2012-03-15 | 2012-03-26 | A1210 | 0d |  |  |
| A1150 |  | Concrete Coves |  | 10d | 2012-04-28 | 2012-05-07 | A1300 SS+5d | 9d |  |  |
| A1070 |  | Plain Concrete For Footings |  | 4d | 2012-05-03 | 2012-05-06 | A1000 | 1d | 0d |  |
| A1080 |  | Reinforced Concrete For Footings |  | 6d | 2012-05-07 | 2012-05-12 | A1070 | 1d | 0d |  |

Notes:
- A1130: Expenses: (New Expense Item) 0
- A1070: Expenses: (New Expense Item) 0
- A1080: Expenses: (New Expense Item) 0

| ID | WBS | Activity | Duration | Start | Finish | Predecessors | Total float | Free float |
| --- | --- | --- | --- | --- | --- | --- | --- | --- |
|  | Masonry | **Masonry Works** |  | 2012-02-29 | 2012-03-14 |  |  |  |
| A1210 |  | Masonry Works | 15d | 2012-02-29 | 2012-03-14 | A1130, SD 180 | 0d |  |
|  | Insulation | **Insulation Works** |  | 2012-03-27 | 2012-05-16 |  |  |  |
| A3670 |  | Insulation For Concrete Roof | 7d | 2012-03-27 | 2012-04-02 | A1140 | 59d |  |
| A3530 |  | Cold Bitumen For UnderGround | 4d | 2012-05-13 | 2012-05-16 | A1080 | 1d | 0d |
|  | Finishes | **Finishes Works** |  | 2012-04-03 | 2012-05-31 |  |  |  |
| A1250 |  | Internal Plastering | 20d | 2012-04-03 | 2012-04-22 | A1140 FS+7d | 0d |  |
| A1300 |  | Flooring Works | 20d | 2012-04-23 | 2012-05-12 | A1250 | 0d |  |
| A1270 |  | EXternal Plastering | 20d | 2012-04-25 | 2012-05-14 | A1250 FS+2d | 0d |  |
| A1310 |  | False Ceiling | 25d | 2012-04-28 | 2012-05-22 | A1300 SS+5d | 0d |  |
| A1320 |  | Partitions | 15d | 2012-05-13 | 2012-05-27 | A1300 | 4d |  |
| A1330 |  | Epoxy Painting | 15d | 2012-05-13 | 2012-05-27 | A1300 | 4d |  |
| A1280 |  | Internal Painting | 15d | 2012-05-17 | 2012-05-31 | A1310 FS-6d, A1150 | 0d |  |
| A1290 |  | Dry Mix Painting | 15d | 2012-05-17 | 2012-05-31 | A1270 FS+2d | 0d |  |
|  | Earth | **Earth works** |  | 2012-04-27 | 2012-05-30 |  |  |  |
| A1000 |  | Excavation Works | 6d | 2012-04-27 | 2012-05-02 | A1390 | 1d | 0d |
| A1020 |  | Backfill Works | 4d | 2012-05-27 | 2012-05-30 | A3530 FS+10d | 1d |  |
|  | Doors & Windows | **Doors & Windows** |  | 2012-05-15 | 2012-05-28 |  |  |  |
| A1260 |  | Doors erection | 14d | 2012-05-15 | 2012-05-28 | A1270 | 3d |  |
| A3680 |  | Windows erection | 14d | 2012-05-15 | 2012-05-28 | A1270 | 3d |  |
|  | 1 | **MEP WORKS** |  | 2012-04-03 | 2012-05-31 |  |  |  |
|  | 3 | **Plumbing works** |  | 2012-04-03 | 2012-05-31 |  |  |  |
| A1340 |  | Supply works | 20d | 2012-04-03 | 2012-04-22 | A1210, SD 270 | 31d |  |
| A1350 |  | Drainage works | 20d | 2012-05-04 | 2012-05-23 | A1380, A1250, SD 270 | 0d |  |
| A1420 |  | Sanitary Ware Erection | 8d | 2012-05-24 | 2012-05-31 | A1340, A1350 | 0d |  |

Notes:
- A1210: Expenses: (New Expense Item) 0
- A1250: Expenses: (New Expense Item) 0
- A1270: Expenses: (New Expense Item) 0
- A1280: Expenses: (New Expense Item) 0
- A1000: Expenses: (New Expense Item) 0
- A1020: Expenses: (New Expense Item) 0
- A1260: Expenses: (New Expense Item) 0
- A1340: Expenses: (New Expense Item) 0
- A1350: Expenses: (New Expense Item) 0

## Activity codes

| Code | Value | Meaning |
| --- | --- | --- |
| TYPE OF WORK | civil | civil works |
