# PAPER FACTORY

Schedule from Primavera P6, 2012-01-01 to 2012-04-15, data date 2012-01-01.

## Calendars

- Beyti: Mon-Thu 08:00-16:00; Fri off; Sat-Sun 08:00-16:00.

## Schedule

| ID | WBS | Activity | Type | Duration | Start | Finish | Predecessors | Total float | Free float |
| --- | --- | --- | --- | --- | --- | --- | --- | --- | --- |
|  | 3 | **MILESTONES** |  |  | 2012-01-01 | 2012-04-15 |  |  |  |
| A1000 |  | Commencement date | milestone | 0d | 2012-01-01 | 2012-01-01 |  | 0d |  |
| A1010 |  | Project handing over | milestone | 0d | 2012-04-15 | 2012-04-15 | A1050, A1150, A1400, A1300 | 0d |  |
|  | 5 | **MOBILIZATION** |  |  | 2012-01-01 | 2012-04-15 |  |  |  |
| A1310 |  | Mobilization |  | 14d | 2012-01-01 | 2012-01-16 | A1000 | 0d |  |
| A1320 |  | Demobilization |  | 2d | 2012-04-14 | 2012-04-15 | A1010 FF | 0d |  |
|  | 6 | **SITE WORKS** |  |  | 2012-01-17 | 2012-03-21 |  |  |  |
| A1020 |  | Cleaning site |  | 14d | 2012-01-17 | 2012-02-01 | A1310 | 21d | 0d |
| A1030 |  | Excavation |  | 14d | 2012-02-02 | 2012-02-18 | A1020 | 21d | 0d |
| A1040 |  | Backfilling |  | 14d | 2012-02-19 | 2012-03-05 | A1030 | 21d | 0d |
| A1050 |  | Base course |  | 14d | 2012-03-06 | 2012-03-21 | A1040 | 21d |  |
|  | 2 | **FRONT FENCE** |  |  | 2012-01-17 | 2012-04-02 |  |  |  |
| A1060 |  | Excavation |  | 14d | 2012-01-17 | 2012-02-01 | A1310 | 11d | 0d |
| A1070 |  | P.C footings |  | 30d | 2012-01-23 | 2012-02-26 | A1060 SS+5d | 11d | 0d |
| A1080 |  | R.C footings |  | 30d | 2012-01-28 | 2012-03-01 | A1070 SS+4d | 11d | 0d |
| A1120 |  | R.C Ground beam |  | 30d | 2012-01-28 | 2012-03-01 | A1080 FF | 11d | 0d |
| A1090 |  | R.C columns |  | 30d | 2012-02-05 | 2012-03-10 | A1120 FF+7d | 11d | 0d |
| A1100 |  | Insulation works |  | 20d | 2012-02-16 | 2012-03-10 | A1090 SS+10d | 11d | 0d |
| A1110 |  | Masonry works |  | 20d | 2012-02-22 | 2012-03-15 | A1100 SS+5d | 11d | 0d |
| A1130 |  | R.C Upper beam |  | 20d | 2012-02-28 | 2012-03-21 | A1110 SS+5d | 11d | 0d |
| A1140 |  | Plaster works |  | 20d | 2012-03-05 | 2012-03-27 | A1130 SS+5d | 11d | 0d |
| A1150 |  | Painting works |  | 20d | 2012-03-11 | 2012-04-02 | A1140 SS+5d | 11d |  |
|  | 1 | **SIDE FENCE(TYPE-2)** |  |  | 2012-01-17 | 2012-04-02 |  |  |  |
| A1330 |  | Excavation |  | 20d | 2012-01-17 | 2012-02-08 | A1310 | 11d | 0d |
| A1340 |  | P.C footings |  | 40d | 2012-01-23 | 2012-03-08 | A1330 SS+5d | 11d | 0d |
| A1350 |  | R.C footings |  | 40d | 2012-01-28 | 2012-03-13 | A1340 SS+4d | 11d | 0d |
| A1360 |  | R.C Ground beam |  | 40d | 2012-01-28 | 2012-03-13 | A1350 FF | 11d | 0d |
| A1370 |  | R.C columns |  | 40d | 2012-02-05 | 2012-03-21 | A1360 FF+7d | 11d | 0d |
| A1380 |  | Insulation works |  | 30d | 2012-02-16 | 2012-03-21 | A1370 SS+10d | 11d | 0d |
| A1390 |  | Masonry works |  | 30d | 2012-02-22 | 2012-03-27 | A1380 SS+5d | 11d | 0d |
| A1400 |  | R.C Upper beam |  | 30d | 2012-02-28 | 2012-04-02 | A1390 SS+5d | 11d |  |

| ID | WBS | Activity | Duration | Start | Finish | Predecessors | Total float |
| --- | --- | --- | --- | --- | --- | --- | --- |
|  | 4 | **SECURITY ROOM** |  | 2012-01-17 | 2012-04-15 |  |  |
| A1240 |  | Excavation | 4d | 2012-01-17 | 2012-01-21 | A1310 | 0d |
| A1250 |  | P.C footings | 7d | 2012-01-22 | 2012-01-29 | A1240 | 0d |
| A1260 |  | R.C footings | 10d | 2012-01-30 | 2012-02-09 | A1250 | 0d |
| A1270 |  | R.C columns | 5d | 2012-02-11 | 2012-02-15 | A1260 | 0d |
| A1280 |  | R.C slab | 7d | 2012-02-16 | 2012-02-23 | A1270 | 0d |
| A1290 |  | Masonry works | 14d | 2012-02-25 | 2012-03-11 | A1280 | 0d |
| A1300 |  | Finishing works | 30d | 2012-03-12 | 2012-04-15 | A1290 | 0d |
