# Warehouse Extension

Schedule from Primavera P6, 2011-12-01 to 2012-05-31, data date 2011-11-15.

## Calendars

- Beyti: Mon-Thu 08:00-16:00; Fri off; Sat-Sun 08:00-16:00.
- Standard 5 Day Workweek: Mon-Fri 08:00-12:00, 13:00-17:00; Sat-Sun off.

## Schedule

| ID | WBS | Activity | Type | Duration | Start | Finish | Predecessors | Planned start | Planned finish | Total float | Free float | TYPE OF WORK |
| --- | --- | --- | --- | --- | --- | --- | --- | --- | --- | --- | --- | --- |
|  | Milestones | **Project Milestones** |  |  | 2011-12-01 | 2012-05-31 |  |  |  |  |  |  |
| A1040 |  | Project Start | milestone | 0d | 2011-12-01 | 2011-12-01 |  |  |  | 0d |  |  |
| A1050 |  | Project Finish | milestone | 0d | 2012-05-31 | 2012-05-31 | A1270, A1260, A1130, A1320, A1330, A1310, A1300, A1350 | 2012-06-02 | 2012-06-02 | 0d |  |  |
|  | Mobilization | **Mobilization** |  |  | 2011-12-01 | 2011-12-25 |  |  |  |  |  |  |
| A1030 |  | Site Preparation Works |  | 25d | 2011-12-01 | 2011-12-25 | A1040 | 2011-12-01 | 2011-12-29 | 0d |  |  |
|  | Engineering | **Engineering** |  |  | 2011-12-26 | 2012-03-08 |  |  |  |  |  |  |
|  | Civil Works | **Civil Works** |  |  | 2011-12-26 | 2012-01-29 |  |  |  |  |  |  |
| SD 100 |  | Shop Drawings submittal |  | 30d | 2011-12-26 | 2012-01-24 | A1030 | 2011-12-26 | 2012-01-29 | 3d | 0d | civil |
| SD 150 |  | Shop Drawings Approval |  | 30d | 2011-12-31 | 2012-01-29 | SD 100 SS+5d | 2011-12-31 | 2012-02-02 | 3d | 0d | civil |
|  | Arch Works | **Arch Works** |  |  | 2012-01-30 | 2012-02-09 |  |  |  |  |  |  |
| SD 120 |  | Shop Drawings submittal |  | 6d | 2012-01-30 | 2012-02-04 | SD 150 | 2012-01-30 | 2012-02-05 | 66d | 0d | civil |
| SD 180 |  | Shop Drawings Approval |  | 6d | 2012-02-04 | 2012-02-09 | SD 120 SS+5d |  |  | 66d | 0d | civil |
|  | MEP Works | **MEP Works** |  |  | 2012-02-24 | 2012-03-08 |  |  |  |  |  |  |
| SD 260 |  | Shop Drawings submittal |  | 7d | 2012-02-24 | 2012-03-01 | A1030 FS+60d | 2012-02-25 | 2012-03-03 | 84d | 0d | civil |
| SD 270 |  | Shop Drawings Approval |  | 7d | 2012-03-02 | 2012-03-08 | SD 260 | 2012-03-03 | 2012-03-10 | 84d |  | civil |
|  | Construction | **Construction** |  |  | 2011-12-16 | 2012-05-31 |  |  |  |  |  |  |
|  | Civil | **Civil works** |  |  | 2011-12-16 | 2012-04-22 |  |  |  |  |  |  |
|  | Earth | **Earth works** |  |  | 2011-12-16 | 2012-02-22 |  |  |  |  |  |  |
| A1000 |  | Excavation Works |  | 15d | 2011-12-16 | 2011-12-30 | A1030 SS+15d | 2011-12-17 | 2012-01-02 | 0d |  |  |
| A1060 |  | Replacement Works |  | 10d | 2011-12-26 | 2012-01-04 | A1000 SS+10d | 2011-12-26 | 2012-01-05 | 0d |  |  |
| A1020 |  | Backfill Works |  | 5d | 2012-02-18 | 2012-02-22 | A1100 |  |  | 66d | 0d |  |
|  | Concrete | **Concrete Works** |  |  | 2012-01-05 | 2012-04-22 |  |  |  |  |  |  |
| A1070 |  | Plain Concrete For Footings |  | 10d | 2012-01-05 | 2012-01-14 | SD 150 SS+2d, A1060 | 2012-01-05 | 2012-01-16 | 0d |  |  |
| A1080 |  | Reinforced Concrete For Footings |  | 15d | 2012-01-09 | 2012-01-23 | A1070 SS+4d | 2012-01-09 | 2012-01-25 | 0d |  |  |
| A1090 |  | Columns & Retaining Wall |  | 15d | 2012-01-14 | 2012-01-28 | A1080 SS+5d | 2012-01-14 | 2012-01-30 | 0d |  |  |
| A1140 |  | Anchor Bolts |  | 3d | 2012-01-26 | 2012-01-28 | A1090 FF | 2012-01-26 | 2012-01-29 | 0d |  |  |
| A1120 |  | Slab On Grade |  | 15d | 2012-03-24 | 2012-04-07 | A1110, A1150 | 2012-03-24 | 2012-04-09 | 39d | 0d |  |
| A1130 |  | Reinforced Concrete Slab Above Steel Platform |  | 15d | 2012-04-08 | 2012-04-22 | A1120, A1150 | 2012-04-08 | 2012-04-24 | 39d |  |  |

| ID | WBS | Activity | Duration | Start | Finish | Predecessors | Planned start | Planned finish | Total float | Free float | Calendar |
| --- | --- | --- | --- | --- | --- | --- | --- | --- | --- | --- | --- |
|  | Masonry | **Masonry Works** |  | 2012-02-06 | 2012-03-23 |  |  |  |  |  |  |
| A1210 |  | Masonry For Substructure | 7d | 2012-02-06 | 2012-02-12 | A1090, A1140, SD 180 SS+2d | 2012-02-06 | 2012-02-13 | 66d | 0d |  |
| A1220 |  | Masonry For Superstructure | 15d | 2012-03-09 | 2012-03-23 | A1150 SS+10d | 2012-03-10 | 2012-03-26 | 0d |  |  |
|  | Proofing | **Damp proofing & Insulation** |  | 2012-02-13 | 2012-02-25 |  |  |  |  |  |  |
| A1100 |  | Footing insulation | 5d | 2012-02-13 | 2012-02-17 | A1210 | 2012-02-13 | 2012-02-18 | 66d | 0d |  |
| A1110 |  | Polythene Sheets Under Slab On Grade | 3d | 2012-02-23 | 2012-02-25 | A1020 | 2012-02-23 | 2012-02-26 | 66d | 27d |  |
|  | 1 | **Steel structure** |  | 2012-02-28 | 2012-04-22 |  |  |  |  |  |  |
| A1150 |  | Steel Structure Erection | 25d | 2012-02-28 | 2012-03-23 | A1140 FS+30d | 2012-02-28 | 2012-03-27 | 0d |  |  |
| A1170 |  | Roof cladding&insulation | 30d | 2012-03-24 | 2012-04-22 | A1150 | 2012-03-24 | 2012-04-26 | 0d |  |  |
|  | Arch | **Arch works** |  | 2012-03-24 | 2012-04-27 |  |  |  |  |  |  |
| A1280 |  | Plaster works | 20d | 2012-03-24 | 2012-04-12 | A1220 | 2012-03-24 | 2012-04-15 | 0d |  |  |
| A1270 |  | False cieling | 5d | 2012-04-03 | 2012-04-07 | A1280 SS+10d | 2012-04-03 | 2012-04-08 | 54d |  |  |
| A1250 |  | Paint works | 15d | 2012-04-13 | 2012-04-27 | A1280 | 2012-04-14 | 2012-04-30 | 34d | 0d |  |
| A1260 |  | Doors erection | 10d | 2012-04-18 | 2012-04-27 | A1250 SS+5d | 2012-04-18 | 2012-04-29 | 34d |  |  |
|  | 1 | **MEP WORKS** |  | 2012-04-13 | 2012-05-31 |  |  |  |  |  |  |
|  | 1 | **Electrical works** |  | 2012-04-23 | 2012-05-31 |  |  |  |  |  |  |
| A1290 |  | Lighting works | 25d | 2012-04-23 | 2012-05-17 | A1170 | 2012-04-23 | 2012-05-21 | 0d |  |  |
| A1300 |  | Earthing system works | 10d | 2012-05-18 | 2012-05-27 | A1290 | 2012-05-19 | 2012-05-29 | 4d |  |  |
| A1310 |  | Fire alram works | 14d | 2012-05-18 | 2012-05-31 | A1170, A1290 | 2012-05-19 | 2012-06-03 | 0d |  |  |
|  | 2 | **Mechanical works** |  | 2012-04-28 | 2012-05-22 |  |  |  |  |  |  |
| A1320 |  | Fire fighting works | 25d | 2012-04-28 | 2012-05-22 | A1170 FS+5d | 2012-04-28 | 2012-05-26 | 9d |  |  |
| A1330 |  | HVAC works | 15d | 2012-04-28 | 2012-05-12 | A1170 FS+5d | 2012-04-28 | 2012-05-14 | 19d |  |  |
|  | 3 | **Plumbing works** |  | 2012-04-13 | 2012-05-31 |  |  |  |  |  |  |
| A1340 |  | Supply works | 15d | 2012-04-13 | 2012-05-03 | A1280 |  |  | 0d |  | Standard 5 Day Workweek |
| A1350 |  | jnmmmmm | 20d | 2012-05-04 | 2012-05-31 | A1340 |  |  | 0d |  | Standard 5 Day Workweek |

## Activity codes

| Code | Value | Meaning |
| --- | --- | --- |
| TYPE OF WORK | civil | civil works |
