# ROOTS STEEL

Schedule from Primavera P6, 2012-06-01 to 2012-10-29, data date 2012-05-09, costs in EGP.
Must finish by 2012-10-31

## Calendars

- 7-Day Workweek(TENDER CALENDAR): Mon-Sun 08:00-12:00, 13:00-17:00.

## Resources

| Resource | Group | Rate |
| --- | --- | --- |
| TRIAL CASH | material | 1 |

## Schedule

| ID | WBS | Activity | Type | Duration | Start | Finish | Predecessors | Total float | Free float | user_number8 | user_text1 |
| --- | --- | --- | --- | --- | --- | --- | --- | --- | --- | --- | --- |
|  | 2 | **MILESTONES** |  |  | 2012-06-01 | 2012-10-29 |  |  |  |  |  |
| A1060 |  | Site handing over | milestone | 0d | 2012-06-01 | 2012-06-01 |  | 1d | 0d | 0 | 36 |
| A1070 |  | Contract agreement | milestone | 0d | 2012-06-01 | 2012-06-01 | A1060 | 1d | 0d | 0 | 7878 |
| A1080 |  | Recieve advanced payment | milestone | 0d | 2012-06-01 | 2012-06-01 | A1070 | 1d | 0d | 0 | 621 |
| A1090 |  | Commencement date | milestone | 0d | 2012-06-01 | 2012-06-01 | A1080 | 1d | 0d | 0 | 86 |
| A1500 |  | Project handing over | milestone | 0d | 2012-10-29 | 2012-10-29 | A1630 | 1d | 0d | 0 | 987 |
|  | 4 | **MOBILIZATION** |  |  | 2012-06-01 | 2012-10-29 |  |  |  |  |  |
| A1040 |  | Mobilization |  | 14d | 2012-06-01 | 2012-06-14 | A1090 | 1d | 0d | 0 | 78 |
| A1050 |  | Demobilization |  | 5d | 2012-10-25 | 2012-10-29 | A1500 FF | 1d | 0d | 0 | 678 |
|  | 3 | **PROCUREMENT** |  |  | 2012-06-15 | 2012-10-12 |  |  |  |  |  |
|  | 1 | **MECHANICAL** |  |  | 2012-06-15 | 2012-09-12 |  |  |  |  |  |
|  | 1 | **PURCHASE ORDERS** |  |  | 2012-06-15 | 2012-06-15 |  |  |  |  |  |
| A1320 |  | Booster pump P.O | milestone | 0d | 2012-06-15 | 2012-06-15 | A1040 | 1d | 0d | 0 | 2 |
| A1340 |  | FM 200 P.O | milestone | 0d | 2012-06-15 | 2012-06-15 | A1040 | 41d | 0d | 0 | 27 |
| A1360 |  | Fans P.O | milestone | 0d | 2012-06-15 | 2012-06-15 | A1040 | 17d | 0d | 0 | 78 |
| A1390 |  | Air outlets P.O | milestone | 0d | 2012-06-15 | 2012-06-15 | A1040 | 33d | 0d | 0 | 78 |
|  | 2 | **DELIVERY DATE** |  |  | 2012-08-13 | 2012-09-12 |  |  |  |  |  |
| A1350 |  | FM 200 delivery | milestone | 0d | 2012-08-13 | 2012-08-13 | A1340 FS+60d | 41d | 40d | 0 | 862 |
| A1380 |  | Air outlets delivery | milestone | 0d | 2012-08-13 | 2012-08-13 | A1390 FS+60d | 33d | 20d | 0 | 7862 |
| A1330 |  | Booster pump Delivery | milestone | 0d | 2012-09-12 | 2012-09-12 | A1320 FS+90d | 1d | 0d | 0 | 786 |
| A1370 |  | Fans delivery | milestone | 0d | 2012-09-12 | 2012-09-12 | A1360 FS+90d | 17d | 4d | 0 | 62 |
|  | 3 | **ELECTRICAL** |  |  | 2012-06-25 | 2012-10-12 |  |  |  |  |  |
|  | 1 | **PURCHASE ORDERS** |  |  | 2012-06-25 | 2012-08-14 |  |  |  |  |  |
| A1140 |  | Distribution board P.O | milestone | 0d | 2012-06-25 | 2012-06-25 | A1040 FS+10d | 8d | 0d | 0 | 786 |
| A1190 |  | Bus ducts P.O | milestone | 0d | 2012-07-15 | 2012-07-15 | A1040 FS+30d | 4d | 0d | 0 | 2786 |
| A1200 |  | UPS P.O | milestone | 0d | 2012-07-15 | 2012-07-15 | A1040 FS+30d | 4d | 0d | 0 | 1 |
| A1280 |  | Transformers P.O | milestone | 0d | 2012-07-15 | 2012-07-15 | A1040 FS+30d | 4d | 0d | 0 | 2786 |
| A1290 |  | Generators P.O | milestone | 0d | 2012-07-15 | 2012-07-15 | A1040 FS+30d | 4d | 0d | 0 | 2 |
| A1210 |  | Fire alarm system P.O | milestone | 0d | 2012-07-25 | 2012-07-25 | A1040 FS+40d | 8d | 0d | 0 | 76 |
| A1150 |  | Lighting fixtures | milestone | 0d | 2012-08-14 | 2012-08-14 | A1040 FS+60d | 11d | 0d | 0 | 2 |
| A1180 |  | EPABX system & dataP.O | milestone | 0d | 2012-08-14 | 2012-08-14 | A1040 FS+60d | 4d | 0d | 0 | 86 |

| ID | WBS | Activity | Type | Duration | Start | Finish | Predecessors | Total float | Free float | Resources | Cost | user_number8 | user_text1 |
| --- | --- | --- | --- | --- | --- | --- | --- | --- | --- | --- | --- | --- | --- |
|  | 2 | **DELIVERY DATE** |  |  | 2012-09-12 | 2012-10-12 |  |  |  |  |  |  |  |
| A1230 |  | Lighting fixtures Delivery | milestone | 0d | 2012-09-12 | 2012-09-12 | A1150 FS+30d | 11d | 10d |  |  | 0 | 62 |
| A1220 |  | Distribution board Delivery | milestone | 0d | 2012-09-22 | 2012-09-22 | A1140 FS+90d | 8d | 7d |  |  | 0 | 27 |
| A1270 |  | Fire alarm system Delivery | milestone | 0d | 2012-09-22 | 2012-09-22 | A1210 FS+60d | 8d | 7d |  |  | 0 | 86 |
| A1240 |  | EPABX system & data Delivery | milestone | 0d | 2012-10-12 | 2012-10-12 | A1180 FS+60d | 4d | 0d |  |  | 0 | 786 |
| A1250 |  | Bus ducts Delivery | milestone | 0d | 2012-10-12 | 2012-10-12 | A1190 FS+90d | 4d | 2d |  |  | 0 | 27 |
| A1260 |  | UPS Delivery | milestone | 0d | 2012-10-12 | 2012-10-12 | A1200 FS+90d | 4d | 0d |  |  | 0 | 8627 |
| A1300 |  | Transformers Delivery | milestone | 0d | 2012-10-12 | 2012-10-12 | A1280 FS+90d | 4d | 2d |  |  | 0 | 76 |
| A1310 |  | Generators Delivery | milestone | 0d | 2012-10-12 | 2012-10-12 | A1290 FS+90d | 4d | 2d |  |  | 0 | 2786 |
|  | 1 | **CONSTRUCTION** |  |  | 2012-06-15 | 2012-10-29 |  |  |  |  |  |  |  |
|  | 5 | **MECHANICAL WORKS** |  |  | 2012-06-15 | 2012-10-22 |  |  |  |  |  |  |  |
|  | 1 | **FIRE FIGHTING WORKS** |  |  | 2012-06-15 | 2012-10-22 |  |  |  |  |  |  |  |
| A1000 |  | Pipes & fittings installation |  | 45d | 2012-06-15 | 2012-07-29 | A1040 | 16d | 0d | TRIAL CASH [360] | 212 | 0 | 3216 |
| A1010 |  | fire hose cabient & fire extinguisher & sprinklers erection |  | 30d | 2012-07-30 | 2012-08-28 | A1000 | 16d | 15d | TRIAL CASH [240] | 3,542 | 0 | 42 |
| A1020 |  | pumbs installation |  | 10d | 2012-09-13 | 2012-09-22 | A1010, A1330 | 1d | 0d | TRIAL CASH [80] | 89,584 | 0 | 42 |
| A1030 |  | FM200 Installation |  | 30d | 2012-09-23 | 2012-10-22 | A1020, A1350 | 1d | 0d | TRIAL CASH [240] | 6 | 0 | 73 |
|  | 2 | **HVAC WORKS** |  |  | 2012-06-15 | 2012-10-10 |  |  |  |  |  |  |  |
| A1570 |  | Galvanized duct installation |  | 30d | 2012-06-15 | 2012-07-14 | A1040 | 13d | 0d | TRIAL CASH [240] | 68,484 | 0 | 9 |
| A1580 |  | Pipe and valves installation |  | 30d | 2012-07-15 | 2012-08-13 | A1570 | 13d | 0d | TRIAL CASH [240] | 654 | 0 | 789 |
| A1590 |  | Pipes , duct insulation & cladding |  | 20d | 2012-08-14 | 2012-09-02 | A1580 | 13d | 0d | TRIAL CASH [160] | 6,847,981 | 0 | 78 |
| A1610 |  | Air outlets installation |  | 14d | 2012-09-03 | 2012-09-16 | A1380, A1590 | 13d | 0d | TRIAL CASH [112] | 3,568 | 0 | 89 |
| A1620 |  | Fans erection |  | 14d | 2012-09-17 | 2012-09-30 | A1610, A1370 | 13d | 0d | TRIAL CASH [112] | 68 | 0 | 78 |
| A1600 |  | Split units & equipments erection |  | 10d | 2012-10-01 | 2012-10-10 | A1620 | 13d | 12d | TRIAL CASH [80] | 356,584 | 0 | 97 |
|  | 3 | **PLUMBING WORKS** |  |  | 2012-06-15 | 2012-09-02 |  |  |  |  |  |  |  |
| A1530 |  | Pipes & fitings installation |  | 30d | 2012-06-15 | 2012-07-14 | A1040 | 51d | 0d | TRIAL CASH [240] | 54 | 0 | 7 |
| A1540 |  | Floor drains & floor clean outs installations |  | 15d | 2012-07-15 | 2012-07-29 | A1530 | 51d | 0d | TRIAL CASH [120] | 65 | 0 | 823 |
| A1550 |  | Sanitary fixtures installations |  | 20d | 2012-07-30 | 2012-08-18 | A1540 | 51d | 0d | TRIAL CASH [160] | 68 | 0 | 789 |
| A1560 |  | Heaters & equipments installations |  | 15d | 2012-08-19 | 2012-09-02 | A1550 | 51d | 50d | TRIAL CASH [120] | 69 | 0 | 378 |

| ID | WBS | Activity | Duration | Start | Finish | Predecessors | Total float | Free float | Resources | Cost | user_number8 | user_text1 |
| --- | --- | --- | --- | --- | --- | --- | --- | --- | --- | --- | --- | --- |
|  | 4 | **ELECTRICAL WORKS** |  | 2012-06-15 | 2012-10-29 |  |  |  |  |  |  |  |
| A1100 |  | Conduits & boxes erection | 30d | 2012-06-15 | 2012-07-14 | A1040 | 1d | 0d | TRIAL CASH [240] | 70 | 0 |  |
| A1110 |  | Cable tray erection | 30d | 2012-06-30 | 2012-07-29 | A1100 SS+15d | 1d | 0d | TRIAL CASH [240] | 71 | 0 | 786 |
| A1120 |  | Wiring & cables | 20d | 2012-07-30 | 2012-08-18 | A1110 | 1d | 0d | TRIAL CASH [160] | 72 | 0 | 27 |
| A1130 |  | Pulling cables | 30d | 2012-08-19 | 2012-09-17 | A1120 | 1d | 0d | TRIAL CASH [240] | 73 | 0 | 862 |
| A1400 |  | Wiring devices | 21d | 2012-09-13 | 2012-10-03 | A1130 SS+25d | 1d | 0d | TRIAL CASH [168] | 74 | 0 | 62 |
| A1410 |  | Light fixtures erection | 25d | 2012-09-23 | 2012-10-17 | A1400 SS+10d, A1230 | 1d | 0d | TRIAL CASH [200] | 75 | 0 | 79 |
| A1490 |  | Builders work | 30d | 2012-09-23 | 2012-10-22 | A1400 SS+10d | 1d | 0d | TRIAL CASH [240] | 76 | 0 | 8 |
| A1480 |  | CCTV system installation | 30d | 2012-09-29 | 2012-10-28 | A1400 FS-5d | 2d | 1d | TRIAL CASH [240] | 77 | 0 |  |
| A1420 |  | Panel boards installation | 30d | 2012-09-30 | 2012-10-29 | A1410 SS+7d, A1220 | 1d | 0d | TRIAL CASH [240] | 78 | 0 | 2 |
| A1430 |  | Fire alarm system installation | 30d | 2012-09-30 | 2012-10-29 | A1400 SS+17d, A1270 | 1d | 0d | TRIAL CASH [240] | 79 | 0 | 8792 |
| A1510 |  | Earthing & lightining protection systems | 14d | 2012-10-04 | 2012-10-17 | A1400 | 13d | 12d | TRIAL CASH [112] | 80 | 0 | 23 |
| A1470 |  | UPS & central system erection | 14d | 2012-10-13 | 2012-10-26 | A1400, A1240, A1260 | 4d | 3d | TRIAL CASH [112] | 81 | 0 | 278 |
| A1440 |  | Generator erection | 14d | 2012-10-15 | 2012-10-28 | A1420 SS+15d, A1310 | 2d | 1d | TRIAL CASH [112] | 82 | 0 | 78 |
| A1450 |  | Ring main unit erection | 14d | 2012-10-15 | 2012-10-28 | A1420 SS+15d, A1250 | 2d | 1d | TRIAL CASH [112] | 83 | 0 | 92 |
| A1460 |  | Transformers erection | 14d | 2012-10-15 | 2012-10-28 | A1420 SS+15d, A1300 | 2d | 1d | TRIAL CASH [112] | 84 | 0 | 78 |
|  | 1 | **START UP & COMMISSIONING** |  | 2012-10-23 | 2012-10-29 |  |  |  |  |  |  |  |
| A1520 |  | TESTING | 7d | 2012-10-23 | 2012-10-29 | A1480 FF, A1430 FF, A1510 FF, A1470 FF, A1460 FF, A1450 FF, A1440 FF, A1030, A1560, A1600, A1490 | 1d | 0d | TRIAL CASH [56] | 85 | 0 | 78 |
| A1630 |  | Start up & commissioning | 4d | 2012-10-26 | 2012-10-29 | A1520 FF | 1d | 0d | TRIAL CASH [32] | 86 | 0 | 9237 |

## Risks

| Risk | Status | Probability |
| --- | --- | --- |
| (New Risk) | RS_Closed | 50 |
