# PEB Manufacturing Plant Construction Project

Schedule from Primavera P6, 2011-10-01 to 2012-03-01, data date 2011-09-13.

## Calendars

- Root Steel Calendar: Mon-Thu 08:00-16:00; Fri off; Sat-Sun 08:00-16:00. Exceptions (off unless hours are given): 2011-11-05 to 2011-11-10, 2011-11-12 to 2011-11-17.

## Schedule

| ID | WBS | Activity | Type | Duration | Start | Finish | Predecessors | Total float | Free float |
| --- | --- | --- | --- | --- | --- | --- | --- | --- | --- |
|  | KD | **Key Dates** |  |  | 2011-10-01 | 2012-02-29 |  |  |  |
| A10920 |  | Project Start | milestone | 0d | 2011-10-01 | 2011-10-01 |  | 0d |  |
| A10930 |  | Project Finish | milestone | 0d | 2012-02-29 | 2012-02-29 | A11270, A12170, A12180, A12280, A12290, A12320 | 1d |  |
|  | Engineering | **Engineering** |  |  | 2011-10-01 | 2011-11-02 |  |  |  |
|  | AD | **Architectural Drawings** |  |  | 2011-10-01 | 2011-10-16 |  |  |  |
| A10980 |  | Shop Drawing Preparation & Submittal |  | 7d | 2011-10-01 | 2011-10-08 | A10920 | 0d |  |
| A10990 |  | Shop Drawing Review & Approval |  | 7d | 2011-10-09 | 2011-10-16 | A10980 | 0d |  |
|  | E&MD | **Electrical and Mechanical Drawings** |  |  | 2011-10-18 | 2011-11-02 |  |  |  |
| A11000 |  | Shop Drawing Preparation & Submittal |  | 7d | 2011-10-18 | 2011-10-25 | A10920 FS+15d | 1d | 0d |
| A11010 |  | Shop Drawing Review & Approval |  | 7d | 2011-10-26 | 2011-11-02 | A11000 | 1d | 0d |
|  | Execution | **Execution** |  |  | 2011-10-01 | 2012-03-01 |  |  |  |
|  | Mobilization | **Mobilization** |  |  | 2011-10-01 | 2011-10-16 |  |  |  |
| A9550 |  | Site Preparation Works |  | 14d | 2011-10-01 | 2011-10-16 | A10920 | 106d |  |
|  | Main | **Main Building** |  |  | 2011-10-17 | 2012-02-26 |  |  |  |
|  | 5 | **Architectural Works** |  |  | 2011-10-17 | 2012-02-26 |  |  |  |
| A12080 |  | Masonry Works |  | 30d | 2011-10-17 | 2011-12-04 | A10990 | 4d | 0d |
| A12090 |  | Plastering Works |  | 30d | 2011-11-03 | 2011-12-21 | A12080 SS+15d | 4d | 0d |
| A12110 |  | Thermal & Moisture Protection |  | 7d | 2011-12-22 | 2011-12-29 | A12090 | 4d | 0d |
| A12140 |  | Gypsum Board |  | 7d | 2011-12-22 | 2011-12-29 | A12090 | 14d | 0d |
| A12150 |  | Facades Finishing |  | 30d | 2011-12-22 | 2012-01-25 | A12090 | 21d | 17d |
| A12100 |  | Painting Works |  | 30d | 2011-12-31 | 2012-02-02 | A12140 | 14d | 10d |
| A12120 |  | Ceramic Wall Tiles |  | 20d | 2011-12-31 | 2012-01-22 | A12110 | 4d | 0d |
| A12130 |  | Ceramic Tiles For Flooring & Skirting |  | 20d | 2012-01-23 | 2012-02-14 | A12120 | 4d | 0d |
| A12310 |  | Marble Works |  | 20d | 2012-01-23 | 2012-02-14 | A12130 SS | 4d | 0d |
| A12160 |  | Doors & Windows |  | 10d | 2012-02-15 | 2012-02-26 | A12150, A12100, A12130, A12310 | 4d | 0d |
| A12170 |  | Metal Works |  | 10d | 2012-02-15 | 2012-02-26 | A12160 SS | 4d | 3d |
| A12180 |  | Wood & Plastic |  | 10d | 2012-02-15 | 2012-02-26 | A12160 SS | 4d | 3d |

| ID | WBS | Activity | Duration | Start | Finish | Predecessors | Total float | Free float |
| --- | --- | --- | --- | --- | --- | --- | --- | --- |
|  | Service | **Service Buildings and Site Works** |  | 2011-12-17 | 2012-03-01 |  |  |  |
|  | 5 | **Architectural Works** |  | 2011-12-17 | 2012-03-01 |  |  |  |
| A12190 |  | Masonry Works | 10d | 2011-12-17 | 2011-12-27 | A10990 FS+40d | 0d |  |
| A12200 |  | Plastering Works | 15d | 2011-12-28 | 2012-01-14 | A12190 | 0d |  |
| A12210 |  | Thermal & Moisture Protection | 20d | 2012-01-15 | 2012-02-06 | A12200 | 0d |  |
| A12240 |  | Painting Works | 30d | 2012-01-15 | 2012-02-18 | A12200 | 4d |  |
| A12250 |  | Ceramic Wall Tiles | 7d | 2012-02-07 | 2012-02-14 | A12210 | 0d |  |
| A12260 |  | Ceramic Tiles For Flooring & Skirting | 7d | 2012-02-15 | 2012-02-22 | A12250 | 0d |  |
| A12300 |  | Marble Works | 5d | 2012-02-15 | 2012-02-20 | A12260 SS | 2d | 0d |
| A12320 |  | Concrete Surfaces Works | 12d | 2012-02-15 | 2012-02-28 | A12300 SS | 2d | 1d |
| A12270 |  | Doors & Windows | 7d | 2012-02-23 | 2012-03-01 | A12240, A12260, A12200, A12300 | 0d |  |
| A12280 |  | Metal Works | 5d | 2012-02-23 | 2012-02-28 | A12270 SS | 2d | 1d |
| A12290 |  | Wood & Plastic | 5d | 2012-02-23 | 2012-02-28 | A12270 SS | 2d | 1d |
|  | 6 | **Electrical & Mechanical Works** |  | 2011-11-03 | 2012-02-29 |  |  |  |
| A11270 |  | Electrical and Mechanical Works | 90d | 2011-11-03 | 2012-02-29 | A11010 | 1d | 0d |
