# Hillal-B PLATFORM DEVELOPMENT-Normal

Schedule from Primavera P6, 2011-11-30 to 2013-04-07, data date 2011-11-30.

## Calendars

- 7-Day Workweek: Mon-Sun 08:00-12:00, 13:00-17:00.
- 6 DAY WORK PER WEEK: Mon-Thu 08:00-16:00; Fri off; Sat-Sun 08:00-16:00. Exceptions (off unless hours are given): 2012-01-07, 2012-02-04, 2012-04-16, 2012-04-25, 2012-05-01, 2012-07-23, 2012-08-18 to 2012-08-20, 2012-10-06, 2012-10-25, 2012-10-27 to 2012-10-28, 2012-11-15, 2013-01-07, 2013-01-24, 2013-02-04.

## Schedule

| ID | WBS | Activity | Type | Duration | Start | Finish | Predecessors | Total float | Free float | Constraint | Calendar | Phase-2 | Resp | Work Package |
| --- | --- | --- | --- | --- | --- | --- | --- | --- | --- | --- | --- | --- | --- | --- |
|  | 1 | **General Milestone** |  |  | 2012-01-21 | 2013-03-31 |  |  |  |  |  |  |  |  |
| GM01 |  | Reciving Fax of Award | milestone | 0d | 2012-01-21 | 2012-01-21 |  | -0d | 0d | finish on 2012-01-20 | 6 DAY WORK PER WEEK | 0 | GUP | 0 |
| GM11 |  | Reciving Fax of Award | milestone | 0d | 2012-01-21 | 2012-01-21 |  | -0d | 0d | finish on 2012-01-20 | 6 DAY WORK PER WEEK | 0 | GUP | 0 |
| GM21 |  | Reciving Fax of Award | milestone | 0d | 2012-01-21 | 2012-01-21 |  | -0d | 0d | finish on 2012-01-20 | 6 DAY WORK PER WEEK | 0 | GUP | 0 |
| GM31 |  | Reciving Fax of Award | milestone | 0d | 2012-01-21 | 2012-01-21 |  | -0d | 0d | finish on 2012-01-20 | 6 DAY WORK PER WEEK | 0 | GUP | 0 |
| GM02 |  | Project Fab. Start | milestone | 0d | 2012-06-13 | 2012-06-13 | PRS04 | 244d |  |  | 6 DAY WORK PER WEEK | 4 | PTJ | 0 |
| GM12 |  | Project Fab. Start | milestone | 0d | 2012-06-13 | 2012-06-13 | PRS14 | 244d |  |  | 6 DAY WORK PER WEEK | 4 | PTJ | 0 |
| GM22 |  | Project Fab. Start | milestone | 0d | 2012-06-13 | 2012-06-13 | PRS24 | 244d |  |  | 6 DAY WORK PER WEEK | 4 | PTJ | 0 |
| GM32 |  | Project Fab. Start | milestone | 0d | 2012-06-13 | 2012-06-13 | PRS34 | 244d |  |  | 6 DAY WORK PER WEEK | 4 | PTJ | 0 |
| GM03 |  | Ready for Load out (01st Shipment / Pipeline Spools 18" & 8") | milestone | 0d | 2012-10-18 | 2012-10-18 | LOPS03 SS | 140d |  |  | 6 DAY WORK PER WEEK | 4 | PTJ | 4 |
| GM13 |  | Ready for Load out (01st Shipment / Pipeline Spools 18" & 8") | milestone | 0d | 2012-10-18 | 2012-10-18 | LOPS13 SS | 140d |  |  | 6 DAY WORK PER WEEK | 4 | PTJ | 4 |
| GM23 |  | Ready for Load out (01st Shipment / Pipeline Spools 18" & 8") | milestone | 0d | 2012-10-18 | 2012-10-18 | LOPS23 SS | 140d |  |  | 6 DAY WORK PER WEEK | 4 | PTJ | 4 |
| GM33 |  | Ready for Load out (01st Shipment / Pipeline Spools 18" & 8") | milestone | 0d | 2012-10-18 | 2012-10-18 | LOPS33 SS | 140d |  |  | 6 DAY WORK PER WEEK | 4 | PTJ | 4 |
| GM04 |  | Ready for Load out ( 02nd Shipment/ Jacket & Piles ) | milestone | 0d | 2013-01-23 | 2013-01-23 | LOJK03 SS | 26d |  |  | 6 DAY WORK PER WEEK | 4 | PTJ | 1 |
| GM14 |  | Ready for Load out ( 02nd Shipment/ Jacket & Piles ) | milestone | 0d | 2013-01-23 | 2013-01-23 | LOJK13 SS | 26d |  |  | 6 DAY WORK PER WEEK | 4 | PTJ | 1 |
| GM24 |  | Ready for Load out ( 02nd Shipment/ Jacket & Piles ) | milestone | 0d | 2013-01-23 | 2013-01-23 | LOJK23 SS | 26d |  |  | 6 DAY WORK PER WEEK | 4 | PTJ | 1 |
| GM34 |  | Ready for Load out ( 02nd Shipment/ Jacket & Piles ) | milestone | 0d | 2013-01-23 | 2013-01-23 | LOJK33 SS | 26d |  |  | 6 DAY WORK PER WEEK | 4 | PTJ | 1 |
| GM05 |  | Ready for Load out ( 03rd Shipment/ Deck C/W TSF ) | milestone | 0d | 2013-03-31 | 2013-03-31 | LODK03 SS | 7d |  |  | 6 DAY WORK PER WEEK | 4 | PTJ | 3 |
| GM15 |  | Ready for Load out ( 03rd Shipment/ Deck C/W TSF ) | milestone | 0d | 2013-03-31 | 2013-03-31 | LODK13 SS | 7d |  |  | 6 DAY WORK PER WEEK | 4 | PTJ | 3 |
| GM25 |  | Ready for Load out ( 03rd Shipment/ Deck C/W TSF ) | milestone | 0d | 2013-03-31 | 2013-03-31 | LODK23 SS | 7d |  |  | 6 DAY WORK PER WEEK | 4 | PTJ | 3 |
| GM35 |  | Ready for Load out ( 03rd Shipment/ Deck C/W TSF ) | milestone | 0d | 2013-03-31 | 2013-03-31 | LODK33 SS | 7d |  |  | 6 DAY WORK PER WEEK | 4 | PTJ | 3 |
|  | 2 | **Engineering** |  |  | 2011-11-30 | 2012-04-30 |  |  |  |  |  |  |  |  |
|  | 1 | **Structure** |  |  | 2011-11-30 | 2012-04-30 |  |  |  |  |  |  |  |  |
| ENS03 |  | Receiving Jacket Primary & Secondary Steel IFC DWG`s |  | 138d | 2011-11-30 | 2012-04-16 |  | 0d |  | start on 2011-11-30 |  | 1 | ENP | 1 |
| ENS13 |  | Receiving Jacket Primary & Secondary Steel IFC DWG`s |  | 138d | 2011-11-30 | 2012-04-16 |  | 0d |  | start on 2011-11-30 |  | 1 | ENP | 1 |
| ENS23 |  | Receiving Jacket Primary & Secondary Steel IFC DWG`s |  | 138d | 2011-11-30 | 2012-04-16 |  | 0d |  | start on 2011-11-30 |  | 1 | ENP | 1 |
| ENS33 |  | Receiving Jacket Primary & Secondary Steel IFC DWG`s |  | 138d | 2011-11-30 | 2012-04-16 |  | 0d |  | start on 2011-11-30 |  | 1 | ENP | 1 |
| ENS04 |  | Receiving Piles IFC DWG`s | milestone | 0d | 2012-01-17 | 2012-01-17 |  | 0d | 90d | finish on 2012-01-17 |  | 1 | ENP | 1 |
| ENS14 |  | Receiving Piles IFC DWG`s | milestone | 0d | 2012-01-17 | 2012-01-17 |  | 0d | 90d | finish on 2012-01-17 |  | 1 | ENP | 1 |
| ENS24 |  | Receiving Piles IFC DWG`s | milestone | 0d | 2012-01-17 | 2012-01-17 |  | 0d | 90d | finish on 2012-01-17 |  | 1 | ENP | 1 |
| ENS34 |  | Receiving Piles IFC DWG`s | milestone | 0d | 2012-01-17 | 2012-01-17 |  | 0d | 90d | finish on 2012-01-17 |  | 1 | ENP | 1 |
| ENS01 |  | Receiving Final Jacket , Boat Land & Piles MTO | milestone | 0d | 2012-01-29 | 2012-01-29 | GM01 FF+7d | 17d |  |  |  | 1 | ENP | 1 |
| ENS02 |  | Receiving Final Deck Str. MTO | milestone | 0d | 2012-01-29 | 2012-01-29 | GM01 FF+7d | 17d |  |  |  | 1 | ENP | 2 |
| ENS11 |  | Receiving Final Jacket , Boat Land & Piles MTO | milestone | 0d | 2012-01-29 | 2012-01-29 | GM11 FF+7d | 17d |  |  |  | 1 | ENP | 1 |
| ENS12 |  | Receiving Final Deck Str. MTO | milestone | 0d | 2012-01-29 | 2012-01-29 | GM11 FF+7d | 17d |  |  |  | 1 | ENP | 2 |
| ENS21 |  | Receiving Final Jacket , Boat Land & Piles MTO | milestone | 0d | 2012-01-29 | 2012-01-29 | GM21 FF+7d | 17d |  |  |  | 1 | ENP | 1 |
| ENS22 |  | Receiving Final Deck Str. MTO | milestone | 0d | 2012-01-29 | 2012-01-29 | GM21 FF+7d | 17d |  |  |  | 1 | ENP | 2 |
| ENS31 |  | Receiving Final Jacket , Boat Land & Piles MTO | milestone | 0d | 2012-01-29 | 2012-01-29 | GM31 FF+7d | 17d |  |  |  | 1 | ENP | 1 |
| ENS32 |  | Receiving Final Deck Str. MTO | milestone | 0d | 2012-01-29 | 2012-01-29 | GM31 FF+7d | 17d |  |  |  | 1 | ENP | 2 |
| ENS05 |  | Receiving Deck Str. Primary & Secondary IFC DWG`s |  | 41d | 2012-02-07 | 2012-03-19 |  | 0d | 28d | start on 2012-02-07 |  | 1 | ENP | 2 |
| ENS15 |  | Receiving Deck Str. Primary & Secondary IFC DWG`s |  | 41d | 2012-02-07 | 2012-03-19 |  | 0d | 28d | start on 2012-02-07 |  | 1 | ENP | 2 |
| ENS25 |  | Receiving Deck Str. Primary & Secondary IFC DWG`s |  | 41d | 2012-02-07 | 2012-03-19 |  | 0d | 28d | start on 2012-02-07 |  | 1 | ENP | 2 |
| ENS35 |  | Receiving Deck Str. Primary & Secondary IFC DWG`s |  | 41d | 2012-02-07 | 2012-03-19 |  | 0d | 28d | start on 2012-02-07 |  | 1 | ENP | 2 |
| ENS06 |  | Receiving Piping Supports IFC DWG's |  | 20d | 2012-02-28 | 2012-03-19 |  | 0d | 384.87d | start on 2012-02-28 |  | 1 | ENP | 3 |
| ENS16 |  | Receiving Piping Supports IFC DWG's |  | 20d | 2012-02-28 | 2012-03-19 |  | 0d | 384.87d | start on 2012-02-28 |  | 1 | ENP | 3 |
| ENS26 |  | Receiving Piping Supports IFC DWG's |  | 20d | 2012-02-28 | 2012-03-19 |  | 0d | 384.87d | start on 2012-02-28 |  | 1 | ENP | 3 |
| ENS36 |  | Receiving Piping Supports IFC DWG's |  | 20d | 2012-02-28 | 2012-03-19 |  | 0d | 384.87d | start on 2012-02-28 |  | 1 | ENP | 3 |
| ENS07 |  | Receiving Cable tarys Support IFC DWG's |  | 13d | 2012-03-13 | 2012-03-26 |  | 0d | 377.87d | start on 2012-03-13 |  | 1 | ENP | 3 |
| ENS17 |  | Receiving Cable tarys Support IFC DWG's |  | 13d | 2012-03-13 | 2012-03-26 |  | 0d | 377.87d | start on 2012-03-13 |  | 1 | ENP | 3 |
| ENS27 |  | Receiving Cable tarys Support IFC DWG's |  | 13d | 2012-03-13 | 2012-03-26 |  | 0d | 377.87d | start on 2012-03-13 |  | 1 | ENP | 3 |
| ENS37 |  | Receiving Cable tarys Support IFC DWG's |  | 13d | 2012-03-13 | 2012-03-26 |  | 0d | 377.87d | start on 2012-03-13 |  | 1 | ENP | 3 |
| ENS08 |  | Receiving IFC Equipment fixation DWG`s |  | 13d | 2012-04-04 | 2012-04-17 |  | 0d | 195d | start on 2012-04-04 |  | 1 | ENP | 3 |
| ENS18 |  | Receiving IFC Equipment fixation DWG`s |  | 13d | 2012-04-04 | 2012-04-17 |  | 0d | 195d | start on 2012-04-04 |  | 1 | ENP | 3 |
| ENS28 |  | Receiving IFC Equipment fixation DWG`s |  | 13d | 2012-04-04 | 2012-04-17 |  | 0d | 195d | start on 2012-04-04 |  | 1 | ENP | 3 |
| ENS38 |  | Receiving IFC Equipment fixation DWG`s |  | 13d | 2012-04-04 | 2012-04-17 |  | 0d | 195d | start on 2012-04-04 |  | 1 | ENP | 3 |
| ENS09 |  | Receiving P/L 8" & 18" IFC DWG's |  | 20d | 2012-04-10 | 2012-04-30 |  | 0d | 342d | start on 2012-04-10 |  | 1 | ENP | 4 |
| ENS19 |  | Receiving P/L 8" & 18" IFC DWG's |  | 20d | 2012-04-10 | 2012-04-30 |  | 0d | 342d | start on 2012-04-10 |  | 1 | ENP | 4 |
| ENS29 |  | Receiving P/L 8" & 18" IFC DWG's |  | 20d | 2012-04-10 | 2012-04-30 |  | 0d | 342d | start on 2012-04-10 |  | 1 | ENP | 4 |
| ENS39 |  | Receiving P/L 8" & 18" IFC DWG's |  | 20d | 2012-04-10 | 2012-04-30 |  | 0d | 342d | start on 2012-04-10 |  | 1 | ENP | 4 |

| ID | WBS | Activity | Type | Duration | Start | Finish | Predecessors | Total float | Free float | Constraint | Calendar | Phase-2 | Resp | Work Package |
| --- | --- | --- | --- | --- | --- | --- | --- | --- | --- | --- | --- | --- | --- | --- |
|  | 2 | **TSF, E&I** |  |  | 2012-01-15 | 2012-03-12 |  |  |  |  |  |  |  |  |
| ENT01 |  | Issue Approved P&ID's / Equipment List IFC DWG's | milestone | 0d | 2012-01-15 | 2012-01-15 |  | 0d | 448d | finish on 2012-01-15 |  | 1 | ENP | 3 |
| ENT11 |  | Issue Approved P&ID's / Equipment List IFC DWG's | milestone | 0d | 2012-01-15 | 2012-01-15 |  | 0d | 448d | finish on 2012-01-15 |  | 1 | ENP | 3 |
| ENT21 |  | Issue Approved P&ID's / Equipment List IFC DWG's | milestone | 0d | 2012-01-15 | 2012-01-15 |  | 0d | 448d | finish on 2012-01-15 |  | 1 | ENP | 3 |
| ENT31 |  | Issue Approved P&ID's / Equipment List IFC DWG's | milestone | 0d | 2012-01-15 | 2012-01-15 |  | 0d | 448d | finish on 2012-01-15 |  | 1 | ENP | 3 |
| ENT02 |  | Issue plat plans IFC DWG's | milestone | 0d | 2012-02-06 | 2012-02-06 |  | 0d | 426d | finish on 2012-02-06 |  | 1 | ENP | 3 |
| ENT12 |  | Issue plat plans IFC DWG's | milestone | 0d | 2012-02-06 | 2012-02-06 |  | 0d | 426d | finish on 2012-02-06 |  | 1 | ENP | 3 |
| ENT22 |  | Issue plat plans IFC DWG's | milestone | 0d | 2012-02-06 | 2012-02-06 |  | 0d | 426d | finish on 2012-02-06 |  | 1 | ENP | 3 |
| ENT32 |  | Issue plat plans IFC DWG's | milestone | 0d | 2012-02-06 | 2012-02-06 |  | 0d | 426d | finish on 2012-02-06 |  | 1 | ENP | 3 |
| ENT03 |  | Receiving Piping ISO`s IFC DWG's |  | 14d | 2012-02-27 | 2012-03-12 |  | 0d | 131d | start on 2012-02-27 |  | 1 | ENP | 3 |
| ENT13 |  | Receiving Piping ISO`s IFC DWG's |  | 14d | 2012-02-27 | 2012-03-12 |  | 0d | 131d | start on 2012-02-27 |  | 1 | ENP | 3 |
| ENT23 |  | Receiving Piping ISO`s IFC DWG's |  | 14d | 2012-02-27 | 2012-03-12 |  | 0d | 131d | start on 2012-02-27 |  | 1 | ENP | 3 |
| ENT33 |  | Receiving Piping ISO`s IFC DWG's |  | 14d | 2012-02-27 | 2012-03-12 |  | 0d | 131d | start on 2012-02-27 |  | 1 | ENP | 3 |
| ENT04 |  | Issue Hydrotest maps & loops IFC DWG's | milestone | 0d | 2012-02-28 | 2012-02-28 |  | 0d | 331d | finish on 2012-02-28 | 6 DAY WORK PER WEEK | 1 | ENP | 3 |
| ENT14 |  | Issue Hydrotest maps & loops IFC DWG's | milestone | 0d | 2012-02-28 | 2012-02-28 |  | 0d | 331d | finish on 2012-02-28 | 6 DAY WORK PER WEEK | 1 | ENP | 3 |
| ENT24 |  | Issue Hydrotest maps & loops IFC DWG's | milestone | 0d | 2012-02-28 | 2012-02-28 |  | 0d | 331d | finish on 2012-02-28 | 6 DAY WORK PER WEEK | 1 | ENP | 3 |
| ENT34 |  | Issue Hydrotest maps & loops IFC DWG's | milestone | 0d | 2012-02-28 | 2012-02-28 |  | 0d | 331d | finish on 2012-02-28 | 6 DAY WORK PER WEEK | 1 | ENP | 3 |
|  | 3 | **Electrical & Instrumentation (E&I)** |  |  | 2012-01-23 | 2012-04-29 |  |  |  |  |  |  |  |  |
| ENE01 |  | Receiving E&I IFC DWG`s |  | 97d | 2012-01-23 | 2012-04-29 |  | 0d | 285d | start on 2012-01-23 |  | 1 | ENP | 3 |
| ENE11 |  | Receiving E&I IFC DWG`s |  | 97d | 2012-01-23 | 2012-04-29 |  | 0d | 285d | start on 2012-01-23 |  | 1 | ENP | 3 |
| ENE21 |  | Receiving E&I IFC DWG`s |  | 97d | 2012-01-23 | 2012-04-29 |  | 0d | 285d | start on 2012-01-23 |  | 1 | ENP | 3 |
| ENE31 |  | Receiving E&I IFC DWG`s |  | 97d | 2012-01-23 | 2012-04-29 |  | 0d | 285d | start on 2012-01-23 |  | 1 | ENP | 3 |
|  | 3 | **Procurment** |  |  | 2012-02-07 | 2012-09-24 |  |  |  |  |  |  |  |  |
|  | 1 | **Structure Material** |  |  | 2012-02-07 | 2012-09-24 |  |  |  |  |  |  |  |  |
| PRS01 |  | Issue Structural Material P.O's ( Gupco Responsability) | milestone | 0d | 2012-02-07 | 2012-02-07 |  | 0d | 8d | start on 2012-02-07 |  | 3 | PTJ | 1 |
| PRS11 |  | Issue Structural Material P.O's ( Gupco Responsability) | milestone | 0d | 2012-02-07 | 2012-02-07 |  | 0d | 8d | start on 2012-02-07 |  | 3 | PTJ | 1 |
| PRS21 |  | Issue Structural Material P.O's ( Gupco Responsability) | milestone | 0d | 2012-02-07 | 2012-02-07 |  | 0d | 8d | start on 2012-02-07 |  | 3 | PTJ | 1 |
| PRS31 |  | Issue Structural Material P.O's ( Gupco Responsability) | milestone | 0d | 2012-02-07 | 2012-02-07 |  | 0d | 8d | start on 2012-02-07 |  | 3 | PTJ | 1 |
| PRS02 |  | Issue LC ( Gupco Responsability) | milestone | 0d | 2012-02-15 | 2012-02-15 | PRS01 | 0d |  | start on 2012-02-15 |  | 3 | GUP | 1 |
| PRS03 |  | Delivery of Structure Material (F.O.B - 13 Wks.) - (Gupco Responsability) |  | 91d | 2012-02-15 | 2012-05-15 | ENS01, ENS02, PRS01, PRS02 | 0d |  |  |  | 3 | PTJ | 1 |
| PRS12 |  | Issue LC ( Gupco Responsability) | milestone | 0d | 2012-02-15 | 2012-02-15 | PRS11 | 0d |  | start on 2012-02-15 |  | 3 | GUP | 1 |
| PRS13 |  | Delivery of Structure Material (F.O.B - 13 Wks.) - (Gupco Responsability) |  | 91d | 2012-02-15 | 2012-05-15 | ENS11, ENS12, PRS11, PRS12 | 0d |  |  |  | 3 | PTJ | 1 |
| PRS22 |  | Issue LC ( Gupco Responsability) | milestone | 0d | 2012-02-15 | 2012-02-15 | PRS21 | 0d |  | start on 2012-02-15 |  | 3 | GUP | 1 |
| PRS23 |  | Delivery of Structure Material (F.O.B - 13 Wks.) - (Gupco Responsability) |  | 91d | 2012-02-15 | 2012-05-15 | ENS21, ENS22, PRS21, PRS22 | 0d |  |  |  | 3 | PTJ | 1 |
| PRS32 |  | Issue LC ( Gupco Responsability) | milestone | 0d | 2012-02-15 | 2012-02-15 | PRS31 | 0d |  | start on 2012-02-15 |  | 3 | GUP | 1 |
| PRS33 |  | Delivery of Structure Material (F.O.B - 13 Wks.) - (Gupco Responsability) |  | 91d | 2012-02-15 | 2012-05-15 | ENS31, ENS32, PRS31, PRS32 | 0d |  |  |  | 3 | PTJ | 1 |
| PRS05 |  | Material check with IFC DWG's to Prepare balance material |  | 7d | 2012-04-16 | 2012-04-23 | ENS03, ENS04, ENS05 | 195.87d | 0d |  |  | 3 | PTJ | 1 |
| PRS15 |  | Material check with IFC DWG's to Prepare balance material |  | 7d | 2012-04-16 | 2012-04-23 | ENS13, ENS14, ENS15 | 195.87d | 0d |  |  | 3 | PTJ | 1 |
| PRS25 |  | Material check with IFC DWG's to Prepare balance material |  | 7d | 2012-04-16 | 2012-04-23 | ENS23, ENS24, ENS25 | 195.87d | 0d |  |  | 3 | PTJ | 1 |
| PRS35 |  | Material check with IFC DWG's to Prepare balance material |  | 7d | 2012-04-16 | 2012-04-23 | ENS33, ENS34, ENS35 | 195.87d | 0d |  |  | 3 | PTJ | 1 |
| PRS06 |  | Delivery of balance material |  | 154d | 2012-04-23 | 2012-09-24 | PRS05 | 195.87d |  |  |  | 3 | PTJ | 3 |
| PRS16 |  | Delivery of balance material |  | 154d | 2012-04-23 | 2012-09-24 | PRS15 | 195.87d |  |  |  | 3 | PTJ | 3 |
| PRS26 |  | Delivery of balance material |  | 154d | 2012-04-23 | 2012-09-24 | PRS25 | 195.87d |  |  |  | 3 | PTJ | 3 |
| PRS36 |  | Delivery of balance material |  | 154d | 2012-04-23 | 2012-09-24 | PRS35 | 195.87d |  |  |  | 3 | PTJ | 3 |
| PRS04 |  | Delivery of Structure Material at Site (4 Wks.) |  | 28d | 2012-05-16 | 2012-06-12 | PRS03 | 0d |  |  |  | 3 | PTJ | 1 |
| PRS14 |  | Delivery of Structure Material at Site (4 Wks.) |  | 28d | 2012-05-16 | 2012-06-12 | PRS13 | 0d |  |  |  | 3 | PTJ | 1 |
| PRS24 |  | Delivery of Structure Material at Site (4 Wks.) |  | 28d | 2012-05-16 | 2012-06-12 | PRS23 | 0d |  |  |  | 3 | PTJ | 1 |
| PRS34 |  | Delivery of Structure Material at Site (4 Wks.) |  | 28d | 2012-05-16 | 2012-06-12 | PRS33 | 0d |  |  |  | 3 | PTJ | 1 |

| ID | WBS | Activity | Duration | Start | Finish | Total float | Free float | Constraint | Phase-2 | Resp | Work Package |
| --- | --- | --- | --- | --- | --- | --- | --- | --- | --- | --- | --- |
|  | 2 | **P/L Spools Material** |  | 2012-05-31 | 2012-07-20 |  |  |  |  |  |  |
| PRP01 |  | Pipeline 18" & Fittings | 51d | 2012-05-31 | 2012-07-20 | 0d |  | start on 2012-05-31 | 3 | PTJ | 4 |
| PRP02 |  | Pipeline 8" & Fittings | 51d | 2012-05-31 | 2012-07-20 | -0d | 43.88d | start on 2012-05-30 | 3 | PTJ | 4 |
| PRP11 |  | Pipeline 18" & Fittings | 51d | 2012-05-31 | 2012-07-20 | 0d |  | start on 2012-05-31 | 3 | PTJ | 4 |
| PRP12 |  | Pipeline 8" & Fittings | 51d | 2012-05-31 | 2012-07-20 | -0d | 260.88d | start on 2012-05-30 | 3 | PTJ |  |
| PRP21 |  | Pipeline 18" & Fittings | 51d | 2012-05-31 | 2012-07-20 | 0d |  | start on 2012-05-31 | 3 | PTJ | 4 |
| PRP22 |  | Pipeline 8" & Fittings | 51d | 2012-05-31 | 2012-07-20 | -0d | 43.88d | start on 2012-05-30 | 3 | PTJ | 4 |
| PRP31 |  | Pipeline 18" & Fittings | 51d | 2012-05-31 | 2012-07-20 | 0d |  | start on 2012-05-31 | 3 | PTJ | 4 |
| PRP32 |  | Pipeline 8" & Fittings | 51d | 2012-05-31 | 2012-07-20 | -0d | 260.88d | start on 2012-05-30 | 3 | PTJ |  |
| PRP42 |  | Pipeline 8" & Fittings | 51d | 2012-05-31 | 2012-07-20 | -0d | 43.88d | start on 2012-05-30 | 3 | PTJ | 4 |
| PRP52 |  | Pipeline 8" & Fittings | 51d | 2012-05-31 | 2012-07-20 | -0d | 260.88d | start on 2012-05-30 | 3 | PTJ |  |
| PRP62 |  | Pipeline 8" & Fittings | 51d | 2012-05-31 | 2012-07-20 | -0d | 43.88d | start on 2012-05-30 | 3 | PTJ | 4 |
| PRP72 |  | Pipeline 8" & Fittings | 51d | 2012-05-31 | 2012-07-20 | -0d | 260.88d | start on 2012-05-30 | 3 | PTJ |  |
|  | 3 | **Piping Material** |  | 2012-05-08 | 2012-09-04 |  |  |  |  |  |  |
| PRT01 |  | Piping Bulk material 1st batch | 30d | 2012-05-08 | 2012-06-06 | -0d | 67d | start on 2012-05-07 | 3 | ENP | 3 |
| PRT21 |  | Piping Bulk material 1st batch | 30d | 2012-05-08 | 2012-06-06 | -0d | 67d | start on 2012-05-07 | 3 | ENP | 3 |
| PRT41 |  | Piping Bulk material 1st batch | 30d | 2012-05-08 | 2012-06-06 | -0d | 67d | start on 2012-05-07 | 3 | ENP | 3 |
| PRT61 |  | Piping Bulk material 1st batch | 30d | 2012-05-08 | 2012-06-06 | -0d | 67d | start on 2012-05-07 | 3 | ENP | 3 |
| PRT06 |  | Pressure Safety Valve | 44d | 2012-06-05 | 2012-07-18 | -0d | 189.88d | start on 2012-06-04 | 3 | ENP | 3 |
| PRT16 |  | Pressure Safety Valve | 44d | 2012-06-05 | 2012-07-18 | -0d | 189.88d | start on 2012-06-04 | 3 | ENP | 3 |
| PRT26 |  | Pressure Safety Valve | 44d | 2012-06-05 | 2012-07-18 | -0d | 189.88d | start on 2012-06-04 | 3 | ENP | 3 |
| PRT36 |  | Pressure Safety Valve | 44d | 2012-06-05 | 2012-07-18 | -0d | 189.88d | start on 2012-06-04 | 3 | ENP | 3 |
| PRT02 |  | Piping Bulk material 2nd batch | 30d | 2012-06-11 | 2012-07-10 | -0d | 106.88d | start on 2012-06-10 | 3 | ENP | 3 |
| PRT22 |  | Piping Bulk material 2nd batch | 30d | 2012-06-11 | 2012-07-10 | -0d | 106.88d | start on 2012-06-10 | 3 | ENP | 3 |
| PRT42 |  | Piping Bulk material 2nd batch | 30d | 2012-06-11 | 2012-07-10 | -0d | 106.88d | start on 2012-06-10 | 3 | ENP | 3 |
| PRT62 |  | Piping Bulk material 2nd batch | 30d | 2012-06-11 | 2012-07-10 | -0d | 106.88d | start on 2012-06-10 | 3 | ENP | 3 |
| PRT03 |  | Piping Valves Bulk material 1st batch | 14d | 2012-06-24 | 2012-07-07 | -0d | 124.88d | start on 2012-06-23 | 3 | ENP | 3 |
| PRT13 |  | Piping Valves Bulk material 1st batch | 14d | 2012-06-24 | 2012-07-07 | -0d | 124.88d | start on 2012-06-23 | 3 | ENP | 3 |
| PRT23 |  | Piping Valves Bulk material 1st batch | 14d | 2012-06-24 | 2012-07-07 | -0d | 124.88d | start on 2012-06-23 | 3 | ENP | 3 |
| PRT33 |  | Piping Valves Bulk material 1st batch | 14d | 2012-06-24 | 2012-07-07 | -0d | 124.88d | start on 2012-06-23 | 3 | ENP | 3 |
| PRT05 |  | Flanges | 45d | 2012-07-14 | 2012-08-27 | -0d | 1d | start on 2012-07-13 | 3 | ENP | 3 |
| PRT15 |  | Flanges | 45d | 2012-07-14 | 2012-08-27 | -0d | 1d | start on 2012-07-13 | 3 | ENP | 3 |
| PRT25 |  | Flanges | 45d | 2012-07-14 | 2012-08-27 | -0d | 1d | start on 2012-07-13 | 3 | ENP | 3 |
| PRT35 |  | Flanges | 45d | 2012-07-14 | 2012-08-27 | -0d | 1d | start on 2012-07-13 | 3 | ENP | 3 |
| PRT04 |  | Piping valves Bulk material 2nd batch | 14d | 2012-07-23 | 2012-08-05 | -0d | 95.88d | start on 2012-07-22 | 3 | ENP | 3 |
| PRT14 |  | Piping valves Bulk material 2nd batch | 14d | 2012-07-23 | 2012-08-05 | -0d | 95.88d | start on 2012-07-22 | 3 | ENP | 3 |
| PRT24 |  | Piping valves Bulk material 2nd batch | 14d | 2012-07-23 | 2012-08-05 | -0d | 95.88d | start on 2012-07-22 | 3 | ENP | 3 |
| PRT34 |  | Piping valves Bulk material 2nd batch | 14d | 2012-07-23 | 2012-08-05 | -0d | 95.88d | start on 2012-07-22 | 3 | ENP | 3 |
| PRT07 |  | Pressure regulator Valve | 30d | 2012-07-25 | 2012-08-23 | -0d | 153.88d | start on 2012-07-24 | 3 | ENP | 3 |
| PRT17 |  | Pressure regulator Valve | 30d | 2012-07-25 | 2012-08-23 | -0d | 153.88d | start on 2012-07-24 | 3 | ENP | 3 |
| PRT27 |  | Pressure regulator Valve | 30d | 2012-07-25 | 2012-08-23 | -0d | 153.88d | start on 2012-07-24 | 3 | ENP | 3 |
| PRT37 |  | Pressure regulator Valve | 30d | 2012-07-25 | 2012-08-23 | -0d | 153.88d | start on 2012-07-24 | 3 | ENP | 3 |
| PRT08 |  | Shutdown Valve | 31d | 2012-08-05 | 2012-09-04 | -0d | 141.88d | start on 2012-08-04 | 3 | ENP | 3 |
| PRT18 |  | Shutdown Valve | 31d | 2012-08-05 | 2012-09-04 | -0d | 141.88d | start on 2012-08-04 | 3 | ENP | 3 |
| PRT28 |  | Shutdown Valve | 31d | 2012-08-05 | 2012-09-04 | -0d | 141.88d | start on 2012-08-04 | 3 | ENP | 3 |
| PRT38 |  | Shutdown Valve | 31d | 2012-08-05 | 2012-09-04 | -0d | 141.88d | start on 2012-08-04 | 3 | ENP | 3 |

| ID | WBS | Activity | Duration | Start | Finish | Total float | Free float | Constraint | Phase-2 | Resp | Work Package |
| --- | --- | --- | --- | --- | --- | --- | --- | --- | --- | --- | --- |
|  | 4 | **Equipment** |  | 2012-05-09 | 2012-08-11 |  |  |  |  |  |  |
| PRT09 |  | Chemical Injection PKG. | 45d | 2012-05-09 | 2012-06-22 | -0d | 158d | start on 2012-05-08 | 3 | ENP | 3 |
| PRT19 |  | Chemical Injection PKG. | 45d | 2012-05-09 | 2012-06-22 | -0d | 158d | start on 2012-05-08 | 3 | ENP | 3 |
| PRT29 |  | Chemical Injection PKG. | 45d | 2012-05-09 | 2012-06-22 | -0d | 158d | start on 2012-05-08 | 3 | ENP | 3 |
| PRT39 |  | Chemical Injection PKG. | 45d | 2012-05-09 | 2012-06-22 | -0d | 158d | start on 2012-05-08 | 3 | ENP | 3 |
| PRT10 |  | Launcher recivier | 45d | 2012-06-16 | 2012-07-30 | -0d | 120d | start on 2012-06-15 | 3 | ENP | 3 |
| PRT20 |  | Launcher recivier | 45d | 2012-06-16 | 2012-07-30 | -0d | 120d | start on 2012-06-15 | 3 | ENP | 3 |
| PRT30 |  | Launcher recivier | 45d | 2012-06-16 | 2012-07-30 | -0d | 120d | start on 2012-06-15 | 3 | ENP | 3 |
| PRT40 |  | Launcher recivier | 45d | 2012-06-16 | 2012-07-30 | -0d | 120d | start on 2012-06-15 | 3 | ENP | 3 |
| PRT11 |  | Vent KOD | 45d | 2012-06-28 | 2012-08-11 | -0d | 108d | start on 2012-06-27 | 3 | ENP | 3 |
| PRT12 |  | Open Drain Tank | 45d | 2012-06-28 | 2012-08-11 | -0d | 78d | start on 2012-06-27 | 3 | ENP | 3 |
| PRT31 |  | Vent KOD | 45d | 2012-06-28 | 2012-08-11 | -0d | 108d | start on 2012-06-27 | 3 | ENP | 3 |
| PRT32 |  | Open Drain Tank | 45d | 2012-06-28 | 2012-08-11 | -0d | 78d | start on 2012-06-27 | 3 | ENP | 3 |
| PRT51 |  | Vent KOD | 45d | 2012-06-28 | 2012-08-11 | -0d | 108d | start on 2012-06-27 | 3 | ENP | 3 |
| PRT52 |  | Open Drain Tank | 45d | 2012-06-28 | 2012-08-11 | -0d | 78d | start on 2012-06-27 | 3 | ENP | 3 |
| PRT71 |  | Vent KOD | 45d | 2012-06-28 | 2012-08-11 | -0d | 108d | start on 2012-06-27 | 3 | ENP | 3 |
| PRT72 |  | Open Drain Tank | 45d | 2012-06-28 | 2012-08-11 | -0d | 78d | start on 2012-06-27 | 3 | ENP | 3 |
|  | 5 | **E&I Material** |  | 2012-04-06 | 2012-09-16 |  |  |  |  |  |  |
|  | 1 | **Electrical Material** |  | 2012-05-24 | 2012-09-06 |  |  |  |  |  |  |
| PRE02 |  | Cathodic Protection | 45d | 2012-05-24 | 2012-07-07 | -0d | 125d | start on 2012-05-23 | 3 | ENP | 4 |
| PRE22 |  | Cathodic Protection | 45d | 2012-05-24 | 2012-07-07 | -0d | 125d | start on 2012-05-23 | 3 | ENP | 4 |
| PRE42 |  | Cathodic Protection | 45d | 2012-05-24 | 2012-07-07 | -0d | 125d | start on 2012-05-23 | 3 | ENP | 4 |
| PRE62 |  | Cathodic Protection | 45d | 2012-05-24 | 2012-07-07 | -0d | 125d | start on 2012-05-23 | 3 | ENP | 4 |
| PRE03 |  | Solar Power | 45d | 2012-06-04 | 2012-07-18 | -0d | 114d | start on 2012-06-03 | 3 | ENP | 3 |
| PRE23 |  | Solar Power | 45d | 2012-06-04 | 2012-07-18 | -0d | 114d | start on 2012-06-03 | 3 | ENP | 3 |
| PRE43 |  | Solar Power | 45d | 2012-06-04 | 2012-07-18 | -0d | 114d | start on 2012-06-03 | 3 | ENP | 3 |
| PRE63 |  | Solar Power | 45d | 2012-06-04 | 2012-07-18 | -0d | 114d | start on 2012-06-03 | 3 | ENP | 3 |
| PRE01 |  | Electrical Bulks | 45d | 2012-07-24 | 2012-09-06 | -0d | 64d | start on 2012-07-23 | 3 | ENP | 3 |
| PRE21 |  | Electrical Bulks | 45d | 2012-07-24 | 2012-09-06 | -0d | 64d | start on 2012-07-23 | 3 | ENP | 3 |
| PRE41 |  | Electrical Bulks | 45d | 2012-07-24 | 2012-09-06 | -0d | 64d | start on 2012-07-23 | 3 | ENP | 3 |
| PRE61 |  | Electrical Bulks | 45d | 2012-07-24 | 2012-09-06 | -0d | 64d | start on 2012-07-23 | 3 | ENP | 3 |

| ID | WBS | Activity | Duration | Start | Finish | Total float | Free float | Constraint | Phase-2 | Resp | Work Package |
| --- | --- | --- | --- | --- | --- | --- | --- | --- | --- | --- | --- |
|  | 2 | **F&G Material** |  | 2012-06-28 | 2012-08-20 |  |  |  |  |  |  |
| PRE05 |  | Fire fighting system | 45d | 2012-06-28 | 2012-08-11 | -0d | 90d | start on 2012-06-27 | 3 | ENP | 3 |
| PRE15 |  | Fire fighting system | 45d | 2012-06-28 | 2012-08-11 | -0d | 90d | start on 2012-06-27 | 3 | ENP | 3 |
| PRE25 |  | Fire fighting system | 45d | 2012-06-28 | 2012-08-11 | -0d | 90d | start on 2012-06-27 | 3 | ENP | 3 |
| PRE35 |  | Fire fighting system | 45d | 2012-06-28 | 2012-08-11 | -0d | 90d | start on 2012-06-27 | 3 | ENP | 3 |
| PRE06 |  | Life Saving Equipment | 45d | 2012-07-05 | 2012-08-18 | -0d | 83d | start on 2012-07-04 | 3 | ENP | 3 |
| PRE16 |  | Life Saving Equipment | 45d | 2012-07-05 | 2012-08-18 | -0d | 83d | start on 2012-07-04 | 3 | ENP | 3 |
| PRE26 |  | Life Saving Equipment | 45d | 2012-07-05 | 2012-08-18 | -0d | 83d | start on 2012-07-04 | 3 | ENP | 3 |
| PRE36 |  | Life Saving Equipment | 45d | 2012-07-05 | 2012-08-18 | -0d | 83d | start on 2012-07-04 | 3 | ENP | 3 |
| PRE04 |  | F&G Detector | 45d | 2012-07-07 | 2012-08-20 | -0d | 81d | start on 2012-07-06 | 3 | ENP | 3 |
| PRE14 |  | F&G Detector | 45d | 2012-07-07 | 2012-08-20 | -0d | 81d | start on 2012-07-06 | 3 | ENP | 3 |
| PRE24 |  | F&G Detector | 45d | 2012-07-07 | 2012-08-20 | -0d | 81d | start on 2012-07-06 | 3 | ENP | 3 |
| PRE34 |  | F&G Detector | 45d | 2012-07-07 | 2012-08-20 | -0d | 81d | start on 2012-07-06 | 3 | ENP | 3 |
|  | 3 | **Telecom Material** |  | 2012-04-06 | 2012-07-19 |  |  |  |  |  |  |
| PRE08 |  | Navegation Aids | 45d | 2012-04-06 | 2012-05-20 | -0d | 173d | start on 2012-04-05 | 3 | ENP | 3 |
| PRE18 |  | Navegation Aids | 45d | 2012-04-06 | 2012-05-20 | -0d | 173d | start on 2012-04-05 | 3 | ENP | 3 |
| PRE28 |  | Navegation Aids | 45d | 2012-04-06 | 2012-05-20 | -0d | 173d | start on 2012-04-05 | 3 | ENP | 3 |
| PRE38 |  | Navegation Aids | 45d | 2012-04-06 | 2012-05-20 | -0d | 173d | start on 2012-04-05 | 3 | ENP | 3 |
| PRE07 |  | Radar system | 30d | 2012-06-20 | 2012-07-19 | -0d | 113d | start on 2012-06-19 | 3 | ENP | 3 |
| PRE17 |  | Radar system | 30d | 2012-06-20 | 2012-07-19 | -0d | 113d | start on 2012-06-19 | 3 | ENP | 3 |
| PRE27 |  | Radar system | 30d | 2012-06-20 | 2012-07-19 | -0d | 113d | start on 2012-06-19 | 3 | ENP | 3 |
| PRE37 |  | Radar system | 30d | 2012-06-20 | 2012-07-19 | -0d | 113d | start on 2012-06-19 | 3 | ENP | 3 |
|  | 4 | **Instrument Material** |  | 2012-06-23 | 2012-09-16 |  |  |  |  |  |  |
| PRE11 |  | Field Instrument | 45d | 2012-06-23 | 2012-08-06 | -0d | 95d | start on 2012-06-22 | 3 | ENP | 3 |
| PRE31 |  | Field Instrument | 45d | 2012-06-23 | 2012-08-06 | -0d | 95d | start on 2012-06-22 | 3 | ENP | 3 |
| PRE51 |  | Field Instrument | 45d | 2012-06-23 | 2012-08-06 | -0d | 95d | start on 2012-06-22 | 3 | ENP | 3 |
| PRE71 |  | Field Instrument | 45d | 2012-06-23 | 2012-08-06 | -0d | 95d | start on 2012-06-22 | 3 | ENP | 3 |
| PRE10 |  | Instrument Mechanical Bulk | 35d | 2012-07-18 | 2012-08-21 | -0d | 80d | start on 2012-07-17 | 3 | ENP | 3 |
| PRE12 |  | multi phase flow meter | 57d | 2012-07-18 | 2012-09-12 | -0d | 136.88d | start on 2012-07-17 | 3 | ENP | 3 |
| PRE20 |  | Instrument Mechanical Bulk | 35d | 2012-07-18 | 2012-08-21 | -0d | 80d | start on 2012-07-17 | 3 | ENP | 3 |
| PRE30 |  | Instrument Mechanical Bulk | 35d | 2012-07-18 | 2012-08-21 | -0d | 80d | start on 2012-07-17 | 3 | ENP | 3 |
| PRE32 |  | multi phase flow meter | 57d | 2012-07-18 | 2012-09-12 | -0d | 136.88d | start on 2012-07-17 | 3 | ENP | 3 |
| PRE40 |  | Instrument Mechanical Bulk | 35d | 2012-07-18 | 2012-08-21 | -0d | 80d | start on 2012-07-17 | 3 | ENP | 3 |
| PRE52 |  | multi phase flow meter | 57d | 2012-07-18 | 2012-09-12 | -0d | 136.88d | start on 2012-07-17 | 3 | ENP | 3 |
| PRE72 |  | multi phase flow meter | 57d | 2012-07-18 | 2012-09-12 | -0d | 136.88d | start on 2012-07-17 | 3 | ENP | 3 |
| PRE09 |  | Instrument Electical Bulk | 30d | 2012-07-25 | 2012-08-23 | -0d | 78d | start on 2012-07-24 | 3 | ENP | 3 |
| PRE19 |  | Instrument Electical Bulk | 30d | 2012-07-25 | 2012-08-23 | -0d | 78d | start on 2012-07-24 | 3 | ENP | 3 |
| PRE29 |  | Instrument Electical Bulk | 30d | 2012-07-25 | 2012-08-23 | -0d | 78d | start on 2012-07-24 | 3 | ENP | 3 |
| PRE39 |  | Instrument Electical Bulk | 30d | 2012-07-25 | 2012-08-23 | -0d | 78d | start on 2012-07-24 | 3 | ENP | 3 |
| PRE13 |  | Safe Guard system | 30d | 2012-08-18 | 2012-09-16 | -0d | 132.88d | start on 2012-08-17 | 3 | ENP | 3 |
| PRE33 |  | Safe Guard system | 30d | 2012-08-18 | 2012-09-16 | -0d | 132.88d | start on 2012-08-17 | 3 | ENP | 3 |
| PRE53 |  | Safe Guard system | 30d | 2012-08-18 | 2012-09-16 | -0d | 132.88d | start on 2012-08-17 | 3 | ENP | 3 |
| PRE73 |  | Safe Guard system | 30d | 2012-08-18 | 2012-09-16 | -0d | 132.88d | start on 2012-08-17 | 3 | ENP | 3 |

| ID | WBS | Activity | Type | Duration | Start | Finish | Predecessors | Total float | Free float | Calendar | Phase-2 | Resp | Work Package |
| --- | --- | --- | --- | --- | --- | --- | --- | --- | --- | --- | --- | --- | --- |
|  | 6 | **Pre-Fabrication** |  |  | 2012-06-13 | 2012-11-08 |  |  |  |  |  |  |  |
| PF01 |  | Pre-Fabrication of Steel Structure ( Jacket & Piles) |  | 120d | 2012-06-13 | 2012-11-08 | ENS03 SS+14d, ENS04 FF+60d, PRS04 | 26d | 0d | 6 DAY WORK PER WEEK | 4 | PTJ | 1 |
| PF11 |  | Pre-Fabrication of Steel Structure ( Jacket & Piles) |  | 120d | 2012-06-13 | 2012-11-08 | ENS13 SS+14d, ENS14 FF+60d, PRS14 | 26d | 0d | 6 DAY WORK PER WEEK | 4 | PTJ | 1 |
| PF21 |  | Pre-Fabrication of Steel Structure ( Jacket & Piles) |  | 120d | 2012-06-13 | 2012-11-08 | ENS23 SS+14d, ENS24 FF+60d, PRS24 | 26d | 0d | 6 DAY WORK PER WEEK | 4 | PTJ | 1 |
| PF31 |  | Pre-Fabrication of Steel Structure ( Jacket & Piles) |  | 120d | 2012-06-13 | 2012-11-08 | ENS33 SS+14d, ENS34 FF+60d, PRS34 | 26d | 0d | 6 DAY WORK PER WEEK | 4 | PTJ | 1 |
|  | 4 | **Fabrication** |  |  | 2012-06-13 | 2013-03-30 |  |  |  |  |  |  |  |
|  | 1 | **Jacket and Piles Fabrication** |  |  | 2012-06-21 | 2013-01-22 |  |  |  |  |  |  |  |
| JK01 |  | Jacket , Boat Landing Fabrication & Painting |  | 175d | 2012-06-21 | 2013-01-22 | PF01 SS+7d | 26d | 0d | 6 DAY WORK PER WEEK | 4 | PTJ | 1 |
| JK11 |  | Jacket , Boat Landing Fabrication & Painting |  | 175d | 2012-06-21 | 2013-01-22 | PF11 SS+7d | 26d | 0d | 6 DAY WORK PER WEEK | 4 | PTJ | 1 |
| JK21 |  | Jacket , Boat Landing Fabrication & Painting |  | 175d | 2012-06-21 | 2013-01-22 | PF21 SS+7d | 26d | 0d | 6 DAY WORK PER WEEK | 4 | PTJ | 1 |
| JK31 |  | Jacket , Boat Landing Fabrication & Painting |  | 175d | 2012-06-21 | 2013-01-22 | PF31 SS+7d | 26d | 0d | 6 DAY WORK PER WEEK | 4 | PTJ | 1 |
| JK02 |  | Piles Fabrication & Marking |  | 125d | 2012-08-06 | 2013-01-08 | PF01 SS+45d | 74d |  | 6 DAY WORK PER WEEK | 4 | PTJ | 1 |
| JK12 |  | Piles Fabrication & Marking |  | 125d | 2012-08-06 | 2013-01-08 | PF11 SS+45d | 74d |  | 6 DAY WORK PER WEEK | 4 | PTJ | 1 |
| JK22 |  | Piles Fabrication & Marking |  | 125d | 2012-08-06 | 2013-01-08 | PF21 SS+45d | 74d |  | 6 DAY WORK PER WEEK | 4 | PTJ | 1 |
| JK32 |  | Piles Fabrication & Marking |  | 125d | 2012-08-06 | 2013-01-08 | PF31 SS+45d | 74d |  | 6 DAY WORK PER WEEK | 4 | PTJ | 1 |
|  | 3 | **P/L Spools Fabrication** |  |  | 2012-06-30 | 2012-10-17 |  |  |  |  |  |  |  |
| PL01 |  | P/L Spools Fabrication |  | 90d | 2012-06-30 | 2012-10-17 | PRP01 SS+30d, PRP02 FF+45d | 104d | 0d | 6 DAY WORK PER WEEK | 4 | PTJ | 4 |
| PL11 |  | P/L Spools Fabrication |  | 90d | 2012-06-30 | 2012-10-17 | PRP11 SS+30d, PRP22 FF+45d | 104d | 0d | 6 DAY WORK PER WEEK | 4 | PTJ | 4 |
| PL21 |  | P/L Spools Fabrication |  | 90d | 2012-06-30 | 2012-10-17 | PRP21 SS+30d, PRP42 FF+45d | 104d | 0d | 6 DAY WORK PER WEEK | 4 | PTJ | 4 |
| PL31 |  | P/L Spools Fabrication |  | 90d | 2012-06-30 | 2012-10-17 | PRP31 SS+30d, PRP62 FF+45d | 104d | 0d | 6 DAY WORK PER WEEK | 4 | PTJ | 4 |
|  | 2 | **Deck Fabrication** |  |  | 2012-06-13 | 2013-03-30 |  |  |  |  |  |  |  |
|  | 1 | **Deck Structure Fabrication** |  |  | 2012-06-13 | 2013-03-30 |  |  |  |  |  |  |  |
| DS001 |  | Fabrication and Painting of Below Production Deck/Legs |  | 105d | 2012-06-13 | 2012-10-18 | PRS04 | 0d |  | 6 DAY WORK PER WEEK | 4 | PTJ | 2 |
| DS002 |  | Fabrication and Painting of Production Deck |  | 120d | 2012-06-13 | 2012-11-08 | DS001 SS | 0d |  | 6 DAY WORK PER WEEK | 4 | PTJ | 2 |
| DS011 |  | Fabrication and Painting of Below Production Deck/Legs |  | 105d | 2012-06-13 | 2012-10-18 | PRS14 | 0d |  | 6 DAY WORK PER WEEK | 4 | PTJ | 2 |
| DS012 |  | Fabrication and Painting of Production Deck |  | 120d | 2012-06-13 | 2012-11-08 | DS011 SS | 0d |  | 6 DAY WORK PER WEEK | 4 | PTJ | 2 |
| DS021 |  | Fabrication and Painting of Below Production Deck/Legs |  | 105d | 2012-06-13 | 2012-10-18 | PRS24 | 0d |  | 6 DAY WORK PER WEEK | 4 | PTJ | 2 |
| DS022 |  | Fabrication and Painting of Production Deck |  | 120d | 2012-06-13 | 2012-11-08 | DS021 SS | 0d |  | 6 DAY WORK PER WEEK | 4 | PTJ | 2 |
| DS031 |  | Fabrication and Painting of Below Production Deck/Legs |  | 105d | 2012-06-13 | 2012-10-18 | PRS34 | 0d |  | 6 DAY WORK PER WEEK | 4 | PTJ | 2 |
| DS032 |  | Fabrication and Painting of Production Deck |  | 120d | 2012-06-13 | 2012-11-08 | DS031 SS | 0d |  | 6 DAY WORK PER WEEK | 4 | PTJ | 2 |
| DS041 |  | Fabrication and Painting of Below Production Deck/Legs |  | 105d | 2012-06-13 | 2012-10-18 |  | 0d |  | 6 DAY WORK PER WEEK | 4 | PTJ | 2 |
| DS042 |  | Fabrication and Painting of Production Deck |  | 120d | 2012-06-13 | 2012-11-08 | DS041 SS | 0d |  | 6 DAY WORK PER WEEK | 4 | PTJ | 2 |
| DS003 |  | Fabrication and Paint of Heli-Deck ( & Lifting if Required) |  | 120d | 2012-08-27 | 2013-01-20 | DS002 SS+60d | 50d | 0d | 6 DAY WORK PER WEEK | 4 | PTJ | 2 |
| DS013 |  | Fabrication and Paint of Heli-Deck ( & Lifting if Required) |  | 120d | 2012-08-27 | 2013-01-20 | DS012 SS+60d | 50d | 0d | 6 DAY WORK PER WEEK | 4 | PTJ | 2 |
| DS023 |  | Fabrication and Paint of Heli-Deck ( & Lifting if Required) |  | 120d | 2012-08-27 | 2013-01-20 | DS022 SS+60d | 50d | 0d | 6 DAY WORK PER WEEK | 4 | PTJ | 2 |
| DS033 |  | Fabrication and Paint of Heli-Deck ( & Lifting if Required) |  | 120d | 2012-08-27 | 2013-01-20 | DS032 SS+60d | 50d | 0d | 6 DAY WORK PER WEEK | 4 | PTJ | 2 |
| DS043 |  | Fabrication and Paint of Heli-Deck ( & Lifting if Required) |  | 120d | 2012-08-27 | 2013-01-20 | DS042 SS+60d | 50d | 0d | 6 DAY WORK PER WEEK | 4 | PTJ | 2 |
| DS006 |  | Fabrication & Installation of Deck Str. Miscellence / Padeyes |  | 120d | 2012-10-04 | 2013-03-02 | DS007 FF+6d, DS005 FF+30d | 10d | 3d | 6 DAY WORK PER WEEK | 4 | PTJ | 2 |
| DS016 |  | Fabrication & Installation of Deck Str. Miscellence / Padeyes |  | 120d | 2012-10-04 | 2013-03-02 | DS017 FF+6d, DS015 FF+30d | 10d | 3d | 6 DAY WORK PER WEEK | 4 | PTJ | 2 |
| DS026 |  | Fabrication & Installation of Deck Str. Miscellence / Padeyes |  | 120d | 2012-10-04 | 2013-03-02 | DS027 FF+6d, DS025 FF+30d | 10d | 3d | 6 DAY WORK PER WEEK | 4 | PTJ | 2 |
| DS036 |  | Fabrication & Installation of Deck Str. Miscellence / Padeyes |  | 120d | 2012-10-04 | 2013-03-02 | DS037 FF+6d, DS035 FF+30d | 10d | 3d | 6 DAY WORK PER WEEK | 4 | PTJ | 2 |
| DS046 |  | Fabrication & Installation of Deck Str. Miscellence / Padeyes |  | 120d | 2012-10-04 | 2013-03-02 | DS047 FF+6d, DS045 FF+30d | 10d | 3d | 6 DAY WORK PER WEEK | 4 | PTJ | 2 |
| DS004 |  | Lifting Below Production Deck on High Cups |  | 5d | 2012-10-20 | 2012-10-24 | DS001 | 3d | 0d | 6 DAY WORK PER WEEK | 4 | PTJ | 2 |
| DS014 |  | Lifting Below Production Deck on High Cups |  | 5d | 2012-10-20 | 2012-10-24 | DS011 | 3d | 0d | 6 DAY WORK PER WEEK | 4 | PTJ | 2 |
| DS024 |  | Lifting Below Production Deck on High Cups |  | 5d | 2012-10-20 | 2012-10-24 | DS021 | 3d | 0d | 6 DAY WORK PER WEEK | 4 | PTJ | 2 |
| DS034 |  | Lifting Below Production Deck on High Cups |  | 5d | 2012-10-20 | 2012-10-24 | DS031 | 3d | 0d | 6 DAY WORK PER WEEK | 4 | PTJ | 2 |
| DS044 |  | Lifting Below Production Deck on High Cups |  | 5d | 2012-10-20 | 2012-10-24 | DS041 | 3d | 0d | 6 DAY WORK PER WEEK | 4 | PTJ | 2 |
| DS005 |  | Lifting Production Deck on Below Production Level |  | 15d | 2012-11-10 | 2012-11-27 | DS002, TSF003 | 0d |  | 6 DAY WORK PER WEEK | 4 | PTJ | 2 |
| DS015 |  | Lifting Production Deck on Below Production Level |  | 15d | 2012-11-10 | 2012-11-27 | DS012, TSF013 | 0d |  | 6 DAY WORK PER WEEK | 4 | PTJ | 2 |
| DS025 |  | Lifting Production Deck on Below Production Level |  | 15d | 2012-11-10 | 2012-11-27 | DS022, TSF023 | 0d |  | 6 DAY WORK PER WEEK | 4 | PTJ | 2 |
| DS035 |  | Lifting Production Deck on Below Production Level |  | 15d | 2012-11-10 | 2012-11-27 | DS032, TSF033 | 0d |  | 6 DAY WORK PER WEEK | 4 | PTJ | 2 |
| DS045 |  | Lifting Production Deck on Below Production Level |  | 15d | 2012-11-10 | 2012-11-27 | DS042 | 0d |  | 6 DAY WORK PER WEEK | 4 | PTJ | 2 |
| DS007 |  | Physical Weighting | milestone | 0d | 2013-02-23 | 2013-02-23 | TSF002 | 10d | 0d | 6 DAY WORK PER WEEK | 4 | PTJ | 3 |
| DS017 |  | Physical Weighting | milestone | 0d | 2013-02-23 | 2013-02-23 | TSF012 | 10d | 0d | 6 DAY WORK PER WEEK | 4 | PTJ | 3 |
| DS027 |  | Physical Weighting | milestone | 0d | 2013-02-23 | 2013-02-23 | TSF022 | 10d | 0d | 6 DAY WORK PER WEEK | 4 | PTJ | 3 |
| DS037 |  | Physical Weighting | milestone | 0d | 2013-02-23 | 2013-02-23 | TSF032 | 10d | 0d | 6 DAY WORK PER WEEK | 4 | PTJ | 3 |
| DS047 |  | Physical Weighting | milestone | 0d | 2013-02-23 | 2013-02-23 |  | 10d | 0d | 6 DAY WORK PER WEEK | 4 | PTJ | 3 |
| DS008 |  | Clearanse of structure (Fab. & Painting ) Punch List |  | 21d | 2013-03-06 | 2013-03-30 | TS08 FF, DS006 | 7d |  | 6 DAY WORK PER WEEK | 4 | PTJ | 2 |
| DS018 |  | Clearanse of structure (Fab. & Painting ) Punch List |  | 21d | 2013-03-06 | 2013-03-30 | TS18 FF, DS016 | 7d |  | 6 DAY WORK PER WEEK | 4 | PTJ | 2 |
| DS028 |  | Clearanse of structure (Fab. & Painting ) Punch List |  | 21d | 2013-03-06 | 2013-03-30 | TS28 FF, DS026 | 7d |  | 6 DAY WORK PER WEEK | 4 | PTJ | 2 |
| DS038 |  | Clearanse of structure (Fab. & Painting ) Punch List |  | 21d | 2013-03-06 | 2013-03-30 | TS38 FF, DS036 | 7d |  | 6 DAY WORK PER WEEK | 4 | PTJ | 2 |

| ID | WBS | Activity | Duration | Start | Finish | Predecessors | Total float | Calendar | Phase-2 | Resp | Work Package |
| --- | --- | --- | --- | --- | --- | --- | --- | --- | --- | --- | --- |
|  | 2 | **TSF Fabrication and Erection** |  | 2012-07-21 | 2013-03-30 |  |  |  |  |  |  |
|  | 1 | **Piping fabrication & erection** |  | 2012-07-21 | 2013-02-23 |  |  |  |  |  |  |
| TFS001 |  | Piping and Piping Supports Fabrication and Painting | 100d | 2012-07-21 | 2012-11-24 | ENT03, PRT01 SS+7d, PRT02 FF+30d, PRT05 SS+6d, PRT03 FF+15d, PRT04 FF+15d | 40d | 6 DAY WORK PER WEEK | 4 | PTJ | 3 |
| TFS011 |  | Piping and Piping Supports Fabrication and Painting | 100d | 2012-07-21 | 2012-11-24 | ENT13, PRT21 SS+7d, PRT22 FF+30d, PRT15 SS+6d, PRT13 FF+15d, PRT14 FF+15d | 40d | 6 DAY WORK PER WEEK | 4 | PTJ | 3 |
| TFS021 |  | Piping and Piping Supports Fabrication and Painting | 100d | 2012-07-21 | 2012-11-24 | ENT23, PRT41 SS+7d, PRT42 FF+30d, PRT25 SS+6d, PRT23 FF+15d, PRT24 FF+15d | 40d | 6 DAY WORK PER WEEK | 4 | PTJ | 3 |
| TFS031 |  | Piping and Piping Supports Fabrication and Painting | 100d | 2012-07-21 | 2012-11-24 | ENT33, PRT61 SS+7d, PRT62 FF+30d, PRT35 SS+6d, PRT33 FF+15d, PRT34 FF+15d | 40d | 6 DAY WORK PER WEEK | 4 | PTJ | 3 |
| TSF002 |  | Piping and Piping Supports Erection | 75d | 2012-11-25 | 2013-02-23 | DS004, TFS001 SS+60d, DS005 SS+12d, PRT06 FF+30d, PRT07 FF+30d, PRT08 FF+30d, TSF004 FF+30d | 0d | 6 DAY WORK PER WEEK | 4 | PTJ | 3 |
| TSF012 |  | Piping and Piping Supports Erection | 75d | 2012-11-25 | 2013-02-23 | DS014, TFS011 SS+60d, DS015 SS+12d, PRT16 FF+30d, PRT17 FF+30d, PRT18 FF+30d, TSF014 FF+30d | 0d | 6 DAY WORK PER WEEK | 4 | PTJ | 3 |
| TSF022 |  | Piping and Piping Supports Erection | 75d | 2012-11-25 | 2013-02-23 | DS024, TFS021 SS+60d, DS025 SS+12d, PRT26 FF+30d, PRT27 FF+30d, PRT28 FF+30d, TSF024 FF+30d | 0d | 6 DAY WORK PER WEEK | 4 | PTJ | 3 |
| TSF032 |  | Piping and Piping Supports Erection | 75d | 2012-11-25 | 2013-02-23 | DS034, TFS031 SS+60d, DS035 SS+12d, PRT36 FF+30d, PRT37 FF+30d, PRT38 FF+30d, TSF034 FF+30d | 0d | 6 DAY WORK PER WEEK | 4 | PTJ | 3 |
|  | 2 | **Equipment erection** |  | 2012-10-29 | 2012-12-23 |  |  |  |  |  |  |
| TSF003 |  | Equipment Erection on Below Production Level | 7d | 2012-10-29 | 2012-11-05 | ENS08, DS004, PRT12 | 3d | 6 DAY WORK PER WEEK | 4 | PTJ | 3 |
| TSF013 |  | Equipment Erection on Below Production Level | 7d | 2012-10-29 | 2012-11-05 | ENS18, DS014, PRT32 | 3d | 6 DAY WORK PER WEEK | 4 | PTJ | 3 |
| TSF023 |  | Equipment Erection on Below Production Level | 7d | 2012-10-29 | 2012-11-05 | ENS28, DS024, PRT52 | 3d | 6 DAY WORK PER WEEK | 4 | PTJ | 3 |
| TSF033 |  | Equipment Erection on Below Production Level | 7d | 2012-10-29 | 2012-11-05 | ENS38, DS034, PRT72 | 3d | 6 DAY WORK PER WEEK | 4 | PTJ | 3 |
| TSF043 |  | Equipment Erection on Below Production Level | 7d | 2012-10-29 | 2012-11-05 |  | 3d | 6 DAY WORK PER WEEK | 4 | PTJ | 3 |
| TSF004 |  | Equipment Erection on Production Level | 15d | 2012-11-28 | 2012-12-15 | DS005, ENS08, PRT09, PRT10, PRT11 | 27d | 6 DAY WORK PER WEEK | 4 | PTJ | 3 |
| TSF014 |  | Equipment Erection on Production Level | 15d | 2012-11-28 | 2012-12-15 | DS015, ENS18, PRT19, PRT20, PRT31 | 27d | 6 DAY WORK PER WEEK | 4 | PTJ | 3 |
| TSF024 |  | Equipment Erection on Production Level | 15d | 2012-11-28 | 2012-12-15 | DS025, ENS28, PRT29, PRT30, PRT51 | 27d | 6 DAY WORK PER WEEK | 4 | PTJ | 3 |
| TSF034 |  | Equipment Erection on Production Level | 15d | 2012-11-28 | 2012-12-15 | DS035, ENS38, PRT39, PRT40, PRT71 | 27d | 6 DAY WORK PER WEEK | 4 | PTJ | 3 |
| TSF044 |  | Equipment Erection on Production Level | 15d | 2012-11-28 | 2012-12-15 |  | 27d | 6 DAY WORK PER WEEK | 4 | PTJ | 3 |
| TSF005 |  | Equipment Erection on Helideck | 7d | 2012-12-16 | 2012-12-23 | ENS08, DS003 SS+90d, PRE03 | 50d | 6 DAY WORK PER WEEK | 4 | PTJ | 3 |
| TSF015 |  | Equipment Erection on Helideck | 7d | 2012-12-16 | 2012-12-23 | ENS18, DS013 SS+90d, PRE23 | 50d | 6 DAY WORK PER WEEK | 4 | PTJ | 3 |
| TSF025 |  | Equipment Erection on Helideck | 7d | 2012-12-16 | 2012-12-23 | ENS28, DS023 SS+90d, PRE43 | 50d | 6 DAY WORK PER WEEK | 4 | PTJ | 3 |
| TSF035 |  | Equipment Erection on Helideck | 7d | 2012-12-16 | 2012-12-23 | ENS38, DS033 SS+90d, PRE63 | 50d | 6 DAY WORK PER WEEK | 4 | PTJ | 3 |
| TSF045 |  | Equipment Erection on Helideck | 7d | 2012-12-16 | 2012-12-23 |  | 50d | 6 DAY WORK PER WEEK | 4 | PTJ | 3 |

| ID | WBS | Activity | Type | Duration | Start | Finish | Predecessors | Total float | Free float | Constraint | Calendar | Phase-2 | Resp | Work Package |
| --- | --- | --- | --- | --- | --- | --- | --- | --- | --- | --- | --- | --- | --- | --- |
|  | 3 | **E&I Activies** |  |  | 2012-11-10 | 2013-02-26 |  |  |  |  |  |  |  |  |
| TS07 |  | E&I Activity |  | 90d | 2012-11-10 | 2013-02-26 | ENE01 SS+7d, TSF002 FF+3d, DS005 FF+45d, PRE01, PRE02, PRE03, PRE04, PRE05, PRE06, PRE07, PRE08, PRE09, PRE10, PRE11, PRE12 FF+30d, PRE13 FF+30d | 2d |  |  | 6 DAY WORK PER WEEK | 4 | PTJ | 3 |
| TS17 |  | E&I Activity |  | 90d | 2012-11-10 | 2013-02-26 | ENE11 SS+7d, TSF012 FF+3d, DS015 FF+45d, PRE21, PRE22, PRE23, PRE14, PRE15, PRE16, PRE17, PRE18, PRE19, PRE20, PRE31, PRE32 FF+30d, PRE33 FF+30d | 2d |  |  | 6 DAY WORK PER WEEK | 4 | PTJ | 3 |
| TS27 |  | E&I Activity |  | 90d | 2012-11-10 | 2013-02-26 | ENE21 SS+7d, TSF022 FF+3d, DS025 FF+45d, PRE41, PRE42, PRE43, PRE24, PRE25, PRE26, PRE27, PRE28, PRE29, PRE30, PRE51, PRE52 FF+30d, PRE53 FF+30d | 2d |  |  | 6 DAY WORK PER WEEK | 4 | PTJ | 3 |
| TS37 |  | E&I Activity |  | 90d | 2012-11-10 | 2013-02-26 | ENE31 SS+7d, TSF032 FF+3d, DS035 FF+45d, PRE61, PRE62, PRE63, PRE34, PRE35, PRE36, PRE37, PRE38, PRE39, PRE40, PRE71, PRE72 FF+30d, PRE73 FF+30d | 2d |  |  | 6 DAY WORK PER WEEK | 4 | PTJ | 3 |
|  | 4 | **Pre-commissioning** |  |  | 2013-02-18 | 2013-03-30 |  |  |  |  |  |  |  |  |
| TS08 |  | Pre-commissioning " Piping Hydrotest , Reinstatment , Megering , Continuity Test and Touch Up " |  | 35d | 2013-02-18 | 2013-03-30 | TSF005 FF+30d, TSF002 FF+30d, TS07 FF+25d | 0d |  |  | 6 DAY WORK PER WEEK | 4 | PTJ | 3 |
| TS18 |  | Pre-commissioning " Piping Hydrotest , Reinstatment , Megering , Continuity Test and Touch Up " |  | 35d | 2013-02-18 | 2013-03-30 | TSF015 FF+30d, TSF012 FF+30d, TS17 FF+25d | 0d |  |  | 6 DAY WORK PER WEEK | 4 | PTJ | 3 |
| TS28 |  | Pre-commissioning " Piping Hydrotest , Reinstatment , Megering , Continuity Test and Touch Up " |  | 35d | 2013-02-18 | 2013-03-30 | TSF025 FF+30d, TSF022 FF+30d, TS27 FF+25d | 0d |  |  | 6 DAY WORK PER WEEK | 4 | PTJ | 3 |
| TS38 |  | Pre-commissioning " Piping Hydrotest , Reinstatment , Megering , Continuity Test and Touch Up " |  | 35d | 2013-02-18 | 2013-03-30 | TSF035 FF+30d, TSF032 FF+30d, TS37 FF+25d | 0d |  |  | 6 DAY WORK PER WEEK | 4 | PTJ | 3 |
|  | 5 | **L/O & Sea Fastening** |  |  | 2012-09-15 | 2013-04-07 |  |  |  |  |  |  |  |  |
|  | 3 | **01st Trip (P/L Spools 18" & 8")** |  |  | 2012-09-15 | 2012-10-22 |  |  |  |  |  |  |  |  |
| LOPS01 |  | Arrival of 01st Shipment Material Barge ( P/L Spools) | milestone | 0d | 2012-09-15 | 2012-09-15 |  | 0d | 16d | start on 2012-09-15 | 6 DAY WORK PER WEEK | 4 | PTJ | 4 |
| LOPS11 |  | Arrival of 01st Shipment Material Barge ( P/L Spools) | milestone | 0d | 2012-09-15 | 2012-09-15 |  | 0d | 16d | start on 2012-09-15 | 6 DAY WORK PER WEEK | 4 | PTJ | 4 |
| LOPS21 |  | Arrival of 01st Shipment Material Barge ( P/L Spools) | milestone | 0d | 2012-09-15 | 2012-09-15 |  | 0d | 16d | start on 2012-09-15 | 6 DAY WORK PER WEEK | 4 | PTJ | 4 |
| LOPS31 |  | Arrival of 01st Shipment Material Barge ( P/L Spools) | milestone | 0d | 2012-09-15 | 2012-09-15 |  | 0d | 16d | start on 2012-09-15 | 6 DAY WORK PER WEEK | 4 | PTJ | 4 |
| LOPS02 |  | 1st Shipment Material Barge Preparation |  | 12d | 2012-10-03 | 2012-10-17 | LOPS01, PL01 FF | 136d | 0d |  | 6 DAY WORK PER WEEK | 4 | PTJ | 4 |
| LOPS12 |  | 1st Shipment Material Barge Preparation |  | 12d | 2012-10-03 | 2012-10-17 | LOPS11, PL11 FF | 136d | 0d |  | 6 DAY WORK PER WEEK | 4 | PTJ | 4 |
| LOPS22 |  | 1st Shipment Material Barge Preparation |  | 12d | 2012-10-03 | 2012-10-17 | LOPS21, PL21 FF | 136d | 0d |  | 6 DAY WORK PER WEEK | 4 | PTJ | 4 |
| LOPS32 |  | 1st Shipment Material Barge Preparation |  | 12d | 2012-10-03 | 2012-10-17 | LOPS31, PL31 FF | 136d | 0d |  | 6 DAY WORK PER WEEK | 4 | PTJ | 4 |
| LOPS03 |  | L/O & Sea Fastening (P/L Spools 18" & 8") |  | 4d | 2012-10-18 | 2012-10-22 | LOPS02, PL01 | 136d | 0d |  | 6 DAY WORK PER WEEK | 4 | PTJ | 4 |
| LOPS13 |  | L/O & Sea Fastening (P/L Spools 18" & 8") |  | 4d | 2012-10-18 | 2012-10-22 | LOPS12, PL11 | 136d | 0d |  | 6 DAY WORK PER WEEK | 4 | PTJ | 4 |
| LOPS23 |  | L/O & Sea Fastening (P/L Spools 18" & 8") |  | 4d | 2012-10-18 | 2012-10-22 | LOPS22, PL21 | 136d | 0d |  | 6 DAY WORK PER WEEK | 4 | PTJ | 4 |
| LOPS33 |  | L/O & Sea Fastening (P/L Spools 18" & 8") |  | 4d | 2012-10-18 | 2012-10-22 | LOPS32, PL31 | 136d | 0d |  | 6 DAY WORK PER WEEK | 4 | PTJ | 4 |

| ID | WBS | Activity | Type | Duration | Start | Finish | Predecessors | Total float | Free float | Constraint | Calendar | Phase-2 | Resp | Work Package |
| --- | --- | --- | --- | --- | --- | --- | --- | --- | --- | --- | --- | --- | --- | --- |
|  | 1 | **02nd Trip (Jacket & Piles)** |  |  | 2012-12-01 | 2013-01-31 |  |  |  |  |  |  |  |  |
| LOJK01 |  | Arrival of 02nd Shipment Material Barge ( Jacket and Piles ) | milestone | 0d | 2012-12-01 | 2012-12-01 |  | 0d | 33d | start on 2012-12-01 | 6 DAY WORK PER WEEK | 4 | PTJ | 1 |
| LOJK11 |  | Arrival of 02nd Shipment Material Barge ( Jacket and Piles ) | milestone | 0d | 2012-12-01 | 2012-12-01 |  | 0d | 33d | start on 2012-12-01 | 6 DAY WORK PER WEEK | 4 | PTJ | 1 |
| LOJK21 |  | Arrival of 02nd Shipment Material Barge ( Jacket and Piles ) | milestone | 0d | 2012-12-01 | 2012-12-01 |  | 0d | 33d | start on 2012-12-01 | 6 DAY WORK PER WEEK | 4 | PTJ | 1 |
| LOJK31 |  | Arrival of 02nd Shipment Material Barge ( Jacket and Piles ) | milestone | 0d | 2012-12-01 | 2012-12-01 |  | 0d | 33d | start on 2012-12-01 | 6 DAY WORK PER WEEK | 4 | PTJ | 1 |
| LOJK02 |  | 02nd Shipment Material Barge Preparation |  | 12d | 2013-01-09 | 2013-01-22 | JK01 FF, PL01 FF, LOJK01, LOJK01 SS | 26d | 0d |  | 6 DAY WORK PER WEEK | 4 | PTJ | 1 |
| LOJK12 |  | 02nd Shipment Material Barge Preparation |  | 12d | 2013-01-09 | 2013-01-22 | JK11 FF, PL11 FF, LOJK11, LOJK11 SS | 26d | 0d |  | 6 DAY WORK PER WEEK | 4 | PTJ | 1 |
| LOJK22 |  | 02nd Shipment Material Barge Preparation |  | 12d | 2013-01-09 | 2013-01-22 | JK21 FF, PL21 FF, LOJK21, LOJK21 SS | 26d | 0d |  | 6 DAY WORK PER WEEK | 4 | PTJ | 1 |
| LOJK32 |  | 02nd Shipment Material Barge Preparation |  | 12d | 2013-01-09 | 2013-01-22 | JK31 FF, PL31 FF, LOJK31, LOJK31 SS | 26d | 0d |  | 6 DAY WORK PER WEEK | 4 | PTJ | 1 |
| LOJK03 |  | L/O & Sea fastening ( Jacket & Piles ) |  | 7d | 2013-01-23 | 2013-01-31 | LOJK02 | 26d | 0d |  | 6 DAY WORK PER WEEK | 4 | PTJ | 1 |
| LOJK13 |  | L/O & Sea fastening ( Jacket & Piles ) |  | 7d | 2013-01-23 | 2013-01-31 | LOJK12 | 26d | 0d |  | 6 DAY WORK PER WEEK | 4 | PTJ | 1 |
| LOJK23 |  | L/O & Sea fastening ( Jacket & Piles ) |  | 7d | 2013-01-23 | 2013-01-31 | LOJK22 | 26d | 0d |  | 6 DAY WORK PER WEEK | 4 | PTJ | 1 |
| LOJK33 |  | L/O & Sea fastening ( Jacket & Piles ) |  | 7d | 2013-01-23 | 2013-01-31 | LOJK32 | 26d | 0d |  | 6 DAY WORK PER WEEK | 4 | PTJ | 1 |
|  | 2 | **03rd Trip ( Deck)** |  |  | 2013-03-02 | 2013-04-07 |  |  |  |  |  |  |  |  |
| LODK01 |  | Arrival of 03rd Shipment Material Barge ( Deck C/W TSF ) | milestone | 0d | 2013-03-02 | 2013-03-02 |  | -0d | 13d | start on 2013-03-01 | 6 DAY WORK PER WEEK | 4 | PTJ | 3 |
| LODK11 |  | Arrival of 03rd Shipment Material Barge ( Deck C/W TSF ) | milestone | 0d | 2013-03-02 | 2013-03-02 |  | -0d | 13d | start on 2013-03-01 | 6 DAY WORK PER WEEK | 4 | PTJ | 3 |
| LODK21 |  | Arrival of 03rd Shipment Material Barge ( Deck C/W TSF ) | milestone | 0d | 2013-03-02 | 2013-03-02 |  | -0d | 13d | start on 2013-03-01 | 6 DAY WORK PER WEEK | 4 | PTJ | 3 |
| LODK31 |  | Arrival of 03rd Shipment Material Barge ( Deck C/W TSF ) | milestone | 0d | 2013-03-02 | 2013-03-02 |  | -0d | 13d | start on 2013-03-01 | 6 DAY WORK PER WEEK | 4 | PTJ | 3 |
| LODK02 |  | 3rd Shipment Material Barge Preparation |  | 12d | 2013-03-17 | 2013-03-30 | TS08 FF, LODK01 | 0d |  |  | 6 DAY WORK PER WEEK | 4 | PTJ | 2 |
| LODK12 |  | 3rd Shipment Material Barge Preparation |  | 12d | 2013-03-17 | 2013-03-30 | TS18 FF, LODK11 | 0d |  |  | 6 DAY WORK PER WEEK | 4 | PTJ | 2 |
| LODK22 |  | 3rd Shipment Material Barge Preparation |  | 12d | 2013-03-17 | 2013-03-30 | TS28 FF, LODK21 | 0d |  |  | 6 DAY WORK PER WEEK | 4 | PTJ | 2 |
| LODK32 |  | 3rd Shipment Material Barge Preparation |  | 12d | 2013-03-17 | 2013-03-30 | TS38 FF, LODK31 | 0d |  |  | 6 DAY WORK PER WEEK | 4 | PTJ | 2 |
| LODK03 |  | L/O & Sea fastening ( Deck) |  | 7d | 2013-03-31 | 2013-04-07 | LODK02 | 0d |  |  | 6 DAY WORK PER WEEK | 4 | PTJ | 2 |
| LODK13 |  | L/O & Sea fastening ( Deck) |  | 7d | 2013-03-31 | 2013-04-07 | LODK12 | 0d |  |  | 6 DAY WORK PER WEEK | 4 | PTJ | 2 |
| LODK23 |  | L/O & Sea fastening ( Deck) |  | 7d | 2013-03-31 | 2013-04-07 | LODK22 | 0d |  |  | 6 DAY WORK PER WEEK | 4 | PTJ | 2 |
| LODK33 |  | L/O & Sea fastening ( Deck) |  | 7d | 2013-03-31 | 2013-04-07 | LODK32 | 0d |  |  | 6 DAY WORK PER WEEK | 4 | PTJ | 2 |

| ID | WBS | Activity | Type | Duration | Start | Finish | Predecessors | Total float | Free float | Constraint | Calendar | Phase-2 | Resp | Work Package |
| --- | --- | --- | --- | --- | --- | --- | --- | --- | --- | --- | --- | --- | --- | --- |
|  | Master Rev.F-N-4 | **Hillal-B PLATFORM DEVELOPMENT-Normal** |  |  | 2011-11-30 | 2013-04-07 |  |  |  |  |  |  |  |  |
|  | 1 | **General Milestone** |  |  | 2012-01-21 | 2013-03-31 |  |  |  |  |  |  |  |  |
| GM41 |  | Reciving Fax of Award | milestone | 0d | 2012-01-21 | 2012-01-21 |  | -0d | 0d | finish on 2012-01-20 | 6 DAY WORK PER WEEK | 0 | GUP | 0 |
| GM51 |  | Reciving Fax of Award | milestone | 0d | 2012-01-21 | 2012-01-21 |  | -0d | 0d | finish on 2012-01-20 | 6 DAY WORK PER WEEK | 0 | GUP | 0 |
| GM61 |  | Reciving Fax of Award | milestone | 0d | 2012-01-21 | 2012-01-21 |  | -0d | 0d | finish on 2012-01-20 | 6 DAY WORK PER WEEK | 0 | GUP | 0 |
| GM71 |  | Reciving Fax of Award | milestone | 0d | 2012-01-21 | 2012-01-21 |  | -0d | 0d | finish on 2012-01-20 | 6 DAY WORK PER WEEK | 0 | GUP | 0 |
| GM42 |  | Project Fab. Start | milestone | 0d | 2012-06-13 | 2012-06-13 | PRS44 | 244d |  |  | 6 DAY WORK PER WEEK | 4 | PTJ | 0 |
| GM52 |  | Project Fab. Start | milestone | 0d | 2012-06-13 | 2012-06-13 | PRS54 | 244d |  |  | 6 DAY WORK PER WEEK | 4 | PTJ | 0 |
| GM62 |  | Project Fab. Start | milestone | 0d | 2012-06-13 | 2012-06-13 | PRS64 | 244d |  |  | 6 DAY WORK PER WEEK | 4 | PTJ | 0 |
| GM72 |  | Project Fab. Start | milestone | 0d | 2012-06-13 | 2012-06-13 | PRS74 | 244d |  |  | 6 DAY WORK PER WEEK | 4 | PTJ | 0 |
| GM43 |  | Ready for Load out (01st Shipment / Pipeline Spools 18" & 8") | milestone | 0d | 2012-10-18 | 2012-10-18 | LOPS43 SS | 140d |  |  | 6 DAY WORK PER WEEK | 4 | PTJ | 4 |
| GM53 |  | Ready for Load out (01st Shipment / Pipeline Spools 18" & 8") | milestone | 0d | 2012-10-18 | 2012-10-18 | LOPS53 SS | 140d |  |  | 6 DAY WORK PER WEEK | 4 | PTJ | 4 |
| GM63 |  | Ready for Load out (01st Shipment / Pipeline Spools 18" & 8") | milestone | 0d | 2012-10-18 | 2012-10-18 | LOPS63 SS | 140d |  |  | 6 DAY WORK PER WEEK | 4 | PTJ | 4 |
| GM73 |  | Ready for Load out (01st Shipment / Pipeline Spools 18" & 8") | milestone | 0d | 2012-10-18 | 2012-10-18 | LOPS73 SS | 140d |  |  | 6 DAY WORK PER WEEK | 4 | PTJ | 4 |
| GM44 |  | Ready for Load out ( 02nd Shipment/ Jacket & Piles ) | milestone | 0d | 2013-01-23 | 2013-01-23 | LOJK43 SS | 26d |  |  | 6 DAY WORK PER WEEK | 4 | PTJ | 1 |
| GM54 |  | Ready for Load out ( 02nd Shipment/ Jacket & Piles ) | milestone | 0d | 2013-01-23 | 2013-01-23 | LOJK53 SS | 26d |  |  | 6 DAY WORK PER WEEK | 4 | PTJ | 1 |
| GM64 |  | Ready for Load out ( 02nd Shipment/ Jacket & Piles ) | milestone | 0d | 2013-01-23 | 2013-01-23 | LOJK63 SS | 26d |  |  | 6 DAY WORK PER WEEK | 4 | PTJ | 1 |
| GM74 |  | Ready for Load out ( 02nd Shipment/ Jacket & Piles ) | milestone | 0d | 2013-01-23 | 2013-01-23 | LOJK73 SS | 26d |  |  | 6 DAY WORK PER WEEK | 4 | PTJ | 1 |
| GM45 |  | Ready for Load out ( 03rd Shipment/ Deck C/W TSF ) | milestone | 0d | 2013-03-31 | 2013-03-31 | LODK43 SS | 7d |  |  | 6 DAY WORK PER WEEK | 4 | PTJ | 3 |
| GM55 |  | Ready for Load out ( 03rd Shipment/ Deck C/W TSF ) | milestone | 0d | 2013-03-31 | 2013-03-31 | LODK53 SS | 7d |  |  | 6 DAY WORK PER WEEK | 4 | PTJ | 3 |
| GM65 |  | Ready for Load out ( 03rd Shipment/ Deck C/W TSF ) | milestone | 0d | 2013-03-31 | 2013-03-31 | LODK63 SS | 7d |  |  | 6 DAY WORK PER WEEK | 4 | PTJ | 3 |
| GM75 |  | Ready for Load out ( 03rd Shipment/ Deck C/W TSF ) | milestone | 0d | 2013-03-31 | 2013-03-31 | LODK73 SS | 7d |  |  | 6 DAY WORK PER WEEK | 4 | PTJ | 3 |
|  | 2 | **Engineering** |  |  | 2011-11-30 | 2012-04-30 |  |  |  |  |  |  |  |  |
|  | 1 | **Structure** |  |  | 2011-11-30 | 2012-04-30 |  |  |  |  |  |  |  |  |
| ENS43 |  | Receiving Jacket Primary & Secondary Steel IFC DWG`s |  | 138d | 2011-11-30 | 2012-04-16 |  | 0d |  | start on 2011-11-30 |  | 1 | ENP | 1 |
| ENS53 |  | Receiving Jacket Primary & Secondary Steel IFC DWG`s |  | 138d | 2011-11-30 | 2012-04-16 |  | 0d |  | start on 2011-11-30 |  | 1 | ENP | 1 |
| ENS63 |  | Receiving Jacket Primary & Secondary Steel IFC DWG`s |  | 138d | 2011-11-30 | 2012-04-16 |  | 0d |  | start on 2011-11-30 |  | 1 | ENP | 1 |
| ENS73 |  | Receiving Jacket Primary & Secondary Steel IFC DWG`s |  | 138d | 2011-11-30 | 2012-04-16 |  | 0d |  | start on 2011-11-30 |  | 1 | ENP | 1 |
| ENS44 |  | Receiving Piles IFC DWG`s | milestone | 0d | 2012-01-17 | 2012-01-17 |  | 0d | 90d | finish on 2012-01-17 |  | 1 | ENP | 1 |
| ENS54 |  | Receiving Piles IFC DWG`s | milestone | 0d | 2012-01-17 | 2012-01-17 |  | 0d | 90d | finish on 2012-01-17 |  | 1 | ENP | 1 |
| ENS64 |  | Receiving Piles IFC DWG`s | milestone | 0d | 2012-01-17 | 2012-01-17 |  | 0d | 90d | finish on 2012-01-17 |  | 1 | ENP | 1 |
| ENS74 |  | Receiving Piles IFC DWG`s | milestone | 0d | 2012-01-17 | 2012-01-17 |  | 0d | 90d | finish on 2012-01-17 |  | 1 | ENP | 1 |
| ENS41 |  | Receiving Final Jacket , Boat Land & Piles MTO | milestone | 0d | 2012-01-29 | 2012-01-29 | GM41 FF+7d | 17d |  |  |  | 1 | ENP | 1 |
| ENS42 |  | Receiving Final Deck Str. MTO | milestone | 0d | 2012-01-29 | 2012-01-29 | GM41 FF+7d | 17d |  |  |  | 1 | ENP | 2 |
| ENS51 |  | Receiving Final Jacket , Boat Land & Piles MTO | milestone | 0d | 2012-01-29 | 2012-01-29 | GM51 FF+7d | 17d |  |  |  | 1 | ENP | 1 |
| ENS52 |  | Receiving Final Deck Str. MTO | milestone | 0d | 2012-01-29 | 2012-01-29 | GM51 FF+7d | 17d |  |  |  | 1 | ENP | 2 |
| ENS61 |  | Receiving Final Jacket , Boat Land & Piles MTO | milestone | 0d | 2012-01-29 | 2012-01-29 | GM61 FF+7d | 17d |  |  |  | 1 | ENP | 1 |
| ENS62 |  | Receiving Final Deck Str. MTO | milestone | 0d | 2012-01-29 | 2012-01-29 | GM61 FF+7d | 17d |  |  |  | 1 | ENP | 2 |
| ENS71 |  | Receiving Final Jacket , Boat Land & Piles MTO | milestone | 0d | 2012-01-29 | 2012-01-29 | GM71 FF+7d | 17d |  |  |  | 1 | ENP | 1 |
| ENS72 |  | Receiving Final Deck Str. MTO | milestone | 0d | 2012-01-29 | 2012-01-29 | GM71 FF+7d | 17d |  |  |  | 1 | ENP | 2 |
| ENS45 |  | Receiving Deck Str. Primary & Secondary IFC DWG`s |  | 41d | 2012-02-07 | 2012-03-19 |  | 0d | 28d | start on 2012-02-07 |  | 1 | ENP | 2 |
| ENS55 |  | Receiving Deck Str. Primary & Secondary IFC DWG`s |  | 41d | 2012-02-07 | 2012-03-19 |  | 0d | 28d | start on 2012-02-07 |  | 1 | ENP | 2 |
| ENS65 |  | Receiving Deck Str. Primary & Secondary IFC DWG`s |  | 41d | 2012-02-07 | 2012-03-19 |  | 0d | 28d | start on 2012-02-07 |  | 1 | ENP | 2 |
| ENS75 |  | Receiving Deck Str. Primary & Secondary IFC DWG`s |  | 41d | 2012-02-07 | 2012-03-19 |  | 0d | 28d | start on 2012-02-07 |  | 1 | ENP | 2 |
| ENS46 |  | Receiving Piping Supports IFC DWG's |  | 20d | 2012-02-28 | 2012-03-19 |  | 0d | 384.87d | start on 2012-02-28 |  | 1 | ENP | 3 |
| ENS56 |  | Receiving Piping Supports IFC DWG's |  | 20d | 2012-02-28 | 2012-03-19 |  | 0d | 384.87d | start on 2012-02-28 |  | 1 | ENP | 3 |
| ENS66 |  | Receiving Piping Supports IFC DWG's |  | 20d | 2012-02-28 | 2012-03-19 |  | 0d | 384.87d | start on 2012-02-28 |  | 1 | ENP | 3 |
| ENS76 |  | Receiving Piping Supports IFC DWG's |  | 20d | 2012-02-28 | 2012-03-19 |  | 0d | 384.87d | start on 2012-02-28 |  | 1 | ENP | 3 |
| ENS47 |  | Receiving Cable tarys Support IFC DWG's |  | 13d | 2012-03-13 | 2012-03-26 |  | 0d | 377.87d | start on 2012-03-13 |  | 1 | ENP | 3 |
| ENS57 |  | Receiving Cable tarys Support IFC DWG's |  | 13d | 2012-03-13 | 2012-03-26 |  | 0d | 377.87d | start on 2012-03-13 |  | 1 | ENP | 3 |
| ENS67 |  | Receiving Cable tarys Support IFC DWG's |  | 13d | 2012-03-13 | 2012-03-26 |  | 0d | 377.87d | start on 2012-03-13 |  | 1 | ENP | 3 |
| ENS77 |  | Receiving Cable tarys Support IFC DWG's |  | 13d | 2012-03-13 | 2012-03-26 |  | 0d | 377.87d | start on 2012-03-13 |  | 1 | ENP | 3 |
| ENS48 |  | Receiving IFC Equipment fixation DWG`s |  | 13d | 2012-04-04 | 2012-04-17 |  | 0d | 195d | start on 2012-04-04 |  | 1 | ENP | 3 |
| ENS58 |  | Receiving IFC Equipment fixation DWG`s |  | 13d | 2012-04-04 | 2012-04-17 |  | 0d | 195d | start on 2012-04-04 |  | 1 | ENP | 3 |
| ENS68 |  | Receiving IFC Equipment fixation DWG`s |  | 13d | 2012-04-04 | 2012-04-17 |  | 0d | 195d | start on 2012-04-04 |  | 1 | ENP | 3 |
| ENS78 |  | Receiving IFC Equipment fixation DWG`s |  | 13d | 2012-04-04 | 2012-04-17 |  | 0d | 195d | start on 2012-04-04 |  | 1 | ENP | 3 |
| ENS49 |  | Receiving P/L 8" & 18" IFC DWG's |  | 20d | 2012-04-10 | 2012-04-30 |  | 0d | 342d | start on 2012-04-10 |  | 1 | ENP | 4 |
| ENS59 |  | Receiving P/L 8" & 18" IFC DWG's |  | 20d | 2012-04-10 | 2012-04-30 |  | 0d | 342d | start on 2012-04-10 |  | 1 | ENP | 4 |
| ENS69 |  | Receiving P/L 8" & 18" IFC DWG's |  | 20d | 2012-04-10 | 2012-04-30 |  | 0d | 342d | start on 2012-04-10 |  | 1 | ENP | 4 |
| ENS79 |  | Receiving P/L 8" & 18" IFC DWG's |  | 20d | 2012-04-10 | 2012-04-30 |  | 0d | 342d | start on 2012-04-10 |  | 1 | ENP | 4 |

| ID | WBS | Activity | Type | Duration | Start | Finish | Predecessors | Total float | Free float | Constraint | Calendar | Phase-2 | Resp | Work Package |
| --- | --- | --- | --- | --- | --- | --- | --- | --- | --- | --- | --- | --- | --- | --- |
|  | 2 | **TSF, E&I** |  |  | 2012-01-15 | 2012-03-12 |  |  |  |  |  |  |  |  |
| ENT41 |  | Issue Approved P&ID's / Equipment List IFC DWG's | milestone | 0d | 2012-01-15 | 2012-01-15 |  | 0d | 448d | finish on 2012-01-15 |  | 1 | ENP | 3 |
| ENT51 |  | Issue Approved P&ID's / Equipment List IFC DWG's | milestone | 0d | 2012-01-15 | 2012-01-15 |  | 0d | 448d | finish on 2012-01-15 |  | 1 | ENP | 3 |
| ENT61 |  | Issue Approved P&ID's / Equipment List IFC DWG's | milestone | 0d | 2012-01-15 | 2012-01-15 |  | 0d | 448d | finish on 2012-01-15 |  | 1 | ENP | 3 |
| ENT71 |  | Issue Approved P&ID's / Equipment List IFC DWG's | milestone | 0d | 2012-01-15 | 2012-01-15 |  | 0d | 448d | finish on 2012-01-15 |  | 1 | ENP | 3 |
| ENT42 |  | Issue plat plans IFC DWG's | milestone | 0d | 2012-02-06 | 2012-02-06 |  | 0d | 426d | finish on 2012-02-06 |  | 1 | ENP | 3 |
| ENT52 |  | Issue plat plans IFC DWG's | milestone | 0d | 2012-02-06 | 2012-02-06 |  | 0d | 426d | finish on 2012-02-06 |  | 1 | ENP | 3 |
| ENT62 |  | Issue plat plans IFC DWG's | milestone | 0d | 2012-02-06 | 2012-02-06 |  | 0d | 426d | finish on 2012-02-06 |  | 1 | ENP | 3 |
| ENT72 |  | Issue plat plans IFC DWG's | milestone | 0d | 2012-02-06 | 2012-02-06 |  | 0d | 426d | finish on 2012-02-06 |  | 1 | ENP | 3 |
| ENT43 |  | Receiving Piping ISO`s IFC DWG's |  | 14d | 2012-02-27 | 2012-03-12 |  | 0d | 131d | start on 2012-02-27 |  | 1 | ENP | 3 |
| ENT53 |  | Receiving Piping ISO`s IFC DWG's |  | 14d | 2012-02-27 | 2012-03-12 |  | 0d | 131d | start on 2012-02-27 |  | 1 | ENP | 3 |
| ENT63 |  | Receiving Piping ISO`s IFC DWG's |  | 14d | 2012-02-27 | 2012-03-12 |  | 0d | 131d | start on 2012-02-27 |  | 1 | ENP | 3 |
| ENT73 |  | Receiving Piping ISO`s IFC DWG's |  | 14d | 2012-02-27 | 2012-03-12 |  | 0d | 131d | start on 2012-02-27 |  | 1 | ENP | 3 |
| ENT44 |  | Issue Hydrotest maps & loops IFC DWG's | milestone | 0d | 2012-02-28 | 2012-02-28 |  | 0d | 331d | finish on 2012-02-28 | 6 DAY WORK PER WEEK | 1 | ENP | 3 |
| ENT54 |  | Issue Hydrotest maps & loops IFC DWG's | milestone | 0d | 2012-02-28 | 2012-02-28 |  | 0d | 331d | finish on 2012-02-28 | 6 DAY WORK PER WEEK | 1 | ENP | 3 |
| ENT64 |  | Issue Hydrotest maps & loops IFC DWG's | milestone | 0d | 2012-02-28 | 2012-02-28 |  | 0d | 331d | finish on 2012-02-28 | 6 DAY WORK PER WEEK | 1 | ENP | 3 |
| ENT74 |  | Issue Hydrotest maps & loops IFC DWG's | milestone | 0d | 2012-02-28 | 2012-02-28 |  | 0d | 331d | finish on 2012-02-28 | 6 DAY WORK PER WEEK | 1 | ENP | 3 |
|  | 3 | **Electrical & Instrumentation (E&I)** |  |  | 2012-01-23 | 2012-04-29 |  |  |  |  |  |  |  |  |
| ENE41 |  | Receiving E&I IFC DWG`s |  | 97d | 2012-01-23 | 2012-04-29 |  | 0d | 285d | start on 2012-01-23 |  | 1 | ENP | 3 |
| ENE51 |  | Receiving E&I IFC DWG`s |  | 97d | 2012-01-23 | 2012-04-29 |  | 0d | 285d | start on 2012-01-23 |  | 1 | ENP | 3 |
| ENE61 |  | Receiving E&I IFC DWG`s |  | 97d | 2012-01-23 | 2012-04-29 |  | 0d | 285d | start on 2012-01-23 |  | 1 | ENP | 3 |
| ENE71 |  | Receiving E&I IFC DWG`s |  | 97d | 2012-01-23 | 2012-04-29 |  | 0d | 285d | start on 2012-01-23 |  | 1 | ENP | 3 |
|  | 3 | **Procurment** |  |  | 2012-02-07 | 2012-09-24 |  |  |  |  |  |  |  |  |
|  | 1 | **Structure Material** |  |  | 2012-02-07 | 2012-09-24 |  |  |  |  |  |  |  |  |
| PRS41 |  | Issue Structural Material P.O's ( Gupco Responsability) | milestone | 0d | 2012-02-07 | 2012-02-07 |  | 0d | 8d | start on 2012-02-07 |  | 3 | PTJ | 1 |
| PRS51 |  | Issue Structural Material P.O's ( Gupco Responsability) | milestone | 0d | 2012-02-07 | 2012-02-07 |  | 0d | 8d | start on 2012-02-07 |  | 3 | PTJ | 1 |
| PRS61 |  | Issue Structural Material P.O's ( Gupco Responsability) | milestone | 0d | 2012-02-07 | 2012-02-07 |  | 0d | 8d | start on 2012-02-07 |  | 3 | PTJ | 1 |
| PRS71 |  | Issue Structural Material P.O's ( Gupco Responsability) | milestone | 0d | 2012-02-07 | 2012-02-07 |  | 0d | 8d | start on 2012-02-07 |  | 3 | PTJ | 1 |
| PRS42 |  | Issue LC ( Gupco Responsability) | milestone | 0d | 2012-02-15 | 2012-02-15 | PRS41 | 0d |  | start on 2012-02-15 |  | 3 | GUP | 1 |
| PRS43 |  | Delivery of Structure Material (F.O.B - 13 Wks.) - (Gupco Responsability) |  | 91d | 2012-02-15 | 2012-05-15 | ENS41, ENS42, PRS41, PRS42 | 0d |  |  |  | 3 | PTJ | 1 |
| PRS52 |  | Issue LC ( Gupco Responsability) | milestone | 0d | 2012-02-15 | 2012-02-15 | PRS51 | 0d |  | start on 2012-02-15 |  | 3 | GUP | 1 |
| PRS53 |  | Delivery of Structure Material (F.O.B - 13 Wks.) - (Gupco Responsability) |  | 91d | 2012-02-15 | 2012-05-15 | ENS51, ENS52, PRS51, PRS52 | 0d |  |  |  | 3 | PTJ | 1 |
| PRS62 |  | Issue LC ( Gupco Responsability) | milestone | 0d | 2012-02-15 | 2012-02-15 | PRS61 | 0d |  | start on 2012-02-15 |  | 3 | GUP | 1 |
| PRS63 |  | Delivery of Structure Material (F.O.B - 13 Wks.) - (Gupco Responsability) |  | 91d | 2012-02-15 | 2012-05-15 | ENS61, ENS62, PRS61, PRS62 | 0d |  |  |  | 3 | PTJ | 1 |
| PRS72 |  | Issue LC ( Gupco Responsability) | milestone | 0d | 2012-02-15 | 2012-02-15 | PRS71 | 0d |  | start on 2012-02-15 |  | 3 | GUP | 1 |
| PRS73 |  | Delivery of Structure Material (F.O.B - 13 Wks.) - (Gupco Responsability) |  | 91d | 2012-02-15 | 2012-05-15 | ENS71, ENS72, PRS71, PRS72 | 0d |  |  |  | 3 | PTJ | 1 |
| PRS45 |  | Material check with IFC DWG's to Prepare balance material |  | 7d | 2012-04-16 | 2012-04-23 | ENS43, ENS44, ENS45 | 195.87d | 0d |  |  | 3 | PTJ | 1 |
| PRS55 |  | Material check with IFC DWG's to Prepare balance material |  | 7d | 2012-04-16 | 2012-04-23 | ENS53, ENS54, ENS55 | 195.87d | 0d |  |  | 3 | PTJ | 1 |
| PRS65 |  | Material check with IFC DWG's to Prepare balance material |  | 7d | 2012-04-16 | 2012-04-23 | ENS63, ENS64, ENS65 | 195.87d | 0d |  |  | 3 | PTJ | 1 |
| PRS75 |  | Material check with IFC DWG's to Prepare balance material |  | 7d | 2012-04-16 | 2012-04-23 | ENS73, ENS74, ENS75 | 195.87d | 0d |  |  | 3 | PTJ | 1 |
| PRS46 |  | Delivery of balance material |  | 154d | 2012-04-23 | 2012-09-24 | PRS45 | 195.87d |  |  |  | 3 | PTJ | 3 |
| PRS56 |  | Delivery of balance material |  | 154d | 2012-04-23 | 2012-09-24 | PRS55 | 195.87d |  |  |  | 3 | PTJ | 3 |
| PRS66 |  | Delivery of balance material |  | 154d | 2012-04-23 | 2012-09-24 | PRS65 | 195.87d |  |  |  | 3 | PTJ | 3 |
| PRS76 |  | Delivery of balance material |  | 154d | 2012-04-23 | 2012-09-24 | PRS75 | 195.87d |  |  |  | 3 | PTJ | 3 |
| PRS44 |  | Delivery of Structure Material at Site (4 Wks.) |  | 28d | 2012-05-16 | 2012-06-12 | PRS43 | 0d |  |  |  | 3 | PTJ | 1 |
| PRS54 |  | Delivery of Structure Material at Site (4 Wks.) |  | 28d | 2012-05-16 | 2012-06-12 | PRS53 | 0d |  |  |  | 3 | PTJ | 1 |
| PRS64 |  | Delivery of Structure Material at Site (4 Wks.) |  | 28d | 2012-05-16 | 2012-06-12 | PRS63 | 0d |  |  |  | 3 | PTJ | 1 |
| PRS74 |  | Delivery of Structure Material at Site (4 Wks.) |  | 28d | 2012-05-16 | 2012-06-12 | PRS73 | 0d |  |  |  | 3 | PTJ | 1 |

| ID | WBS | Activity | Duration | Start | Finish | Total float | Free float | Constraint | Phase-2 | Resp | Work Package |
| --- | --- | --- | --- | --- | --- | --- | --- | --- | --- | --- | --- |
|  | 2 | **P/L Spools Material** |  | 2012-05-31 | 2012-07-20 |  |  |  |  |  |  |
| PRP102 |  | Pipeline 8" & Fittings | 51d | 2012-05-31 | 2012-07-20 | -0d | 43.88d | start on 2012-05-30 | 3 | PTJ | 4 |
| PRP112 |  | Pipeline 8" & Fittings | 51d | 2012-05-31 | 2012-07-20 | -0d | 260.88d | start on 2012-05-30 | 3 | PTJ |  |
| PRP122 |  | Pipeline 8" & Fittings | 51d | 2012-05-31 | 2012-07-20 | -0d | 43.88d | start on 2012-05-30 | 3 | PTJ | 4 |
| PRP132 |  | Pipeline 8" & Fittings | 51d | 2012-05-31 | 2012-07-20 | -0d | 260.88d | start on 2012-05-30 | 3 | PTJ |  |
| PRP142 |  | Pipeline 8" & Fittings | 51d | 2012-05-31 | 2012-07-20 | -0d | 43.88d | start on 2012-05-30 | 3 | PTJ | 4 |
| PRP152 |  | Pipeline 8" & Fittings | 51d | 2012-05-31 | 2012-07-20 | -0d | 260.88d | start on 2012-05-30 | 3 | PTJ |  |
| PRP41 |  | Pipeline 18" & Fittings | 51d | 2012-05-31 | 2012-07-20 | 0d |  | start on 2012-05-31 | 3 | PTJ | 4 |
| PRP51 |  | Pipeline 18" & Fittings | 51d | 2012-05-31 | 2012-07-20 | 0d |  | start on 2012-05-31 | 3 | PTJ | 4 |
| PRP61 |  | Pipeline 18" & Fittings | 51d | 2012-05-31 | 2012-07-20 | 0d |  | start on 2012-05-31 | 3 | PTJ | 4 |
| PRP71 |  | Pipeline 18" & Fittings | 51d | 2012-05-31 | 2012-07-20 | 0d |  | start on 2012-05-31 | 3 | PTJ | 4 |
| PRP82 |  | Pipeline 8" & Fittings | 51d | 2012-05-31 | 2012-07-20 | -0d | 43.88d | start on 2012-05-30 | 3 | PTJ | 4 |
| PRP92 |  | Pipeline 8" & Fittings | 51d | 2012-05-31 | 2012-07-20 | -0d | 260.88d | start on 2012-05-30 | 3 | PTJ |  |
|  | 3 | **Piping Material** |  | 2012-05-08 | 2012-09-04 |  |  |  |  |  |  |
| PRT101 |  | Piping Bulk material 1st batch | 30d | 2012-05-08 | 2012-06-06 | -0d | 67d | start on 2012-05-07 | 3 | ENP | 3 |
| PRT121 |  | Piping Bulk material 1st batch | 30d | 2012-05-08 | 2012-06-06 | -0d | 67d | start on 2012-05-07 | 3 | ENP | 3 |
| PRT141 |  | Piping Bulk material 1st batch | 30d | 2012-05-08 | 2012-06-06 | -0d | 67d | start on 2012-05-07 | 3 | ENP | 3 |
| PRT81 |  | Piping Bulk material 1st batch | 30d | 2012-05-08 | 2012-06-06 | -0d | 67d | start on 2012-05-07 | 3 | ENP | 3 |
| PRT46 |  | Pressure Safety Valve | 44d | 2012-06-05 | 2012-07-18 | -0d | 189.88d | start on 2012-06-04 | 3 | ENP | 3 |
| PRT56 |  | Pressure Safety Valve | 44d | 2012-06-05 | 2012-07-18 | -0d | 189.88d | start on 2012-06-04 | 3 | ENP | 3 |
| PRT66 |  | Pressure Safety Valve | 44d | 2012-06-05 | 2012-07-18 | -0d | 189.88d | start on 2012-06-04 | 3 | ENP | 3 |
| PRT76 |  | Pressure Safety Valve | 44d | 2012-06-05 | 2012-07-18 | -0d | 189.88d | start on 2012-06-04 | 3 | ENP | 3 |
| PRT102 |  | Piping Bulk material 2nd batch | 30d | 2012-06-11 | 2012-07-10 | -0d | 106.88d | start on 2012-06-10 | 3 | ENP | 3 |
| PRT122 |  | Piping Bulk material 2nd batch | 30d | 2012-06-11 | 2012-07-10 | -0d | 106.88d | start on 2012-06-10 | 3 | ENP | 3 |
| PRT142 |  | Piping Bulk material 2nd batch | 30d | 2012-06-11 | 2012-07-10 | -0d | 106.88d | start on 2012-06-10 | 3 | ENP | 3 |
| PRT82 |  | Piping Bulk material 2nd batch | 30d | 2012-06-11 | 2012-07-10 | -0d | 106.88d | start on 2012-06-10 | 3 | ENP | 3 |
| PRT43 |  | Piping Valves Bulk material 1st batch | 14d | 2012-06-24 | 2012-07-07 | -0d | 124.88d | start on 2012-06-23 | 3 | ENP | 3 |
| PRT53 |  | Piping Valves Bulk material 1st batch | 14d | 2012-06-24 | 2012-07-07 | -0d | 124.88d | start on 2012-06-23 | 3 | ENP | 3 |
| PRT63 |  | Piping Valves Bulk material 1st batch | 14d | 2012-06-24 | 2012-07-07 | -0d | 124.88d | start on 2012-06-23 | 3 | ENP | 3 |
| PRT73 |  | Piping Valves Bulk material 1st batch | 14d | 2012-06-24 | 2012-07-07 | -0d | 124.88d | start on 2012-06-23 | 3 | ENP | 3 |
| PRT45 |  | Flanges | 45d | 2012-07-14 | 2012-08-27 | -0d | 1d | start on 2012-07-13 | 3 | ENP | 3 |
| PRT55 |  | Flanges | 45d | 2012-07-14 | 2012-08-27 | -0d | 1d | start on 2012-07-13 | 3 | ENP | 3 |
| PRT65 |  | Flanges | 45d | 2012-07-14 | 2012-08-27 | -0d | 1d | start on 2012-07-13 | 3 | ENP | 3 |
| PRT75 |  | Flanges | 45d | 2012-07-14 | 2012-08-27 | -0d | 1d | start on 2012-07-13 | 3 | ENP | 3 |
| PRT44 |  | Piping valves Bulk material 2nd batch | 14d | 2012-07-23 | 2012-08-05 | -0d | 95.88d | start on 2012-07-22 | 3 | ENP | 3 |
| PRT54 |  | Piping valves Bulk material 2nd batch | 14d | 2012-07-23 | 2012-08-05 | -0d | 95.88d | start on 2012-07-22 | 3 | ENP | 3 |
| PRT64 |  | Piping valves Bulk material 2nd batch | 14d | 2012-07-23 | 2012-08-05 | -0d | 95.88d | start on 2012-07-22 | 3 | ENP | 3 |
| PRT74 |  | Piping valves Bulk material 2nd batch | 14d | 2012-07-23 | 2012-08-05 | -0d | 95.88d | start on 2012-07-22 | 3 | ENP | 3 |
| PRT47 |  | Pressure regulator Valve | 30d | 2012-07-25 | 2012-08-23 | -0d | 153.88d | start on 2012-07-24 | 3 | ENP | 3 |
| PRT57 |  | Pressure regulator Valve | 30d | 2012-07-25 | 2012-08-23 | -0d | 153.88d | start on 2012-07-24 | 3 | ENP | 3 |
| PRT67 |  | Pressure regulator Valve | 30d | 2012-07-25 | 2012-08-23 | -0d | 153.88d | start on 2012-07-24 | 3 | ENP | 3 |
| PRT77 |  | Pressure regulator Valve | 30d | 2012-07-25 | 2012-08-23 | -0d | 153.88d | start on 2012-07-24 | 3 | ENP | 3 |
| PRT48 |  | Shutdown Valve | 31d | 2012-08-05 | 2012-09-04 | -0d | 141.88d | start on 2012-08-04 | 3 | ENP | 3 |
| PRT58 |  | Shutdown Valve | 31d | 2012-08-05 | 2012-09-04 | -0d | 141.88d | start on 2012-08-04 | 3 | ENP | 3 |
| PRT68 |  | Shutdown Valve | 31d | 2012-08-05 | 2012-09-04 | -0d | 141.88d | start on 2012-08-04 | 3 | ENP | 3 |
| PRT78 |  | Shutdown Valve | 31d | 2012-08-05 | 2012-09-04 | -0d | 141.88d | start on 2012-08-04 | 3 | ENP | 3 |

| ID | WBS | Activity | Duration | Start | Finish | Total float | Free float | Constraint | Phase-2 | Resp | Work Package |
| --- | --- | --- | --- | --- | --- | --- | --- | --- | --- | --- | --- |
|  | 4 | **Equipment** |  | 2012-05-09 | 2012-08-11 |  |  |  |  |  |  |
| PRT49 |  | Chemical Injection PKG. | 45d | 2012-05-09 | 2012-06-22 | -0d | 158d | start on 2012-05-08 | 3 | ENP | 3 |
| PRT59 |  | Chemical Injection PKG. | 45d | 2012-05-09 | 2012-06-22 | -0d | 158d | start on 2012-05-08 | 3 | ENP | 3 |
| PRT69 |  | Chemical Injection PKG. | 45d | 2012-05-09 | 2012-06-22 | -0d | 158d | start on 2012-05-08 | 3 | ENP | 3 |
| PRT79 |  | Chemical Injection PKG. | 45d | 2012-05-09 | 2012-06-22 | -0d | 158d | start on 2012-05-08 | 3 | ENP | 3 |
| PRT50 |  | Launcher recivier | 45d | 2012-06-16 | 2012-07-30 | -0d | 120d | start on 2012-06-15 | 3 | ENP | 3 |
| PRT60 |  | Launcher recivier | 45d | 2012-06-16 | 2012-07-30 | -0d | 120d | start on 2012-06-15 | 3 | ENP | 3 |
| PRT70 |  | Launcher recivier | 45d | 2012-06-16 | 2012-07-30 | -0d | 120d | start on 2012-06-15 | 3 | ENP | 3 |
| PRT80 |  | Launcher recivier | 45d | 2012-06-16 | 2012-07-30 | -0d | 120d | start on 2012-06-15 | 3 | ENP | 3 |
| PRT111 |  | Vent KOD | 45d | 2012-06-28 | 2012-08-11 | -0d | 108d | start on 2012-06-27 | 3 | ENP | 3 |
| PRT112 |  | Open Drain Tank | 45d | 2012-06-28 | 2012-08-11 | -0d | 78d | start on 2012-06-27 | 3 | ENP | 3 |
| PRT131 |  | Vent KOD | 45d | 2012-06-28 | 2012-08-11 | -0d | 108d | start on 2012-06-27 | 3 | ENP | 3 |
| PRT132 |  | Open Drain Tank | 45d | 2012-06-28 | 2012-08-11 | -0d | 78d | start on 2012-06-27 | 3 | ENP | 3 |
| PRT151 |  | Vent KOD | 45d | 2012-06-28 | 2012-08-11 | -0d | 108d | start on 2012-06-27 | 3 | ENP | 3 |
| PRT152 |  | Open Drain Tank | 45d | 2012-06-28 | 2012-08-11 | -0d | 78d | start on 2012-06-27 | 3 | ENP | 3 |
| PRT91 |  | Vent KOD | 45d | 2012-06-28 | 2012-08-11 | -0d | 108d | start on 2012-06-27 | 3 | ENP | 3 |
| PRT92 |  | Open Drain Tank | 45d | 2012-06-28 | 2012-08-11 | -0d | 78d | start on 2012-06-27 | 3 | ENP | 3 |
|  | 5 | **E&I Material** |  | 2012-04-06 | 2012-09-16 |  |  |  |  |  |  |
|  | 1 | **Electrical Material** |  | 2012-05-24 | 2012-09-06 |  |  |  |  |  |  |
| PRE102 |  | Cathodic Protection | 45d | 2012-05-24 | 2012-07-07 | -0d | 125d | start on 2012-05-23 | 3 | ENP | 4 |
| PRE122 |  | Cathodic Protection | 45d | 2012-05-24 | 2012-07-07 | -0d | 125d | start on 2012-05-23 | 3 | ENP | 4 |
| PRE142 |  | Cathodic Protection | 45d | 2012-05-24 | 2012-07-07 | -0d | 125d | start on 2012-05-23 | 3 | ENP | 4 |
| PRE82 |  | Cathodic Protection | 45d | 2012-05-24 | 2012-07-07 | -0d | 125d | start on 2012-05-23 | 3 | ENP | 4 |
| PRE103 |  | Solar Power | 45d | 2012-06-04 | 2012-07-18 | -0d | 114d | start on 2012-06-03 | 3 | ENP | 3 |
| PRE123 |  | Solar Power | 45d | 2012-06-04 | 2012-07-18 | -0d | 114d | start on 2012-06-03 | 3 | ENP | 3 |
| PRE143 |  | Solar Power | 45d | 2012-06-04 | 2012-07-18 | -0d | 114d | start on 2012-06-03 | 3 | ENP | 3 |
| PRE83 |  | Solar Power | 45d | 2012-06-04 | 2012-07-18 | -0d | 114d | start on 2012-06-03 | 3 | ENP | 3 |
| PRE101 |  | Electrical Bulks | 45d | 2012-07-24 | 2012-09-06 | -0d | 64d | start on 2012-07-23 | 3 | ENP | 3 |
| PRE121 |  | Electrical Bulks | 45d | 2012-07-24 | 2012-09-06 | -0d | 64d | start on 2012-07-23 | 3 | ENP | 3 |
| PRE141 |  | Electrical Bulks | 45d | 2012-07-24 | 2012-09-06 | -0d | 64d | start on 2012-07-23 | 3 | ENP | 3 |
| PRE81 |  | Electrical Bulks | 45d | 2012-07-24 | 2012-09-06 | -0d | 64d | start on 2012-07-23 | 3 | ENP | 3 |

| ID | WBS | Activity | Duration | Start | Finish | Total float | Free float | Constraint | Phase-2 | Resp | Work Package |
| --- | --- | --- | --- | --- | --- | --- | --- | --- | --- | --- | --- |
|  | 2 | **F&G Material** |  | 2012-06-28 | 2012-08-20 |  |  |  |  |  |  |
| PRE45 |  | Fire fighting system | 45d | 2012-06-28 | 2012-08-11 | -0d | 90d | start on 2012-06-27 | 3 | ENP | 3 |
| PRE55 |  | Fire fighting system | 45d | 2012-06-28 | 2012-08-11 | -0d | 90d | start on 2012-06-27 | 3 | ENP | 3 |
| PRE65 |  | Fire fighting system | 45d | 2012-06-28 | 2012-08-11 | -0d | 90d | start on 2012-06-27 | 3 | ENP | 3 |
| PRE75 |  | Fire fighting system | 45d | 2012-06-28 | 2012-08-11 | -0d | 90d | start on 2012-06-27 | 3 | ENP | 3 |
| PRE46 |  | Life Saving Equipment | 45d | 2012-07-05 | 2012-08-18 | -0d | 83d | start on 2012-07-04 | 3 | ENP | 3 |
| PRE56 |  | Life Saving Equipment | 45d | 2012-07-05 | 2012-08-18 | -0d | 83d | start on 2012-07-04 | 3 | ENP | 3 |
| PRE66 |  | Life Saving Equipment | 45d | 2012-07-05 | 2012-08-18 | -0d | 83d | start on 2012-07-04 | 3 | ENP | 3 |
| PRE76 |  | Life Saving Equipment | 45d | 2012-07-05 | 2012-08-18 | -0d | 83d | start on 2012-07-04 | 3 | ENP | 3 |
| PRE44 |  | F&G Detector | 45d | 2012-07-07 | 2012-08-20 | -0d | 81d | start on 2012-07-06 | 3 | ENP | 3 |
| PRE54 |  | F&G Detector | 45d | 2012-07-07 | 2012-08-20 | -0d | 81d | start on 2012-07-06 | 3 | ENP | 3 |
| PRE64 |  | F&G Detector | 45d | 2012-07-07 | 2012-08-20 | -0d | 81d | start on 2012-07-06 | 3 | ENP | 3 |
| PRE74 |  | F&G Detector | 45d | 2012-07-07 | 2012-08-20 | -0d | 81d | start on 2012-07-06 | 3 | ENP | 3 |
|  | 3 | **Telecom Material** |  | 2012-04-06 | 2012-07-19 |  |  |  |  |  |  |
| PRE48 |  | Navegation Aids | 45d | 2012-04-06 | 2012-05-20 | -0d | 173d | start on 2012-04-05 | 3 | ENP | 3 |
| PRE58 |  | Navegation Aids | 45d | 2012-04-06 | 2012-05-20 | -0d | 173d | start on 2012-04-05 | 3 | ENP | 3 |
| PRE68 |  | Navegation Aids | 45d | 2012-04-06 | 2012-05-20 | -0d | 173d | start on 2012-04-05 | 3 | ENP | 3 |
| PRE78 |  | Navegation Aids | 45d | 2012-04-06 | 2012-05-20 | -0d | 173d | start on 2012-04-05 | 3 | ENP | 3 |
| PRE47 |  | Radar system | 30d | 2012-06-20 | 2012-07-19 | -0d | 113d | start on 2012-06-19 | 3 | ENP | 3 |
| PRE57 |  | Radar system | 30d | 2012-06-20 | 2012-07-19 | -0d | 113d | start on 2012-06-19 | 3 | ENP | 3 |
| PRE67 |  | Radar system | 30d | 2012-06-20 | 2012-07-19 | -0d | 113d | start on 2012-06-19 | 3 | ENP | 3 |
| PRE77 |  | Radar system | 30d | 2012-06-20 | 2012-07-19 | -0d | 113d | start on 2012-06-19 | 3 | ENP | 3 |
|  | 4 | **Instrument Material** |  | 2012-06-23 | 2012-09-16 |  |  |  |  |  |  |
| PRE111 |  | Field Instrument | 45d | 2012-06-23 | 2012-08-06 | -0d | 95d | start on 2012-06-22 | 3 | ENP | 3 |
| PRE131 |  | Field Instrument | 45d | 2012-06-23 | 2012-08-06 | -0d | 95d | start on 2012-06-22 | 3 | ENP | 3 |
| PRE151 |  | Field Instrument | 45d | 2012-06-23 | 2012-08-06 | -0d | 95d | start on 2012-06-22 | 3 | ENP | 3 |
| PRE91 |  | Field Instrument | 45d | 2012-06-23 | 2012-08-06 | -0d | 95d | start on 2012-06-22 | 3 | ENP | 3 |
| PRE112 |  | multi phase flow meter | 57d | 2012-07-18 | 2012-09-12 | -0d | 136.88d | start on 2012-07-17 | 3 | ENP | 3 |
| PRE132 |  | multi phase flow meter | 57d | 2012-07-18 | 2012-09-12 | -0d | 136.88d | start on 2012-07-17 | 3 | ENP | 3 |
| PRE152 |  | multi phase flow meter | 57d | 2012-07-18 | 2012-09-12 | -0d | 136.88d | start on 2012-07-17 | 3 | ENP | 3 |
| PRE50 |  | Instrument Mechanical Bulk | 35d | 2012-07-18 | 2012-08-21 | -0d | 80d | start on 2012-07-17 | 3 | ENP | 3 |
| PRE60 |  | Instrument Mechanical Bulk | 35d | 2012-07-18 | 2012-08-21 | -0d | 80d | start on 2012-07-17 | 3 | ENP | 3 |
| PRE70 |  | Instrument Mechanical Bulk | 35d | 2012-07-18 | 2012-08-21 | -0d | 80d | start on 2012-07-17 | 3 | ENP | 3 |
| PRE80 |  | Instrument Mechanical Bulk | 35d | 2012-07-18 | 2012-08-21 | -0d | 80d | start on 2012-07-17 | 3 | ENP | 3 |
| PRE92 |  | multi phase flow meter | 57d | 2012-07-18 | 2012-09-12 | -0d | 136.88d | start on 2012-07-17 | 3 | ENP | 3 |
| PRE49 |  | Instrument Electical Bulk | 30d | 2012-07-25 | 2012-08-23 | -0d | 78d | start on 2012-07-24 | 3 | ENP | 3 |
| PRE59 |  | Instrument Electical Bulk | 30d | 2012-07-25 | 2012-08-23 | -0d | 78d | start on 2012-07-24 | 3 | ENP | 3 |
| PRE69 |  | Instrument Electical Bulk | 30d | 2012-07-25 | 2012-08-23 | -0d | 78d | start on 2012-07-24 | 3 | ENP | 3 |
| PRE79 |  | Instrument Electical Bulk | 30d | 2012-07-25 | 2012-08-23 | -0d | 78d | start on 2012-07-24 | 3 | ENP | 3 |
| PRE113 |  | Safe Guard system | 30d | 2012-08-18 | 2012-09-16 | -0d | 132.88d | start on 2012-08-17 | 3 | ENP | 3 |
| PRE133 |  | Safe Guard system | 30d | 2012-08-18 | 2012-09-16 | -0d | 132.88d | start on 2012-08-17 | 3 | ENP | 3 |
| PRE153 |  | Safe Guard system | 30d | 2012-08-18 | 2012-09-16 | -0d | 132.88d | start on 2012-08-17 | 3 | ENP | 3 |
| PRE93 |  | Safe Guard system | 30d | 2012-08-18 | 2012-09-16 | -0d | 132.88d | start on 2012-08-17 | 3 | ENP | 3 |

| ID | WBS | Activity | Type | Duration | Start | Finish | Predecessors | Total float | Free float | Calendar | Phase-2 | Resp | Work Package |
| --- | --- | --- | --- | --- | --- | --- | --- | --- | --- | --- | --- | --- | --- |
|  | 6 | **Pre-Fabrication** |  |  | 2012-06-13 | 2012-11-08 |  |  |  |  |  |  |  |
| PF41 |  | Pre-Fabrication of Steel Structure ( Jacket & Piles) |  | 120d | 2012-06-13 | 2012-11-08 | ENS43 SS+14d, ENS44 FF+60d, PRS44 | 26d | 0d | 6 DAY WORK PER WEEK | 4 | PTJ | 1 |
| PF51 |  | Pre-Fabrication of Steel Structure ( Jacket & Piles) |  | 120d | 2012-06-13 | 2012-11-08 | ENS53 SS+14d, ENS54 FF+60d, PRS54 | 26d | 0d | 6 DAY WORK PER WEEK | 4 | PTJ | 1 |
| PF61 |  | Pre-Fabrication of Steel Structure ( Jacket & Piles) |  | 120d | 2012-06-13 | 2012-11-08 | ENS63 SS+14d, ENS64 FF+60d, PRS64 | 26d | 0d | 6 DAY WORK PER WEEK | 4 | PTJ | 1 |
| PF71 |  | Pre-Fabrication of Steel Structure ( Jacket & Piles) |  | 120d | 2012-06-13 | 2012-11-08 | ENS73 SS+14d, ENS74 FF+60d, PRS74 | 26d | 0d | 6 DAY WORK PER WEEK | 4 | PTJ | 1 |
|  | 4 | **Fabrication** |  |  | 2012-06-13 | 2013-03-30 |  |  |  |  |  |  |  |
|  | 1 | **Jacket and Piles Fabrication** |  |  | 2012-06-21 | 2013-01-22 |  |  |  |  |  |  |  |
| JK41 |  | Jacket , Boat Landing Fabrication & Painting |  | 175d | 2012-06-21 | 2013-01-22 | PF41 SS+7d | 26d | 0d | 6 DAY WORK PER WEEK | 4 | PTJ | 1 |
| JK51 |  | Jacket , Boat Landing Fabrication & Painting |  | 175d | 2012-06-21 | 2013-01-22 | PF51 SS+7d | 26d | 0d | 6 DAY WORK PER WEEK | 4 | PTJ | 1 |
| JK61 |  | Jacket , Boat Landing Fabrication & Painting |  | 175d | 2012-06-21 | 2013-01-22 | PF61 SS+7d | 26d | 0d | 6 DAY WORK PER WEEK | 4 | PTJ | 1 |
| JK71 |  | Jacket , Boat Landing Fabrication & Painting |  | 175d | 2012-06-21 | 2013-01-22 | PF71 SS+7d | 26d | 0d | 6 DAY WORK PER WEEK | 4 | PTJ | 1 |
| JK42 |  | Piles Fabrication & Marking |  | 125d | 2012-08-06 | 2013-01-08 | PF41 SS+45d | 74d |  | 6 DAY WORK PER WEEK | 4 | PTJ | 1 |
| JK52 |  | Piles Fabrication & Marking |  | 125d | 2012-08-06 | 2013-01-08 | PF51 SS+45d | 74d |  | 6 DAY WORK PER WEEK | 4 | PTJ | 1 |
| JK62 |  | Piles Fabrication & Marking |  | 125d | 2012-08-06 | 2013-01-08 | PF61 SS+45d | 74d |  | 6 DAY WORK PER WEEK | 4 | PTJ | 1 |
| JK72 |  | Piles Fabrication & Marking |  | 125d | 2012-08-06 | 2013-01-08 | PF71 SS+45d | 74d |  | 6 DAY WORK PER WEEK | 4 | PTJ | 1 |
|  | 3 | **P/L Spools Fabrication** |  |  | 2012-06-30 | 2012-10-17 |  |  |  |  |  |  |  |
| PL41 |  | P/L Spools Fabrication |  | 90d | 2012-06-30 | 2012-10-17 | PRP41 SS+30d, PRP82 FF+45d | 104d | 0d | 6 DAY WORK PER WEEK | 4 | PTJ | 4 |
| PL51 |  | P/L Spools Fabrication |  | 90d | 2012-06-30 | 2012-10-17 | PRP51 SS+30d, PRP102 FF+45d | 104d | 0d | 6 DAY WORK PER WEEK | 4 | PTJ | 4 |
| PL61 |  | P/L Spools Fabrication |  | 90d | 2012-06-30 | 2012-10-17 | PRP61 SS+30d, PRP122 FF+45d | 104d | 0d | 6 DAY WORK PER WEEK | 4 | PTJ | 4 |
| PL71 |  | P/L Spools Fabrication |  | 90d | 2012-06-30 | 2012-10-17 | PRP71 SS+30d, PRP142 FF+45d | 104d | 0d | 6 DAY WORK PER WEEK | 4 | PTJ | 4 |
|  | 2 | **Deck Fabrication** |  |  | 2012-06-13 | 2013-03-30 |  |  |  |  |  |  |  |
|  | 1 | **Deck Structure Fabrication** |  |  | 2012-06-13 | 2013-03-30 |  |  |  |  |  |  |  |
| DS051 |  | Fabrication and Painting of Below Production Deck/Legs |  | 105d | 2012-06-13 | 2012-10-18 | PRS44 | 0d |  | 6 DAY WORK PER WEEK | 4 | PTJ | 2 |
| DS052 |  | Fabrication and Painting of Production Deck |  | 120d | 2012-06-13 | 2012-11-08 | DS051 SS | 0d |  | 6 DAY WORK PER WEEK | 4 | PTJ | 2 |
| DS061 |  | Fabrication and Painting of Below Production Deck/Legs |  | 105d | 2012-06-13 | 2012-10-18 | PRS54 | 0d |  | 6 DAY WORK PER WEEK | 4 | PTJ | 2 |
| DS062 |  | Fabrication and Painting of Production Deck |  | 120d | 2012-06-13 | 2012-11-08 | DS061 SS | 0d |  | 6 DAY WORK PER WEEK | 4 | PTJ | 2 |
| DS071 |  | Fabrication and Painting of Below Production Deck/Legs |  | 105d | 2012-06-13 | 2012-10-18 | PRS64 | 0d |  | 6 DAY WORK PER WEEK | 4 | PTJ | 2 |
| DS072 |  | Fabrication and Painting of Production Deck |  | 120d | 2012-06-13 | 2012-11-08 | DS071 SS | 0d |  | 6 DAY WORK PER WEEK | 4 | PTJ | 2 |
| DS081 |  | Fabrication and Painting of Below Production Deck/Legs |  | 105d | 2012-06-13 | 2012-10-18 | PRS74 | 0d |  | 6 DAY WORK PER WEEK | 4 | PTJ | 2 |
| DS082 |  | Fabrication and Painting of Production Deck |  | 120d | 2012-06-13 | 2012-11-08 | DS081 SS | 0d |  | 6 DAY WORK PER WEEK | 4 | PTJ | 2 |
| DS091 |  | Fabrication and Painting of Below Production Deck/Legs |  | 105d | 2012-06-13 | 2012-10-18 |  | 0d |  | 6 DAY WORK PER WEEK | 4 | PTJ | 2 |
| DS092 |  | Fabrication and Painting of Production Deck |  | 120d | 2012-06-13 | 2012-11-08 | DS091 SS | 0d |  | 6 DAY WORK PER WEEK | 4 | PTJ | 2 |
| DS053 |  | Fabrication and Paint of Heli-Deck ( & Lifting if Required) |  | 120d | 2012-08-27 | 2013-01-20 | DS052 SS+60d | 50d | 0d | 6 DAY WORK PER WEEK | 4 | PTJ | 2 |
| DS063 |  | Fabrication and Paint of Heli-Deck ( & Lifting if Required) |  | 120d | 2012-08-27 | 2013-01-20 | DS062 SS+60d | 50d | 0d | 6 DAY WORK PER WEEK | 4 | PTJ | 2 |
| DS073 |  | Fabrication and Paint of Heli-Deck ( & Lifting if Required) |  | 120d | 2012-08-27 | 2013-01-20 | DS072 SS+60d | 50d | 0d | 6 DAY WORK PER WEEK | 4 | PTJ | 2 |
| DS083 |  | Fabrication and Paint of Heli-Deck ( & Lifting if Required) |  | 120d | 2012-08-27 | 2013-01-20 | DS082 SS+60d | 50d | 0d | 6 DAY WORK PER WEEK | 4 | PTJ | 2 |
| DS093 |  | Fabrication and Paint of Heli-Deck ( & Lifting if Required) |  | 120d | 2012-08-27 | 2013-01-20 | DS092 SS+60d | 50d | 0d | 6 DAY WORK PER WEEK | 4 | PTJ | 2 |
| DS056 |  | Fabrication & Installation of Deck Str. Miscellence / Padeyes |  | 120d | 2012-10-04 | 2013-03-02 | DS057 FF+6d, DS055 FF+30d | 10d | 3d | 6 DAY WORK PER WEEK | 4 | PTJ | 2 |
| DS066 |  | Fabrication & Installation of Deck Str. Miscellence / Padeyes |  | 120d | 2012-10-04 | 2013-03-02 | DS067 FF+6d, DS065 FF+30d | 10d | 3d | 6 DAY WORK PER WEEK | 4 | PTJ | 2 |
| DS076 |  | Fabrication & Installation of Deck Str. Miscellence / Padeyes |  | 120d | 2012-10-04 | 2013-03-02 | DS077 FF+6d, DS075 FF+30d | 10d | 3d | 6 DAY WORK PER WEEK | 4 | PTJ | 2 |
| DS086 |  | Fabrication & Installation of Deck Str. Miscellence / Padeyes |  | 120d | 2012-10-04 | 2013-03-02 | DS087 FF+6d, DS085 FF+30d | 10d | 3d | 6 DAY WORK PER WEEK | 4 | PTJ | 2 |
| DS096 |  | Fabrication & Installation of Deck Str. Miscellence / Padeyes |  | 120d | 2012-10-04 | 2013-03-02 | DS097 FF+6d, DS095 FF+30d | 10d | 3d | 6 DAY WORK PER WEEK | 4 | PTJ | 2 |
| DS054 |  | Lifting Below Production Deck on High Cups |  | 5d | 2012-10-20 | 2012-10-24 | DS051 | 3d | 0d | 6 DAY WORK PER WEEK | 4 | PTJ | 2 |
| DS064 |  | Lifting Below Production Deck on High Cups |  | 5d | 2012-10-20 | 2012-10-24 | DS061 | 3d | 0d | 6 DAY WORK PER WEEK | 4 | PTJ | 2 |
| DS074 |  | Lifting Below Production Deck on High Cups |  | 5d | 2012-10-20 | 2012-10-24 | DS071 | 3d | 0d | 6 DAY WORK PER WEEK | 4 | PTJ | 2 |
| DS084 |  | Lifting Below Production Deck on High Cups |  | 5d | 2012-10-20 | 2012-10-24 | DS081 | 3d | 0d | 6 DAY WORK PER WEEK | 4 | PTJ | 2 |
| DS094 |  | Lifting Below Production Deck on High Cups |  | 5d | 2012-10-20 | 2012-10-24 | DS091 | 3d | 0d | 6 DAY WORK PER WEEK | 4 | PTJ | 2 |
| DS055 |  | Lifting Production Deck on Below Production Level |  | 15d | 2012-11-10 | 2012-11-27 | DS052, TSF053 | 0d |  | 6 DAY WORK PER WEEK | 4 | PTJ | 2 |
| DS065 |  | Lifting Production Deck on Below Production Level |  | 15d | 2012-11-10 | 2012-11-27 | DS062, TSF063 | 0d |  | 6 DAY WORK PER WEEK | 4 | PTJ | 2 |
| DS075 |  | Lifting Production Deck on Below Production Level |  | 15d | 2012-11-10 | 2012-11-27 | DS072, TSF073 | 0d |  | 6 DAY WORK PER WEEK | 4 | PTJ | 2 |
| DS085 |  | Lifting Production Deck on Below Production Level |  | 15d | 2012-11-10 | 2012-11-27 | DS082, TSF083 | 0d |  | 6 DAY WORK PER WEEK | 4 | PTJ | 2 |
| DS095 |  | Lifting Production Deck on Below Production Level |  | 15d | 2012-11-10 | 2012-11-27 | DS092 | 0d |  | 6 DAY WORK PER WEEK | 4 | PTJ | 2 |
| DS057 |  | Physical Weighting | milestone | 0d | 2013-02-23 | 2013-02-23 | TSF042 | 10d | 0d | 6 DAY WORK PER WEEK | 4 | PTJ | 3 |
| DS067 |  | Physical Weighting | milestone | 0d | 2013-02-23 | 2013-02-23 | TSF052 | 10d | 0d | 6 DAY WORK PER WEEK | 4 | PTJ | 3 |
| DS077 |  | Physical Weighting | milestone | 0d | 2013-02-23 | 2013-02-23 | TSF062 | 10d | 0d | 6 DAY WORK PER WEEK | 4 | PTJ | 3 |
| DS087 |  | Physical Weighting | milestone | 0d | 2013-02-23 | 2013-02-23 | TSF072 | 10d | 0d | 6 DAY WORK PER WEEK | 4 | PTJ | 3 |
| DS097 |  | Physical Weighting | milestone | 0d | 2013-02-23 | 2013-02-23 |  | 10d | 0d | 6 DAY WORK PER WEEK | 4 | PTJ | 3 |
| DS048 |  | Clearanse of structure (Fab. & Painting ) Punch List |  | 21d | 2013-03-06 | 2013-03-30 | TS48 FF, DS056 | 7d |  | 6 DAY WORK PER WEEK | 4 | PTJ | 2 |
| DS058 |  | Clearanse of structure (Fab. & Painting ) Punch List |  | 21d | 2013-03-06 | 2013-03-30 | TS58 FF, DS066 | 7d |  | 6 DAY WORK PER WEEK | 4 | PTJ | 2 |
| DS068 |  | Clearanse of structure (Fab. & Painting ) Punch List |  | 21d | 2013-03-06 | 2013-03-30 | TS68 FF, DS076 | 7d |  | 6 DAY WORK PER WEEK | 4 | PTJ | 2 |
| DS078 |  | Clearanse of structure (Fab. & Painting ) Punch List |  | 21d | 2013-03-06 | 2013-03-30 | TS78 FF, DS086 | 7d |  | 6 DAY WORK PER WEEK | 4 | PTJ | 2 |

| ID | WBS | Activity | Duration | Start | Finish | Predecessors | Total float | Calendar | Phase-2 | Resp | Work Package |
| --- | --- | --- | --- | --- | --- | --- | --- | --- | --- | --- | --- |
|  | 2 | **TSF Fabrication and Erection** |  | 2012-07-21 | 2013-03-30 |  |  |  |  |  |  |
|  | 1 | **Piping fabrication & erection** |  | 2012-07-21 | 2013-02-23 |  |  |  |  |  |  |
| TFS041 |  | Piping and Piping Supports Fabrication and Painting | 100d | 2012-07-21 | 2012-11-24 | ENT43, PRT81 SS+7d, PRT82 FF+30d, PRT45 SS+6d, PRT43 FF+15d, PRT44 FF+15d | 40d | 6 DAY WORK PER WEEK | 4 | PTJ | 3 |
| TFS051 |  | Piping and Piping Supports Fabrication and Painting | 100d | 2012-07-21 | 2012-11-24 | ENT53, PRT101 SS+7d, PRT102 FF+30d, PRT55 SS+6d, PRT53 FF+15d, PRT54 FF+15d | 40d | 6 DAY WORK PER WEEK | 4 | PTJ | 3 |
| TFS061 |  | Piping and Piping Supports Fabrication and Painting | 100d | 2012-07-21 | 2012-11-24 | ENT63, PRT121 SS+7d, PRT122 FF+30d, PRT65 SS+6d, PRT63 FF+15d, PRT64 FF+15d | 40d | 6 DAY WORK PER WEEK | 4 | PTJ | 3 |
| TFS071 |  | Piping and Piping Supports Fabrication and Painting | 100d | 2012-07-21 | 2012-11-24 | ENT73, PRT141 SS+7d, PRT142 FF+30d, PRT75 SS+6d, PRT73 FF+15d, PRT74 FF+15d | 40d | 6 DAY WORK PER WEEK | 4 | PTJ | 3 |
| TSF042 |  | Piping and Piping Supports Erection | 75d | 2012-11-25 | 2013-02-23 | DS054, TFS041 SS+60d, DS055 SS+12d, PRT46 FF+30d, PRT47 FF+30d, PRT48 FF+30d, TSF054 FF+30d | 0d | 6 DAY WORK PER WEEK | 4 | PTJ | 3 |
| TSF052 |  | Piping and Piping Supports Erection | 75d | 2012-11-25 | 2013-02-23 | DS064, TFS051 SS+60d, DS065 SS+12d, PRT56 FF+30d, PRT57 FF+30d, PRT58 FF+30d, TSF064 FF+30d | 0d | 6 DAY WORK PER WEEK | 4 | PTJ | 3 |
| TSF062 |  | Piping and Piping Supports Erection | 75d | 2012-11-25 | 2013-02-23 | DS074, TFS061 SS+60d, DS075 SS+12d, PRT66 FF+30d, PRT67 FF+30d, PRT68 FF+30d, TSF074 FF+30d | 0d | 6 DAY WORK PER WEEK | 4 | PTJ | 3 |
| TSF072 |  | Piping and Piping Supports Erection | 75d | 2012-11-25 | 2013-02-23 | DS084, TFS071 SS+60d, DS085 SS+12d, PRT76 FF+30d, PRT77 FF+30d, PRT78 FF+30d, TSF084 FF+30d | 0d | 6 DAY WORK PER WEEK | 4 | PTJ | 3 |
|  | 2 | **Equipment erection** |  | 2012-10-29 | 2012-12-23 |  |  |  |  |  |  |
| TSF053 |  | Equipment Erection on Below Production Level | 7d | 2012-10-29 | 2012-11-05 | ENS48, DS054, PRT92 | 3d | 6 DAY WORK PER WEEK | 4 | PTJ | 3 |
| TSF063 |  | Equipment Erection on Below Production Level | 7d | 2012-10-29 | 2012-11-05 | ENS58, DS064, PRT112 | 3d | 6 DAY WORK PER WEEK | 4 | PTJ | 3 |
| TSF073 |  | Equipment Erection on Below Production Level | 7d | 2012-10-29 | 2012-11-05 | ENS68, DS074, PRT132 | 3d | 6 DAY WORK PER WEEK | 4 | PTJ | 3 |
| TSF083 |  | Equipment Erection on Below Production Level | 7d | 2012-10-29 | 2012-11-05 | ENS78, DS084, PRT152 | 3d | 6 DAY WORK PER WEEK | 4 | PTJ | 3 |
| TSF093 |  | Equipment Erection on Below Production Level | 7d | 2012-10-29 | 2012-11-05 |  | 3d | 6 DAY WORK PER WEEK | 4 | PTJ | 3 |
| TSF054 |  | Equipment Erection on Production Level | 15d | 2012-11-28 | 2012-12-15 | DS055, ENS48, PRT49, PRT50, PRT91 | 27d | 6 DAY WORK PER WEEK | 4 | PTJ | 3 |
| TSF064 |  | Equipment Erection on Production Level | 15d | 2012-11-28 | 2012-12-15 | DS065, ENS58, PRT59, PRT60, PRT111 | 27d | 6 DAY WORK PER WEEK | 4 | PTJ | 3 |
| TSF074 |  | Equipment Erection on Production Level | 15d | 2012-11-28 | 2012-12-15 | DS075, ENS68, PRT69, PRT70, PRT131 | 27d | 6 DAY WORK PER WEEK | 4 | PTJ | 3 |
| TSF084 |  | Equipment Erection on Production Level | 15d | 2012-11-28 | 2012-12-15 | DS085, ENS78, PRT79, PRT80, PRT151 | 27d | 6 DAY WORK PER WEEK | 4 | PTJ | 3 |
| TSF094 |  | Equipment Erection on Production Level | 15d | 2012-11-28 | 2012-12-15 |  | 27d | 6 DAY WORK PER WEEK | 4 | PTJ | 3 |
| TSF055 |  | Equipment Erection on Helideck | 7d | 2012-12-16 | 2012-12-23 | ENS48, DS053 SS+90d, PRE83 | 50d | 6 DAY WORK PER WEEK | 4 | PTJ | 3 |
| TSF065 |  | Equipment Erection on Helideck | 7d | 2012-12-16 | 2012-12-23 | ENS58, DS063 SS+90d, PRE103 | 50d | 6 DAY WORK PER WEEK | 4 | PTJ | 3 |
| TSF075 |  | Equipment Erection on Helideck | 7d | 2012-12-16 | 2012-12-23 | ENS68, DS073 SS+90d, PRE123 | 50d | 6 DAY WORK PER WEEK | 4 | PTJ | 3 |
| TSF085 |  | Equipment Erection on Helideck | 7d | 2012-12-16 | 2012-12-23 | ENS78, DS083 SS+90d, PRE143 | 50d | 6 DAY WORK PER WEEK | 4 | PTJ | 3 |
| TSF095 |  | Equipment Erection on Helideck | 7d | 2012-12-16 | 2012-12-23 |  | 50d | 6 DAY WORK PER WEEK | 4 | PTJ | 3 |

| ID | WBS | Activity | Type | Duration | Start | Finish | Predecessors | Total float | Free float | Constraint | Calendar | Phase-2 | Resp | Work Package |
| --- | --- | --- | --- | --- | --- | --- | --- | --- | --- | --- | --- | --- | --- | --- |
|  | 3 | **E&I Activies** |  |  | 2012-11-10 | 2013-02-26 |  |  |  |  |  |  |  |  |
| TS47 |  | E&I Activity |  | 90d | 2012-11-10 | 2013-02-26 | ENE41 SS+7d, TSF042 FF+3d, DS055 FF+45d, PRE81, PRE82, PRE83, PRE44, PRE45, PRE46, PRE47, PRE48, PRE49, PRE50, PRE91, PRE92 FF+30d, PRE93 FF+30d | 2d |  |  | 6 DAY WORK PER WEEK | 4 | PTJ | 3 |
| TS57 |  | E&I Activity |  | 90d | 2012-11-10 | 2013-02-26 | ENE51 SS+7d, TSF052 FF+3d, DS065 FF+45d, PRE101, PRE102, PRE103, PRE54, PRE55, PRE56, PRE57, PRE58, PRE59, PRE60, PRE111, PRE112 FF+30d, PRE113 FF+30d | 2d |  |  | 6 DAY WORK PER WEEK | 4 | PTJ | 3 |
| TS67 |  | E&I Activity |  | 90d | 2012-11-10 | 2013-02-26 | ENE61 SS+7d, TSF062 FF+3d, DS075 FF+45d, PRE121, PRE122, PRE123, PRE64, PRE65, PRE66, PRE67, PRE68, PRE69, PRE70, PRE131, PRE132 FF+30d, PRE133 FF+30d | 2d |  |  | 6 DAY WORK PER WEEK | 4 | PTJ | 3 |
| TS77 |  | E&I Activity |  | 90d | 2012-11-10 | 2013-02-26 | ENE71 SS+7d, TSF072 FF+3d, DS085 FF+45d, PRE141, PRE142, PRE143, PRE74, PRE75, PRE76, PRE77, PRE78, PRE79, PRE80, PRE151, PRE152 FF+30d, PRE153 FF+30d | 2d |  |  | 6 DAY WORK PER WEEK | 4 | PTJ | 3 |
|  | 4 | **Pre-commissioning** |  |  | 2013-02-18 | 2013-03-30 |  |  |  |  |  |  |  |  |
| TS48 |  | Pre-commissioning " Piping Hydrotest , Reinstatment , Megering , Continuity Test and Touch Up " |  | 35d | 2013-02-18 | 2013-03-30 | TSF055 FF+30d, TSF042 FF+30d, TS47 FF+25d | 0d |  |  | 6 DAY WORK PER WEEK | 4 | PTJ | 3 |
| TS58 |  | Pre-commissioning " Piping Hydrotest , Reinstatment , Megering , Continuity Test and Touch Up " |  | 35d | 2013-02-18 | 2013-03-30 | TSF065 FF+30d, TSF052 FF+30d, TS57 FF+25d | 0d |  |  | 6 DAY WORK PER WEEK | 4 | PTJ | 3 |
| TS68 |  | Pre-commissioning " Piping Hydrotest , Reinstatment , Megering , Continuity Test and Touch Up " |  | 35d | 2013-02-18 | 2013-03-30 | TSF075 FF+30d, TSF062 FF+30d, TS67 FF+25d | 0d |  |  | 6 DAY WORK PER WEEK | 4 | PTJ | 3 |
| TS78 |  | Pre-commissioning " Piping Hydrotest , Reinstatment , Megering , Continuity Test and Touch Up " |  | 35d | 2013-02-18 | 2013-03-30 | TSF085 FF+30d, TSF072 FF+30d, TS77 FF+25d | 0d |  |  | 6 DAY WORK PER WEEK | 4 | PTJ | 3 |
|  | 5 | **L/O & Sea Fastening** |  |  | 2012-09-15 | 2013-04-07 |  |  |  |  |  |  |  |  |
|  | 3 | **01st Trip (P/L Spools 18" & 8")** |  |  | 2012-09-15 | 2012-10-22 |  |  |  |  |  |  |  |  |
| LOPS41 |  | Arrival of 01st Shipment Material Barge ( P/L Spools) | milestone | 0d | 2012-09-15 | 2012-09-15 |  | 0d | 16d | start on 2012-09-15 | 6 DAY WORK PER WEEK | 4 | PTJ | 4 |
| LOPS51 |  | Arrival of 01st Shipment Material Barge ( P/L Spools) | milestone | 0d | 2012-09-15 | 2012-09-15 |  | 0d | 16d | start on 2012-09-15 | 6 DAY WORK PER WEEK | 4 | PTJ | 4 |
| LOPS61 |  | Arrival of 01st Shipment Material Barge ( P/L Spools) | milestone | 0d | 2012-09-15 | 2012-09-15 |  | 0d | 16d | start on 2012-09-15 | 6 DAY WORK PER WEEK | 4 | PTJ | 4 |
| LOPS71 |  | Arrival of 01st Shipment Material Barge ( P/L Spools) | milestone | 0d | 2012-09-15 | 2012-09-15 |  | 0d | 16d | start on 2012-09-15 | 6 DAY WORK PER WEEK | 4 | PTJ | 4 |
| LOPS42 |  | 1st Shipment Material Barge Preparation |  | 12d | 2012-10-03 | 2012-10-17 | LOPS41, PL41 FF | 136d | 0d |  | 6 DAY WORK PER WEEK | 4 | PTJ | 4 |
| LOPS52 |  | 1st Shipment Material Barge Preparation |  | 12d | 2012-10-03 | 2012-10-17 | LOPS51, PL51 FF | 136d | 0d |  | 6 DAY WORK PER WEEK | 4 | PTJ | 4 |
| LOPS62 |  | 1st Shipment Material Barge Preparation |  | 12d | 2012-10-03 | 2012-10-17 | LOPS61, PL61 FF | 136d | 0d |  | 6 DAY WORK PER WEEK | 4 | PTJ | 4 |
| LOPS72 |  | 1st Shipment Material Barge Preparation |  | 12d | 2012-10-03 | 2012-10-17 | LOPS71, PL71 FF | 136d | 0d |  | 6 DAY WORK PER WEEK | 4 | PTJ | 4 |
| LOPS43 |  | L/O & Sea Fastening (P/L Spools 18" & 8") |  | 4d | 2012-10-18 | 2012-10-22 | LOPS42, PL41 | 136d | 0d |  | 6 DAY WORK PER WEEK | 4 | PTJ | 4 |
| LOPS53 |  | L/O & Sea Fastening (P/L Spools 18" & 8") |  | 4d | 2012-10-18 | 2012-10-22 | LOPS52, PL51 | 136d | 0d |  | 6 DAY WORK PER WEEK | 4 | PTJ | 4 |
| LOPS63 |  | L/O & Sea Fastening (P/L Spools 18" & 8") |  | 4d | 2012-10-18 | 2012-10-22 | LOPS62, PL61 | 136d | 0d |  | 6 DAY WORK PER WEEK | 4 | PTJ | 4 |
| LOPS73 |  | L/O & Sea Fastening (P/L Spools 18" & 8") |  | 4d | 2012-10-18 | 2012-10-22 | LOPS72, PL71 | 136d | 0d |  | 6 DAY WORK PER WEEK | 4 | PTJ | 4 |

| ID | WBS | Activity | Type | Duration | Start | Finish | Predecessors | Total float | Free float | Constraint | Calendar | Phase-2 | Resp | Work Package |
| --- | --- | --- | --- | --- | --- | --- | --- | --- | --- | --- | --- | --- | --- | --- |
|  | 1 | **02nd Trip (Jacket & Piles)** |  |  | 2012-12-01 | 2013-01-31 |  |  |  |  |  |  |  |  |
| LOJK41 |  | Arrival of 02nd Shipment Material Barge ( Jacket and Piles ) | milestone | 0d | 2012-12-01 | 2012-12-01 |  | 0d | 33d | start on 2012-12-01 | 6 DAY WORK PER WEEK | 4 | PTJ | 1 |
| LOJK51 |  | Arrival of 02nd Shipment Material Barge ( Jacket and Piles ) | milestone | 0d | 2012-12-01 | 2012-12-01 |  | 0d | 33d | start on 2012-12-01 | 6 DAY WORK PER WEEK | 4 | PTJ | 1 |
| LOJK61 |  | Arrival of 02nd Shipment Material Barge ( Jacket and Piles ) | milestone | 0d | 2012-12-01 | 2012-12-01 |  | 0d | 33d | start on 2012-12-01 | 6 DAY WORK PER WEEK | 4 | PTJ | 1 |
| LOJK71 |  | Arrival of 02nd Shipment Material Barge ( Jacket and Piles ) | milestone | 0d | 2012-12-01 | 2012-12-01 |  | 0d | 33d | start on 2012-12-01 | 6 DAY WORK PER WEEK | 4 | PTJ | 1 |
| LOJK42 |  | 02nd Shipment Material Barge Preparation |  | 12d | 2013-01-09 | 2013-01-22 | JK41 FF, PL41 FF, LOJK41, LOJK41 SS | 26d | 0d |  | 6 DAY WORK PER WEEK | 4 | PTJ | 1 |
| LOJK52 |  | 02nd Shipment Material Barge Preparation |  | 12d | 2013-01-09 | 2013-01-22 | JK51 FF, PL51 FF, LOJK51, LOJK51 SS | 26d | 0d |  | 6 DAY WORK PER WEEK | 4 | PTJ | 1 |
| LOJK62 |  | 02nd Shipment Material Barge Preparation |  | 12d | 2013-01-09 | 2013-01-22 | JK61 FF, PL61 FF, LOJK61, LOJK61 SS | 26d | 0d |  | 6 DAY WORK PER WEEK | 4 | PTJ | 1 |
| LOJK72 |  | 02nd Shipment Material Barge Preparation |  | 12d | 2013-01-09 | 2013-01-22 | JK71 FF, PL71 FF, LOJK71, LOJK71 SS | 26d | 0d |  | 6 DAY WORK PER WEEK | 4 | PTJ | 1 |
| LOJK43 |  | L/O & Sea fastening ( Jacket & Piles ) |  | 7d | 2013-01-23 | 2013-01-31 | LOJK42 | 26d | 0d |  | 6 DAY WORK PER WEEK | 4 | PTJ | 1 |
| LOJK53 |  | L/O & Sea fastening ( Jacket & Piles ) |  | 7d | 2013-01-23 | 2013-01-31 | LOJK52 | 26d | 0d |  | 6 DAY WORK PER WEEK | 4 | PTJ | 1 |
| LOJK63 |  | L/O & Sea fastening ( Jacket & Piles ) |  | 7d | 2013-01-23 | 2013-01-31 | LOJK62 | 26d | 0d |  | 6 DAY WORK PER WEEK | 4 | PTJ | 1 |
| LOJK73 |  | L/O & Sea fastening ( Jacket & Piles ) |  | 7d | 2013-01-23 | 2013-01-31 | LOJK72 | 26d | 0d |  | 6 DAY WORK PER WEEK | 4 | PTJ | 1 |
|  | 2 | **03rd Trip ( Deck)** |  |  | 2013-03-02 | 2013-04-07 |  |  |  |  |  |  |  |  |
| LODK41 |  | Arrival of 03rd Shipment Material Barge ( Deck C/W TSF ) | milestone | 0d | 2013-03-02 | 2013-03-02 |  | -0d | 13d | start on 2013-03-01 | 6 DAY WORK PER WEEK | 4 | PTJ | 3 |
| LODK51 |  | Arrival of 03rd Shipment Material Barge ( Deck C/W TSF ) | milestone | 0d | 2013-03-02 | 2013-03-02 |  | -0d | 13d | start on 2013-03-01 | 6 DAY WORK PER WEEK | 4 | PTJ | 3 |
| LODK61 |  | Arrival of 03rd Shipment Material Barge ( Deck C/W TSF ) | milestone | 0d | 2013-03-02 | 2013-03-02 |  | -0d | 13d | start on 2013-03-01 | 6 DAY WORK PER WEEK | 4 | PTJ | 3 |
| LODK71 |  | Arrival of 03rd Shipment Material Barge ( Deck C/W TSF ) | milestone | 0d | 2013-03-02 | 2013-03-02 |  | -0d | 13d | start on 2013-03-01 | 6 DAY WORK PER WEEK | 4 | PTJ | 3 |
| LODK42 |  | 3rd Shipment Material Barge Preparation |  | 12d | 2013-03-17 | 2013-03-30 | TS48 FF, LODK41 | 0d |  |  | 6 DAY WORK PER WEEK | 4 | PTJ | 2 |
| LODK52 |  | 3rd Shipment Material Barge Preparation |  | 12d | 2013-03-17 | 2013-03-30 | TS58 FF, LODK51 | 0d |  |  | 6 DAY WORK PER WEEK | 4 | PTJ | 2 |
| LODK62 |  | 3rd Shipment Material Barge Preparation |  | 12d | 2013-03-17 | 2013-03-30 | TS68 FF, LODK61 | 0d |  |  | 6 DAY WORK PER WEEK | 4 | PTJ | 2 |
| LODK72 |  | 3rd Shipment Material Barge Preparation |  | 12d | 2013-03-17 | 2013-03-30 | TS78 FF, LODK71 | 0d |  |  | 6 DAY WORK PER WEEK | 4 | PTJ | 2 |
| LODK43 |  | L/O & Sea fastening ( Deck) |  | 7d | 2013-03-31 | 2013-04-07 | LODK42 | 0d |  |  | 6 DAY WORK PER WEEK | 4 | PTJ | 2 |
| LODK53 |  | L/O & Sea fastening ( Deck) |  | 7d | 2013-03-31 | 2013-04-07 | LODK52 | 0d |  |  | 6 DAY WORK PER WEEK | 4 | PTJ | 2 |
| LODK63 |  | L/O & Sea fastening ( Deck) |  | 7d | 2013-03-31 | 2013-04-07 | LODK62 | 0d |  |  | 6 DAY WORK PER WEEK | 4 | PTJ | 2 |
| LODK73 |  | L/O & Sea fastening ( Deck) |  | 7d | 2013-03-31 | 2013-04-07 | LODK72 | 0d |  |  | 6 DAY WORK PER WEEK | 4 | PTJ | 2 |

## Activity codes

| Code | Value | Meaning |
| --- | --- | --- |
| Phase-2 | 0 | Management |
| Phase-2 | 1 | Engineering |
| Phase-2 | 3 | Procurement |
| Phase-2 | 4 | Fabrication |
| Resp | ENP | Enppi |
| Resp | GUP | GUPCO |
| Resp | PTJ | Petrojet |
| Work Package | 0 | General |
| Work Package | 1 | Jacket and piles |
| Work Package | 2 | Decks |
| Work Package | 3 | Topsides |
| Work Package | 4 | Sealines |

# 4229-420, Hilal development project

Schedule from Primavera P6, 2013-02-25 to 2013-03-03, data date 2012-06-02.

## Calendars

- ENGINEERING: Mon-Thu 08:00-16:00; Fri-Sat off; Sun 08:00-16:00.

## Schedule

| ID | WBS | Activity | Duration | Start | Finish | Predecessors | Total float |
| --- | --- | --- | --- | --- | --- | --- | --- |
| PMS00 |  | Preinstallation survey | 5d | 2013-02-25 | 2013-03-03 | GM04 (other project) | 0d |
|  | 1 | **General Milestones** |  |  |  |  |  |
|  | 5 | **L/O & Sea Fastening** |  |  |  |  |  |
|  | 3 | **01st Trip (P/L Spools 18" & 8")** |  |  |  |  |  |
|  | 1 | **02nd Trip (Jacket & Piles)** |  |  |  |  |  |
|  | 2 | **03rd Trip ( Deck)** |  |  |  |  |  |
|  | 7 | **General activities** |  |  |  |  |  |
|  | 2 | **Engineering** |  |  |  |  |  |
|  | 1 | **Process** |  |  |  |  |  |
|  | 1 | **Drawings /lists** |  |  |  |  |  |
|  | 2 | **Reports** |  |  |  |  |  |
|  | 3 | **MRQ's** |  |  |  |  |  |
|  | 10 | **Loss prevention** |  |  |  |  |  |
|  | 1 | **Drawings /lists** |  |  |  |  |  |
|  | 2 | **Reports** |  |  |  |  |  |
|  | 3 | **MRQ's** |  |  |  |  |  |
|  | 4 | **Additional studies** |  |  |  |  |  |
|  | 2 | **Piping** |  |  |  |  |  |
|  | 1 | **Drawing/ lists** |  |  |  |  |  |
|  | 3 | **Reports** |  |  |  |  |  |
|  | 2 | **MRQ's** |  |  |  |  |  |
|  | 3 | **Mechanical** |  |  |  |  |  |
|  | 1 | **Drawings /lists** |  |  |  |  |  |
|  | 2 | **Reports** |  |  |  |  |  |
|  | 3 | **MRQ's / specifications** |  |  |  |  |  |
|  | 8 | **Pressure vessels** |  |  |  |  |  |
|  | 1 | **Drawings /lists** |  |  |  |  |  |
|  | 2 | **Reports** |  |  |  |  |  |
|  | 3 | **MRQ's** |  |  |  |  |  |
|  | 5 | **Electrical** |  |  |  |  |  |
|  | 1 | **Drawings /lists** |  |  |  |  |  |
|  | 2 | **Reports** |  |  |  |  |  |
|  | 3 | **MRQ's** |  |  |  |  |  |
|  | 6 | **Instrument** |  |  |  |  |  |
|  | 1 | **Drawings /lists** |  |  |  |  |  |
|  | 2 | **Reports** |  |  |  |  |  |
|  | 3 | **MRQ's** |  |  |  |  |  |
|  | 9 | **Telecommunication** |  |  |  |  |  |
|  | 1 | **Drawings /lists** |  |  |  |  |  |
|  | 2 | **Reports** |  |  |  |  |  |
|  | 3 | **Specifications /MRQ's** |  |  |  |  |  |
|  | 4 | **Offshore** |  |  |  |  |  |
|  | 1 | **Drawings / lists** |  |  |  |  |  |
|  | 2 | **Reports** |  |  |  |  |  |
|  | 3 | **Specifications / MTO's** |  |  |  |  |  |
|  | 4 | **Additonal studies** |  |  |  |  |  |
|  | 7 | **Pipeline** |  |  |  |  |  |
|  | 1 | **Drawings /lists** |  |  |  |  |  |
|  | 2 | **Reports** |  |  |  |  |  |
|  | 3 | **MRQ's** |  |  |  |  |  |
|  | 3 | **Procurement** |  |  |  |  |  |
|  | 13 | **Fire & gas detectors** |  |  |  |  |  |
|  | 22 | **Pressure safety valves** |  |  |  |  |  |
|  | 3 | **Fire fighting system** |  |  |  |  |  |
|  | 6 | **Chemical injection PKG** |  |  |  |  |  |
|  | 31 | **Life saving equipment (Cancelled)** |  |  |  |  |  |
|  | 7 | **Piping Bulk** |  |  |  |  |  |
|  | 35 | **Additional piping bulk** |  |  |  |  |  |
|  | 8 | **Piping Gate,Globe & Butterfly valves** |  |  |  |  |  |
|  | 32 | **Piping Ball Valves** |  |  |  |  |  |
|  | 2 | **Launcher & Receiver traps** |  |  |  |  |  |
|  | 12 | **Instrument electrical bulk** |  |  |  |  |  |
|  | 14 | **Instrument mechanical bulk** |  |  |  |  |  |
|  | 15 | **Field instrument** |  |  |  |  |  |
|  | 16 | **Choke valves** |  |  |  |  |  |
|  | 17 | **Pressure regulator valves** |  |  |  |  |  |
|  | 23 | **shutdown valves** |  |  |  |  |  |
|  | 34 | **Additonal shutdown valves** |  |  |  |  |  |
|  | 18 | **Multiphase flowmeter** |  |  |  |  |  |
|  | 19 | **Safe guard system** |  |  |  |  |  |

| WBS | Activity |
| --- | --- |
| 4 | **Radar System** |
| 9 | **Solar power unit** |
| 10 | **Navigation aids** |
| 11 | **Electrical bulk** |
| 1 | **Cathodic protection** |
| 20 | **Pressure Vessels** |
| 21 | **Open drain Tanks (Cancelled)** |
| 33 | **Progress cavity pump** |
| 24 | **18" pipeline** |
| 5 | **8"pipeline** |
| 30 | **Hot bends** |
| 29 | **Flanges** |
| 26 | **Anchor flanges** |
| 27 | **Isolating joints** |
| 28 | **Heat shrink sleeves** |
| 25 | **Kamos ring** |
| 4 | **Construction supervision** |
| 5 | **Pre-commissioning & Commissioning** |
| 6 | **(New WBS)** |
