# 4229-420, Hilal development project

Schedule from Primavera P6, 2011-08-15 to 2013-02-24, data date 2012-06-30, A marks actual dates.

## Calendars

- ENGINEERING: Mon-Thu 08:00-16:00; Fri-Sat off; Sun 08:00-16:00. Exceptions (off unless hours are given): 2011-08-30 to 2011-08-31, 2011-10-06, 2011-11-06 to 2011-11-10, 2012-01-25, 2012-08-19 to 2012-08-23, 2012-10-21 to 2012-10-25.
- SUPPLIER: Mon-Sun 08:00-16:00. Exceptions (off unless hours are given): 2011-12-25 to 2011-12-29, 2012-01-01 to 2012-01-07, 2012-01-25, 2012-08-20 to 2012-08-31.
- calendar: Mon-Sun 08:00-16:00. Exceptions (off unless hours are given): 2012-12-31 00:00-00:00.
- 7 - 7 Days Working Week: Mon-Sun 08:00-12:00, 13:00-17:00.

## Schedule

| ID | WBS | Activity | Type | Duration | Start | Finish | Predecessors | Complete | Remaining | Planned start | Planned finish | Total float | Free float | Calendar |
| --- | --- | --- | --- | --- | --- | --- | --- | --- | --- | --- | --- | --- | --- | --- |
|  | 1 | **General Milestones** |  |  | 2011-08-15 | 2013-02-24 |  |  |  |  |  |  |  |  |
| 4229GM10 |  | Project Coming into force / Kick-off meeting | milestone | 0d | 2011-08-15 A | 2011-08-15 A |  | 100% |  |  |  |  |  |  |
| 4229GM140 |  | Change order 1 approval | milestone | 0d | 2011-10-16 A | 2011-10-16 A | 4229GM10 FS+42d | 100% |  |  |  |  |  |  |
| 4229GM100 |  | Engineering completion | milestone | 0d | 2013-01-03 | 2013-01-03 | 4229GM60, 4229GM10, 4229ELP220, 4229ELP110, 4229ELP450, 4229ELP480, 4229ELP490, 4229ELP340, 4229ELP240, 4229ELP250, 4229EPR30, 4229EPR200, 4229EPI220, 4229EPI430, 4229EPI230, 4229EPI500, 4229EPI490, 4229EME50, 4229EME90, 4229EME10, 4229EOF270 FS+5d, 4229EOF230, 4229EOF570, 4229EOF490, 4229EOF330, 4229EOF100, 4229EOF380, 4229EOF630, 4229EEL110, 4229EEL300, 4229EIN100, 4229EIN420, 4229EIN530, 4229EIN560, 4229EIN220, 4229EIN330, 4229EIN50, 4229EIN340, 4229EIN170, 4229EPL310, 4229EPL120, 4229EPL20, 4229EPL370, 4229ETE150, 4229GM90, 4229GM20, 4229ELP510, 4229ELP30, 4229ELP140, 4229ELP290, 4229ELP540, 4229ELP60, 4229ELP560, 4229ELP570, 4229EPR90, 4229EPI170, 4229EPI130, 4229EPI150, 4229EME110, 4229EOF410, 4229EOF170, 4229EOF20, 4229EOF140, 4229EOF460, 4229EOF370, 4229EOF250, 4229EOF430, 4229EEL70, 4229EEL170, 4229EEL140, 4229EEL40, 4229EIN140, 4229EIN460, 4229EIN150, 4229EIN450, 4229EIN190, 4229EIN10, 4229EIN180, 4229EIN110, 4229EPL230, 4229EPL350, 4229EPL320, 4229EPL490, 4229EPL40, 4229EPL250, 4229EPL180, 4229EPV50, 4229EPV60, 4229ETE20, 4229ETE10, 4229EME210, 4229ELP500, 4229ELP520, 4229ELP390, 4229ELP460, 4229ELP90, 4229ELP190, 4229EPR100, 4229EPR210, 4229EPR120, 4229EPR190, 4229EPI120, 4229EPI410, 4229EME20, 4229EOF10, 4229EOF280, 4229EOF350, 4229EOF160, 4229EOF240, 4229EOF530, 4229EOF450, 4229EOF110, 4229EEL290, 4229EEL240, 4229EEL30, 4229EEL10, 4229EIN390, 4229EIN590, 4229EIN80, 4229EIN360, 4229EIN370, 4229EIN40, 4229EIN260, 4229EPL290, 4229EPL430, 4229EPL460, 4229EPL100, 4229EPL210, 4229EPL260, 4229EPL280, 4229GM70, 4229ELP1010, 4229ELP230, 4229ELP260, 4229ELP40, 4229ELP350, 4229ELP610, 4229ELP400 FF, 4229EPR140, 4229EPR60, 4229EPR10, 4229EPI390, 4229EPI240, 4229EPI260, 4229EPI100, 4229EPI160, 4229EPI250, 4229EPI300, 4229EME30, 4229EME100, 4229EOF590, 4229EOF520, 4229EOF310, 4229EOF580, 4229EOF30, 4229EOF50, 4229EOF70, 4229EOF90, 4229EOF180, 4229EEL250, 4229EEL100, 4229EEL260, 4229EEL160, 4229EEL60, 4229EEL150, 4229EEL130, 4229EIN440, 4229EIN380, 4229EIN230, 4229EIN250, 4229EPL390, 4229EPL410, 4229EPL450, 4229EPL470, 4229EPL160, 4229EPL70, 4229EPL220, 4229EPL80, 4229EPV40, 4229ETE30, 4229GM80, 4229ELP130, 4229ELP20, 4229ELP100, 4229ELP180, 4229ELP280, 4229EPR220, 4229EPR50, 4229EPR20, 4229EPI210, 4229EPI440, 4229EPI370, 4229EPI290, 4229EPI140, 4229EME70, 4229EME40, 4229EME80, 4229EOF600, 4229EOF610, 4229EOF440, 4229EOF60, 4229EOF80, 4229EOF300, 4229EEL180, 4229EEL190, 4229EIN60, 4229EIN200, 4229EPR300, 4229EIN540, 4229EIN210, 4229EIN320, 4229EIN30, 4229EPL330, 4229EPL240, 4229EPL480, 4229EPL130, 4229EPL190, 4229EPL360, 4229ELP530, 4229ELP360, 4229ELP380, 4229ELP10, 4229ELP410, 4229ELP210, 4229ELP50, 4229ELP330, 4229EPR170, 4229EPR40, 4229EPR180, 4229EPR80, 4229EPI180, 4229EPI310, 4229EPI200, 4229EOF390, 4229EOF150, 4229EOF500, 4229EOF40, 4229EOF480, 4229EOF190, 4229EEL90, 4229EEL220, 4229EEL270, 4229EIN400, 4229EIN270, 4229EIN90, 4229EIN20, 4229EPL200, 4229EPL140, 4229EPL300, 4229EPL60, 4229EPL50, 4229EPL30, 4229ETE160, 4229GM50, 4229GM130, 4229GM30, 4229ELP70, 4229ELP80, 4229ELP150, 4229ELP470, 4229ELP120, 4229ELP300, 4229ELP160, 4229ELP270, 4229ELP550, 4229EPR70, 4229EPR130, 4229EPI110, 4229EPI280, 4229EPI380, 4229EME130, 4229EME140, 4229EME150, 4229EME160, 4229EOF200, 4229EOF130, 4229EOF550, 4229EOF420, 4229EOF340, 4229EOF470, 4229EEL120, 4229EEL80, 4229EEL20, 4229EEL210, 4229EIN70, 4229EIN410, 4229EIN300, 4229EIN310, 4229EIN430, 4229EIN120, 4229EIN280, 4229EIN550, 4229EIN350, 4229EPL440, 4229EPL150, 4229EPL10, 4229EPL270, 4229EPV30, 4229EPV10, 4229GM40, 4229ELP370, 4229ELP200, 4229ELP590, 4229ELP600, 4229ELP170, 4229EPR230, 4229EPR110, 4229EPR150, 4229EPR160, 4229EPI400, 4229EME60, 4229EOF260, 4229EOF290, 4229EOF560, 4229EOF510, 4229EOF320, 4229EEL50, 4229EEL230, 4229EEL200, 4229EIN130, 4229EIN470, 4229EIN240, 4229EIN520, 4229EIN290, 4229EIN160, 4229EPL170, 4229EPL420, 4229EPL340, 4229EPL380, 4229EPL400, 4229EPL90, 4229EPL110, 4229EPV20 |  |  |  |  | 36d |  |  |
| 4229GM110 |  | Material delivered at site- except additional shutdown valve (offshore installation) | milestone | 0d | 2013-01-16 | 2013-01-16 | 4229POV100, 4229PSG100, 4229PIB1090, 4229PSU100, 4229PNA100, 4229PRS100, 4229PPB100, 4229PVE100, 4229PTA100, 4229PMP100 FF, 4229PIB100, 4229PRV100, 4229PSV100, 4229PFI100, 4229PEB100 |  |  |  |  | 39d |  | calendar |
| 4229GM120 |  | Enppi scope completion | milestone | 0d | 2013-02-24 | 2013-02-24 | 4229PFL100, 4229PCP100 FF, 4229PNA100 FF, 4229EIN510 FF, 4229PKR100, 4229PIJ100, 4229PFG65 FF, 4229POV100 FF, 4229EIN490 FF, 4229PIB1090 FF, 4229EPL510 FF, 4229EPV70 FF, 4229PSG100 FF, 4229PHS100, 4229PLS35 FF, 4229PPB120 FF, 4229PEB100 FF, 4229GM110 FF, 4229PHB110, 4229PFF70 FF, 4229PTR100 FF, 4229PSV100 FF, 4229PFI100 FF, 4229PCV100 FF, 4229PCI100 FF, 4229ELP580 FF, 4229EEL280 FF, 4229EPL520 FF, 4229EPL530 FF, 4229PVE100 FF, 4229PTA100 FF, 4229PPB100 FF, 4229PRV100 FF, 4229EIN500 FF, 4229PAF100, 4229PPV110 FF, 4229PPV120 FF, 4229PIB100 FF, 4229EIN480 FF, 4229EPL500 FF, 4229PPL120, 4229PMP100 FF, 4229PSU100 FF, 4229GM100 FF, 4229ELP620 FF, 4229EPL550 FF, 4229EPL540 FF, 4229EPV80 FF, 4229PFV210 |  |  |  |  | 0d |  | calendar |
|  | 7 | **General activities** |  |  | 2011-08-15 | 2012-07-02 |  |  |  |  |  |  |  |  |
| 4229GM50 |  | Platform Installation package- Approval |  | 20d | 2011-08-15 A | 2011-10-23 A | 4229GM30 | 100% |  | 2011-10-17 | 2011-11-20 |  |  |  |
| 4229GM30 |  | Platform fabrication package- Approval |  | 42d | 2011-08-15 A | 2011-10-23 A | 4229GM10 | 100% |  | 2011-08-15 | 2011-10-16 |  |  |  |
| 4229GM70 |  | P/L Installation package- Approval |  | 25d | 2011-09-28 A | 2011-11-02 A | 4229GM30 SS+30d | 100% |  |  |  |  |  |  |
| 4229GM20 |  | Project Design basis IFA |  | 10d | 2011-09-29 A | 2011-10-23 A | 4229EPR20 | 100% |  | 2011-09-29 | 2011-10-13 |  |  |  |
| 4229GM150 |  | Project quality assurance plan |  | 20d | 2011-10-17 A | 2011-11-13 A |  | 100% |  | 2011-10-30 | 2011-12-01 |  |  |  |
| 4229GM80 |  | Platform Installation package- Final |  | 20d | 2011-10-23 A | 2011-10-24 A | 4229GM50 FS+10d | 100% |  | 2011-11-13 | 2011-12-08 |  |  |  |
| 4229GM60 |  | Platform fabrication package- Final |  | 15d | 2011-10-23 A | 2011-10-24 A | 4229GM30 FS+10d | 100% |  | 2011-10-23 | 2011-11-17 |  |  |  |
| 4229GM40 |  | Final Project Design basis |  | 10d | 2011-11-14 A | 2011-11-27 A | 4229GM20 FS+10d | 100% |  |  |  |  |  |  |
| 4229GM90 |  | P/L Installation package- Final |  | 20d | 2011-11-24 A | 2011-11-29 A | 4229GM70 FS+10d | 100% |  | 2011-11-24 | 2011-12-21 |  |  |  |
| 4229GM130 |  | Internal Design Review meeting |  | 2d | 2012-07-01 | 2012-07-02 | 4229EPR130, 4229EPR80, 4229ELP150, 4229EPR120 |  |  |  |  | 159d | 123d |  |
|  | 2 | **Engineering** |  |  | 2011-08-15 | 2013-01-03 |  |  |  |  |  |  |  |  |
|  | 1 | **Process** |  |  | 2011-08-16 | 2012-08-30 |  |  |  |  |  |  |  |  |
|  | 1 | **Drawings /lists** |  |  | 2011-09-12 | 2012-07-12 |  |  |  |  |  |  |  |  |
| 4229EPR20 |  | Isuue PFD's / UFD's & material balance -Approval |  | 13d | 2011-09-12 A | 2011-09-27 A | 4229GM10 FS+1d, 4229EPR50 | 100% |  | 2011-09-12 | 2011-09-28 |  |  |  |
| 4229EPR40 |  | Issue P&ID'S / Equipment list-Approval |  | 10d | 2011-09-28 A | 2011-10-25 A | 4229GM10, 4229EPR20 FS-1d | 100% |  | 2011-09-28 | 2011-10-12 |  |  |  |
| 4229EPR270 |  | GUPCO approval on PFD's & material balance |  | 10d | 2011-09-29 A | 2011-10-24 A | 4229EPR20 | 100% |  | 2011-09-29 | 2011-10-13 |  |  |  |
| 4229EPR280 |  | GUPCO approval on P&ID'S / Equipment list |  | 10d | 2011-10-24 A | 2011-11-22 A | 4229EPR40 | 100% |  | 2011-10-30 | 2011-11-17 |  |  |  |
| 4229EPR80 |  | Isuue PFD's / UFD's & material balance -Design |  | 7d | 2011-10-25 A | 2011-10-30 A | 4229EPR270, 4229EPR20 FS+10d, 4229EPR50 FS-5d, 4229EPR40 | 100% |  | 2011-10-16 | 2011-10-24 |  |  |  |
| 4229EPR90 |  | C&E -Approval |  | 8d | 2011-10-26 A | 2011-11-23 A | 4229EPR40 | 100% |  | 2011-10-30 | 2011-11-15 |  |  |  |
| 4229EPR120 |  | Issue P&ID'S / Equipment list-Design |  | 10d | 2011-11-23 A | 2011-12-06 A | 4229EPR80, 4229EPR280, 4229EPR40 FS+10d | 100% |  | 2011-11-14 | 2011-11-27 |  |  |  |
| 4229EPR290 |  | GUPCO approval on cause & effect |  | 10d | 2011-11-24 A | 2011-12-01 A | 4229EPR90 | 100% |  | 2011-11-03 | 2011-11-23 |  |  |  |
| 4229EPR130 |  | C&E -Design |  | 8d | 2011-12-01 A | 2011-12-11 A | 4229EPR290, 4229EPR120 | 100% |  | 2011-12-18 | 2011-12-27 |  |  |  |
| 4229EPR320 |  | Issue P&ID'S implementing HAZOP |  | 10d | 2012-02-12 A | 2012-03-12 A | 4229ELP130 | 100% |  | 2012-03-18 | 2012-03-29 |  |  |  |
| 4229EPR180 |  | Issue P&ID'S / Equipment list-Construction |  | 15d | 2012-06-03 A | 2012-06-26 A | 4229PMP90 SS+30d, 4229PCI90 SS+20d, 4229PTA90 SS+30d, 4229PSV90 SS+20d, 4229PTR90 SS+30d, 4229PSU90 SS+30d | 100% |  | 2012-06-10 | 2012-06-28 |  |  |  |
| 4229EPR190 |  | Isuue PFD's / UFD's & material balance -Construction |  | 5d | 2012-06-27 A | 2012-07-05 | 4229ELP130 |  | 5d | 2012-07-03 | 2012-07-09 | 151d | 0d |  |
| 4229EPR200 |  | C&E -Construction |  | 5d | 2012-07-08 | 2012-07-12 | 4229EPR180 |  |  |  |  | 135d | 0d |  |

| ID | WBS | Activity | Duration | Start | Finish | Predecessors | Complete | Remaining | Planned start | Planned finish | Total float | Free float | Constraint | Global Commodity Code | Global Activity Code |
| --- | --- | --- | --- | --- | --- | --- | --- | --- | --- | --- | --- | --- | --- | --- | --- |
|  | 2 | **Reports** |  | 2011-08-25 | 2012-08-07 |  |  |  |  |  |  |  |  |  |  |
| 4229EPR50 |  | Process simulation | 10d | 2011-08-25 A | 2011-09-11 A | 4229GM10 FS+5d, 4229EPR10 | 100% |  |  |  |  |  |  |  |  |
| 4229EPR30 |  | Flow assurance report-Approval | 20d | 2011-09-26 A | 2011-11-03 A | 4229GM10, 4229EPR20 FS-3d | 100% |  | 2011-09-26 | 2011-10-24 |  |  |  |  |  |
| 4229EPR100 |  | Shutdown & control philosophy -Approval | 8d | 2011-10-26 A | 2011-11-23 A | 4229EPR40 | 100% |  | 2011-10-30 | 2011-11-15 |  |  |  |  |  |
| 4229EPR260 |  | Process simulation report-Approval | 8d | 2011-10-31 A | 2011-11-21 A | 4229EPR80 | 100% |  | 2011-10-31 | 2011-11-16 |  |  |  |  |  |
| 4229EPR220 |  | Process simulation final report | 10d | 2011-11-21 A | 2011-11-21 A | 4229EPR260 FS+5d | 100% |  | 2011-11-24 | 2011-12-07 |  |  |  |  |  |
| 4229EPR110 |  | Flow assurance report-Final | 5d | 2011-11-24 A | 2011-11-30 A | 4229EPR80, 4229EPR30 FS+5d | 100% |  |  |  |  |  |  |  |  |
| 4229EPR140 |  | Shutdown & control philosophy -Final | 10d | 2011-12-26 A | 2012-05-13 A | 4229EPR120 | 100% |  | 2011-12-08 | 2011-12-21 |  |  |  |  |  |
| 4229EPR210 |  | Commissioning ,Pre-commissioning & operating philosophy-IFA | 10d | 2012-07-08 | 2012-07-19 | 4229EPR180 |  |  |  |  | 133d | 0d |  |  |  |
| 4229EPR230 |  | Commissioning ,Pre-commissioning & operating philosophy-Final | 8d | 2012-07-29 | 2012-08-07 | 4229EPR210 FS+5d |  |  |  |  | 133d | 97d |  |  |  |
|  | 3 | **MRQ's** |  | 2011-08-16 | 2012-08-30 |  |  |  |  |  |  |  |  |  |  |
| 4229EPR10 |  | Issue MRQ for Chemical injection | 7d | 2011-08-16 A | 2011-08-24 A | 4229GM10 FS+1d | 100% |  |  |  |  |  |  | 16506 | 01 |
| 4229EPR70 |  | T.E.R for Chemical injection | 20d | 2011-09-19 A | 2011-11-24 A | 4229PCI20 | 100% |  | 2011-09-19 | 2011-10-17 |  |  |  | 16506 | 09 |
| 4229EPR60 |  | Issue MRQ for PSV | 5d | 2011-10-09 A | 2011-10-19 A | 4229EPR20 FS+5d | 100% |  | 2011-10-09 | 2011-10-13 |  |  |  | 24701 | 01 |
| 4229EPR160 |  | T.E.R for PSV | 20d | 2011-11-17 A | 2012-01-31 A | 4229PSV20 | 100% |  | 2011-11-16 | 2011-12-13 |  |  |  | 24701 | 09 |
| 4229EPR310 |  | RE-ISSUE T.E.R for Chemical injection | 15d | 2012-01-01 A | 2012-02-21 A |  | 100% |  | 2012-01-01 | 2012-01-19 |  |  |  |  |  |
| 4229EPR150 |  | MRP for Chemical injection | 3d | 2012-03-25 A | 2012-04-05 A | 4229PCI60 | 100% |  | 2012-03-21 | 2012-03-25 |  |  |  | 16506 | 14 |
| 4229EPR250 |  | V.P.R for chemical injection | 50d | 2012-04-01 A | 2012-07-15 | 4229PCI90 SS+30d | 88% | 6d | 2012-05-20 | 2012-07-26 | 146d | 13d |  |  |  |
| 4229EPR170 |  | MRP for PSV | 5d | 2012-04-05 A | 2012-04-09 A | 4229PSV60 | 100% |  | 2012-04-09 | 2012-04-15 |  |  |  | 24701 | 14 |
| 4229EPR240 |  | V.P.R for P.S.V | 40d | 2012-04-17 A | 2012-08-30 | 4229PSV90 SS+30d | 12% | 35d | 2012-05-17 | 2012-07-11 | 121d | 13d |  |  |  |
|  | 10 | **Loss prevention** |  | 2011-09-29 | 2012-10-04 |  |  |  |  |  |  |  |  |  |  |
|  | 1 | **Drawings /lists** |  | 2011-11-10 | 2012-08-29 |  |  |  |  |  |  |  |  |  |  |
| 4229ELP40 |  | Hazardous area classification schedule-IFA | 3d | 2011-11-10 A | 2011-11-13 A | 4229EPI110 | 100% |  | 2011-12-18 | 2011-12-20 |  |  |  |  |  |
| 4229ELP510 |  | F&G installation details -Approval | 10d | 2011-11-13 A | 2012-02-15 A | 4229ELP40 | 100% |  | 2011-12-04 | 2011-12-15 |  |  |  |  |  |
| 4229ELP150 |  | Hazardous area classification schedule-IFD | 3d | 2011-11-20 A | 2011-11-23 A | 4229EPI220 | 100% |  | 2012-01-09 | 2012-01-11 |  |  |  |  |  |
| 4229ELP70 |  | F& G detection layout -Approval | 10d | 2011-11-22 A | 2011-12-28 A | 4229EPI110 | 100% |  | 2011-12-04 | 2011-12-15 |  |  |  |  |  |
| 4229ELP80 |  | Firefighting, Safety equipment & escape route layout-Approval | 10d | 2011-11-22 A | 2011-12-29 A | 4229EPI110 FS+5d | 100% |  | 2011-12-04 | 2011-12-15 |  |  |  |  |  |
| 4229ELP110 |  | F& G cable routing -Approval | 5d | 2012-01-01 A | 2012-01-26 A | 4229EIN140 SS | 100% |  | 2012-01-01 | 2012-01-05 |  |  |  |  |  |
| 4229ELP480 |  | Interconnection wiring diagram-Approval | 5d | 2012-01-04 A | 2012-02-01 A | 4229ELP80 | 100% |  | 2012-01-04 | 2012-01-10 |  |  |  |  |  |
| 4229ELP450 |  | F& G cable list -Approval | 5d | 2012-01-09 A | 2012-01-19 A | 4229ELP110 | 100% |  | 2012-01-09 | 2012-01-15 |  |  | start on or after 2012-01-09 |  |  |
| 4229ELP460 |  | F& G cable list -Design | 5d | 2012-01-15 A | 2012-01-24 A | 4229ELP260 FS+7d | 100% |  | 2012-03-04 | 2012-03-08 |  |  |  |  |  |
| 4229ELP220 |  | F& G detection layout -Design | 15d | 2012-01-19 A | 2012-02-27 A | 4229EPI220 FS+10d | 100% |  | 2012-03-04 | 2012-03-22 |  |  |  |  |  |
| 4229ELP230 |  | Fire fighting, Safety equipment & escape route layout-Design | 15d | 2012-01-29 A | 2012-01-29 A | 4229EPI220 | 100% |  | 2012-03-04 | 2012-03-22 |  |  | start on or after 2012-01-01 |  |  |
| 4229ELP260 |  | F& G cable routing -Design | 10d | 2012-01-29 A | 2012-02-06 A | 4229EIN280 SS | 100% |  | 2012-03-06 | 2012-03-19 |  |  |  |  |  |
| 4229ELP520 |  | F&G installation details -Design | 10d | 2012-02-26 A | 2012-06-03 A | 4229ELP150 | 100% |  | 2012-03-04 | 2012-03-15 |  |  |  |  |  |
| 4229ELP490 |  | Interconnection wiring diagram-Design | 10d | 2012-03-15 A | 2012-03-20 A | 4229ELP230 FS+5d | 100% |  | 2012-04-01 | 2012-04-12 |  |  |  |  |  |
| 4229ELP360 |  | F& G detection layout -Construction | 15d | 2012-07-19 | 2012-08-08 | 4229EPI390 |  |  |  |  | 127d | 5d |  |  |  |
| 4229ELP370 |  | Hazardous area classification schedule-IFC | 3d | 2012-07-19 | 2012-07-23 | 4229EPI390 |  |  |  |  | 124d | 0d |  |  |  |
| 4229ELP380 |  | Fire fighting, Safety equipment & escape route layout-Construction | 10d | 2012-07-19 | 2012-08-01 | 4229EPI390 |  |  |  |  | 122d | 0d |  |  |  |
| 4229ELP390 |  | F& G cable routing -Construction | 10d | 2012-07-26 | 2012-08-08 | 4229EIN460 SS |  |  |  |  | 122d | 0d |  |  |  |
| 4229ELP470 |  | F& G cable list -Construction | 5d | 2012-08-02 | 2012-08-08 | 4229ELP390 FF |  |  |  |  | 127d | 5d |  |  |  |
| 4229ELP500 |  | Interconnection wiring diagram-Construction | 10d | 2012-08-02 | 2012-08-15 | 4229ELP380 |  |  |  |  | 122d | 0d |  |  |  |
| 4229ELP530 |  | F&G installation details -Construction | 5d | 2012-08-16 | 2012-08-29 | 4229ELP220, 4229ELP150, 4229ELP230, 4229ELP260, 4229ELP370, 4229ELP460, 4229ELP380, 4229ELP110, 4229ELP520, 4229ELP40, 4229ELP470, 4229ELP500, 4229ELP80, 4229ELP450, 4229ELP70, 4229ELP390, 4229ELP480, 4229ELP490, 4229ELP510, 4229ELP360 |  |  |  |  | 122d | 86d |  |  |  |

| ID | WBS | Activity | Duration | Start | Finish | Predecessors | Complete | Remaining | Planned start | Planned finish | Total float | Free float | Constraint | Expected finish |
| --- | --- | --- | --- | --- | --- | --- | --- | --- | --- | --- | --- | --- | --- | --- |
|  | 2 | **Reports** |  | 2011-09-29 | 2012-08-16 |  |  |  |  |  |  |  |  |  |
| 4229ELP10 |  | HSE Plan -Approval | 10d | 2011-09-29 A | 2011-10-13 A | 4229EPR20 | 100% |  |  |  |  |  |  |  |
| 4229ELP30 |  | HSE philosophy - Approval | 10d | 2011-10-16 A | 2011-11-03 A | 4229ELP10 | 100% |  | 2011-12-04 | 2011-12-15 |  |  |  |  |
| 4229ELP20 |  | HSE Plan -Final | 5d | 2011-11-13 A | 2011-11-15 A | 4229ELP10 FS+5d | 100% |  | 2011-12-04 | 2011-12-08 |  |  |  |  |
| 4229ELP90 |  | HSE philosophy - Final | 5d | 2011-11-20 A | 2011-11-23 A | 4229ELP30 FS+5d | 100% |  | 2011-12-25 | 2011-12-29 |  |  |  |  |
| 4229ELP100 |  | Fire & explosion HAZARD analysis- Approval | 15d | 2011-11-22 A | 2011-11-23 A | 4229EPI110 | 100% |  | 2011-12-04 | 2011-12-22 |  |  |  |  |
| 4229ELP130 |  | HAZOP meeting /Report | 10d | 2012-02-02 A | 2012-02-21 A | 4229EPR120 FS+1d | 100% |  | 2012-03-04 | 2012-03-15 |  |  | start on 2012-02-06 |  |
| 4229ELP190 |  | SCE performance standards-Approval | 10d | 2012-02-09 A | 2012-02-22 A | 4229ELP140 FS+12d | 100% |  | 2012-03-20 | 2012-04-02 |  |  |  |  |
| 4229ELP140 |  | Fire & Explosion HAZARD analysis- Final | 10d | 2012-02-16 A | 2012-03-05 A | 4229ELP100 FS+9d | 100% |  | 2012-01-01 | 2012-01-12 |  |  |  |  |
| 4229ELP50 |  | Update & issue safety life cycle-Approval | 0d | 2012-02-19 A | 2012-02-23 A | 4229ELP10 FS+36d | 100% |  | 2012-03-04 | 2012-03-04 |  |  |  |  |
| 4229ELP200 |  | QRA -Approval | 15d | 2012-02-26 A | 2012-03-20 A | 4229EPI220 FS+15d | 100% |  | 2012-03-04 | 2012-03-22 |  |  |  |  |
| 4229ELP270 |  | SCE performance standards-Final | 5d | 2012-03-15 A | 2012-03-20 A | 4229ELP190 FS+10d | 100% |  | 2012-04-01 | 2012-04-05 |  |  |  |  |
| 4229ELP210 |  | HAZOP close out report | 15d | 2012-03-28 A | 2012-07-01 | 4229ELP130 FS+30d | 93% | 1d | 2012-04-03 | 2012-04-23 | 127d | 0d |  | 2012-07-01 |
| 4229ELP240 |  | HAZID report | 10d | 2012-03-28 A | 2012-05-03 A | 4229EPI220 FS+10d | 100% |  | 2012-04-01 | 2012-04-12 |  |  |  |  |
| 4229ELP250 |  | ENVID report | 10d | 2012-03-28 A | 2012-05-03 A | 4229ELP240 SS | 100% |  | 2012-04-01 | 2012-04-12 |  |  |  |  |
| 4229ELP280 |  | PSSR report-Approval | 15d | 2012-03-31 A | 2012-03-31 A | 4229EPI220 FS+20d | 100% |  | 2012-04-01 | 2012-04-19 |  |  |  |  |
| 4229ELP350 |  | PSSR report-Final | 10d | 2012-03-31 A | 2012-03-31 A | 4229ELP280 FS+10d | 100% |  | 2012-04-15 | 2012-04-26 |  |  |  |  |
| 4229ELP540 |  | Update & issue safety life cycle-Design | 22d | 2012-04-05 A | 2012-04-10 A | 4229ELP50 | 100% |  | 2012-04-01 | 2012-04-30 |  |  |  |  |
| 4229ELP300 |  | QRA -Final | 15d | 2012-04-15 A | 2012-04-18 A | 4229ELP200 FS+5d | 100% |  | 2012-04-15 | 2012-05-03 |  |  |  |  |
| 4229ELP160 |  | SIL Review report-Approval | 10d | 2012-04-19 A | 2012-05-09 A | 4229ELP130 SS, 4229EPR130, 4229EPR120 | 100% |  | 2012-04-19 | 2012-05-02 |  |  | start on or after 2012-04-19 |  |
| 4229ELP410 |  | SIL Review report-Final | 11d | 2012-04-23 A | 2012-05-30 A | 4229ELP160 FS+5d | 100% |  | 2012-06-03 | 2012-06-17 |  |  |  |  |
| 4229ELP120 |  | SAMS report-Approval | 10d | 2012-07-02 | 2012-07-15 | 4229ELP130 FF, 4229ELP280, 4229ELP250, 4229ELP160, 4229ELP190, 4229ELP200, 4229ELP210, 4229ELP130, 4229ELP30, 4229ELP240 |  |  |  |  | 127d | 0d |  |  |
| 4229ELP180 |  | SAMS report-Final | 10d | 2012-07-23 | 2012-08-05 | 4229ELP120 FS+5d |  |  |  |  | 127d | 0d |  |  |
| 4229ELP290 |  | CHAZOP review report | 12d | 2012-08-01 | 2012-08-16 | 4229ELP210 FS+12d, 4229PSG90 SS+60d |  |  |  |  | 126d | 90d |  |  |
| 4229ELP340 |  | HAZARD register | 8d | 2012-08-06 | 2012-08-15 | 4229ELP130, 4229ELP30, 4229ELP120, 4229ELP180, 4229ELP280, 4229ELP10, 4229ELP20, 4229ELP140, 4229ELP240, 4229ELP200, 4229ELP300, 4229ELP100, 4229ELP210, 4229ELP160, 4229ELP90, 4229ELP250, 4229ELP190, 4229ELP50 |  |  |  |  | 127d | 91d |  |  |

| ID | WBS | Activity | Duration | Start | Finish | Predecessors | Complete | Remaining | Planned start | Planned finish | Total float | Free float | Constraint | Expected finish | Global Commodity Code | Global Activity Code |
| --- | --- | --- | --- | --- | --- | --- | --- | --- | --- | --- | --- | --- | --- | --- | --- | --- |
|  | 3 | **MRQ's** |  | 2011-11-21 | 2012-10-04 |  |  |  |  |  |  |  |  |  |  |  |
| 4229ELP60 |  | MRQ for fire fighting system | 8d | 2011-11-21 A | 2011-11-22 A | 4229EPI110 | 100% |  | 2011-12-04 | 2011-12-13 |  |  |  |  | 19004 | 01 |
| 4229ELP550 |  | MRQ for fire & Gas detection | 2d | 2011-11-28 A | 2012-01-01 A |  | 100% |  | 2011-12-08 | 2011-12-11 |  |  |  |  | 25205 | 01 |
| 4229ELP590 |  | MRQ for life saving equioment | 5d | 2011-12-29 A | 2012-01-02 A | 4229ELP550 FF | 100% |  | 2012-01-01 | 2012-01-05 |  |  |  |  | 19003 | 01 |
| 4229ELP600 |  | T.E.R for life saving equipment | 15d | 2012-02-15 A | 2012-05-15 A | 4229PLS15 | 100% |  | 2012-03-04 | 2012-03-22 |  |  |  |  | 19003 | 09 |
| 4229ELP560 |  | T.E.R for fire & Gas detection | 15d | 2012-02-27 A | 2012-05-03 A | 4229PFG15 | 100% |  | 2012-03-20 | 2012-04-09 |  |  |  |  | 25205 | 09 |
| 4229ELP170 |  | T.E.R for fire fighting system | 20d | 2012-04-03 A | 2012-05-29 A | 4229PFF20 | 100% |  | 2012-04-03 | 2012-04-30 |  |  | start on or after 2012-04-03 |  | 19004 | 09 |
| 4229ELP610 |  | MRP for life saving equipment | 5d | 2012-05-15 A | 2012-05-15 A | 4229PLS60 | 100% |  | 2012-06-18 | 2012-06-24 |  |  |  |  | 19003 | 14 |
| 4229ELP620 |  | V.P.R for life saving equipment | 30d | 2012-05-15 A | 2012-05-15 A | 4229PLS30 SS+30d | 100% |  | 2012-07-08 | 2012-08-16 |  |  |  |  |  |  |
| 4229ELP570 |  | MRP for fire & Gas detection | 5d | 2012-05-28 A | 2012-05-29 A | 4229PFG40 | 100% |  | 2012-06-03 | 2012-06-07 |  |  |  |  | 25205 | 14 |
| 4229ELP580 |  | V.P.R for fire & Gas detection | 35d | 2012-06-10 A | 2012-08-01 | 4229PFG60 SS+30d | 60% | 14d | 2012-08-12 | 2012-10-04 | 137d |  |  |  |  |  |
| 4229ELP330 |  | MRP for fire fighting system | 5d | 2012-06-25 A | 2012-07-08 | 4229PFF45 FF | 100% | 0d | 2012-07-25 | 2012-07-31 | 60d | 0d |  | 2012-07-03 | 19004 | 14 |
| 4229ELP400 |  | V.P.R for fire fighting system | 30d | 2012-08-26 | 2012-10-04 | 4229PFF65 SS+30d |  |  |  |  | 96d | 60d |  |  |  |  |
|  | 4 | **Additional studies** |  | 2012-02-15 | 2012-05-10 |  |  |  |  |  |  |  |  |  |  |  |
| 4229ELP1000 |  | Riser impact risk assessment study -IFA | 1d | 2012-02-15 A | 2012-02-27 A |  | 100% |  | 2012-04-29 | 2012-04-29 |  |  |  |  |  |  |
| 4229ELP1010 |  | Final Riser impact risk assessment study | 5d | 2012-02-28 A | 2012-05-10 A |  | 100% |  | 2012-04-29 | 2012-05-03 |  |  |  |  |  |  |
|  | 2 | **Piping** |  | 2011-08-15 | 2012-08-30 |  |  |  |  |  |  |  |  |  |  |  |
|  | 1 | **Drawing/ lists** |  | 2011-10-24 | 2012-08-30 |  |  |  |  |  |  |  |  |  |  |  |
| 4229EPI170 |  | Piping & Valves classes - Approval (Deleted) | 5d | 2011-10-24 A | 2011-12-06 A | 4229EPR40 | 100% |  | 2011-10-30 | 2011-11-03 |  |  |  |  |  |  |
| 4229EPI180 |  | Piping & Valves classes - Design | 5d | 2011-10-24 A | 2011-12-06 A | 4229EPR120 | 100% |  | 2011-12-08 | 2011-12-14 |  |  |  |  |  |  |
| 4229EPI210 |  | Line designation table -Approval | 6d | 2011-10-24 A | 2012-01-02 A | 4229EPR40 | 100% |  | 2011-10-30 | 2011-11-13 |  |  |  |  |  |  |
| 4229EPI110 |  | Issue plot plans-Approval | 10d | 2011-10-26 A | 2011-11-21 A | 4229EPR40 | 100% |  | 2011-12-04 | 2011-12-15 |  |  |  |  |  |  |
| 4229EPI220 |  | Issue plot plans-Design | 15d | 2011-12-20 A | 2012-01-05 A | 4229EPI110 FS+5d, 4229EPR120 | 100% |  | 2011-12-20 | 2012-01-09 |  |  |  |  |  |  |
| 4229EPI230 |  | Issue GA's -Approval | 28d | 2011-12-22 A | 2012-01-17 A | 4229EPI110 | 100% |  | 2012-01-01 | 2012-02-08 |  |  |  |  |  |  |
| 4229EPI240 |  | Line designation table -Design | 8d | 2012-01-10 A | 2012-01-24 A | 4229EPI210 FS+5d, 4229EPR120 | 100% |  | 2012-01-10 | 2012-01-19 |  |  |  |  |  |  |
| 4229EPI280 |  | Issue GA's -Design | 20d | 2012-02-02 A | 2012-02-16 A | 4229EPI220 FF | 100% |  | 2012-01-29 | 2012-02-23 |  |  |  |  |  |  |
| 4229EPI370 |  | Piping & Valves classes - Construction | 5d | 2012-06-27 A | 2012-07-08 | 4229EPR180 | 80% | 1d | 2012-07-08 | 2012-07-12 | 155d | 119d |  |  |  |  |
| 4229EPI380 |  | Line designation table -Construction | 8d | 2012-07-01 | 2012-07-10 |  |  |  |  |  | 0d |  | start on 2012-07-01 |  |  |  |
| 4229EPI390 |  | Issue plot plans-Construction | 9d | 2012-07-08 | 2012-07-18 | 4229PSG90 SS, 4229PSV90 SS, 4229PPV90 SS, 4229PSU90 SS, 4229PTR90 SS, 4229PCI90 SS, 4229PVE90 SS, 4229PMP90 SS, 4229POV90 SS, 4229PCV60, 4229PRV90 SS, 4229EPR180, 4229PNA90 SS |  |  |  |  | 20d | 0d |  |  |  |  |
| 4229EPI400 |  | Critical line list-Construction | 10d | 2012-07-11 | 2012-07-24 | 4229EPI380 |  |  |  |  | 143d | 107d |  |  |  |  |
| 4229EPI440 |  | Hydrotest maps & loops- Construction | 15d | 2012-07-16 | 2012-08-05 | 4229EPR180, 4229EPI430 FF+1d |  |  |  |  | 135d | 99d |  |  |  |  |
| 4229EPI430 |  | Issue ISO's -construction (first batch) | 11d | 2012-07-19 | 2012-08-02 | 4229EPI390 |  |  |  |  | 20d | 0d |  | 2012-08-02 |  |  |
| 4229EPI460 |  | Issue ISO's -construction (Second batch)- Final MTO | 10d | 2012-08-05 | 2012-08-16 | 4229EPI430 |  |  |  |  | 20d | 0d |  | 2012-08-16 |  |  |
| 4229EPI500 |  | Piping supports list / MTO -IFC | 10d | 2012-08-12 | 2012-08-30 | 4229EPI430, 4229EPI460 FF+5d |  |  |  |  | 116d | 0d |  |  |  |  |
| 4229EPI490 |  | Standard pipe supports -Construction | 5d | 2012-08-16 | 2012-08-29 | 4229EPI430 SS+20d |  |  |  |  | 122d | 86d |  |  |  |  |
| 4229EPI510 |  | Issue GA`s- Construction | 5d | 2012-08-26 | 2012-08-30 | 4229EPI460 |  |  |  |  | 121d | 0d |  | 2012-08-30 |  |  |

| ID | WBS | Activity | Duration | Start | Finish | Predecessors | Complete | Remaining | Planned start | Planned finish | Total float | Free float | Constraint | Expected finish | Global Commodity Code | Global Activity Code |
| --- | --- | --- | --- | --- | --- | --- | --- | --- | --- | --- | --- | --- | --- | --- | --- | --- |
|  | 3 | **Reports** |  | 2012-05-24 | 2012-07-26 |  |  |  |  |  |  |  |  |  |  |  |
| 4229EPI410 |  | Stress analysis report | 19d | 2012-05-24 A | 2012-07-26 | 4229EPI390 | 68% | 6d | 2012-07-03 | 2012-07-29 | 141d | 0d |  | 2012-07-26 |  |  |
|  | 2 | **MRQ's** |  | 2011-08-15 | 2012-08-26 |  |  |  |  |  |  |  |  |  |  |  |
| 4229EPI100 |  | Issue MRQ for L&R traps | 7d | 2011-08-15 A | 2011-08-23 A | 4229GM10 | 100% |  |  |  |  |  |  |  | 47101 | 01 |
| 4229EPI160 |  | T.E.R for L&R | 15d | 2011-09-22 A | 2011-12-04 A | 4229PTR20 | 100% |  | 2011-09-22 | 2011-10-13 |  |  |  |  | 47101 | 09 |
| 4229EPI120 |  | Issue MRQ for Piping bulk | 8d | 2011-11-15 A | 2011-11-24 A | 4229GM10, 4229EPR80 FF+4d | 100% |  | 2011-12-04 | 2011-12-13 |  |  |  |  | 40001 | 01 |
| 4229EPI130 |  | Thermal insulation specification | 5d | 2011-11-21 A | 2011-11-24 A | 4229EPI200 SS, 4229EPI100, 4229EPI120 | 100% |  | 2011-12-04 | 2011-12-08 |  |  |  |  |  |  |
| 4229EPI140 |  | Field test of piping specification. | 5d | 2011-11-21 A | 2011-11-24 A | 4229EPI150 | 100% |  | 2011-12-11 | 2011-12-15 |  |  |  |  |  |  |
| 4229EPI150 |  | Piping fabrication and erection specification | 5d | 2011-11-21 A | 2011-11-27 A | 4229EPI130 | 100% |  | 2011-12-04 | 2011-12-08 |  |  |  |  |  |  |
| 4229EPI190 |  | Issue MRQ for Gate, Globe & butterfly valves | 1d | 2011-11-24 A | 2011-12-08 A |  | 100% |  | 2012-04-29 | 2012-04-29 |  |  |  |  | 40002 | 01 |
| 4229EPI200 |  | Issue MRQ for Ball valves | 5d | 2011-11-24 A | 2011-12-08 A | 4229EPR40, 4229GM10 | 100% |  | 2011-12-04 | 2011-12-08 |  |  |  |  | 42206 | 01 |
| 4229EPI250 |  | T.E.R for Piping bulk | 15d | 2011-12-22 A | 2012-01-26 A | 4229PPB20 | 100% |  | 2011-12-13 | 2012-01-02 |  |  |  |  | 40001 | 09 |
| 4229EPI270 |  | T.E.R for Piping Ball Valves | 21d | 2012-01-12 A | 2012-02-13 A |  | 100% |  | 2012-03-04 | 2012-04-01 |  |  |  |  | 42206 | 09 |
| 4229EPI260 |  | T.E.R for Piping Gate, Globe & Butterfly valves | 20d | 2012-01-12 A | 2012-02-08 A | 4229PPV20 | 100% |  | 2012-01-12 | 2012-02-09 |  |  | start on or after 2012-01-12 |  | 40002 | 09 |
| 4229EPI290 |  | MRP for L&R | 5d | 2012-02-09 A | 2012-02-20 A | 4229PTR60 | 100% |  | 2012-03-04 | 2012-03-08 |  |  |  |  | 47101 | 14 |
| 4229EPI300 |  | MRP for Piping bulk | 5d | 2012-03-19 A | 2012-03-27 A | 4229PPB60 | 100% |  | 2012-03-20 | 2012-03-26 |  |  |  |  | 40001 | 14 |
| 4229EPI420 |  | V.P.R for launcher & receiver traps | 80d | 2012-03-27 A | 2012-07-29 | 4229PTR90 SS+30d | 75% | 20d | 2012-03-25 | 2012-07-12 | 140d | 17d |  |  |  |  |
| 4229EPI310 |  | MRP for Piping Gate, Globe & Butterfly valves | 5d | 2012-04-08 A | 2012-04-12 A | 4229PPV60 | 100% |  | 2012-04-12 | 2012-04-18 |  |  |  |  | 40002 | 14 |
| 4229EPI320 |  | MRP for Piping Ball Valves | 11d | 2012-04-08 A | 2012-04-12 A | 4229PBV70 | 100% |  | 2012-04-12 | 2012-04-26 |  |  |  |  | 42206 | 14 |
| 4229EPI330 |  | Additional piping bulk MRQ | 15d | 2012-04-15 A | 2012-05-16 A |  | 100% |  | 2012-04-29 | 2012-05-17 |  |  |  |  | 40003 | 01 |
| 4229EPI340 |  | MRQ for Additional Piping Ball valves | 4d | 2012-05-20 A | 2012-05-24 A | 4229EPR80 | 100% |  | 2012-07-01 | 2012-07-04 |  |  |  |  |  |  |
| 4229EPI350 |  | MRQ for Additional Piping Gate,Globe & Butterfly valves | 4d | 2012-05-20 A | 2012-05-24 A | 4229EPR80 | 100% |  | 2012-07-01 | 2012-07-04 |  |  |  |  |  |  |
| 4229EPI360 |  | Additional piping bulk T.E.R | 20d | 2012-06-14 A | 2012-07-01 | 4229PAP110 | 95% | 1d | 2012-07-01 | 2012-07-26 | 87d | 0d |  | 2012-07-01 | 40003 | 09 |
| 4229EPI450 |  | Additional piping bulk MRP | 5d | 2012-08-01 | 2012-08-07 | 4229PAP160 |  |  |  |  | 126d | 0d |  |  | 40003 | 14 |
| 4229EPI470 |  | MRP for additional Piping Ball valves | 5d | 2012-08-13 | 2012-08-26 | 4229PAB70 |  |  |  |  | 22d | 0d |  |  |  |  |
| 4229EPI480 |  | MRP for Additional Piping Gate,Globe & Butterfly valves | 5d | 2012-08-13 | 2012-08-26 | 4229PAV70 |  |  |  |  | 22d | 0d |  |  |  |  |

| ID | WBS | Activity | Duration | Start | Finish | Predecessors | Complete | Planned start | Planned finish | Total float | Free float | Constraint | Global Commodity Code | Global Activity Code |
| --- | --- | --- | --- | --- | --- | --- | --- | --- | --- | --- | --- | --- | --- | --- |
|  | 3 | **Mechanical** |  | 2011-09-25 | 2012-12-06 |  |  |  |  |  |  |  |  |  |
|  | 1 | **Drawings /lists** |  | 2011-09-25 | 2012-07-12 |  |  |  |  |  |  |  |  |  |
| 4229EME20 |  | Material selection Guide IFA | 14d | 2011-09-25 A | 2011-10-27 A | 4229EPR20 FS-4d | 100% | 2011-09-25 | 2011-10-13 |  |  |  |  |  |
| 4229EME30 |  | Motor load list IFA | 5d | 2011-10-24 A | 2011-11-16 A | 4229EPR40 | 100% | 2011-10-13 | 2011-10-19 |  |  |  |  |  |
| 4229EME40 |  | Material selection Guide IFD | 5d | 2012-01-17 A | 2012-01-22 A | 4229EPR80 | 100% | 2012-01-17 | 2012-01-23 |  |  | start on 2012-01-17 |  |  |
| 4229EME210 |  | Material Selection Guide IFF | 5d | 2012-07-08 | 2012-07-12 | 4229EPR190 |  |  |  | 151d | 115d |  |  |  |
| 4229EME70 |  | Final Motor load list | 2d | 2012-07-08 | 2012-07-09 | 4229EPR180, 4229EPR120 |  |  |  | 139d | 0d |  |  |  |
|  | 2 | **Reports** |  | 2011-11-30 | 2012-04-04 |  |  |  |  |  |  |  |  |  |
| 4229EME50 |  | Material handling study IFA | 10d | 2011-11-30 A | 2012-01-08 A | 4229EPI110 | 100% | 2011-12-04 | 2011-12-15 |  |  |  |  |  |
| 4229EME80 |  | Material Selection philosophy report-Approval | 10d | 2011-11-30 A | 2012-01-29 A | 4229EME50 | 100% | 2011-12-18 | 2011-12-29 |  |  |  |  |  |
| 4229EME90 |  | Final Material handling study | 6d | 2012-01-29 A | 2012-04-04 A | 4229EPI220 | 100% | 2012-01-29 | 2012-02-05 |  |  |  |  |  |
| 4229EME110 |  | Material Selection philosophy report-Final | 10d | 2012-03-04 A | 2012-03-15 A | 4229EME80 FS+5d | 100% |  |  |  |  |  |  |  |
|  | 3 | **MRQ's / specifications** |  | 2011-09-28 | 2012-12-06 |  |  |  |  |  |  |  |  |  |
| 4229EME10 |  | MRQ for cathodic protection | 15d | 2011-09-28 A | 2011-10-20 A | 4229GM10 FS+30d | 100% | 2011-09-28 | 2011-10-19 |  |  |  | 18502 | 01 |
| 4229EME60 |  | T.E.R for cathodic protection | 15d | 2011-11-24 A | 2011-12-27 A | 4229PCP20 | 100% | 2011-12-04 | 2011-12-22 |  |  |  | 18502 | 09 |
| 4229EME100 |  | MRP for cathodic protection | 5d | 2012-02-26 A | 2012-02-28 A | 4229PCP60 | 100% | 2012-03-04 | 2012-03-08 |  |  |  | 18502 | 14 |
| 4229EME170 |  | MRQ for Progressive Cavity Pump | 5d | 2012-03-07 A | 2012-03-13 A |  | 100% | 2012-04-29 | 2012-05-03 |  |  |  | 13103 | 01 |
| 4229EME130 |  | Data sheets for corrosion inhibitor pump-Purchase | 3d | 2012-03-25 A | 2012-04-04 A | 4229EPR150 SS | 100% | 2012-04-01 | 2012-04-03 |  |  |  |  |  |
| 4229EME140 |  | Data sheets for demulsifier injection pump-Purchase | 5d | 2012-03-25 A | 2012-03-27 A | 4229EPR150 SS | 100% | 2012-04-05 | 2012-04-11 |  |  |  |  |  |
| 4229EME150 |  | Data sheets for scale inhibitor -Purchase | 5d | 2012-03-25 A | 2012-03-27 A | 4229EME140 SS | 100% | 2012-04-05 | 2012-04-11 |  |  |  |  |  |
| 4229EME160 |  | Specifications for positive displacement pumps | 5d | 2012-03-25 A | 2012-03-27 A | 4229EME130 SS, 4229EME140 SS, 4229EME150 SS | 100% | 2012-04-05 | 2012-04-11 |  |  |  |  |  |
| 4229EME120 |  | V.P.R for cathodic protection | 45d | 2012-03-27 A | 2012-05-22 A | 4229PCP90 SS+30d | 100% | 2012-04-08 | 2012-06-07 |  |  |  |  |  |
| 4229EME180 |  | T.E.R. for Progressive cavity pump | 30d | 2012-04-29 A | 2012-06-12 A | 4229PPC110 | 100% | 2012-05-02 | 2012-06-12 |  |  |  | 13103 | 09 |
| 4229EME190 |  | V.P.R for Progressive Cavity pump | 100d | 2012-07-08 | 2012-12-06 | 4229PPC140 SS |  |  |  | 56d |  |  |  |  |
| 4229EME200 |  | MRP for Progressive Cavity pump | 5d | 2012-07-08 | 2012-07-12 | 4229PPC190 |  |  |  | 141d | 0d |  | 13103 | 14 |

| ID | WBS | Activity | Duration | Start | Finish | Predecessors | Complete | Remaining | Planned start | Planned finish | Total float | Free float | Constraint | Global Commodity Code | Global Activity Code |
| --- | --- | --- | --- | --- | --- | --- | --- | --- | --- | --- | --- | --- | --- | --- | --- |
|  | 8 | **Pressure vessels** |  | 2011-09-25 | 2012-09-06 |  |  |  |  |  |  |  |  |  |  |
|  | 1 | **Drawings /lists** |  |  |  |  |  |  |  |  |  |  |  |  |  |
|  | 2 | **Reports** |  |  |  |  |  |  |  |  |  |  |  |  |  |
|  | 3 | **MRQ's** |  | 2011-09-25 | 2012-09-06 |  |  |  |  |  |  |  |  |  |  |
| 4229EPV10 |  | Issue MRQ for Small Tanks | 5d | 2011-09-25 A | 2011-10-24 A | 4229GM10, 4229EPI110 | 100% |  | 2011-10-27 | 2011-11-02 |  |  |  | 11303 | 01 |
| 4229EPV20 |  | Issue MRQ for Pressure vesseles | 5d | 2011-09-25 A | 2011-11-17 A | 4229GM10 | 100% |  | 2011-11-01 | 2011-11-14 |  |  |  | 11301 | 01 |
| 4229EPV30 |  | T.E.R for Small Tanks | 20d | 2011-11-24 A | 2011-12-29 A | 4229PTA20 | 100% |  | 2011-12-04 | 2011-12-29 |  |  |  | 11303 | 09 |
| 4229EPV40 |  | T.E.R for Pressure Vessels | 20d | 2011-12-15 A | 2012-02-20 A | 4229PVE20 | 100% |  | 2011-12-11 | 2012-01-05 |  |  |  | 11301 | 09 |
| 4229EPV50 |  | MRP for Small Tanks (cancelled) | 5d | 2012-03-03 A | 2012-03-03 A | 4229PTA60 | 100% |  | 2012-03-18 | 2012-03-22 |  |  |  | 11303 | 14 |
| 4229EPV70 |  | V.P.R for Small Tanks (cancelled) | 50d | 2012-03-03 A | 2012-03-03 A | 4229PTA90 SS+30d | 100% |  | 2012-04-29 | 2012-07-05 |  |  |  |  |  |
| 4229EPV60 |  | MRP for Pressure Vessels | 5d | 2012-03-25 A | 2012-03-25 A | 4229PVE60 | 100% |  | 2012-03-25 | 2012-03-29 |  |  |  | 11301 | 14 |
| 4229EPV80 |  | V.P.R for Pressure Vesseles | 40d | 2012-04-09 A | 2012-09-06 | 4229PVE90 SS+30d |  | 40d | 2012-05-06 | 2012-06-28 | 116d |  |  |  |  |
|  | 5 | **Electrical** |  | 2011-08-15 | 2012-09-06 |  |  |  |  |  |  |  |  |  |  |
|  | 1 | **Drawings /lists** |  | 2011-08-21 | 2012-09-06 |  |  |  |  |  |  |  |  |  |  |
| 4229EEL20 |  | Single line diagram -Approval | 5d | 2011-08-21 A | 2011-08-25 A | 4229EME30, 4229EEL50 | 100% |  | 2011-12-11 | 2011-12-15 |  |  |  |  |  |
| 4229EEL50 |  | Electrical Load analysis -Design | 5d | 2011-11-02 A | 2011-12-15 A | 4229EME30 FS+15d, 4229EPR40 | 100% |  | 2011-12-07 | 2011-12-13 |  |  |  |  |  |
| 4229EEL120 |  | Single line diagram -Design | 8d | 2011-11-20 A | 2011-11-27 A | 4229EME70, 4229EEL130 FF, 4229EEL110 FF, 4229EEL20 FS+5d | 100% |  | 2011-12-27 | 2012-01-05 |  |  |  |  |  |
| 4229EEL70 |  | Hazardous area classification layout -IFA | 10d | 2011-11-21 A | 2011-11-29 A | 4229ELP40 | 100% |  | 2011-12-04 | 2011-12-15 |  |  |  |  |  |
| 4229EEL80 |  | Electrical layouts IFA | 15d | 2011-11-22 A | 2011-12-08 A | 4229EPI110 | 100% |  | 2011-12-04 | 2011-12-22 |  |  |  |  |  |
| 4229EEL160 |  | Hazardous area classification layout -IFD | 10d | 2011-11-27 A | 2012-01-24 A | 4229EPI220 FF+5d | 100% |  | 2012-01-12 | 2012-01-26 |  |  |  |  |  |
| 4229EEL100 |  | Electrical cable routing layouts -Approval | 10d | 2011-11-30 A | 2011-12-20 A | 4229EEL80 | 100% |  | 2012-01-11 | 2012-01-24 |  |  | start on 2012-01-11 |  |  |
| 4229EEL90 |  | Cable schedule IFA | 5d | 2011-12-04 A | 2011-12-06 A | 4229EEL100 FF | 100% |  | 2011-12-11 | 2011-12-15 |  |  |  |  |  |
| 4229EEL190 |  | Electrical cable routing layouts -Design | 10d | 2012-01-01 A | 2012-01-30 A | 4229EPI280, 4229EEL170 FF+5d | 100% |  | 2012-03-18 | 2012-03-29 |  |  |  |  |  |
| 4229EEL170 |  | Electrical layouts IFD | 15d | 2012-01-08 A | 2012-01-29 A | 4229EPI220 | 100% |  | 2012-03-04 | 2012-03-22 |  |  |  |  |  |
| 4229EEL180 |  | Cable schedule IFD | 5d | 2012-01-19 A | 2012-02-01 A | 4229EEL90 FS+5d, 4229EEL190 FF | 100% |  | 2012-03-25 | 2012-03-29 |  |  |  |  |  |
| 4229EEL110 |  | Electrical Load analysis -Final | 5d | 2012-07-10 | 2012-07-16 | 4229EPR120, 4229EME70 |  |  |  |  | 139d | 0d |  |  |  |
| 4229EEL220 |  | Interconnection & wiring diagram- Construction | 15d | 2012-07-12 | 2012-08-01 | 4229PSG90 SS+40d, 4229PSU60 SS+40d |  |  |  |  | 127d | 11d |  |  |  |
| 4229EEL290 |  | Single line diagram -Construction | 10d | 2012-07-17 | 2012-07-30 | 4229EIN480 SS+18d |  |  |  |  | 139d | 103d |  |  |  |
| 4229EEL230 |  | Electrical layouts-Construction | 10d | 2012-07-19 | 2012-08-01 | 4229EPI390 |  |  |  |  | 122d | 6d |  |  |  |
| 4229EEL240 |  | Hazardous area classification layout -IFC | 10d | 2012-07-24 | 2012-08-06 | 4229ELP370 |  |  |  |  | 124d | 8d |  |  |  |
| 4229EEL260 |  | Electrical cable routing layouts -Construction | 10d | 2012-08-05 | 2012-08-16 | 4229EPI430, 4229EEL230 FF+5d |  |  |  |  | 116d | 0d |  |  |  |
| 4229EEL250 |  | Cable schedule IFC | 5d | 2012-08-12 | 2012-08-16 | 4229EEL260 FF, 4229EEL180 |  |  |  |  | 116d | 0d |  |  |  |
| 4229EEL270 |  | Electrical installation details -Construction | 10d | 2012-08-26 | 2012-09-06 | 4229EEL180, 4229EEL100, 4229EEL190, 4229EEL250, 4229EEL80, 4229EEL230, 4229EEL220, 4229EEL70, 4229EEL50, 4229EEL260, 4229EEL110, 4229EEL160, 4229EEL90, 4229EEL120, 4229EEL240, 4229EEL170, 4229EEL20 |  |  |  |  | 116d | 80d |  |  |  |

| ID | WBS | Activity | Duration | Start | Finish | Predecessors | Complete | Remaining | Planned start | Planned finish | Total float | Free float | Constraint | Global Commodity Code | Global Activity Code |
| --- | --- | --- | --- | --- | --- | --- | --- | --- | --- | --- | --- | --- | --- | --- | --- |
|  | 2 | **Reports** |  |  |  |  |  |  |  |  |  |  |  |  |  |
|  | 3 | **MRQ's** |  | 2011-08-15 | 2012-08-30 |  |  |  |  |  |  |  |  |  |  |
| 4229EEL10 |  | Issue MRQ for solar power unit | 7d | 2011-08-15 A | 2011-08-23 A | 4229GM10 | 100% |  |  |  |  |  |  | 51018 | 01 |
| 4229EEL30 |  | Issue MRQ for Navigation aids | 3d | 2011-09-15 A | 2011-09-19 A | 4229GM10 FS+21d | 100% |  |  |  |  |  |  | 51010 | 01 |
| 4229EEL40 |  | T.E.R for solar power unit | 15d | 2011-10-13 A | 2012-01-31 A | 4229PSU20 | 100% |  | 2011-10-16 | 2011-11-03 |  |  |  | 51018 | 09 |
| 4229EEL60 |  | T.E.R for Navigation aids | 15d | 2011-10-17 A | 2011-12-07 A | 4229PNA20 | 100% |  | 2011-10-17 | 2011-11-13 |  |  |  | 51010 | 09 |
| 4229EEL140 |  | Issue MRQ for Electrical bulk | 8d | 2011-12-18 A | 2011-12-27 A | 4229EEL90, 4229GM10 FS+1d, 4229EEL80 | 100% |  |  |  |  |  |  | 50002 | 01 |
| 4229EEL150 |  | MRP for Navigation aids | 5d | 2012-01-12 A | 2012-01-18 A | 4229PNA60 | 100% |  | 2012-01-16 | 2012-01-22 |  |  |  | 51010 | 14 |
| 4229EEL200 |  | T.E.R for Electrical bulk | 15d | 2012-02-02 A | 2012-06-10 A | 4229PEB20 | 100% |  | 2012-03-05 | 2012-03-25 |  |  |  | 50002 | 09 |
| 4229EEL130 |  | MRP for solar power unit | 5d | 2012-03-08 A | 2012-03-28 A | 4229PSU60 | 100% |  | 2012-03-08 | 2012-03-14 |  |  |  | 51018 | 14 |
| 4229EEL280 |  | V.P.R for solar power unit | 70d | 2012-04-05 A | 2012-08-30 | 4229PSU90 SS+30d | 50% | 35d | 2012-05-06 | 2012-08-09 | 121d |  |  |  |  |
| 4229EEL300 |  | V.P.R for Navigation aids | 13d | 2012-04-26 A | 2012-07-01 |  | 92% | 1d | 2012-05-06 | 2012-05-22 | 160d | 124d |  |  |  |
| 4229EEL210 |  | MRP for Electrical bulk | 5d | 2012-07-10 | 2012-07-16 | 4229PEB60 |  |  |  |  | 56d | 0d |  | 50002 | 14 |
|  | 6 | **Instrument** |  | 2011-08-15 | 2012-11-19 |  |  |  |  |  |  |  |  |  |  |
|  | 1 | **Drawings /lists** |  | 2011-09-29 | 2012-08-30 |  |  |  |  |  |  |  |  |  |  |
| 4229EIN70 |  | Instrument I/O list issued for approval | 2d | 2011-09-29 A | 2011-10-09 A | 4229EPR40 | 100% |  | 2011-10-13 | 2011-10-16 |  |  |  |  |  |
| 4229EIN150 |  | Instrument I/O list issued for design | 2d | 2011-10-23 A | 2011-12-16 A | 4229EIN130 | 100% |  | 2011-12-15 | 2011-12-18 |  |  |  |  |  |
| 4229EIN60 |  | Instrument index -Approval | 5d | 2011-10-26 A | 2011-11-20 A | 4229EPR40 | 100% |  | 2011-10-30 | 2011-11-03 |  |  |  |  |  |
| 4229EIN120 |  | Instrument layouts -Approval | 15d | 2011-11-22 A | 2011-12-15 A | 4229EPI110 | 100% |  | 2011-12-04 | 2011-12-22 |  |  |  |  |  |
| 4229EIN130 |  | Instrument index issued for design | 5d | 2011-11-28 A | 2011-12-13 A | 4229EPR120 | 100% |  | 2011-12-08 | 2011-12-14 |  |  |  |  |  |
| 4229EIN140 |  | Instrument cable / tubing routing layouts IFA | 10d | 2011-12-05 A | 2012-01-26 A | 4229EEL100 SS+7d | 100% |  | 2011-12-11 | 2011-12-22 |  |  |  |  |  |
| 4229EIN520 |  | Instrument wiring diagram-Approval | 10d | 2011-12-09 A | 2011-12-14 A | 4229EPI230 | 100% |  | 2012-01-11 | 2012-01-24 |  |  |  |  |  |
| 4229EIN190 |  | Instrument hook-ups issued for approval | 10d | 2011-12-12 A | 2012-01-02 A | 4229EPI110 FS+15d | 100% |  | 2011-12-12 | 2011-12-25 |  |  |  |  |  |
| 4229EIN100 |  | Functional loop diagram-Approval | 15d | 2012-01-05 A | 2012-01-11 A | 4229EIN200, 4229EPR90, 4229EIN520 | 100% |  | 2012-01-17 | 2012-02-07 |  |  |  |  |  |
| 4229EIN200 |  | Instrument cable / tubing schedule for approval | 5d | 2012-01-05 A | 2012-01-11 A | 4229EIN520, 4229EIN140 FF+5d | 100% |  | 2012-01-09 | 2012-01-15 |  |  | start on or after 2012-01-09 |  |  |
| 4229EIN310 |  | Instrument hook-ups issued for design | 10d | 2012-01-10 A | 2012-02-02 A | 4229EPI220 FS+15d | 100% |  | 2012-03-04 | 2012-03-15 |  |  |  |  |  |
| 4229EIN240 |  | Functional loop diagram-Design | 6d | 2012-01-15 A | 2012-02-27 A | 4229EPR130 | 100% |  | 2012-03-04 | 2012-03-11 |  |  |  |  |  |
| 4229EIN530 |  | Instrument wiring diagram-Design | 10d | 2012-01-15 A | 2012-01-24 A | 4229EPI280 | 100% |  | 2012-02-13 | 2012-02-26 |  |  |  |  |  |
| 4229EIN300 |  | Instrument cable / tubing schedule for design | 5d | 2012-01-24 A | 2012-01-24 A | 4229EIN280 FF+5d | 100% |  | 2012-03-04 | 2012-03-08 |  |  |  |  |  |
| 4229EIN270 |  | Instrument layouts -Design | 0d | 2012-01-29 A | 2012-02-16 A | 4229EPI220 | 100% |  | 2012-01-29 | 2012-01-29 |  |  |  |  |  |
| 4229EIN570 |  | Instrument loop Diagram-Approval | 1d | 2012-02-22 A | 2012-02-26 A | 4229EIN100 | 100% |  | 2012-03-04 | 2012-03-04 |  |  |  |  |  |
| 4229EIN280 |  | Instrument cable / tubing routing layouts IFD | 8d | 2012-02-29 A | 2012-02-29 A | 4229EPI280 FF | 100% |  | 2012-03-04 | 2012-03-13 |  |  |  |  |  |
| 4229EIN580 |  | Instrument loop diagram-Design | 10d | 2012-03-28 A | 2012-05-02 A | 4229EIN570 FS+5d | 100% |  | 2012-04-01 | 2012-04-12 |  |  |  |  |  |
| 4229EIN400 |  | Instrument index issued for construction | 5d | 2012-06-27 A | 2012-07-08 | 4229EPR180 | 80% | 1d | 2012-07-08 | 2012-07-12 | 150d | 0d |  |  |  |
| 4229EIN410 |  | Instrument I/O list issued for construction | 5d | 2012-07-09 | 2012-07-15 | 4229EIN400 |  |  |  |  | 150d | 114d |  |  |  |
| 4229EIN420 |  | Functional loop diagram-Construction | 15d | 2012-07-15 | 2012-08-02 | 4229EPR200 |  |  |  |  | 135d | 0d |  |  |  |
| 4229EIN440 |  | Instrument hook-ups issued for construction | 10d | 2012-07-19 | 2012-08-01 | 4229EPI390 |  |  |  |  | 137d | 101d |  |  |  |
| 4229EIN450 |  | Instrument layouts -Construction | 10d | 2012-07-19 | 2012-08-01 | 4229EPI390 |  |  |  |  | 122d | 0d |  |  |  |
| 4229EIN460 |  | Instrument cable / tubing routing layouts IFC | 10d | 2012-07-26 | 2012-08-08 | 4229EIN450 FF+5d, 4229EPI430 FF |  |  |  |  | 122d | 0d |  |  |  |
| 4229EIN590 |  | Instrument loop diagram-Construction | 1d | 2012-08-05 | 2012-08-05 | 4229EIN580, 4229EIN420 |  |  |  |  | 135d | 99d |  |  |  |
| 4229EIN470 |  | Instrument cable / tubing schedule for construction | 5d | 2012-08-09 | 2012-08-15 | 4229EIN460 FF+5d |  |  |  |  | 127d | 91d |  |  |  |
| 4229EIN390 |  | Safeguard system schematic diagram- Construction | 10d | 2012-08-12 | 2012-08-30 | 4229PSG90 SS+70d |  |  |  |  | 121d | 85d |  |  |  |
| 4229EIN430 |  | Instrument wiring diagram-Construction | 10d | 2012-08-12 | 2012-08-30 | 4229PMP90 SS+60d, 4229PRV90 SS+60d, 4229PCV90 SS+60d, 4229POV90 SS+60d |  |  |  |  | 121d | 85d |  |  |  |

| ID | WBS | Activity | Duration | Start | Finish | Predecessors | Complete | Remaining | Planned start | Planned finish | Total float | Free float | Constraint | Global Commodity Code | Global Activity Code |
| --- | --- | --- | --- | --- | --- | --- | --- | --- | --- | --- | --- | --- | --- | --- | --- |
|  | 2 | **Reports** |  |  |  |  |  |  |  |  |  |  |  |  |  |
|  | 3 | **MRQ's** |  | 2011-08-15 | 2012-11-19 |  |  |  |  |  |  |  |  |  |  |
| 4229EIN10 |  | Issue MRQ for SGS | 8d | 2011-08-15 A | 2011-08-24 A | 4229GM10 | 100% |  |  |  |  |  |  | 25211 | 01 |
| 4229EIN80 |  | T.E.R for SGS | 25d | 2011-09-28 A | 2012-01-09 A | 4229PSG20 | 100% |  | 2011-09-28 | 2011-11-02 |  |  |  | 25211 | 09 |
| 4229EIN20 |  | Issue MRQ for MPFM | 5d | 2011-09-29 A | 2011-10-04 A | 4229GM10 FS+1d, 4229EPR20 | 100% |  | 2011-09-29 | 2011-10-05 |  |  |  | 22106 | 01 |
| 4229EIN30 |  | Issue MRQ for Pressure regulator valves | 3d | 2011-10-03 A | 2011-10-09 A | 4229GM10 FS+1d, 4229EPR20, 4229EIN20 FF+0.1d | 100% |  |  |  |  |  |  | 21204 | 01 |
| 4229EIN40 |  | Issue MRQ for Choke valves | 5d | 2011-10-10 A | 2011-11-24 A | 4229GM10 FS+1d, 4229EIN30 FS+1d | 100% |  | 2011-10-10 | 2011-10-17 |  |  |  | 23406 | 01 |
| 4229EIN50 |  | Issue MRQ for SDV | 5d | 2011-10-12 A | 2011-10-26 A | 4229EIN40 FS-3d | 100% |  | 2011-10-12 | 2011-10-19 |  |  |  | 23402 | 01 |
| 4229EIN110 |  | T.E.R for MPFM | 20d | 2011-11-14 A | 2011-12-21 A | 4229PMP20 | 100% |  | 2011-12-04 | 2011-12-29 |  |  |  | 22106 | 09 |
| 4229EIN90 |  | Issue MRQ for field Instrument | 5d | 2011-11-16 A | 2011-12-13 A | 4229GM10 FS+1d, 4229EPR40 FS+10d | 100% |  | 2011-12-04 | 2011-12-08 |  |  |  | 21001 | 01 |
| 4229EIN220 |  | T.E.R for SDV | 20d | 2011-11-28 A | 2012-02-01 A | 4229POV20 | 100% |  | 2011-12-04 | 2011-12-29 |  |  |  | 23402 | 09 |
| 4229EIN170 |  | T.E.R for choke valves | 20d | 2011-12-27 A | 2012-04-03 A | 4229PCV20 | 100% |  | 2012-01-01 | 2012-01-29 |  |  |  | 23406 | 09 |
| 4229EIN180 |  | Issue MRQ for Instrument mechanical bulk | 10d | 2012-01-08 A | 2012-02-19 A | 4229GM10 FS+1d, 4229EIN140 | 100% |  | 2012-01-08 | 2012-01-19 |  |  |  | 29101 | 01 |
| 4229EIN230 |  | Issue MRQ for Instrument electrical bulk | 10d | 2012-01-16 A | 2012-02-27 A | 4229GM10 FS+1d, 4229EIN280 FF-10d | 100% |  | 2012-01-16 | 2012-01-30 |  |  | start on or after 2012-01-16 | 29201 | 01 |
| 4229EIN250 |  | T.E.R for field Instrument | 15d | 2012-01-17 A | 2012-05-02 A | 4229PFI20 | 100% |  | 2012-01-17 | 2012-02-07 |  |  | start on or after 2012-01-17 | 21001 | 09 |
| 4229EIN160 |  | T.E.R for Pressure regulator valves | 15d | 2012-02-02 A | 2012-04-03 A | 4229PRV20 | 100% |  | 2012-03-08 | 2012-03-28 |  |  |  | 21204 | 09 |
| 4229EIN260 |  | MRP for MPFM | 5d | 2012-02-09 A | 2012-02-20 A | 4229PMP60 | 100% |  | 2012-03-04 | 2012-03-08 |  |  |  | 22106 | 14 |
| 4229EIN490 |  | V.P.R for MPFM | 90d | 2012-03-08 A | 2012-10-15 | 4229PMP90 SS+45d | 20% | 72d | 2012-05-06 | 2012-09-13 | 89d |  |  |  |  |
| 4229EIN210 |  | MRP for SGS | 5d | 2012-03-08 A | 2012-05-08 A | 4229PSG60 | 100% |  | 2012-03-08 | 2012-03-14 |  |  |  | 25211 | 14 |
| 4229EIN360 |  | T.E.R for Instrument electrical bulk | 15d | 2012-03-26 A | 2012-06-03 A | 4229PIB1010 | 100% |  | 2012-04-25 | 2012-05-15 |  |  |  | 29201 | 09 |
| 4229EIN340 |  | T.E.R for Instrument Mechanical bulk | 15d | 2012-03-27 A | 2012-03-27 A | 4229PIB20 | 100% |  | 2012-04-01 | 2012-04-19 |  |  |  | 29101 | 09 |
| 4229EIN330 |  | MRP for SDV | 5d | 2012-04-22 A | 2012-04-26 A | 4229POV60 | 100% |  | 2012-04-29 | 2012-05-03 |  |  |  | 23402 | 14 |
| 4229EPR300 |  | V.P.R for Shutdown valves | 85d | 2012-04-29 A | 2012-11-15 | 4229POV90 SS+45d |  | 85d | 2012-06-20 | 2012-10-30 | 71d | 35d |  |  |  |
| 4229EIN600 |  | Additional shutdown valves MRQ | 10d | 2012-04-29 A | 2012-05-06 A |  | 100% |  | 2012-04-29 | 2012-05-10 |  |  |  | 23409 | 01 |
| 4229EIN480 |  | V.P.R for safeguard system | 80d | 2012-05-10 A | 2012-10-15 | 4229PSG90 SS+45d | 25% | 60d | 2012-06-25 | 2012-10-28 | 89d | 0d |  |  |  |
| 4229EIN290 |  | MRP for Choke valves | 5d | 2012-05-27 A | 2012-06-05 A | 4229PCV60 | 100% |  | 2012-06-03 | 2012-06-07 |  |  |  | 23406 | 14 |
| 4229EIN320 |  | MRP for pressure regulator valves | 5d | 2012-05-27 A | 2012-05-31 A | 4229PRV60 | 100% |  | 2012-06-03 | 2012-06-07 |  |  |  | 21204 | 14 |
| 4229EIN610 |  | Additional shutdown valves T.E.R | 14d | 2012-05-27 A | 2012-06-25 A | 4229PFV110 | 100% |  | 2012-05-31 | 2012-06-19 |  |  |  | 23409 | 09 |
| 4229EIN370 |  | MRP for Instrument Mechanical bulk | 5d | 2012-05-31 A | 2012-05-31 A | 4229PIB60 | 100% |  | 2012-05-27 | 2012-05-31 |  |  |  | 29101 | 14 |
| 4229EIN550 |  | V.P.R for Instrument Mechanical bulk | 30d | 2012-05-31 A | 2012-05-31 A | 4229PIB90 SS+45d | 100% |  | 2012-07-22 | 2012-09-06 |  |  |  |  |  |
| 4229EIN510 |  | V.P.R for Pressure regulator valves | 90d | 2012-06-06 A | 2012-11-19 | 4229PRV90 SS+30d | 3% | 87d | 2012-07-08 | 2012-11-22 | 69d |  |  |  |  |
| 4229EIN350 |  | MRP for field Instrument | 5d | 2012-07-05 | 2012-07-11 | 4229PFI60 |  |  |  |  | 35d | 0d |  | 21001 | 14 |
| 4229EIN380 |  | MRP for Instrument electrical bulk | 5d | 2012-07-05 | 2012-07-11 | 4229PIB1050 |  |  |  |  | 64d | 0d |  | 29201 | 14 |
| 4229EIN500 |  | V.P.R for choke valves | 40d | 2012-07-15 | 2012-09-13 | 4229PCV90 SS+30d |  |  |  |  | 111d |  |  |  |  |
| 4229EIN620 |  | Additional shutdown valves MRP | 5d | 2012-07-22 | 2012-07-26 | 4229PFV160 |  |  |  |  | 134d | 0d |  | 23409 | 14 |
| 4229EIN540 |  | V.P.R for field instruments | 35d | 2012-09-18 | 2012-11-12 | 4229PFI90 SS+45d |  |  |  |  | 74d | 38d |  |  |  |
| 4229EIN560 |  | V.P.R for Instrument Electrical bulk | 20d | 2012-09-18 | 2012-10-15 | 4229PIB1080 SS+45d |  |  |  |  | 89d | 53d |  |  |  |

| ID | WBS | Activity | Duration | Start | Finish | Predecessors | Complete | Remaining | Planned start | Planned finish | Total float | Free float | Constraint | Expected finish | Global Commodity Code | Global Activity Code |
| --- | --- | --- | --- | --- | --- | --- | --- | --- | --- | --- | --- | --- | --- | --- | --- | --- |
|  | 9 | **Telecommunication** |  | 2011-10-13 | 2013-01-03 |  |  |  |  |  |  |  |  |  |  |  |
|  | 1 | **Drawings /lists** |  | 2011-12-05 | 2012-08-08 |  |  |  |  |  |  |  |  |  |  |  |
| 4229ETE100 |  | Telecommunication equipment layout IFA | 12d | 2011-12-05 A | 2011-12-08 A | 4229EPI110 | 100% |  | 2011-12-04 | 2011-12-19 |  |  |  |  |  |  |
| 4229ETE130 |  | Telecommunication cable routing IFA | 10d | 2011-12-05 A | 2012-01-19 A | 4229EIN140 SS | 100% |  | 2012-01-01 | 2012-01-12 |  |  |  |  |  |  |
| 4229ETE140 |  | Telecommunication cable routing IFD | 10d | 2012-02-01 A | 2012-02-19 A | 4229EIN280 SS | 100% |  | 2012-03-04 | 2012-03-15 |  |  |  |  |  |  |
| 4229ETE110 |  | Telecommunication equipment layout IFD (Expected to be cancelled) | 3d | 2012-07-01 | 2012-07-03 | 4229EPI220 FS+90d, 4229PRS25 |  |  |  |  | 143d | 6d |  |  |  |  |
| 4229ETE120 |  | Telecommunication equipment layout IFC (Expected to be cancelled) | 10d | 2012-07-19 | 2012-08-01 | 4229ETE110 FS+5d, 4229EPI390 |  |  |  |  | 137d |  |  |  |  |  |
| 4229ETE150 |  | Telecommunication cable routing IFC | 10d | 2012-07-26 | 2012-08-08 | 4229EIN460 SS |  |  |  |  | 132d | 96d |  |  |  |  |
|  | 2 | **Reports** |  | 2011-10-13 | 2011-12-04 |  |  |  |  |  |  |  |  |  |  |  |
| 4229ETE10 |  | Telecommunication Philosophy IFA | 10d | 2011-10-13 A | 2011-10-26 A | 4229GM10 FS+40d | 100% |  |  |  |  |  |  |  |  |  |
| 4229ETE20 |  | Final Telecommunication Philosophy | 8d | 2011-11-28 A | 2011-12-04 A | 4229ETE10 FS+10d | 100% |  | 2011-12-04 | 2011-12-13 |  |  |  |  |  |  |
|  | 3 | **Specifications /MRQ's** |  | 2011-10-17 | 2013-01-03 |  |  |  |  |  |  |  |  |  |  |  |
| 4229ETE30 |  | Point To Point VHF Radio System specification | 9d | 2011-10-17 A | 2011-11-17 A | 4229ETE10, 4229EIN210 FF-3d | 100% |  | 2011-12-21 | 2012-01-02 |  |  |  |  |  |  |
| 4229ETE40 |  | Radar system specification IFA | 20d | 2011-10-17 A | 2011-11-17 A | 4229GM140 | 100% |  | 2011-10-17 | 2011-11-20 |  |  |  |  |  |  |
| 4229ETE50 |  | Radar system specification IFD | 10d | 2011-11-21 A | 2011-11-30 A | 4229ETE80 SS+1d, 4229ETE40 FS+5d | 100% |  | 2011-12-04 | 2011-12-15 |  |  |  |  |  |  |
| 4229ETE70 |  | MRQ for Radar System IFA | 8d | 2011-11-21 A | 2011-11-30 A | 4229ETE40 FS+5d | 100% |  | 2011-12-11 | 2011-12-20 |  |  |  |  |  |  |
| 4229ETE80 |  | MRQ for Radar System IFI | 4d | 2011-11-21 A | 2011-11-30 A | 4229ETE70 FS+4d | 100% |  | 2011-12-27 | 2012-01-01 |  |  |  |  | 28601 | 01 |
| 4229ETE170 |  | T.E.R for Radar System | 23d | 2012-07-03 | 2012-08-02 | 4229PRS20 |  |  |  |  | 0d |  | start on 2012-07-03 |  | 28601 | 09 |
| 4229ETE60 |  | Radar system specification IFP | 5d | 2012-09-05 | 2012-09-11 | 4229ETE90 FF |  |  |  |  | 113d |  |  |  |  |  |
| 4229ETE90 |  | MRP for Radar System | 5d | 2012-09-05 | 2012-09-11 | 4229PRS60 |  |  |  |  | 20d | 0d |  |  | 28601 | 14 |
| 4229ETE160 |  | V.P.R for Radar System | 50d | 2012-10-28 | 2013-01-03 | 4229PRS90 SS+30d |  |  |  |  | 36d | 0d |  |  |  |  |
|  | 4 | **Offshore** |  | 2011-10-19 | 2012-09-06 |  |  |  |  |  |  |  |  |  |  |  |
|  | 1 | **Drawings / lists** |  | 2011-10-19 | 2012-09-06 |  |  |  |  |  |  |  |  |  |  |  |
| 4229EOF10 |  | Jacket primary steel Drawings-Approval | 25d | 2011-10-19 A | 2011-11-22 A | 4229GM10 FS+44d, 4229EPI110 FF | 100% |  | 2011-10-19 | 2011-11-29 |  |  |  |  |  |  |
| 4229EOF120 |  | General drawings-Approval | 25d | 2011-10-19 A | 2011-11-22 A | 4229EOF10 SS | 100% |  | 2011-10-19 | 2011-11-29 |  |  |  |  |  |  |
| 4229EOF130 |  | Deck primary steel Drawings- Approval | 20d | 2011-11-22 A | 2011-12-29 A | 4229EPI110 | 100% |  | 2011-12-04 | 2011-12-29 |  |  |  |  |  |  |
| 4229EOF170 |  | Jacket secondary steel & piles Drawings-Approval | 15d | 2011-11-23 A | 2011-12-15 A | 4229EOF10 | 100% |  | 2011-12-04 | 2011-12-22 |  |  |  |  |  |  |
| 4229EOF270 |  | General Drawings- Construction | 20d | 2011-12-07 A | 2011-12-29 A | 4229EOF120 FS+5d, 4229EOF260 SS | 100% |  | 2012-01-01 | 2012-01-29 |  |  |  |  |  |  |
| 4229EOF200 |  | Jacket appartenues Drawings-Approval | 20d | 2011-12-14 A | 2011-12-25 A | 4229EOF170, 4229EPL240 FF+5d, 4229EPL230 FF+5d | 100% |  | 2011-12-14 | 2012-01-10 |  |  |  |  |  |  |
| 4229EOF230 |  | Deck secondary steel Drawings- Approval | 20d | 2011-12-14 A | 2012-01-08 A | 4229EOF130 | 100% |  | 2011-12-14 | 2012-01-10 |  |  |  |  |  |  |
| 4229EOF260 |  | Jacket primary steel Drawings- Construction | 20d | 2011-12-15 A | 2011-12-29 A | 4229EOF10 FS+10d | 100% |  | 2012-01-01 | 2012-01-29 |  |  |  |  |  |  |
| 4229EOF290 |  | Stairs drawings-Approval | 10d | 2012-01-01 A | 2012-02-20 A | 4229EOF200 | 100% |  | 2012-01-01 | 2012-01-12 |  |  |  |  |  |  |
| 4229EOF310 |  | Grating & handrails drawings-Approval | 15d | 2012-01-04 A | 2012-01-08 A | 4229EOF130, 4229EOF230 | 100% |  | 2012-01-30 | 2012-02-19 |  |  |  |  |  |  |
| 4229EOF410 |  | Grating & handrails drawings-Construction | 15d | 2012-01-10 A | 2012-01-19 A | 4229EOF310 FS+5d | 100% |  | 2012-02-27 | 2012-03-18 |  |  |  |  |  |  |
| 4229EOF350 |  | Jacket secondary steel & piles Drawings- Construction | 15d | 2012-01-15 A | 2012-02-28 A | 4229EOF260, 4229EOF170 FS+10d | 100% |  | 2012-01-29 | 2012-02-16 |  |  |  |  |  |  |
| 4229EOF280 |  | Cable trays supports -Approval | 12d | 2012-01-29 A | 2012-07-15 | 4229EIN280 FS+30d, 4229EEL100, 4229EEL190 FS+30d, 4229EIN140, 4229ELP110 | 8% | 11d | 2012-05-15 | 2012-05-30 | 135d | 0d | start on 2012-05-15 | 2012-07-15 |  |  |
| 4229EOF550 |  | Deck primary steel Drawings- Construction | 15d | 2012-05-20 A | 2012-07-26 | 4229EOF130 FF, 4229EOF130 FS+7d, 4229EOF10, 4229EPI390 | 60% | 6d | 2012-06-18 | 2012-07-08 | 116d | 0d |  | 2012-07-26 |  |  |
| 4229EOF560 |  | Deck secondary steel Drawings- Construction | 15d | 2012-05-20 A | 2012-08-16 | 4229EOF550 |  | 15d | 2012-07-09 | 2012-07-29 | 116d | 0d |  |  |  |  |
| 4229EOF520 |  | Jacket Appurtenances Drawings-Construction | 0d | 2012-06-17 A | 2012-06-26 A | 4229EPL430 FF+5d, 4229EPL420 FF+5d, 4229EOF350 | 100% |  | 2012-07-01 | 2012-07-01 |  |  |  |  |  |  |
| 4229EOF390 |  | Stairs drawings-Construction | 10d | 2012-06-18 A | 2012-06-24 A | 4229EPI390, 4229EOF290 FS+5d | 100% |  | 2012-07-29 | 2012-08-09 |  |  |  |  |  |  |
| 4229EOF360 |  | Piping supports -Approval | 8d | 2012-07-01 | 2012-07-10 | 4229EPI280 FS+60d |  |  |  |  | 148d | 0d |  |  |  |  |
| 4229EOF600 |  | Equipment fixation deatils-Construction | 10d | 2012-07-25 | 2012-08-07 | 4229EPR250 SS+40d, 4229EPI420 SS+42d, 4229PSG90 SS+53d, 4229EME120 SS+20d, 4229EPR240 SS+20d |  |  |  |  | 133d | 97d |  |  |  |  |
| 4229EOF580 |  | Piping supports -Construction | 5d | 2012-08-05 | 2012-08-09 | 4229EPI430, 4229EOF360 |  |  |  |  | 131d | 95d |  |  |  |  |
| 4229EOF590 |  | Cable trays supports -Construction | 10d | 2012-08-26 | 2012-09-06 | 4229EOF280 FS+5d, 4229ELP390, 4229EIN460, 4229EEL260 |  |  |  |  | 116d | 80d |  |  |  |  |

| ID | WBS | Activity | Duration | Start | Finish | Predecessors | Complete | Remaining | Planned start | Planned finish | Total float | Free float | Constraint | Expected finish |
| --- | --- | --- | --- | --- | --- | --- | --- | --- | --- | --- | --- | --- | --- | --- |
|  | 2 | **Reports** |  | 2011-10-19 | 2012-09-06 |  |  |  |  |  |  |  |  |  |
| 4229EOF100 |  | Jacket on-bottom stability report-Approval | 62d | 2011-10-19 A | 2012-01-31 A | 4229EOF70 SS | 100% |  | 2011-10-19 | 2012-01-19 |  |  |  |  |
| 4229EOF110 |  | Pile foundation design report-Approval | 81d | 2011-10-19 A | 2012-03-14 A | 4229EOF100 SS | 100% |  | 2011-10-19 | 2012-02-16 |  |  |  |  |
| 4229EOF20 |  | In-place analysis design report-Approval | 72d | 2011-10-19 A | 2012-02-16 A | 4229EOF10 SS | 100% |  | 2011-10-19 | 2012-02-05 |  |  |  |  |
| 4229EOF30 |  | Earthquake analysis design report-Approval | 72d | 2011-10-19 A | 2012-02-28 A | 4229EOF20 SS | 100% |  | 2011-10-19 | 2012-02-05 |  |  |  |  |
| 4229EOF40 |  | Fatigue analysis design report-Approval | 77d | 2011-10-19 A | 2012-02-09 A | 4229EOF20 SS | 100% |  | 2011-10-19 | 2012-02-12 |  |  |  |  |
| 4229EOF50 |  | Boat impact design analysis report-Approval | 77d | 2011-10-19 A | 2012-02-26 A | 4229EOF40 SS | 100% |  | 2011-10-19 | 2012-02-12 |  |  |  |  |
| 4229EOF60 |  | Jacket loadout analysis design report-Approval | 52d | 2011-10-19 A | 2012-01-22 A | 4229EOF10 SS | 100% |  | 2011-10-19 | 2012-01-05 |  |  |  |  |
| 4229EOF70 |  | Jacket transportation analysis design report-Approval | 52d | 2011-10-19 A | 2012-01-22 A | 4229EOF60 SS | 100% |  | 2011-10-19 | 2012-01-05 |  |  |  |  |
| 4229EOF80 |  | Jacket lifting analysis design report-Approval | 52d | 2011-10-19 A | 2012-01-05 A | 4229EOF70 SS | 100% |  |  |  |  |  |  |  |
| 4229EOF90 |  | Jacket floatation & upending analysis report-Approval | 62d | 2011-10-19 A | 2012-01-31 A | 4229EOF60 SS | 100% |  | 2011-10-19 | 2012-01-19 |  |  |  |  |
| 4229EOF150 |  | Deck transportation analysis report-Approval | 70d | 2011-10-27 A | 2012-02-16 A | 4229EOF130 SS | 100% |  | 2011-10-27 | 2012-02-09 |  |  |  |  |
| 4229EOF160 |  | Deck lifting analysis design report-Approval | 70d | 2011-10-27 A | 2012-03-08 A | 4229EOF130 SS | 100% |  | 2011-10-27 | 2012-02-09 |  |  |  |  |
| 4229EOF300 |  | Topside weight control report- Approval | 8d | 2011-11-22 A | 2012-01-31 A | 4229EOF130, 4229EOF230 | 100% |  | 2012-01-18 | 2012-01-30 |  |  |  |  |
| 4229EOF180 |  | Jacket miscellaneous design report-Approval | 49d | 2011-11-23 A | 2012-02-09 A | 4229EOF170 SS | 100% |  | 2011-12-04 | 2012-02-09 |  |  |  |  |
| 4229EOF190 |  | Jacket weight control report -Approval | 8d | 2011-12-14 A | 2012-01-26 A | 4229EOF170, 4229EOF10 | 100% |  | 2012-01-01 | 2012-01-10 |  |  |  |  |
| 4229EOF240 |  | Deck miscellaneous design report-Approval | 55d | 2011-12-14 A | 2012-07-18 | 4229EOF360 FF+5d, 4229EOF230 SS | 100% | 0d | 2012-01-01 | 2012-03-18 | 148d | 0d |  | 2012-03-29 |
| 4229EOF250 |  | Pushover analysis design SOW | 18d | 2011-12-15 A | 2011-12-29 A | 4229EOF60 FS-3d | 100% |  | 2012-03-04 | 2012-03-27 |  |  | start on 2012-03-01 |  |
| 4229EOF430 |  | Jacket weight control report -Final | 8d | 2012-01-11 A | 2012-02-09 A | 4229EOF350, 4229EOF260 | 100% |  | 2012-03-25 | 2012-04-03 |  |  |  |  |
| 4229EOF340 |  | Jacket lifting analysis design report-Final | 10d | 2012-01-29 A | 2012-02-09 A | 4229EOF80 FS+10d | 100% |  |  |  |  |  |  |  |
| 4229EOF480 |  | Pushover analysis design T.E.R | 10d | 2012-02-01 A | 2012-03-04 A |  | 100% |  | 2012-05-03 | 2012-05-16 |  |  |  |  |
| 4229EOF320 |  | Jacket loadout analysis design report-Final | 10d | 2012-02-07 A | 2012-02-09 A | 4229EOF60 FS+10d | 100% |  | 2012-03-04 | 2012-03-15 |  |  | start on or after 2012-01-30 |  |
| 4229EOF330 |  | Jacket transportation analysis design report- Final | 10d | 2012-02-07 A | 2012-02-09 A | 4229EOF70 FS+10d | 100% |  | 2012-03-04 | 2012-03-15 |  |  |  |  |
| 4229EOF370 |  | Jacket floatation & upending analysis report-Final | 10d | 2012-02-13 A | 2012-03-07 A | 4229EOF90 FS+10d | 100% |  | 2012-03-27 | 2012-04-09 |  |  |  |  |
| 4229EOF380 |  | Jacket on-bottom stability report-Final | 10d | 2012-02-13 A | 2012-02-26 A | 4229EOF100 FS+10d | 100% |  | 2012-03-29 | 2012-04-11 |  |  |  |  |
| 4229EOF450 |  | Fatigue analysis design report-Final | 10d | 2012-02-21 A | 2012-03-08 A | 4229EOF40 FS+10d | 100% |  | 2012-04-02 | 2012-04-15 |  |  |  |  |
| 4229EOF140 |  | Deck loadout analysis report-Approval | 70d | 2012-02-26 A | 2012-02-26 A | 4229EOF130 SS | 100% |  | 2011-10-27 | 2012-02-09 |  |  |  |  |
| 4229EOF460 |  | Boat impact design analysis report-Final | 10d | 2012-03-11 A | 2012-03-26 A | 4229EOF50 FS+10d | 100% |  | 2012-03-11 | 2012-03-22 |  |  |  |  |
| 4229EOF610 |  | Topside weight control report- Final | 8d | 2012-06-28 A | 2012-07-29 | 4229EOF550 | 100% | 0d | 2012-08-26 | 2012-09-04 | 131d | 5d |  |  |
| 4229EOF420 |  | In-place analysis design report-Final | 10d | 2012-07-22 | 2012-08-02 | 4229EOF550 FF+5d |  |  |  |  | 126d | 0d |  | 2012-03-21 |
| 4229EOF500 |  | Deck transportation analysis report-Final | 10d | 2012-07-22 | 2012-08-02 | 4229EOF550 FF+5d, 4229EOF150 FS+10d |  |  |  |  | 136d | 0d |  | 2012-03-21 |
| 4229EOF510 |  | Deck lifting analysis design report-Final | 10d | 2012-07-22 | 2012-08-02 | 4229EOF550 FF+5d |  |  |  |  | 136d | 100d |  |  |
| 4229EOF440 |  | Earthquake analysis design report-Final | 10d | 2012-07-29 | 2012-08-09 | 4229EOF40 FS+10d, 4229EOF550 FF+10d |  |  |  |  | 131d | 0d |  | 2012-03-21 |
| 4229EOF470 |  | Pile foundation design report-Final | 10d | 2012-07-29 | 2012-08-09 | 4229EOF550 |  |  |  |  | 131d | 95d |  |  |
| 4229EOF490 |  | Deck loadout analysis report-Final | 10d | 2012-07-29 | 2012-08-09 | 4229EOF140 FS+10d, 4229EOF550 FF+10d |  |  |  |  | 131d | 0d |  | 2012-03-21 |
| 4229EOF530 |  | Deck miscellaneous design report-Final | 10d | 2012-07-29 | 2012-08-09 | 4229EOF550 |  |  |  |  | 131d | 95d |  |  |
| 4229EOF570 |  | Constructability study report | 10d | 2012-08-05 | 2012-08-16 | 4229EOF610 FF-10d, 4229EOF610, 4229EOF420 |  |  |  |  | 126d | 90d |  |  |
| 4229EOF630 |  | Jacket miscellaneous design report-Final | 10d | 2012-08-26 | 2012-09-06 | 4229EOF550, 4229EOF560 |  |  |  |  | 116d | 80d |  |  |

| ID | WBS | Activity | Duration | Start | Finish | Predecessors | Complete | Planned start | Planned finish | Calendar |
| --- | --- | --- | --- | --- | --- | --- | --- | --- | --- | --- |
|  | 3 | **Specifications / MTO's** |  | 2011-12-13 | 2011-12-28 |  |  |  |  |  |
| 4229EOF210 |  | Steel structure specification | 6d | 2011-12-13 A | 2011-12-20 A | 4229EOF170 FS+1d | 100% | 2011-12-14 | 2011-12-20 | 7 - 7 Days Working Week |
| 4229EOF220 |  | Weight control procedures | 6d | 2011-12-13 A | 2011-12-20 A | 4229EOF210 SS | 100% | 2011-12-14 | 2011-12-20 | 7 - 7 Days Working Week |
| 4229EOF620 |  | Deck Secondary Steel structure MTO | 5d | 2011-12-18 A | 2011-12-28 A | 4229EOF560, 4229EOF550, 4229EOF230, 4229EOF130 | 100% | 2012-08-30 | 2012-09-04 | 7 - 7 Days Working Week |
| 4229EOF660 |  | Jacket app. MTO | 5d | 2011-12-18 A | 2011-12-28 A | 4229EOF520 | 100% | 2012-05-21 | 2012-05-26 | 7 - 7 Days Working Week |
| 4229EOF540 |  | Jacket secondary steel & Piles MTO | 5d | 2011-12-18 A | 2011-12-28 A | 4229EOF260, 4229EOF170, 4229EOF10, 4229EOF350, 4229EOF200 | 100% | 2011-12-18 | 2011-12-22 | 7 - 7 Days Working Week |
| 4229EOF640 |  | Jacket Primary Steel structure MTO | 5d | 2011-12-18 A | 2011-12-25 A | 4229EOF260 | 100% | 2011-12-18 | 2011-12-22 | 7 - 7 Days Working Week |
| 4229EOF650 |  | Deck Primary Steel structure MTO | 5d | 2011-12-18 A | 2011-12-28 A | 4229EOF130 | 100% | 2011-12-18 | 2011-12-22 | 7 - 7 Days Working Week |
|  | 4 | **Additonal studies** |  |  |  |  |  |  |  |  |
|  | 7 | **Pipeline** |  | 2011-08-15 | 2012-09-06 |  |  |  |  |  |
|  | 1 | **Drawings /lists** |  | 2011-11-15 | 2012-06-11 |  |  |  |  |  |
| 4229EPL160 |  | 18" spool arrangement drawing -Approval | 15d | 2011-11-15 A | 2011-12-15 A | 4229EPI110, 4229EOF10 | 100% | 2011-12-04 | 2011-12-22 |  |
| 4229EPL170 |  | 8" spool arrangement drawing -Approval | 15d | 2011-11-23 A | 2011-12-15 A | 4229EPL160 SS | 100% | 2011-12-04 | 2011-12-22 |  |
| 4229EPL230 |  | 8" riser arrangement drawing -Approval | 10d | 2011-12-14 A | 2011-12-28 A | 4229EPL240 SS | 100% | 2011-12-14 | 2011-12-27 |  |
| 4229EPL240 |  | 18" riser arrangement drawing -Approval | 10d | 2011-12-14 A | 2011-12-28 A | 4229EPL170, 4229EPL160 | 100% | 2011-12-14 | 2011-12-27 |  |
| 4229EPL290 |  | 18" spool arangement drawing -Design | 15d | 2011-12-29 A | 2012-02-13 A | 4229EPL160, 4229EPL160 FF | 100% | 2012-01-01 | 2012-01-19 |  |
| 4229EPL310 |  | 8" spool arrangement drawing -Design | 15d | 2011-12-29 A | 2012-02-13 A | 4229EPL170 FS+10d | 100% | 2012-01-01 | 2012-01-19 |  |
| 4229EPL320 |  | 18"Spool ISO-IFD | 15d | 2012-02-01 A | 2012-02-21 A | 4229EPL290 | 100% | 2012-03-04 | 2012-03-22 |  |
| 4229EPL340 |  | 8"Spool ISO-IFD | 15d | 2012-02-01 A | 2012-02-21 A | 4229EPL310 | 100% | 2012-03-04 | 2012-03-22 |  |
| 4229EPL330 |  | 8" riser arrangement drawing -Design | 10d | 2012-02-26 A | 2012-02-29 A | 4229EPL230 FS+10d, 4229EPL310 | 100% | 2012-03-13 | 2012-03-26 |  |
| 4229EPL350 |  | 18" riser arrangement drawing -Design | 10d | 2012-02-26 A | 2012-02-29 A | 4229EPL240 FS+10d, 4229EPL330 FS-10d | 100% | 2012-03-13 | 2012-03-26 |  |
| 4229EPL380 |  | 8"Riser ISO-IFD | 15d | 2012-02-26 A | 2012-03-15 A | 4229EPL330 | 100% | 2012-03-05 | 2012-03-25 |  |
| 4229EPL400 |  | 18"Riser ISO-IFD | 15d | 2012-02-26 A | 2012-03-15 A | 4229EPL350 | 100% |  |  |  |
| 4229EPL390 |  | 18" spool arangement drawing -Construction | 15d | 2012-03-18 A | 2012-03-27 A | 4229EPL330, 4229EPL290, 4229EPL350 | 100% | 2012-03-04 | 2012-03-22 |  |
| 4229EPL410 |  | 8" spool arangement drawing -Construction | 15d | 2012-03-18 A | 2012-03-27 A | 4229EPL310, 4229EPL390 FF | 100% | 2012-03-04 | 2012-03-22 |  |
| 4229EPL420 |  | 8" riser arrangement drawing -Construction | 15d | 2012-03-25 A | 2012-04-19 A | 4229EPL390, 4229EPL410 | 100% | 2012-04-01 | 2012-04-19 |  |
| 4229EPL430 |  | 18" riser arrangement drawing -Construction | 15d | 2012-03-25 A | 2012-04-19 A | 4229EPL420 SS | 100% | 2012-04-01 | 2012-04-19 |  |
| 4229EPL440 |  | 18"Spool ISO-IFC | 0d | 2012-05-02 A | 2012-05-29 A | 4229EPL430, 4229EPL420, 4229EPL410, 4229EPL390 | 100% | 2012-06-03 | 2012-06-03 |  |
| 4229EPL450 |  | 8"Spool ISO-IFC | 0d | 2012-05-02 A | 2012-05-29 A | 4229EPL390, 4229EPL420, 4229EPL430, 4229EPL410 | 100% | 2012-06-03 | 2012-06-03 |  |
| 4229EPL460 |  | 8"Riser ISO-IFC | 0d | 2012-05-02 A | 2012-05-29 A | 4229EPL420, 4229EPL430, 4229EPL390, 4229EPL410 | 100% | 2012-06-03 | 2012-06-03 |  |
| 4229EPL470 |  | 18"Riser ISO-IFC | 0d | 2012-05-02 A | 2012-05-29 A | 4229EPL410, 4229EPL420, 4229EPL390, 4229EPL430 | 100% | 2012-06-03 | 2012-06-03 |  |
| 4229EPL480 |  | MTO for risers / spools | 6d | 2012-05-28 A | 2012-06-11 A | 4229EPL440, 4229EPL450, 4229EPL470, 4229EPL460 | 100% | 2012-07-01 | 2012-07-08 |  |

| ID | WBS | Activity | Duration | Start | Finish | Predecessors | Complete | Remaining | Planned start | Planned finish | Total float | Free float | Global Commodity Code | Global Activity Code |
| --- | --- | --- | --- | --- | --- | --- | --- | --- | --- | --- | --- | --- | --- | --- |
|  | 2 | **Reports** |  | 2011-11-30 | 2012-06-05 |  |  |  |  |  |  |  |  |  |
| 4229EPL120 |  | Wall thickness report for risers & spools-Approval | 5d | 2011-11-30 A | 2011-12-05 A | 4229EPL170 SS+5d | 100% |  | 2011-12-11 | 2011-12-15 |  |  |  |  |
| 4229EPL200 |  | Wall thickness report for risers & spools-Final | 5d | 2011-12-06 A | 2011-12-19 A | 4229EPL120 FS+5d | 100% |  | 2011-12-13 | 2011-12-19 |  |  |  |  |
| 4229EPL490 |  | Risers / spoolpieces stress analysis report-Construction | 10d | 2012-04-26 A | 2012-06-05 A | 4229EPL460 FF+5d, 4229EPL450 FF+5d, 4229EPL470 FF+5d, 4229EPL440 FF+5d | 100% |  | 2012-05-24 | 2012-06-06 |  |  |  |  |
|  | 3 | **MRQ's** |  | 2011-08-15 | 2012-09-06 |  |  |  |  |  |  |  |  |  |
| 4229EPL10 |  | Pipeline specifications & data sheets | 21d | 2011-08-15 A | 2011-09-14 A | 4229GM10 SS | 100% |  |  |  |  |  |  |  |
| 4229EPL20 |  | MRQ for hot bends | 15d | 2011-09-15 A | 2011-10-02 A | 4229EPL10 | 100% |  | 2011-09-15 | 2011-10-05 |  |  | 61202 | 01 |
| 4229EPL60 |  | MRQ for Kamos ring | 10d | 2011-09-22 A | 2011-10-02 A | 4229EPL20 FF | 100% |  | 2011-09-22 | 2011-10-05 |  |  | 41901 | 01 |
| 4229EPL40 |  | MRQ for heat shrink sleeves | 10d | 2011-09-27 A | 2011-10-11 A | 4229EPL10 FF, 4229EPL10 FS+8d | 100% |  |  |  |  |  | 46201 | 01 |
| 4229EPL80 |  | MRQ for isolating joints | 10d | 2011-10-04 A | 2011-10-19 A | 4229EPL60 SS+8d | 100% |  | 2011-10-04 | 2011-10-18 |  |  | 61203 | 01 |
| 4229EPL30 |  | MRQ for flanges | 5d | 2011-10-09 A | 2011-10-13 A | 4229EPL20 | 100% |  |  |  |  |  | 61205 | 01 |
| 4229EPL560 |  | MRQ for 8" line pipe | 10d | 2011-10-09 A | 2011-10-23 A | 4229EPL50 FF-3d | 100% |  | 2011-10-09 | 2011-10-20 |  |  | 61102 | 01 |
| 4229EPL50 |  | MRQ for anchor flanges | 8d | 2011-10-16 A | 2011-10-25 A | 4229EPL30 | 100% |  |  |  |  |  | 44906 | 01 |
| 4229EPL90 |  | T.E.R for hot bends | 20d | 2011-10-30 A | 2011-12-08 A | 4229PHB20 | 100% |  | 2011-12-04 | 2011-12-29 |  |  | 61202 | 09 |
| 4229EPL130 |  | T.E.R for heat shrink sleeves | 15d | 2011-11-03 A | 2011-12-05 A | 4229PHS20, 4229EPL40 FS+10d | 100% |  | 2011-12-04 | 2011-12-22 |  |  | 46201 | 09 |
| 4229EPL140 |  | T.E.R for kamos ring | 15d | 2011-11-13 A | 2011-11-20 A | 4229PKR20 FF, 4229PKR20 | 100% |  | 2011-12-04 | 2011-12-22 |  |  | 41901 | 09 |
| 4229EPL210 |  | T.E.R for isolating joints | 15d | 2011-11-13 A | 2011-12-08 A | 4229EPL40 FS+10d, 4229PIJ20 | 100% |  | 2011-12-04 | 2011-12-22 |  |  | 61203 | 09 |
| 4229EPL70 |  | T.E.R for 8"line pipe | 20d | 2011-11-22 A | 2012-01-08 A | 4229PPL10 | 100% |  | 2012-01-22 | 2012-02-19 |  |  | 61102 | 09 |
| 4229EPL100 |  | T.E.R for flanges | 20d | 2011-12-01 A | 2012-01-18 A | 4229P4220, 4229EPL20 FS+10d | 100% |  | 2011-12-05 | 2012-01-01 |  |  | 61205 | 09 |
| 4229EPL180 |  | Welding & NDT specification-Design | 10d | 2011-12-01 A | 2011-12-21 A | 4229EPL250 SS-9d | 100% |  | 2011-12-04 | 2011-12-15 |  |  |  |  |
| 4229EPL150 |  | T.E.R for anchor flanges | 15d | 2011-12-06 A | 2012-01-05 A | 4229EPL20 FS+10d, 4229PAF20 | 100% |  | 2011-12-06 | 2011-12-26 |  |  | 44906 | 09 |
| 4229EPL250 |  | Testing & pre-commissioning specification-Approval | 10d | 2011-12-14 A | 2012-01-02 A | 4229EPL160, 4229EPL40, 4229EPL50, 4229EPL170, 4229EPL60, 4229EPL80, 4229EPL20, 4229EPL30 | 100% |  | 2011-12-14 | 2011-12-27 |  |  |  |  |
| 4229EPL270 |  | MRP for kamos ring | 5d | 2011-12-21 A | 2011-12-26 A | 4229PKR60 | 100% |  | 2012-01-08 | 2012-01-12 |  |  | 41901 | 14 |
| 4229EPL370 |  | Welding & NDT specification-Final | 5d | 2012-01-01 A | 2012-03-08 A | 4229EPL180 | 100% |  | 2012-07-19 | 2012-07-25 |  |  |  |  |
| 4229EPL550 |  | VPR for isolating joints | 40d | 2012-01-09 A | 2012-04-16 A | 4229PIJ90 SS+30d | 100% |  | 2012-03-11 | 2012-05-03 |  |  |  |  |
| 4229EPL300 |  | MRP for isolating joints | 1d | 2012-01-24 A | 2012-01-31 A | 4229PIJ60 | 100% |  | 2012-01-29 | 2012-01-29 |  |  | 61203 | 14 |
| 4229EPL260 |  | MRP for heat shrink sleeves | 5d | 2012-01-24 A | 2012-02-02 A | 4229PHS60 | 100% |  | 2012-01-24 | 2012-01-31 |  |  | 46201 | 14 |
| 4229EPL540 |  | VPR for kamos ring | 40d | 2012-02-01 A | 2012-03-01 A | 4229PKR90 SS+30d | 100% |  | 2012-03-04 | 2012-04-26 |  |  |  |  |
| 4229EPL190 |  | MRP for hot bends | 5d | 2012-02-09 A | 2012-02-19 A | 4229PHB70 | 100% |  | 2012-01-29 | 2012-02-02 |  |  | 61202 | 14 |
| 4229EPL280 |  | MRP for anchor flanges | 5d | 2012-02-14 A | 2012-02-28 A | 4229PAF60 | 100% |  | 2012-03-04 | 2012-03-08 |  |  | 44906 | 14 |
| 4229EPL530 |  | VPR for heat shrink sleeves | 40d | 2012-02-19 A | 2012-02-29 A | 4229PHS90 SS+30d | 100% |  | 2012-03-04 | 2012-04-26 |  |  |  |  |
| 4229EPL110 |  | MRP for 8" pipeline | 5d | 2012-02-21 A | 2012-02-26 A | 4229PPL80 | 100% |  | 2012-03-04 | 2012-03-08 |  |  | 61102 | 14 |
| 4229EPL520 |  | VPR for anchor flanges | 40d | 2012-02-21 A | 2012-03-20 A | 4229PAF90 SS+30d | 100% |  | 2012-04-22 | 2012-06-14 |  |  |  |  |
| 4229EPL220 |  | MRP for flanges | 5d | 2012-02-26 A | 2012-02-28 A | 4229PFL60 | 100% |  | 2012-03-07 | 2012-03-13 |  |  | 61205 | 14 |
| 4229EPL510 |  | VPR for flanges | 40d | 2012-03-11 A | 2012-07-15 | 4229PFL90 SS+30d | 72% | 11d | 2012-03-29 | 2012-05-23 | 150d |  |  |  |
| 4229EPL570 |  | VPR for 8"line pipe | 40d | 2012-04-05 A | 2012-07-01 |  | 98% | 1d | 2012-05-06 | 2012-06-28 | 160d |  |  |  |
| 4229EPL500 |  | VPR for hot bends | 40d | 2012-04-18 A | 2012-08-30 | 4229PHB100 SS+30d | 12% | 35d | 2012-04-08 | 2012-05-31 | 121d |  |  |  |
| 4229EPL360 |  | Testing & pre-commissioning specification-Final | 5d | 2012-09-02 | 2012-09-06 | 4229EPI500, 4229EPL250 FS+5d, 4229EPL350, 4229EPL290, 4229EPL310, 4229EPL330 |  |  |  |  | 116d | 80d |  |  |

| ID | WBS | Activity | Type | Duration | Start | Finish | Predecessors | Complete | Remaining | Planned start | Planned finish | Total float | Free float | Constraint | Expected finish | Calendar | Global Commodity Code | Global Activity Code |
| --- | --- | --- | --- | --- | --- | --- | --- | --- | --- | --- | --- | --- | --- | --- | --- | --- | --- | --- |
|  | 3 | **Procurement** |  |  | 2011-08-23 | 2013-02-24 |  |  |  |  |  |  |  |  |  |  |  |  |
|  | 13 | **Fire & gas detectors** |  |  | 2012-01-10 | 2012-09-05 |  |  |  |  |  |  |  |  |  |  |  |  |
| 4229PFG10 |  | Issue RFQ for Fire & gas detectors |  | 2d | 2012-01-10 A | 2012-01-10 A |  | 100% |  | 2012-01-10 | 2012-01-11 |  |  | start on or after 2012-01-10 |  |  | 25205 | 03 |
| 4229PFG15 |  | Bidding Fire & gas detectors |  | 17d | 2012-01-11 A | 2012-02-26 A | 4229PFG10 | 100% |  | 2012-03-03 | 2012-03-19 |  |  |  |  | SUPPLIER | 25205 | 04 |
| 4229PFG20 |  | T.E.R for fire & Gas detection | level of effort | 15d | 2012-02-27 A | 2012-05-03 A | 4229ELP560 FF, 4229ELP560 SS | 100% |  | 2012-03-20 | 2012-04-09 |  |  |  |  |  |  |  |
| 4229PFG25 |  | Receive revised commercial offers |  | 5d | 2012-05-06 A | 2012-05-10 A | 4229ELP560 | 100% |  | 2012-04-29 | 2012-05-03 |  |  |  |  |  | 25205 | 10 |
| 4229PFG30 |  | commercial evaluation & bid committee for Fire & gas detectors |  | 10d | 2012-05-10 A | 2012-05-13 A | 4229PFG25 | 100% |  | 2012-05-06 | 2012-05-17 |  |  |  |  |  | 25205 | 11 |
| 4229PFG35 |  | Client approval on bid committee reccomendation |  | 2d | 2012-05-14 A | 2012-05-16 A | 4229PFG30 | 100% |  | 2012-05-20 | 2012-05-21 |  |  |  |  |  | 25205 | 12 |
| 4229PFG40 |  | F.O.C for Fire & gas detectors |  | 3d | 2012-05-17 A | 2012-05-27 A | 4229PFG30, 4229PFG35 | 100% |  | 2012-06-10 | 2012-06-12 |  |  |  |  |  | 25205 | 13 |
| 4229PFG45 |  | MRP for fire & Gas detection | level of effort | 5d | 2012-05-28 A | 2012-05-29 A | 4229ELP570 SS, 4229ELP570 FF | 100% |  | 2012-06-03 | 2012-06-07 |  |  |  |  |  |  |  |
| 4229PFG50 |  | P.O for Fire & gas detectors |  | 5d | 2012-06-03 A | 2012-06-05 A | 4229ELP570 | 100% |  | 2012-07-01 | 2012-07-05 |  |  |  |  |  | 25205 | 15 |
| 4229PFG60 |  | Fabrication upto R.F.S |  | 84d | 2012-06-07 A | 2012-08-26 | 4229PFG55, 4229PFG50 | 38% | 52d | 2012-07-15 | 2012-10-06 | 174d | 0d |  |  | calendar | 25205 | 16 |
| 4229PFG55 |  | L.C issued by Gupco |  | 5d | 2012-07-01 | 2012-07-05 | 4229PFG50 |  |  |  |  | 114d | 0d |  |  |  | 25205 |  |
| 4229PFG65 |  | Delivery upto site |  | 10d | 2012-08-27 | 2012-09-05 | 4229PFG60 |  |  |  |  | 174d |  |  |  | calendar | 25205 | 21 |
|  | 22 | **Pressure safety valves** |  |  | 2011-10-19 | 2012-09-25 |  |  |  |  |  |  |  |  |  |  |  |  |
| 4229PSV10 |  | Issue RFQ for PSV |  | 2d | 2011-10-19 A | 2011-10-20 A | 4229EPR60 | 100% |  | 2011-10-16 | 2011-10-17 |  |  |  |  |  | 24701 | 03 |
| 4229PSV20 |  | Bidding for PSV |  | 30d | 2011-10-21 A | 2011-11-16 A | 4229PSV10 | 100% |  | 2011-10-18 | 2011-11-16 |  |  |  |  | SUPPLIER | 24701 | 04 |
| 4229PSV25 |  | T.E.R for PSV | level of effort | 27.88d | 2011-11-17 A | 2012-01-31 A | 4229EPR160 FF, 4229EPR160 SS | 100% |  | 2011-11-16 | 2011-12-25 |  |  |  |  |  |  |  |
| 4229PSV30 |  | Receive revised commercial offers |  | 5d | 2012-02-01 A | 2012-02-27 A | 4229EPR160 | 100% |  | 2012-02-01 | 2012-02-07 |  |  |  |  |  | 24701 | 10 |
| 4229PSV40 |  | commercial evaluation & bid committee for PSV |  | 10d | 2012-02-28 A | 2012-03-06 A | 4229PSV30, 4229EPR160 | 100% |  | 2012-03-04 | 2012-03-15 |  |  |  |  |  | 24701 | 11 |
| 4229PSV50 |  | Client approval on bid committee reccomendation |  | 2d | 2012-03-07 A | 2012-04-02 A | 4229PSV40 | 100% |  | 2012-04-01 | 2012-04-02 |  |  |  |  |  | 24701 | 12 |
| 4229PSV60 |  | F.O.C for PSV |  | 3d | 2012-04-02 A | 2012-04-03 A | 4229PSV50, 4229PSV40 | 100% |  | 2012-04-03 | 2012-04-05 |  |  |  |  |  | 24701 | 13 |
| 4229PSV65 |  | MRP for PSV | level of effort | 2d | 2012-04-05 A | 2012-04-09 A | 4229EPR170 FF, 4229EPR170 SS | 100% |  | 2012-04-05 | 2012-04-08 |  |  |  |  |  |  |  |
| 4229PSV70 |  | P.O for PSV |  | 5d | 2012-04-10 A | 2012-04-11 A | 4229EPR170 | 100% |  | 2012-04-10 | 2012-04-16 |  |  |  |  |  | 24701 | 15 |
| 4229PSV90 |  | Fabrication upto R.F.S |  | 147d | 2012-04-11 A | 2012-09-11 | 4229PSV70, 4229PSV80 | 62% | 56d | 2012-04-06 | 2012-09-11 | 30d | 0d |  | 2012-09-11 | SUPPLIER | 24701 | 16 |
| 4229PSV80 |  | L.C issued by Gupco |  | 5d | 2012-07-01 | 2012-07-05 | 4229PSV70 |  |  |  |  | 20d | 0d |  |  |  | 24701 |  |
| 4229PSV100 |  | Delivery upto site |  | 14d | 2012-09-12 | 2012-09-25 | 4229PSV90 |  |  |  |  | 154d | 115d |  |  | calendar | 24701 | 21 |

| ID | WBS | Activity | Type | Duration | Start | Finish | Predecessors | Complete | Remaining | Planned start | Planned finish | Total float | Free float | Constraint | Calendar | Global Commodity Code | Global Activity Code |
| --- | --- | --- | --- | --- | --- | --- | --- | --- | --- | --- | --- | --- | --- | --- | --- | --- | --- |
|  | 3 | **Fire fighting system** |  |  | 2012-01-09 | 2012-12-07 |  |  |  |  |  |  |  |  |  |  |  |
| 4229PFF10 |  | Issue RFQ for Fire fighting |  | 2d | 2012-01-09 A | 2012-01-10 A | 4229ELP60 | 100% |  |  |  |  |  | start on or after 2012-01-09 |  | 19004 | 03 |
| 4229PFF15 |  | Re-issue RFQ for Fire Fighting |  | 1d | 2012-03-01 A | 2012-03-03 A | 4229PFF10 | 100% |  | 2012-04-29 | 2012-04-29 |  |  |  |  |  |  |
| 4229PFF20 |  | Bidding for Fire fighting |  | 20d | 2012-03-04 A | 2012-04-03 A | 4229PFF15, 4229PFF10 | 100% |  | 2012-01-11 | 2012-01-31 |  |  | start on or after 2012-01-11 | SUPPLIER | 19004 | 04 |
| 4229PFF25 |  | T.E.R for fire fighting system | level of effort | 21d | 2012-04-03 A | 2012-05-29 A | 4229ELP170 SS, 4229ELP170 FF | 100% |  | 2012-04-03 | 2012-05-01 |  |  |  |  |  |  |
| 4229PFF30 |  | Receive revised commercial offers |  | 5d | 2012-05-30 A | 2012-06-07 A | 4229ELP170 | 100% |  | 2012-06-03 | 2012-06-07 |  |  |  |  | 19004 | 10 |
| 4229PFF35 |  | commercial evaluation & bid committee for Fire fighting |  | 10d | 2012-06-10 A | 2012-06-10 A | 4229ELP170, 4229PFF30 | 100% |  | 2012-07-04 | 2012-07-17 |  |  |  |  | 19004 | 11 |
| 4229PFF40 |  | Client approval on bid committee reccomendation |  | 2d | 2012-06-12 A | 2012-07-02 | 4229PFF35 |  | 2d | 2012-07-15 | 2012-07-16 | 60d | 0d |  |  | 19004 | 12 |
| 4229PFF50 |  | MRP for fire fighting system | level of effort | 5d | 2012-06-25 A | 2012-07-05 | 4229ELP330 FF, 4229ELP330 SS |  | 5d | 2012-07-25 | 2012-07-31 | 60d | 0d |  |  |  |  |
| 4229PFF45 |  | F.O.C for Fire fighting |  | 3d | 2012-07-03 | 2012-07-05 | 4229PFF35, 4229PFF40 |  |  |  |  | 60d | 0d |  |  | 19004 | 13 |
| 4229PFF55 |  | P.O for Fire fighting |  | 5d | 2012-07-08 | 2012-07-12 | 4229ELP330 |  |  |  |  | 60d | 0d |  |  | 19004 | 15 |
| 4229PFF60 |  | L.C issued by Gupco |  | 5d | 2012-07-15 | 2012-07-19 | 4229PFF55 |  |  |  |  | 60d | 0d |  |  | 19004 |  |
| 4229PFF65 |  | Fabrication upto R.F.S |  | 84d | 2012-07-20 | 2012-10-23 | 4229PFF55, 4229PFF60 |  |  |  |  | 79d | 0d |  | SUPPLIER | 19004 | 16 |
| 4229PFF70 |  | Delivery upto site |  | 45d | 2012-10-24 | 2012-12-07 | 4229PFF65 |  |  |  |  | 81d |  |  | calendar | 19004 | 21 |
|  | 31 | **Life saving equipment (Cancelled)** |  |  | 2012-01-05 | 2012-05-23 |  |  |  |  |  |  |  |  |  |  |  |
| 4229PLS10 |  | Issue RFQ for Life saving equipment |  | 2d | 2012-01-05 A | 2012-01-05 A | 4229ELP590 | 100% |  | 2012-01-05 | 2012-01-08 |  |  | start on or after 2012-01-05 |  | 19003 | 03 |
| 4229PLS15 |  | Bidding Life saving equipment |  | 25d | 2012-01-09 A | 2012-02-28 A | 4229PLS10 | 100% |  | 2012-01-09 | 2012-02-03 |  |  | start on or after 2012-01-09 | SUPPLIER | 19003 | 04 |
| 4229PLS20 |  | T.E.R for life saving equipment | level of effort | 15d | 2012-02-15 A | 2012-05-15 A | 4229ELP600 FF, 4229ELP600 SS | 100% |  | 2012-03-04 | 2012-03-22 |  |  |  |  |  |  |
| 4229PLS25 |  | MRP for life saving equipment | level of effort | 0d | 2012-05-15 A | 2012-05-15 A | 4229ELP610 SS, 4229ELP610 FF | 100% |  |  |  |  |  |  |  |  |  |
| 4229PLS30 |  | Fabrication upto R.F.S |  | 90d | 2012-05-23 A | 2012-05-23 A | 4229PLS50, 4229PLS65 | 100% |  | 2012-07-13 | 2012-10-22 |  |  |  | SUPPLIER | 19003 | 16 |
| 4229PLS35 |  | Delivery upto site |  | 45d | 2012-05-23 A | 2012-05-23 A | 4229PLS30 | 100% |  | 2012-10-23 | 2012-12-06 |  |  |  | calendar | 19003 | 21 |
| 4229PLS40 |  | Receive revised commercial offers |  | 5d | 2012-05-23 A | 2012-05-23 A | 4229ELP600 | 100% |  | 2012-06-03 | 2012-06-07 |  |  |  |  | 19003 | 10 |
| 4229PLS45 |  | Client approval on bid committee reccomendation |  | 2d | 2012-05-23 A | 2012-05-23 A | 4229PLS55 | 100% |  | 2012-06-24 | 2012-06-25 |  |  |  |  | 19003 | 12 |
| 4229PLS50 |  | L.C issued by Gupco |  | 5d | 2012-05-23 A | 2012-05-23 A | 4229PLS65 | 100% |  | 2012-07-08 | 2012-07-12 |  |  |  |  | 19003 |  |
| 4229PLS55 |  | commercial evaluation & bid committee for Life saving equipment |  | 10d | 2012-05-23 A | 2012-05-23 A | 4229PLS40 | 100% |  | 2012-06-10 | 2012-06-21 |  |  |  |  | 19003 | 11 |
| 4229PLS60 |  | F.O.C for Life saving equipment |  | 3d | 2012-05-23 A | 2012-05-23 A | 4229PLS55, 4229PLS45 | 100% |  | 2012-06-26 | 2012-06-28 |  |  |  |  | 19003 | 13 |
| 4229PLS65 |  | P.O for Life saving equipment |  | 5d | 2012-05-23 A | 2012-05-23 A | 4229ELP610 | 100% |  | 2012-07-01 | 2012-07-05 |  |  |  |  | 19003 | 15 |

| ID | WBS | Activity | Type | Duration | Start | Finish | Predecessors | Complete | Remaining | Planned start | Planned finish | Total float | Free float | Expected finish | Calendar | Global Commodity Code | Global Activity Code |
| --- | --- | --- | --- | --- | --- | --- | --- | --- | --- | --- | --- | --- | --- | --- | --- | --- | --- |
|  | 6 | **Chemical injection PKG** |  |  | 2011-08-24 | 2012-09-20 |  |  |  |  |  |  |  |  |  |  |  |
| 4229PCI10 |  | Issue RFQ for Chemical injection Pkg. |  | 2d | 2011-08-24 A | 2011-08-25 A | 4229GM10 FS+1d, 4229EPR10 FS-1d | 100% |  |  |  |  |  |  |  | 16506 | 03 |
| 4229PCI20 |  | Bidding for Chemical injection Pkg. |  | 24d | 2011-08-26 A | 2011-09-19 A | 4229PCI10 | 100% |  | 2011-08-26 | 2011-09-18 |  |  |  | SUPPLIER | 16506 | 04 |
| 4229PCI25 |  | T.E.R for Chemical injection | level of effort | 20d | 2011-09-19 A | 2011-11-24 A | 4229EPR70 FF, 4229EPR70 SS | 100% |  | 2011-09-19 | 2011-10-17 |  |  |  |  |  |  |
| 4229PCI30 |  | Receive revised commercial offers |  | 5d | 2012-02-05 A | 2012-02-27 A | 4229EPR70 FS+15d, 4229EPR310 | 100% |  | 2012-03-25 | 2012-03-29 |  |  |  |  | 16506 | 10 |
| 4229PCI40 |  | Commercial evaluation & bid committee for Chemical injection Pkg. |  | 10d | 2012-02-28 A | 2012-03-06 A | 4229PCI30, 4229EPR70 | 100% |  | 2012-03-04 | 2012-03-15 |  |  |  |  | 16506 | 11 |
| 4229PCI60 |  | F.O.C for Chemical injection Pkg. |  | 3d | 2012-03-07 A | 2012-03-20 A | 4229PCI40, 4229PCI50 | 100% |  | 2012-04-01 | 2012-04-03 |  |  |  |  | 16506 | 13 |
| 4229PCI50 |  | Client approval on bid committee reccomendation |  | 2d | 2012-03-13 A | 2012-03-18 A | 4229PCI40 | 100% |  | 2012-03-13 | 2012-03-14 |  |  |  |  | 16506 | 12 |
| 4229PCI90 |  | Fabrication upto R.F.S |  | 140d | 2012-03-21 A | 2012-08-06 | 4229PCI70, 4229PCI80 | 77% | 32d | 2012-04-06 | 2012-09-04 | 30d | 0d | 2012-08-06 | SUPPLIER | 16506 | 16 |
| 4229PCI65 |  | MRP for Chemical injection | level of effort | 3d | 2012-03-25 A | 2012-04-05 A | 4229EPR150 FF, 4229EPR150 SS | 100% |  | 2012-03-25 | 2012-03-27 |  |  |  |  |  |  |
| 4229PCI70 |  | P.O for Chemical injection Pkg. |  | 5d | 2012-04-08 A | 2012-04-08 A | 4229PCI60, 4229EPR150 | 100% |  | 2012-04-01 | 2012-04-05 |  |  |  |  | 16506 | 15 |
| 4229PCI80 |  | L.C issued by Gupco |  | 5d | 2012-07-01 | 2012-07-05 | 4229PCI70 |  |  |  |  | 20d | 0d |  |  | 16506 |  |
| 4229PCI100 |  | Delivery upto site |  | 45d | 2012-08-07 | 2012-09-20 | 4229PCI90 |  |  |  |  | 159d |  |  | calendar | 16506 | 21 |
|  | 7 | **Piping Bulk** |  |  | 2011-11-24 | 2013-01-25 |  |  |  |  |  |  |  |  |  |  |  |
| 4229PPB10 |  | Issue RFQ for Piping bulk |  | 2d | 2011-11-24 A | 2011-11-24 A | 4229EPI120, 4229GM10 | 100% |  | 2011-12-04 | 2011-12-05 |  |  |  |  | 40001 | 03 |
| 4229PPB20 |  | Bidding for Piping bulk |  | 14d | 2011-11-25 A | 2011-12-20 A | 4229PPB10 | 100% |  | 2011-12-06 | 2011-12-19 |  |  |  | SUPPLIER | 40001 | 04 |
| 4229PPB25 |  | T.E.R for Piping bulk | level of effort | 15d | 2011-12-22 A | 2012-01-26 A | 4229EPI250 FF, 4229EPI250 SS | 100% |  | 2011-12-13 | 2012-01-02 |  |  |  |  |  |  |
| 4229PPB30 |  | Receive revised commercial offers |  | 5d | 2012-01-25 A | 2012-02-07 A | 4229EPI250 | 100% |  | 2012-01-26 | 2012-02-01 |  |  |  |  | 40001 | 10 |
| 4229PPB40 |  | commercial evaluation & bid committee for Piping bulk |  | 12d | 2012-02-08 A | 2012-02-23 A | 4229PPB30, 4229EPI250 | 100% |  | 2012-03-11 | 2012-03-26 |  |  |  |  | 40001 | 11 |
| 4229PPB50 |  | Client approval on bid committee reccomendation |  | 2d | 2012-02-23 A | 2012-02-29 A | 4229PPB40 | 100% |  | 2012-03-04 | 2012-03-05 |  |  |  |  | 40001 | 12 |
| 4229PPB60 |  | F.O.C for Piping bulk |  | 3d | 2012-03-01 A | 2012-03-18 A | 4229PPB50, 4229PPB40 | 100% |  | 2012-04-03 | 2012-04-05 |  |  |  |  | 40001 | 13 |
| 4229PPB65 |  | MRP for Piping bulk | level of effort | 7d | 2012-03-19 A | 2012-03-27 A | 4229EPI300 FF, 4229EPI300 SS | 100% |  |  |  |  |  |  |  |  |  |
| 4229PPB70 |  | P.O for Piping bulk |  | 2d | 2012-03-28 A | 2012-03-29 A | 4229EPI300 | 100% |  | 2012-04-01 | 2012-04-02 |  |  |  |  | 40001 | 15 |
| 4229PPB90 |  | Fabrication upto R.F.S (1st Batch) |  | 98d | 2012-04-01 A | 2012-07-31 | 4229PPB70, 4229PPB80 | 73% | 26d | 2012-04-06 | 2012-07-12 | 151d | 0d | 2012-07-31 | SUPPLIER | 40001 | 16 |
| 4229PPB80 |  | L.C issued by Gupco |  | 5d | 2012-07-01 | 2012-07-05 | 4229PPB70 |  |  |  |  | 105d | 0d |  |  |  |  |
| 4229PPB100 |  | Delivery upto site (1st Batch) |  | 45d | 2012-08-01 | 2012-09-14 | 4229PPB90 |  |  |  |  | 165d | 126d |  | calendar | 40001 | 21 |
| 4229PPB110 |  | Fabrication upto R.F.S for minimal piping balance |  | 120d | 2012-09-14 | 2013-01-11 | 4229EPI430, 4229EPI460 FS+15d |  |  |  |  | 30d | 0d |  | SUPPLIER |  |  |
| 4229PPB120 |  | Delivery upto site (2nd Batch) for minimal piping balance |  | 14d | 2013-01-12 | 2013-01-25 | 4229PPB110 |  |  |  |  | 30d |  |  | calendar |  |  |

| ID | WBS | Activity | Type | Duration | Start | Finish | Predecessors | Complete | Remaining | Planned start | Planned finish | Total float | Free float | Expected finish | Calendar | Global Commodity Code | Global Activity Code |
| --- | --- | --- | --- | --- | --- | --- | --- | --- | --- | --- | --- | --- | --- | --- | --- | --- | --- |
|  | 35 | **Additional piping bulk** |  |  | 2012-05-15 | 2012-10-24 |  |  |  |  |  |  |  |  |  |  |  |
| 4229PAP100 |  | Issue RFQ for Piping bulk |  | 2d | 2012-05-15 A | 2012-05-16 A | 4229EPI330 | 100% |  | 2012-04-29 | 2012-04-30 |  |  |  |  | 40003 | 03 |
| 4229PAP110 |  | Bidding for Piping bulk |  | 25d | 2012-05-17 A | 2012-06-13 A | 4229PAP100 | 100% |  | 2012-05-01 | 2012-05-25 |  |  |  | SUPPLIER | 40003 | 04 |
| 4229PAP120 |  | T.E.R for Piping bulk | level of effort | 20d | 2012-06-14 A | 2012-07-01 | 4229EPI360 FF, 4229EPI360 SS | 95% | 1d | 2012-07-01 | 2012-07-26 | 87d | 0d |  |  |  |  |
| 4229PAP130 |  | Receive revised commercial offers |  | 5d | 2012-07-02 | 2012-07-08 | 4229EPI360 |  |  |  |  | 87d | 0d |  |  | 40003 | 10 |
| 4229PAP140 |  | commercial evaluation & bid committee for Piping bulk |  | 12d | 2012-07-09 | 2012-07-24 | 4229PAP130 |  |  |  |  | 87d | 0d |  |  | 40003 | 11 |
| 4229PAP150 |  | Client approval on bid committee reccomendation |  | 2d | 2012-07-25 | 2012-07-26 | 4229PAP140 |  |  |  |  | 87d | 0d |  |  | 40003 | 12 |
| 4229PAP160 |  | F.O.C for Piping bulk |  | 3d | 2012-07-29 | 2012-07-31 | 4229PAP150, 4229PAP140 |  |  |  |  | 87d | 0d |  |  | 40003 | 13 |
| 4229PAP170 |  | MRP for Piping bulk | level of effort | 5d | 2012-08-01 | 2012-08-07 | 4229EPI450 SS, 4229EPI450 FF |  |  |  |  | 126d | 0d |  |  |  |  |
| 4229PAP200 |  | Fabrication upto R.F.S |  | 63d | 2012-08-01 | 2012-10-14 | 4229PAP160 |  |  |  |  | 123d | 0d |  | SUPPLIER | 40003 | 16 |
| 4229PAP180 |  | P.O for Piping bulk |  | 2d | 2012-08-08 | 2012-08-09 | 4229EPI450, 4229PAP170 |  |  |  |  | 126d | 0d |  |  | 40003 | 15 |
| 4229PAP190 |  | L.C issued by Gupco |  | 5d | 2012-08-12 | 2012-08-16 | 4229PAP180 |  |  |  |  | 126d |  |  |  | 40003 | 12 |
| 4229PAP210 |  | Delivery upto site (Air Freight) |  | 10d | 2012-10-15 | 2012-10-24 | 4229PAP200 |  |  |  |  | 125d |  |  | calendar | 40003 | 21 |
|  | 8 | **Piping Gate,Globe & Butterfly valves** |  |  | 2011-12-08 | 2013-01-25 |  |  |  |  |  |  |  |  |  |  |  |
| 4229PPV10 |  | Issue RFQ for Piping valves |  | 2d | 2011-12-08 A | 2011-12-08 A | 4229GM10 | 100% |  | 2012-01-01 | 2012-01-02 |  |  |  |  | 40002 | 03 |
| 4229PPV20 |  | Bidding for Piping valves |  | 14d | 2011-12-09 A | 2012-01-03 A | 4229PPV10 | 100% |  | 2012-01-08 | 2012-01-21 |  |  |  | SUPPLIER | 40002 | 04 |
| 4229PPV25 |  | T.E.R for Piping valves | level of effort | 21d | 2012-01-12 A | 2012-02-08 A | 4229EPI260 FF, 4229EPI260 SS | 100% |  | 2012-01-12 | 2012-02-12 |  |  |  |  |  |  |
| 4229PPV30 |  | Receive revised commercial offers |  | 5d | 2012-02-09 A | 2012-02-22 A | 4229EPI260 | 100% |  | 2012-03-04 | 2012-03-08 |  |  |  |  | 40002 | 10 |
| 4229PPV40 |  | commercial evaluation & bid committee for Piping valves |  | 10d | 2012-02-23 A | 2012-03-14 A | 4229EPI260, 4229PPV30 | 100% |  | 2012-03-11 | 2012-03-22 |  |  |  |  | 40002 | 11 |
| 4229PPV50 |  | Client approval on bid committee reccomendation |  | 2d | 2012-03-15 A | 2012-04-04 A | 4229PPV40 | 100% |  | 2012-04-15 | 2012-04-16 |  |  |  |  | 40002 | 12 |
| 4229PPV60 |  | F.O.C for Piping valves |  | 3d | 2012-04-05 A | 2012-04-05 A | 4229PPV50, 4229PPV40 | 100% |  | 2012-04-09 | 2012-04-11 |  |  |  |  | 40002 | 13 |
| 4229PPV65 |  | MRP for Piping valves | level of effort | 4d | 2012-04-08 A | 2012-04-12 A | 4229EPI310 FF, 4229EPI310 SS | 100% |  | 2012-04-08 | 2012-04-11 |  |  |  |  |  |  |
| 4229PPV70 |  | P.O for Piping valves |  | 2d | 2012-04-12 A | 2012-04-17 A | 4229EPI310 | 100% |  | 2012-04-12 | 2012-04-15 |  |  |  |  | 40002 | 15 |
| 4229PPV90 |  | Fabrication upto R.F.S (1st Batch) |  | 136d | 2012-04-17 A | 2012-08-19 | 4229PPV70, 4229PPV80 | 67% | 45d | 2012-04-06 | 2012-08-19 | 30d | 0d | 2012-08-19 | SUPPLIER | 40002 | 16 |
| 4229PPV80 |  | L.C issued by Gupco |  | 5d | 2012-07-01 | 2012-07-05 | 4229PPV70 |  |  |  |  | 20d | 0d |  |  |  |  |
| 4229PPV110 |  | Delivery upto site (1st Batch) |  | 14d | 2012-08-20 | 2012-09-02 | 4229PPV90 |  |  |  |  | 177d |  |  | calendar | 40002 | 21 |
| 4229PPV100 |  | Fabrication upto R.F.S (2nd Batch) for minimal balance |  | 120d | 2012-09-14 | 2013-01-11 | 4229EPI430, 4229EPI460 FS+15d |  |  |  |  | 30d | 0d |  | SUPPLIER | 40002 | 16 |
| 4229PPV120 |  | Delivery upto site (2nd Batch) for minimal balance |  | 14d | 2013-01-12 | 2013-01-25 | 4229PPV100 |  |  |  |  | 30d |  |  | calendar | 40002 | 21 |

| ID | WBS | Activity | Type | Duration | Start | Finish | Predecessors | Complete | Remaining | Planned start | Planned finish | Total float | Free float | Expected finish | Calendar | Global Commodity Code | Global Activity Code |
| --- | --- | --- | --- | --- | --- | --- | --- | --- | --- | --- | --- | --- | --- | --- | --- | --- | --- |
|  | 37 | **Additional Piping Gate,Globe & Butterfly valves** |  |  | 2012-05-27 | 2013-01-28 |  |  |  |  |  |  |  |  |  |  |  |
| 4229PAV10 |  | Issue RFQ for Additional Piping Gate,Globe & Butterfly valves |  | 1d | 2012-05-27 A | 2012-05-27 A | 4229EPI350 | 100% |  | 2012-07-02 | 2012-07-02 |  |  |  |  | 40601 | 03 |
| 4229PAV20 |  | Bidding for Piping Gate,Globe & Butterfly valves |  | 1d | 2012-05-28 A | 2012-06-14 A | 4229PAV10 | 100% |  | 2012-07-03 | 2012-07-03 |  |  |  |  | 40601 | 04 |
| 4229PAV30 |  | T.E.R for Additional Piping Gate,Globe & Butterfly valves |  | 25d | 2012-06-18 A | 2012-07-15 | 4229PAV20 | 56% | 11d | 2012-07-04 | 2012-08-07 | 22d | 0d | 2012-07-15 |  | 40601 | 09 |
| 4229PAV40 |  | Receive revised commercial offers |  | 5d | 2012-07-16 | 2012-07-22 | 4229PAV30 |  |  |  |  | 22d | 0d |  |  | 40601 | 10 |
| 4229PAV50 |  | commercial evaluation & bid committee for Piping Gate,Globe & Butterfly valves |  | 10d | 2012-07-23 | 2012-08-05 | 4229PAV40 |  |  |  |  | 22d | 0d |  |  | 40601 | 11 |
| 4229PAV60 |  | Client approval on bid committee reccomendation |  | 2d | 2012-08-06 | 2012-08-07 | 4229PAV50 |  |  |  |  | 22d | 0d |  |  | 40601 | 12 |
| 4229PAV70 |  | F.O.C for Piping Gate,Globe & Butterfly valves |  | 3d | 2012-08-08 | 2012-08-12 | 4229PAV60 |  |  |  |  | 22d | 0d |  |  | 40601 | 13 |
| 4229PAV80 |  | MRP for Piping Gate,Globe & Butterfly valves | level of effort | 5d | 2012-08-13 | 2012-08-26 | 4229PAV70, 4229EPI480 |  |  |  |  | 22d | 0d |  |  | 40601 | 14 |
| 4229PAV90 |  | P.O for Piping Gate,Globe & Butterfly valves |  | 2d | 2012-08-27 | 2012-08-28 | 4229PAV80, 4229EPI480 |  |  |  |  | 22d | 0d |  |  | 40601 | 15 |
| 4229PAV100 |  | L.C issued by Gupco |  | 5d | 2012-08-29 | 2012-09-04 | 4229PAV90 |  |  |  |  | 118d |  |  |  | 40601 | 12 |
| 4229PAV110 |  | Fabrication upto R.F.S |  | 140d | 2012-09-01 | 2013-01-18 | 4229PAV90 |  |  |  |  | 27d | 0d |  | SUPPLIER | 40601 | 16 |
| 4229PAV120 |  | Delivery upto site |  | 10d | 2013-01-19 | 2013-01-28 | 4229PAV110 |  |  |  |  | 27d |  |  | SUPPLIER | 40601 | 19 |
|  | 32 | **Piping Ball Valves** |  |  | 2011-12-08 | 2013-01-26 |  |  |  |  |  |  |  |  |  |  |  |
| 4229PBV10 |  | Issue RFQ for Piping Ball Valves |  | 2d | 2011-12-08 A | 2011-12-08 A | 4229EPI200 | 100% |  | 2012-01-01 | 2012-01-02 |  |  |  |  | 42206 | 03 |
| 4229PBV20 |  | Bidding for Piping Ball Valves |  | 14d | 2011-12-09 A | 2012-01-11 A | 4229PBV10 | 100% |  | 2012-01-08 | 2012-01-21 |  |  |  | SUPPLIER | 42206 | 04 |
| 4229PBV30 |  | T.E.R for Piping Ball Valves | level of effort | 12d | 2012-01-12 A | 2012-02-13 A | 4229EPI270 FF, 4229EPI270 SS | 100% |  | 2012-01-15 | 2012-01-31 |  |  |  |  |  |  |
| 4229PBV40 |  | Receive revised commercial offers |  | 5d | 2012-02-14 A | 2012-03-13 A | 4229EPI270, 4229PBV20 | 100% |  | 2012-03-04 | 2012-03-08 |  |  |  |  | 42206 | 10 |
| 4229PBV50 |  | commercial evaluation & bid committee |  | 10d | 2012-03-14 A | 2012-03-26 A | 4229PBV40 | 100% |  | 2012-04-02 | 2012-04-15 |  |  |  |  | 42206 | 11 |
| 4229PBV60 |  | Client approval on bid committee reccomendation |  | 2d | 2012-03-27 A | 2012-04-03 A | 4229PBV50 | 100% |  | 2012-04-01 | 2012-04-02 |  |  |  |  | 42206 | 12 |
| 4229PBV70 |  | F.O.C for Piping Ball Valves |  | 3d | 2012-04-04 A | 2012-04-05 A | 4229PBV60, 4229PBV50, 4229PBV80 | 100% |  | 2012-04-09 | 2012-04-11 |  |  |  |  | 42206 | 13 |
| 4229PBV80 |  | MRP for Piping Ball Valves | level of effort | 4d | 2012-04-08 A | 2012-04-12 A | 4229EPI320 FF, 4229EPI320 SS | 100% |  | 2012-04-08 | 2012-04-11 |  |  |  |  |  |  |
| 4229PBV90 |  | P.O for Piping Ball Valves |  | 2d | 2012-04-15 A | 2012-04-17 A | 4229EPI320 | 100% |  | 2012-04-12 | 2012-04-15 |  |  |  |  | 42206 | 15 |
| 4229PBV110 |  | Fabrication upto R.F.S (1st Batch) |  | 126d | 2012-04-17 A | 2012-08-19 | 4229PBV90, 4229PBV150, 4229PBV70 | 64% | 45d | 2012-04-23 | 2012-09-07 | 132d | 0d | 2012-08-19 | SUPPLIER | 42206 | 16 |
| 4229PBV150 |  | L.C issued by Gupco |  | 5d | 2012-07-01 | 2012-07-05 | 4229PBV90 |  |  |  |  | 92d | 0d |  |  |  |  |
| 4229PBV130 |  | Delivery upto site (1st Batch) |  | 45d | 2012-08-20 | 2012-10-03 | 4229PBV110 |  |  |  |  | 146d |  |  | calendar | 42206 | 21 |
| 4229PBV120 |  | Fabrication upto R.F.S (2nd Batch) for minimal balance |  | 120d | 2012-09-14 | 2013-01-11 | 4229EPI460 FS+15d |  |  |  |  | 29d | 0d |  | SUPPLIER |  |  |
| 4229PBV140 |  | Delivery upto site (2nd Batch) for minimal balance |  | 15d | 2013-01-12 | 2013-01-26 | 4229PBV120 |  |  |  |  | 29d |  |  | calendar |  |  |

| ID | WBS | Activity | Type | Duration | Start | Finish | Predecessors | Complete | Remaining | Planned start | Planned finish | Total float | Free float | Expected finish | Calendar | Global Commodity Code | Global Activity Code |
| --- | --- | --- | --- | --- | --- | --- | --- | --- | --- | --- | --- | --- | --- | --- | --- | --- | --- |
|  | 36 | **Additional Piping Ball valves** |  |  | 2012-05-27 | 2013-01-28 |  |  |  |  |  |  |  |  |  |  |  |
| 4229PAB10 |  | Issue RFQ for Additional Piping Ball valves |  | 1d | 2012-05-27 A | 2012-05-27 A | 4229EPI340 | 100% |  | 2012-07-02 | 2012-07-02 |  |  |  |  | 42112 | 03 |
| 4229PAB20 |  | Bidding for Piping Ball vlaves |  | 1d | 2012-05-28 A | 2012-06-14 A | 4229PAB10 | 100% |  | 2012-07-03 | 2012-07-03 |  |  |  |  | 42112 | 04 |
| 4229PAB30 |  | T.E.R for Additional Piping Ball valves |  | 25d | 2012-06-18 A | 2012-07-15 | 4229PAB20 | 56% | 11d | 2012-07-04 | 2012-08-07 | 22d | 0d | 2012-07-15 |  | 42112 | 09 |
| 4229PAB40 |  | Receive revised commercial offers |  | 5d | 2012-07-16 | 2012-07-22 | 4229PAB30 |  |  |  |  | 22d | 0d |  |  | 42112 | 10 |
| 4229PAB50 |  | commercial evaluation & bid committee for Piping Ball valves |  | 10d | 2012-07-23 | 2012-08-05 | 4229PAB40 |  |  |  |  | 22d | 0d |  |  | 42112 | 11 |
| 4229PAB60 |  | Client approval on bid committee reccomendation |  | 2d | 2012-08-06 | 2012-08-07 | 4229PAB50 |  |  |  |  | 22d | 0d |  |  | 42112 | 12 |
| 4229PAB70 |  | F.O.C for Piping Ball valves |  | 3d | 2012-08-08 | 2012-08-12 | 4229PAB60 |  |  |  |  | 22d | 0d |  |  | 42112 | 13 |
| 4229PAB80 |  | MRP for Piping Ball valves | level of effort | 5d | 2012-08-13 | 2012-08-26 | 4229EPI470 SS, 4229EPI470 FF |  |  |  |  | 22d | 0d |  |  | 42112 | 14 |
| 4229PAB90 |  | P.O for Piping Ball valves |  | 2d | 2012-08-27 | 2012-08-28 | 4229PAB80, 4229EPI470 |  |  |  |  | 22d | 0d |  |  | 42112 | 15 |
| 4229PAB100 |  | L.C issued by Gupco |  | 5d | 2012-08-29 | 2012-09-04 | 4229PAB90 |  |  |  |  | 118d |  |  |  | 42112 | 12 |
| 4229PAB110 |  | Fabrication upto R.F.S |  | 140d | 2012-09-01 | 2013-01-18 | 4229PAB90 |  |  |  |  | 27d | 0d |  | SUPPLIER | 42112 | 16 |
| 4229PAB120 |  | Delivery upto site |  | 10d | 2013-01-19 | 2013-01-28 | 4229PAB110 |  |  |  |  | 27d |  |  | SUPPLIER | 42112 | 19 |
|  | 2 | **Launcher & Receiver traps** |  |  | 2011-08-23 | 2012-08-22 |  |  |  |  |  |  |  |  |  |  |  |
| 4229PTR10 |  | Issue RFQ for L&R traps |  | 2d | 2011-08-23 A | 2011-08-25 A | 4229EPI100 FS-1d | 100% |  | 2011-08-23 | 2011-08-24 |  |  |  |  | 47101 | 03 |
| 4229PTR20 |  | Bidding for L&R traps |  | 28d | 2011-08-26 A | 2011-09-19 A | 4229PTR10 | 100% |  | 2011-08-25 | 2011-09-21 |  |  |  | SUPPLIER | 47101 | 04 |
| 4229PTR25 |  | T.E.R for L&R | level of effort | 15d | 2011-09-22 A | 2011-12-04 A | 4229EPI160 FF, 4229EPI160 SS | 100% |  | 2011-09-22 | 2011-10-13 |  |  |  |  |  |  |
| 4229PTR30 |  | Receive revised commercial offers |  | 5d | 2011-12-05 A | 2011-12-11 A | 4229EPI160 | 100% |  | 2012-01-01 | 2012-01-05 |  |  |  |  | 47101 | 10 |
| 4229PTR40 |  | commercial evaluation & bid committee for L&R traps |  | 10d | 2011-12-12 A | 2011-12-22 A | 4229PTR30, 4229EPI160 | 100% |  | 2012-01-08 | 2012-01-19 |  |  |  |  | 47101 | 11 |
| 4229PTR50 |  | Client approval on bid committee reccomendation |  | 2d | 2011-12-25 A | 2012-01-31 A | 4229PTR40 | 100% |  | 2012-01-22 | 2012-01-23 |  |  |  |  | 47101 | 12 |
| 4229PTR60 |  | F.O.C for L&R traps |  | 3d | 2012-02-01 A | 2012-02-08 A | 4229PTR50, 4229PTR40 | 100% |  | 2012-03-06 | 2012-03-08 |  |  |  |  | 47101 | 13 |
| 4229PTR65 |  | MRP for L&R | level of effort | 5d | 2012-02-09 A | 2012-02-19 A | 4229EPI290 SS, 4229EPI290 FF | 100% |  | 2012-03-04 | 2012-03-08 |  |  |  |  |  |  |
| 4229PTR70 |  | P.O for L&R traps |  | 2d | 2012-02-20 A | 2012-02-21 A | 4229EPI290, 4229PTR40 | 100% |  | 2012-03-04 | 2012-03-05 |  |  |  |  | 47101 | 15 |
| 4229PTR80 |  | L.C issued by Gupco |  | 5d | 2012-02-22 A | 2012-07-01 | 4229PTR70 | 80% | 1d | 2012-03-04 | 2012-03-08 | 24d | 0d |  |  | 47101 |  |
| 4229PTR90 |  | Fabrication upto R.F.S |  | 161d | 2012-02-22 A | 2012-08-15 | 4229PTR70, 4229PTR80 | 72% | 45d | 2012-03-05 | 2012-08-12 | 34d | 0d | 2012-08-15 | SUPPLIER | 47101 | 16 |
| 4229PTR100 |  | Delivery upto site |  | 7d | 2012-08-16 | 2012-08-22 | 4229PTR90 |  |  |  |  | 188d |  |  | calendar | 47101 | 21 |

| ID | WBS | Activity | Type | Duration | Start | Finish | Predecessors | Complete | Remaining | Planned start | Planned finish | Total float | Free float | Calendar | Global Commodity Code | Global Activity Code |
| --- | --- | --- | --- | --- | --- | --- | --- | --- | --- | --- | --- | --- | --- | --- | --- | --- |
|  | 12 | **Instrument electrical bulk** |  |  | 2012-02-29 | 2012-11-25 |  |  |  |  |  |  |  |  |  |  |
| 4229PIB1000 |  | Issue RFQ for Instrument electrical bulk |  | 1d | 2012-02-29 A | 2012-03-04 A | 4229EIN230, 4229GM10 FS+1d | 100% |  | 2012-02-13 | 2012-02-13 |  |  |  | 29201 | 03 |
| 4229PIB1010 |  | Bidding for Instrument electrical bulk |  | 25d | 2012-03-05 A | 2012-03-26 A | 4229PIB1000 | 100% |  | 2012-03-31 | 2012-04-24 |  |  | SUPPLIER | 29201 | 04 |
| 4229PIB1015 |  | T.E.R for Instrument electrical bulk | level of effort | 15d | 2012-03-26 A | 2012-06-03 A | 4229EIN360 SS, 4229EIN360 FF | 100% |  | 2012-04-25 | 2012-05-15 |  |  |  |  |  |
| 4229PIB1020 |  | Receive revised commercial offers |  | 5d | 2012-06-04 A | 2012-06-10 A | 4229EIN360 | 100% |  | 2012-07-01 | 2012-07-05 |  |  |  | 29201 | 10 |
| 4229PIB1030 |  | commercial evaluation & bid committee for Instrument electrical bulk |  | 10d | 2012-06-10 A | 2012-06-13 A | 4229EIN360, 4229PIB1020 | 100% |  | 2012-07-08 | 2012-07-19 |  |  |  | 29201 | 11 |
| 4229PIB1040 |  | Client approval on bid committee reccomendation |  | 2d | 2012-06-19 A | 2012-07-01 | 4229PIB1030 | 50% | 1d | 2012-07-01 | 2012-07-02 | 64d | 0d |  | 29201 | 12 |
| 4229PIB1050 |  | F.O.C for Instrument electrical bulk |  | 3d | 2012-07-02 | 2012-07-04 | 4229PIB1040, 4229PIB1030 |  |  |  |  | 64d | 0d |  | 29201 | 13 |
| 4229PIB1055 |  | MRP for Instrument electrical bulk | level of effort | 5d | 2012-07-05 | 2012-07-11 | 4229EIN380 SS, 4229EIN380 FF |  |  |  |  | 64d | 0d |  |  |  |
| 4229PIB1060 |  | P.O for Instrument electrical bulk |  | 2d | 2012-07-12 | 2012-07-15 | 4229EIN380 |  |  |  |  | 64d | 0d |  | 29201 | 15 |
| 4229PIB1070 |  | L.C issued by Gupco |  | 5d | 2012-07-16 | 2012-07-22 | 4229PIB1060 |  |  |  |  | 64d | 0d |  | 29201 |  |
| 4229PIB1080 |  | Fabrication upto R.F.S |  | 84d | 2012-07-23 | 2012-10-26 | 4229PIB1070, 4229PIB1060 |  |  |  |  | 91d | 0d | SUPPLIER | 29201 | 16 |
| 4229PIB1090 |  | Delivery upto site |  | 30d | 2012-10-27 | 2012-11-25 | 4229PIB1080 |  |  |  |  | 93d | 54d | calendar | 29201 | 21 |
|  | 14 | **Instrument mechanical bulk deleted** |  |  | 2012-01-25 | 2012-05-31 |  |  |  |  |  |  |  |  |  |  |
| 4229PIB10 |  | Issue RFQ for Instrument mechanical bulk |  | 2d | 2012-01-25 A | 2012-02-21 A | 4229EIN180, 4229GM10 FS+1d | 100% |  | 2012-02-13 | 2012-02-14 |  |  |  | 29101 | 03 |
| 4229PIB20 |  | Bidding for Instrument mechanical bulk |  | 18d | 2012-02-22 A | 2012-03-29 A | 4229PIB10 | 100% |  | 2012-03-03 | 2012-03-20 |  |  | SUPPLIER | 29101 | 04 |
| 4229PIB15 |  | T.E.R for Instrument Mechanical bulk | level of effort | 15d | 2012-03-27 A | 2012-03-27 A | 4229EIN340 SS, 4229EIN340 FF | 100% |  | 2012-04-01 | 2012-04-19 |  |  |  |  |  |
| 4229PIB30 |  | Receive revised commercial offers |  | 5d | 2012-05-30 A | 2012-05-30 A | 4229EIN340 | 100% |  | 2012-06-03 | 2012-06-07 |  |  |  | 29101 | 10 |
| 4229PIB100 |  | Delivery upto site |  | 35d | 2012-05-31 A | 2012-05-31 A | 4229PIB90 | 100% |  | 2012-10-20 | 2012-11-23 |  |  | calendar | 29101 | 21 |
| 4229PIB40 |  | commercial evaluation & bid committee for Instrument mechanical bulk |  | 10d | 2012-05-31 A | 2012-05-31 A | 4229PIB30, 4229EIN340 | 100% |  | 2012-06-10 | 2012-06-21 |  |  |  | 29101 | 11 |
| 4229PIB45 |  | MRP for Instrument Mechanical bulk | level of effort | 1d | 2012-05-31 A | 2012-05-31 A | 4229EIN370 SS, 4229EIN370 FF | 100% |  |  |  |  |  |  |  |  |
| 4229PIB50 |  | Client approval on bid committee reccommendation |  | 2d | 2012-05-31 A | 2012-05-31 A | 4229PIB40 | 100% |  | 2012-06-24 | 2012-06-25 |  |  |  | 29101 | 12 |
| 4229PIB60 |  | F.O.C for Instrument mechanical bulk |  | 3d | 2012-05-31 A | 2012-05-31 A | 4229PIB50, 4229PIB40 | 100% |  | 2012-06-26 | 2012-06-28 |  |  |  | 29101 | 13 |
| 4229PIB70 |  | P.O for Instrument mechanical bulk |  | 2d | 2012-05-31 A | 2012-05-31 A | 4229EIN370 | 100% |  | 2012-07-01 | 2012-07-02 |  |  |  | 29101 | 15 |
| 4229PIB80 |  | L.C issued by Gupco |  | 5d | 2012-05-31 A | 2012-05-31 A | 4229PIB70 | 100% |  | 2012-07-03 | 2012-07-09 |  |  |  | 29101 |  |
| 4229PIB90 |  | Fabrication upto R.F.S |  | 90d | 2012-05-31 A | 2012-05-31 A | 4229PIB70, 4229PIB80 | 100% |  | 2012-07-10 | 2012-10-19 |  |  | SUPPLIER | 29101 | 16 |

| ID | WBS | Activity | Type | Duration | Start | Finish | Predecessors | Complete | Remaining | Planned start | Planned finish | Total float | Free float | Expected finish | Calendar | Global Commodity Code | Global Activity Code |
| --- | --- | --- | --- | --- | --- | --- | --- | --- | --- | --- | --- | --- | --- | --- | --- | --- | --- |
|  | 15 | **Field instrument** |  |  | 2011-12-13 | 2013-01-09 |  |  |  |  |  |  |  |  |  |  |  |
| 4229PFI10 |  | Issue RFQ for Field Instrument |  | 1d | 2011-12-13 A | 2011-12-14 A | 4229EIN90, 4229GM10 FS+1d | 100% |  | 2012-01-01 | 2012-01-01 |  |  |  |  | 21001 | 03 |
| 4229PFI20 |  | Bidding for field Instrument |  | 21d | 2011-12-15 A | 2012-01-12 A | 4229PFI10 | 100% |  | 2011-12-31 | 2012-01-28 |  |  |  | SUPPLIER | 21001 | 04 |
| 4229PFI25 |  | T.E.R for field Instrument | level of effort | 10d | 2012-01-17 A | 2012-05-02 A | 4229EIN250 FF, 4229EIN250 SS | 100% |  | 2012-01-17 | 2012-01-31 |  |  |  |  |  |  |
| 4229PFI30 |  | Receive revised commercial offers |  | 5d | 2012-05-03 A | 2012-05-09 A | 4229EIN250 | 100% |  | 2012-04-29 | 2012-05-03 |  |  |  |  | 21001 | 10 |
| 4229PFI40 |  | commercial evaluation & bid committee for field Instrument |  | 10d | 2012-05-10 A | 2012-06-03 A | 4229PFI30, 4229EIN250 | 100% |  | 2012-07-01 | 2012-07-12 |  |  |  |  | 21001 | 11 |
| 4229PFI50 |  | Client approval on bid committee reccomendation |  | 2d | 2012-06-19 A | 2012-07-01 | 4229PFI40 | 50% | 1d | 2012-07-15 | 2012-07-16 | 35d | 0d |  |  | 21001 | 12 |
| 4229PFI60 |  | F.O.C for field Instrument |  | 3d | 2012-07-02 | 2012-07-04 | 4229PFI40, 4229PFI50 |  |  |  |  | 35d | 0d |  |  | 21001 | 13 |
| 4229PFI65 |  | MRP for field Instrument | level of effort | 5d | 2012-07-05 | 2012-07-11 | 4229EIN350 SS, 4229EIN350 FF |  |  |  |  | 35d | 0d |  |  |  |  |
| 4229PFI70 |  | P.O for field Instrument |  | 2d | 2012-07-12 | 2012-07-15 | 4229EIN350 |  |  |  |  | 35d | 0d |  |  | 21001 | 15 |
| 4229PFI80 |  | L.C issued by Gupco |  | 5d | 2012-07-16 | 2012-07-22 | 4229PFI70 |  |  |  |  | 35d | 0d |  |  | 21001 |  |
| 4229PFI90 |  | Fabrication upto R.F.S |  | 126d | 2012-07-23 | 2012-12-07 | 4229PFI80, 4229PFI70 |  |  |  |  | 44d | 0d |  | SUPPLIER | 21001 | 16 |
| 4229PFI100 |  | Delivery upto site |  | 35d | 2012-12-08 | 2013-01-09 | 4229PFI90 |  |  |  |  | 46d | 7d |  | calendar | 21001 | 21 |
|  | 16 | **Choke valves** |  |  | 2011-11-24 | 2012-10-30 |  |  |  |  |  |  |  |  |  |  |  |
| 4229PCV10 |  | Issue RFQ for Choke valves |  | 2d | 2011-11-24 A | 2011-11-24 A | 4229EIN40, 4229GM10 FS+1d | 100% |  | 2011-12-04 | 2011-12-05 |  |  |  |  | 23406 | 03 |
| 4229PCV20 |  | Bidding for Choke valves |  | 30d | 2011-11-25 A | 2011-12-26 A | 4229PCV10 | 100% |  | 2011-12-06 | 2012-01-16 |  |  |  | SUPPLIER | 23406 | 04 |
| 4229PCV25 |  | T.E.R for choke valves | level of effort | 20d | 2011-12-27 A | 2012-04-02 A | 4229EIN170 FF, 4229EIN170 SS | 100% |  | 2012-01-01 | 2012-01-29 |  |  |  |  |  |  |
| 4229PCV30 |  | Receive revised commercial offers |  | 5d | 2012-04-10 A | 2012-04-26 A | 4229EIN170 | 100% |  | 2012-04-01 | 2012-04-05 |  |  |  |  | 23406 | 10 |
| 4229PCV40 |  | commercial evaluation & bid committee for Choke valves |  | 10d | 2012-04-29 A | 2012-05-13 A | 4229PCV30, 4229EIN170 | 100% |  | 2012-04-29 | 2012-05-10 |  |  |  |  | 23406 | 11 |
| 4229PCV50 |  | Client approval on bid committee reccomendation |  | 2d | 2012-05-13 A | 2012-05-17 A | 4229PCV40 | 100% |  | 2012-05-13 | 2012-05-14 |  |  |  |  | 23406 | 12 |
| 4229PCV60 |  | F.O.C for Choke valves |  | 3d | 2012-05-17 A | 2012-06-04 A | 4229PCV50 | 100% |  | 2012-04-29 | 2012-05-01 |  |  |  |  | 23406 | 13 |
| 4229PCV65 |  | MRP for Choke valves | level of effort | 5d | 2012-05-27 A | 2012-06-05 A | 4229EIN290 SS, 4229EIN290 FF | 100% |  | 2012-06-03 | 2012-06-07 |  |  |  |  |  |  |
| 4229PCV70 |  | P.O for Choke valves |  | 5d | 2012-06-05 A | 2012-06-06 A | 4229PCV60, 4229EIN290 | 100% |  | 2012-07-01 | 2012-07-05 |  |  |  |  | 23406 | 15 |
| 4229PCV90 |  | Fabrication upto R.F.S |  | 63d | 2012-06-07 A | 2012-09-25 | 4229PCV80, 4229PCV70 |  | 70d | 2012-07-13 | 2012-09-25 | 117d | 0d | 2012-09-25 | SUPPLIER | 23406 | 16 |
| 4229PCV80 |  | L.C issued by Gupco |  | 5d | 2012-07-01 | 2012-07-05 | 4229PCV70 |  |  |  |  | 81d | 0d |  |  | 23406 |  |
| 4229PCV100 |  | Delivery upto site |  | 35d | 2012-09-26 | 2012-10-30 | 4229PCV90 |  |  |  |  | 119d |  |  | calendar | 23406 | 21 |

| ID | WBS | Activity | Type | Duration | Start | Finish | Predecessors | Complete | Remaining | Planned start | Planned finish | Total float | Free float | Expected finish | Calendar | Global Commodity Code | Global Activity Code |
| --- | --- | --- | --- | --- | --- | --- | --- | --- | --- | --- | --- | --- | --- | --- | --- | --- | --- |
|  | 17 | **Pressure regulator valves** |  |  | 2011-10-06 | 2012-12-19 |  |  |  |  |  |  |  |  |  |  |  |
| 4229PRV10 |  | Issue RFQ for pressure regulator valves |  | 2d | 2011-10-06 A | 2011-10-09 A | 4229GM10 FS+1d, 4229EIN30 | 100% |  | 2011-10-09 | 2011-10-11 |  |  |  |  | 21204 | 03 |
| 4229PRV20 |  | Bidding for pressure regulator valves |  | 31d | 2011-10-10 A | 2012-02-01 A | 4229PRV10 | 100% |  | 2011-10-11 | 2011-11-11 |  |  |  | SUPPLIER | 21204 | 04 |
| 4229PRV25 |  | T.E.R for Pressure regulator valves | level of effort | 15d | 2012-02-02 A | 2012-04-03 A | 4229EIN160 SS, 4229EIN160 FF | 100% |  | 2012-03-08 | 2012-03-28 |  |  |  |  |  |  |
| 4229PRV30 |  | Receive revised commercial offers |  | 5d | 2012-04-04 A | 2012-04-15 A | 4229EIN160 | 100% |  | 2012-04-01 | 2012-04-05 |  |  |  |  | 21204 | 10 |
| 4229PRV40 |  | Commercial evaluation & bid committee for pressure regulator valves |  | 10d | 2012-04-17 A | 2012-05-10 A | 4229EIN160, 4229PRV30 | 100% |  | 2012-04-29 | 2012-05-10 |  |  |  |  | 21204 | 11 |
| 4229PRV50 |  | Client approval on bid committee reccommendation |  | 2d | 2012-05-13 A | 2012-05-14 A | 4229PRV40 | 100% |  |  |  |  |  |  |  | 21204 | 12 |
| 4229PRV60 |  | F.O.C for pressure regulator valves |  | 2d | 2012-05-15 A | 2012-06-04 A | 4229PRV40, 4229PRV50 | 100% |  | 2012-05-15 | 2012-05-16 |  |  |  |  | 21204 | 13 |
| 4229PRV55 |  | MRP for pressure regulator valves | level of effort | 5d | 2012-05-27 A | 2012-05-31 A | 4229EIN320 FF, 4229EIN320 SS | 100% |  | 2012-06-03 | 2012-06-07 |  |  |  |  |  |  |
| 4229PRV70 |  | P.O for pressure regulator valves |  | 2d | 2012-06-05 A | 2012-06-05 A | 4229EIN320 | 100% |  | 2012-07-01 | 2012-07-02 |  |  |  |  | 21204 | 15 |
| 4229PRV90 |  | Fabrication upto R.F.S |  | 128d | 2012-06-06 A | 2012-11-19 | 4229PRV70 |  | 131d | 2012-07-03 | 2012-11-19 | 36d | 0d | 2012-11-19 | SUPPLIER | 21204 | 16 |
| 4229PRV80 |  | L.C issued by Gupco |  | 3d | 2012-07-01 | 2012-07-03 | 4229PRV70 |  |  |  |  | 158d |  |  |  | 21204 |  |
| 4229PRV100 |  | Delivery upto site |  | 30d | 2012-11-20 | 2012-12-19 | 4229PRV90 |  |  |  |  | 69d | 30d |  | calendar | 21204 | 21 |
|  | 23 | **shutdown valves** |  |  | 2011-10-27 | 2012-12-16 |  |  |  |  |  |  |  |  |  |  |  |
| 4229POV10 |  | Issue RFQ for SDV |  | 2d | 2011-10-27 A | 2011-10-27 A | 4229EIN50 | 100% |  | 2011-10-20 | 2011-10-23 |  |  |  |  | 23402 | 03 |
| 4229POV20 |  | Bidding for SDV |  | 30d | 2011-10-28 A | 2011-11-27 A | 4229POV10 | 100% |  | 2011-11-01 | 2011-11-30 |  |  |  | SUPPLIER | 23402 | 04 |
| 4229POV25 |  | T.E.R for SDV | level of effort | 20d | 2011-11-28 A | 2012-02-01 A | 4229EIN220 SS, 4229EIN220 FF | 100% |  | 2011-12-04 | 2011-12-29 |  |  |  |  |  |  |
| 4229POV30 |  | Receive revised commercial offers |  | 5d | 2012-02-02 A | 2012-02-16 A | 4229EIN220 | 100% |  | 2012-03-08 | 2012-03-14 |  |  |  |  | 23402 | 10 |
| 4229POV40 |  | Commercial evaluation & bid committee for SDV |  | 10d | 2012-02-16 A | 2012-02-19 A |  | 100% |  | 2012-03-15 | 2012-03-28 |  |  |  |  | 23402 | 11 |
| 4229POV50 |  | Client approval on bid committee reccommendation |  | 2d | 2012-03-05 A | 2012-03-28 A | 4229POV40 | 100% |  | 2012-04-03 | 2012-04-04 |  |  |  |  | 23402 | 12 |
| 4229POV60 |  | F.O.C for SDV |  | 2d | 2012-03-29 A | 2012-04-22 A | 4229POV50, 4229POV40 | 100% |  | 2012-04-01 | 2012-04-02 |  |  |  |  | 23402 | 13 |
| 4229POV65 |  | MRP for SDV | level of effort | 5d | 2012-04-22 A | 2012-04-26 A | 4229EIN330 FF, 4229EIN330 SS | 100% |  | 2012-04-29 | 2012-05-03 |  |  |  |  |  |  |
| 4229POV70 |  | P.O for SDV |  | 2d | 2012-04-29 A | 2012-04-29 A | 4229EIN330 | 100% |  | 2012-04-29 | 2012-04-30 |  |  |  |  | 23402 | 15 |
| 4229POV90 |  | Fabrication upto R.F.S |  | 181d | 2012-04-30 A | 2012-11-16 | 4229POV80, 4229POV70 | 33% | 122d | 2012-05-08 | 2012-11-16 | 30d | 0d | 2012-11-16 | SUPPLIER | 23402 | 16 |
| 4229POV80 |  | L.C issued by Gupco |  | 5d | 2012-07-01 | 2012-07-05 | 4229POV70 |  |  |  |  | 20d | 0d |  |  |  |  |
| 4229POV100 |  | Delivery upto site |  | 30d | 2012-11-17 | 2012-12-16 | 4229POV90 |  |  |  |  | 70d | 31d |  | SUPPLIER | 23402 | 21 |

| ID | WBS | Activity | Type | Duration | Start | Finish | Predecessors | Complete | Remaining | Planned start | Planned finish | Total float | Free float | Expected finish | Calendar | Global Commodity Code | Global Activity Code |
| --- | --- | --- | --- | --- | --- | --- | --- | --- | --- | --- | --- | --- | --- | --- | --- | --- | --- |
|  | 34 | **Additonal shutdown valves** |  |  | 2012-05-01 | 2013-02-24 |  |  |  |  |  |  |  |  |  |  |  |
| 4229PFV110 |  | Bidding for SDV |  | 30d | 2012-05-01 A | 2012-05-27 A | 4229PFV100 | 100% |  | 2012-05-01 | 2012-05-30 |  |  |  | SUPPLIER | 23409 | 04 |
| 4229PFV100 |  | Issue RFQ for SDV |  | 2d | 2012-05-06 A | 2012-05-07 A | 4229EIN600 | 100% |  | 2012-04-29 | 2012-04-30 |  |  |  |  | 23409 | 03 |
| 4229PFV120 |  | T.E.R for SDV | level of effort | 10d | 2012-05-27 A | 2012-06-25 A | 4229EIN610 FF, 4229EIN610 SS | 100% |  | 2012-05-27 | 2012-06-07 |  |  |  |  |  |  |
| 4229PFV130 |  | Receive revised commercial offers |  | 5d | 2012-06-26 A | 2012-06-28 A | 4229EIN610 | 100% |  | 2012-07-01 | 2012-07-05 |  |  |  |  | 23409 | 10 |
| 4229PFV140 |  | Commercial evaluation & bid committee for SDV |  | 10d | 2012-06-28 A | 2012-07-15 | 4229PFV130 |  | 11d | 2012-07-08 | 2012-07-19 | 0d |  |  |  | 23409 | 11 |
| 4229PFV150 |  | Client approval on bid committee reccommendation |  | 2d | 2012-07-16 | 2012-07-17 | 4229PFV140 |  |  |  |  | 0d |  |  |  | 23409 | 12 |
| 4229PFV160 |  | F.O.C for SDV |  | 2d | 2012-07-18 | 2012-07-19 | 4229PFV140, 4229PFV150 |  |  |  |  | 0d |  |  |  | 23409 | 13 |
| 4229PFV200 |  | Fabrication upto R.F.S |  | 168d | 2012-07-20 | 2013-01-15 | 4229PFV160 |  |  |  |  | 0d |  |  | SUPPLIER | 23409 | 16 |
| 4229PFV170 |  | MRP for SDV | level of effort | 5d | 2012-07-22 | 2012-07-26 | 4229EIN620 SS, 4229EIN620 FF |  |  |  |  | 134d | 0d |  |  |  |  |
| 4229PFV180 |  | P.O for SDV |  | 2d | 2012-07-29 | 2012-07-30 | 4229EIN620 |  |  |  |  | 134d | 0d |  |  | 23409 | 15 |
| 4229PFV190 |  | L.C issued by Gupco |  | 5d | 2012-07-31 | 2012-08-06 | 4229PFV180 |  |  |  |  | 134d |  |  |  | 23409 |  |
| 4229PFV210 |  | Delivery upto site |  | 40d | 2013-01-16 | 2013-02-24 | 4229PFV200 |  |  |  |  | 0d |  |  | SUPPLIER | 23409 | 21 |
|  | 18 | **Multiphase flowmeter** |  |  | 2011-10-09 | 2012-11-22 |  |  |  |  |  |  |  |  |  |  |  |
| 4229PMP10 |  | Issue RFQ for MPFM |  | 2d | 2011-10-09 A | 2011-10-09 A | 4229EIN20 | 100% |  | 2011-08-15 | 2011-08-16 |  |  |  |  | 22106 | 03 |
| 4229PMP20 |  | Bidding for MPFM |  | 30d | 2011-10-10 A | 2011-11-13 A | 4229PMP10 | 100% |  | 2011-08-17 | 2011-09-15 |  |  |  | SUPPLIER | 22106 | 04 |
| 4229PMP25 |  | T.E.R for MPFM | level of effort | 20d | 2011-11-14 A | 2011-12-21 A | 4229EIN110 SS, 4229EIN110 FF | 100% |  | 2011-12-04 | 2011-12-29 |  |  |  |  |  |  |
| 4229PMP30 |  | Receive revised commercial offers |  | 4d | 2011-12-22 A | 2011-12-25 A | 4229EIN110 | 100% |  | 2011-12-22 | 2011-12-27 |  |  |  |  | 22106 | 10 |
| 4229PMP40 |  | commercial evaluation & bid committee for MPFM |  | 10d | 2011-12-27 A | 2011-12-28 A | 4229PMP30, 4229EIN110 | 100% |  | 2012-01-01 | 2012-01-12 |  |  |  |  | 22106 | 11 |
| 4229PMP50 |  | Client approval on bid committee reccomendation |  | 2d | 2011-12-29 A | 2012-01-31 A | 4229PMP40 | 100% |  | 2012-01-29 | 2012-01-30 |  |  |  |  | 22106 | 12 |
| 4229PMP60 |  | F.O.C for MPFM |  | 3d | 2012-02-01 A | 2012-02-08 A | 4229PMP50, 4229PMP40 | 100% |  | 2012-01-31 | 2012-02-02 |  |  |  |  | 22106 | 13 |
| 4229PMP65 |  | MRP for MPFM | level of effort | 5d | 2012-02-09 A | 2012-02-20 A | 4229EIN260 FF, 4229EIN260 SS | 100% |  | 2012-03-04 | 2012-03-08 |  |  |  |  |  |  |
| 4229PMP70 |  | P.O for MPFM |  | 2d | 2012-02-20 A | 2012-02-21 A | 4229EIN260 | 100% |  | 2012-03-04 | 2012-03-05 |  |  |  |  | 22106 | 15 |
| 4229PMP90 |  | Fabrication upto R.F.S |  | 236d | 2012-02-22 A | 2012-10-23 | 4229PMP70 | 56% | 104d | 2012-03-09 | 2012-11-11 | 36d | 0d | 2012-10-23 | SUPPLIER | 22106 | 16 |
| 4229PMP80 |  | L.C issued by Gupco |  | 5d | 2012-07-01 | 2012-07-05 | 4229PMP70 |  |  |  |  | 156d |  |  |  | 22106 |  |
| 4229PMP100 |  | Delivery upto site |  | 30d | 2012-10-24 | 2012-11-22 | 4229PMP90 |  |  |  |  | 94d | 55d |  | SUPPLIER | 22106 | 21 |

| ID | WBS | Activity | Type | Duration | Start | Finish | Predecessors | Complete | Remaining | Planned start | Planned finish | Total float | Free float | Expected finish | Calendar | Global Commodity Code | Global Activity Code |
| --- | --- | --- | --- | --- | --- | --- | --- | --- | --- | --- | --- | --- | --- | --- | --- | --- | --- |
|  | 19 | **Safe guard system** |  |  | 2011-08-25 | 2012-12-15 |  |  |  |  |  |  |  |  |  |  |  |
| 4229PSG10 |  | Issue RFQ for SGS |  | 2d | 2011-08-25 A | 2011-08-28 A | 4229GM10, 4229EIN10 FS-1d | 100% |  | 2011-08-15 | 2011-08-16 |  |  |  |  | 25211 | 03 |
| 4229PSG20 |  | Bidding for SGS |  | 33d | 2011-08-29 A | 2011-09-26 A | 4229PSG10 | 100% |  | 2011-08-17 | 2011-09-18 |  |  |  | SUPPLIER | 25211 | 04 |
| 4229PSG25 |  | T.E.R for SGS | level of effort | 25d | 2011-09-28 A | 2012-01-16 A | 4229EIN80 FF, 4229EIN80 SS | 100% |  | 2011-09-28 | 2011-11-02 |  |  |  |  |  |  |
| 4229PSG30 |  | Receive revised commercial offers |  | 5d | 2012-01-16 A | 2012-01-30 A | 4229EIN80 | 100% |  | 2012-01-10 | 2012-01-16 |  |  |  |  | 25211 | 10 |
| 4229PSG40 |  | commercial evaluation & bid committee for SGS |  | 22d | 2012-02-01 A | 2012-02-29 A | 4229EIN80, 4229PSG30 | 100% |  | 2012-03-06 | 2012-04-04 |  |  |  |  | 25211 | 11 |
| 4229PSG50 |  | Client approval on bid committee reccomendation |  | 2d | 2012-02-29 A | 2012-03-11 A | 4229PSG40 | 100% |  | 2012-03-06 | 2012-03-07 |  |  |  |  | 25211 | 12 |
| 4229PSG65 |  | MRP for SGS | level of effort | 5d | 2012-03-08 A | 2012-05-08 A | 4229EIN210 FF, 4229EIN210 SS | 100% |  | 2012-03-08 | 2012-03-14 |  |  |  |  |  |  |
| 4229PSG60 |  | F.O.C for SGS |  | 3d | 2012-03-12 A | 2012-05-06 A | 4229PSG50, 4229PSG40 | 100% |  | 2012-04-29 | 2012-05-01 |  |  |  |  | 25211 | 13 |
| 4229PSG70 |  | P.O for SGS |  | 2d | 2012-05-08 A | 2012-05-27 A | 4229EIN210 | 100% |  | 2012-05-02 | 2012-05-03 |  |  |  |  | 25211 | 15 |
| 4229PSG90 |  | Fabrication upto R.F.S |  | 170d | 2012-05-27 A | 2012-12-06 | 4229PSG80, 4229PSG70 | 16% | 142d | 2012-05-11 | 2012-11-08 | 30d | 0d | 2012-12-06 | SUPPLIER | 25211 | 16 |
| 4229PSG80 |  | L.C issued by Gupco |  | 5d | 2012-07-01 | 2012-07-05 | 4229PSG70 |  |  |  |  | 20d | 0d |  |  | 25211 |  |
| 4229PSG100 |  | Delivery upto site (Air freight) |  | 9d | 2012-12-07 | 2012-12-15 | 4229PSG90 |  |  |  |  | 73d | 34d |  | calendar | 25211 | 21 |
|  | 4 | **Radar System** |  |  | 2011-11-30 | 2013-01-16 |  |  |  |  |  |  |  |  |  |  |  |
| 4229PRS10 |  | Issue RFQ for Radar system |  | 2d | 2011-11-30 A | 2011-11-30 A | 4229ETE80 | 100% |  | 2011-12-04 | 2011-12-05 |  |  |  |  | 28601 | 03 |
| 4229PRS20 |  | Bidding for Radar system |  | 15d | 2011-12-01 A | 2012-06-30 | 4229PRS10 | 93% | 1d | 2011-12-06 | 2011-12-20 | 2d | 0d | 2012-06-30 | SUPPLIER | 28601 | 04 |
| 4229PRS25 |  | T.E.R for Radar System | level of effort | 23d | 2012-07-03 | 2012-08-02 | 4229ETE170 FF, 4229ETE170 SS |  |  |  |  | 118d | 0d |  |  |  |  |
| 4229PRS30 |  | Receive revised commercial offers |  | 3d | 2012-08-05 | 2012-08-07 | 4229ETE170 |  |  |  |  | 20d | 0d |  |  | 28601 | 10 |
| 4229PRS40 |  | commercial evaluation & bid committee for Radar system |  | 10d | 2012-08-08 | 2012-08-28 | 4229PRS30 |  |  |  |  | 20d | 0d |  |  | 28601 | 11 |
| 4229PRS50 |  | Client approval on bid committee reccomendation |  | 2d | 2012-08-29 | 2012-08-30 | 4229PRS40 |  |  |  |  | 20d | 0d |  |  | 28601 | 12 |
| 4229PRS60 |  | F.O.C for Radar system |  | 3d | 2012-09-02 | 2012-09-04 | 4229PRS40, 4229PRS50 |  |  |  |  | 20d | 0d |  |  | 28601 | 13 |
| 4229PRS65 |  | MRP for Radar System | level of effort | 5d | 2012-09-05 | 2012-09-11 | 4229ETE90 SS, 4229ETE90 FF |  |  |  |  | 20d | 0d |  |  |  |  |
| 4229PRS70 |  | P.O for Radar system |  | 2d | 2012-09-12 | 2012-09-13 | 4229ETE90 |  |  |  |  | 20d | 0d |  |  | 28601 | 15 |
| 4229PRS80 |  | L.C issued by Gupco |  | 5d | 2012-09-16 | 2012-09-20 | 4229PRS70 |  |  |  |  | 20d | 0d |  |  | 28601 |  |
| 4229PRS90 |  | Fabrication upto R.F.S |  | 90d | 2012-09-21 | 2012-12-19 | 4229PRS70, 4229PRS80 |  |  |  |  | 37d | 0d |  | SUPPLIER | 28601 | 16 |
| 4229PRS100 |  | Delivery upto site |  | 30d | 2012-12-20 | 2013-01-16 | 4229PRS90 |  |  |  |  | 39d | 0d |  | calendar | 28601 | 21 |

| ID | WBS | Activity | Type | Duration | Start | Finish | Predecessors | Complete | Remaining | Planned start | Planned finish | Total float | Free float | Expected finish | Calendar | Global Commodity Code | Global Activity Code |
| --- | --- | --- | --- | --- | --- | --- | --- | --- | --- | --- | --- | --- | --- | --- | --- | --- | --- |
|  | 9 | **Solar power unit** |  |  | 2011-08-23 | 2012-11-09 |  |  |  |  |  |  |  |  |  |  |  |
| 4229PSU10 |  | Issue RFQ for solar power unit |  | 2d | 2011-08-23 A | 2011-08-24 A | 4229GM10, 4229EEL10 | 100% |  | 2011-08-15 | 2011-08-16 |  |  |  |  | 51018 | 03 |
| 4229PSU20 |  | Bidding for solar power unit |  | 49d | 2011-08-25 A | 2011-10-13 A | 4229PSU10 | 100% |  | 2011-08-17 | 2011-10-04 |  |  |  | SUPPLIER | 51018 | 04 |
| 4229PSU25 |  | T.ER for solar power unit | level of effort | 15d | 2011-10-13 A | 2012-01-31 A | 4229EEL40 FF, 4229EEL40 SS | 100% |  | 2011-10-02 | 2011-10-23 |  |  |  |  |  |  |
| 4229PSU30 |  | Receive revised commercial offers |  | 5d | 2012-02-01 A | 2012-02-12 A | 4229EEL40 | 100% |  | 2012-03-04 | 2012-03-08 |  |  |  |  | 51018 | 10 |
| 4229PSU40 |  | commercial evaluation & bid committee for solar power unit |  | 15d | 2012-02-13 A | 2012-02-29 A | 4229PSU30, 4229EEL40 | 100% |  | 2012-03-11 | 2012-03-29 |  |  |  |  | 51018 | 11 |
| 4229PSU50 |  | Client approval on bid committee reccomendation |  | 2d | 2012-02-29 A | 2012-03-11 A | 4229PSU40 | 100% |  | 2012-03-06 | 2012-03-07 |  |  |  |  | 51018 | 12 |
| 4229PSU55 |  | MRP for solar power unit | level of effort | 5d | 2012-03-08 A | 2012-03-28 A | 4229EEL130 SS, 4229EEL130 FF | 100% |  | 2012-03-08 | 2012-03-14 |  |  |  |  |  |  |
| 4229PSU60 |  | F.O.C for solar power unit |  | 3d | 2012-03-28 A | 2012-03-28 A | 4229PSU40, 4229PSU50 | 100% |  | 2012-04-01 | 2012-04-03 |  |  |  |  | 51018 | 13 |
| 4229PSU70 |  | P.O for solar power unit |  | 5d | 2012-04-01 A | 2012-04-04 A | 4229EEL130 | 100% |  | 2012-04-01 | 2012-04-05 |  |  |  |  | 51018 | 15 |
| 4229PSU90 |  | Fabrication upto R.F.S |  | 175d | 2012-04-05 A | 2012-09-25 | 4229PSU70, 4229PSU80 | 60% | 70d | 2012-04-13 | 2012-10-16 | 30d | 0d | 2012-09-25 | SUPPLIER | 51018 | 16 |
| 4229PSU80 |  | L.C issued by Gupco |  | 5d | 2012-07-01 | 2012-07-05 | 4229PSU70 |  |  |  |  | 20d | 0d |  |  | 51018 |  |
| 4229PSU100 |  | Delivery upto site |  | 45d | 2012-09-26 | 2012-11-09 | 4229PSU90 |  |  |  |  | 109d | 70d |  | calendar | 51018 | 21 |
|  | 10 | **Navigation aids** |  |  | 2011-09-18 | 2012-08-19 |  |  |  |  |  |  |  |  |  |  |  |
| 4229PNA10 |  | Issue RFQ for Navigation aids |  | 2d | 2011-09-18 A | 2011-09-18 A | 4229EEL30, 4229GM10 | 100% |  | 2011-08-15 | 2011-08-16 |  |  |  |  | 51010 | 03 |
| 4229PNA20 |  | Bidding for Navigation aids |  | 61d | 2011-09-19 A | 2011-10-16 A | 4229PNA10 | 100% |  | 2011-08-17 | 2011-10-16 |  |  |  | SUPPLIER | 51010 | 04 |
| 4229EEL320 |  | T.E.R for Navigation aids | level of effort | 15d | 2011-10-17 A | 2011-12-07 A | 4229EEL60 SS, 4229EEL60 FF | 100% |  | 2011-10-17 | 2011-11-13 |  |  |  |  |  |  |
| 4229PNA30 |  | Receive revised commercial offers |  | 5d | 2011-12-08 A | 2011-12-13 A | 4229EEL60 | 100% |  | 2011-12-08 | 2011-12-14 |  |  |  |  | 51010 | 10 |
| 4229PNA50 |  | Client approval on bid committee reccomendation |  | 2d | 2011-12-13 A | 2012-01-11 A | 4229PNA40 | 100% |  | 2011-12-13 | 2011-12-14 |  |  |  |  | 51010 | 12 |
| 4229PNA40 |  | commercial evaluation & bid committee for Navigation aids |  | 10d | 2011-12-14 A | 2011-12-21 A | 4229PNA30, 4229EEL60 | 100% |  | 2011-12-15 | 2011-12-28 |  |  |  |  | 51010 | 11 |
| 4229PNA60 |  | F.O.C for Navigation aids |  | 3d | 2012-01-11 A | 2012-01-12 A | 4229PNA40, 4229PNA50 | 100% |  | 2012-01-11 | 2012-01-15 |  |  |  |  | 51010 | 13 |
| 4229PNA65 |  | MRP for Navigation aids | level of effort | 4d | 2012-01-12 A | 2012-01-18 A | 4229EEL150 FF, 4229EEL150 SS | 100% |  | 2012-01-12 | 2012-01-17 |  |  |  |  |  |  |
| 4229PNA70 |  | P.O for Navigation aids |  | 5d | 2012-01-19 A | 2012-02-01 A | 4229EEL150 | 100% |  | 2012-01-19 | 2012-01-26 |  |  |  |  | 51010 | 15 |
| 4229PNA90 |  | Fabrication upto R.F.S |  | 130d | 2012-02-01 A | 2012-07-06 | 4229PNA80, 4229PNA70 | 100% | 0d | 2012-04-06 | 2012-08-13 | 30d | 0d | 2012-07-01 | SUPPLIER | 51010 | 16 |
| 4229PNA80 |  | L.C issued by Gupco |  | 5d | 2012-07-01 | 2012-07-05 | 4229PNA70 |  |  |  |  | 20d | 0d |  |  | 51010 |  |
| 4229PNA100 |  | Delivery upto site |  | 45d | 2012-07-06 | 2012-08-19 | 4229PNA90 |  |  |  |  | 191d | 152d |  | calendar | 51010 | 21 |

| ID | WBS | Activity | Type | Duration | Start | Finish | Predecessors | Complete | Remaining | Planned start | Planned finish | Total float | Free float | Calendar | Global Commodity Code | Global Activity Code |
| --- | --- | --- | --- | --- | --- | --- | --- | --- | --- | --- | --- | --- | --- | --- | --- | --- |
|  | 11 | **Electrical bulk** |  |  | 2011-12-28 | 2012-12-13 |  |  |  |  |  |  |  |  |  |  |
| 4229PEB10 |  | Issue RFQ for Electrical bulk |  | 2d | 2011-12-28 A | 2011-12-29 A | 4229GM10 FS+1d, 4229EEL140 | 100% |  | 2012-01-11 | 2012-01-12 |  |  |  | 50002 | 03 |
| 4229PEB20 |  | Bidding for Electrical bulk |  | 25d | 2011-12-30 A | 2012-02-01 A | 4229PEB10 | 100% |  | 2012-01-13 | 2012-02-07 |  |  | SUPPLIER | 50002 | 04 |
| 4229EEB310 |  | T.E.R for Electrical bulk | level of effort | 15d | 2012-02-02 A | 2012-06-10 A | 4229EEL200 SS, 4229EEL200 FF | 100% |  | 2012-03-05 | 2012-03-25 |  |  |  |  |  |
| 4229PEB30 |  | Receive revised commercial offers |  | 5d | 2012-06-11 A | 2012-06-24 A | 4229EEL200 | 100% |  | 2012-07-01 | 2012-07-05 |  |  |  | 50002 | 10 |
| 4229PEB40 |  | commercial evaluation & bid committee for Electrical bulk |  | 10d | 2012-06-25 A | 2012-06-27 A | 4229PEB30, 4229EEL200 | 100% |  | 2012-07-08 | 2012-07-19 |  |  |  | 50002 | 11 |
| 4229PEB50 |  | Client approval on bid committee reccomendation |  | 2d | 2012-06-28 A | 2012-07-04 | 4229PEB40 |  | 4d | 2012-07-01 | 2012-07-02 | 56d | 0d |  | 50002 | 12 |
| 4229PEB60 |  | F.O.C for Electrical bulk |  | 3d | 2012-07-05 | 2012-07-09 | 4229PEB50, 4229PEB40 |  |  |  |  | 56d | 0d |  | 50002 | 13 |
| 4229PEB65 |  | MRP for Electrical bulk | level of effort | 5d | 2012-07-10 | 2012-07-16 | 4229EEL210 SS, 4229EEL210 FF |  |  |  |  | 56d | 0d |  |  |  |
| 4229PEB70 |  | P.O for Electrical bulk |  | 2d | 2012-07-17 | 2012-07-18 | 4229EEL210 |  |  |  |  | 56d | 0d |  | 50002 | 15 |
| 4229PEB80 |  | L.C issued by Gupco |  | 5d | 2012-07-19 | 2012-07-25 | 4229PEB70 |  |  |  |  | 56d | 0d |  | 50002 |  |
| 4229PEB90 |  | Fabrication upto R.F.S |  | 84d | 2012-07-26 | 2012-10-29 | 4229PEB80, 4229PEB70 |  |  |  |  | 73d | 0d | SUPPLIER | 50002 | 16 |
| 4229PEB100 |  | Delivery upto site |  | 45d | 2012-10-30 | 2012-12-13 | 4229PEB90 |  |  |  |  | 75d | 36d | calendar | 50002 | 21 |
|  | 1 | **Cathodic protection** |  |  | 2011-10-26 | 2012-06-19 |  |  |  |  |  |  |  |  |  |  |
| 4229PCP10 |  | Issue RFQ for Cathodic protection |  | 2d | 2011-10-26 A | 2011-10-26 A | 4229EME10 | 100% |  | 2011-10-30 | 2011-10-31 |  |  |  | 18502 | 03 |
| 4229PCP20 |  | Bidding for Cathodic protection |  | 25d | 2011-10-27 A | 2011-11-24 A | 4229PCP10 | 100% |  | 2011-11-17 | 2011-12-11 |  |  | SUPPLIER | 18502 | 04 |
| 4229PCP25 |  | T.E.R for cathodic protection | level of effort | 18.88d | 2011-11-24 A | 2011-12-27 A | 4229EME60 SS, 4229EME60 FF | 100% |  | 2011-12-04 | 2011-12-28 |  |  |  |  |  |
| 4229PCP30 |  | Receive revised commercial offers |  | 5d | 2011-12-28 A | 2012-01-15 A | 4229EME60 | 100% |  | 2012-01-01 | 2012-01-05 |  |  |  | 18502 | 10 |
| 4229PCP40 |  | Commercial evaluation & bid committee for Cathodic protection |  | 10d | 2012-01-16 A | 2012-01-23 A | 4229EME60, 4229PCP30 | 100% |  | 2012-01-09 | 2012-01-22 |  |  |  | 18502 | 11 |
| 4229PCP50 |  | Client approval on bid committee reccommendation |  | 2d | 2012-02-09 A | 2012-02-20 A | 4229PCP40 | 100% |  | 2012-03-18 | 2012-03-19 |  |  |  | 18502 | 12 |
| 4229PCP60 |  | F.O.C for Cathodic protection |  | 3d | 2012-02-21 A | 2012-02-26 A | 4229PCP40, 4229PCP50 | 100% |  | 2012-03-20 | 2012-03-22 |  |  |  | 18502 | 13 |
| 4229PCP90 |  | Fabrication upto R.F.S |  | 70d | 2012-02-26 A | 2012-05-28 A | 4229PCP70 | 100% |  | 2012-03-14 | 2012-05-22 |  |  | SUPPLIER | 18502 | 16 |
| 4229PCP65 |  | MRP for cathodic protection | level of effort | 5d | 2012-02-27 A | 2012-02-28 A | 4229EME100 FF, 4229EME100 SS | 100% |  | 2012-03-04 | 2012-03-08 |  |  |  |  |  |
| 4229PCP70 |  | P.O for Cathodic protection |  | 5d | 2012-02-29 A | 2012-03-01 A | 4229EME100 | 100% |  | 2012-03-04 | 2012-03-08 |  |  |  | 18502 | 15 |
| 4229PCP100 |  | Delivery upto site |  | 45d | 2012-05-29 A | 2012-06-19 A | 4229PCP90 | 100% |  | 2012-06-08 | 2012-07-22 |  |  | calendar | 18502 | 21 |

| ID | WBS | Activity | Type | Duration | Start | Finish | Predecessors | Complete | Remaining | Planned start | Planned finish | Total float | Free float | Constraint | Expected finish | Calendar | Global Commodity Code | Global Activity Code |
| --- | --- | --- | --- | --- | --- | --- | --- | --- | --- | --- | --- | --- | --- | --- | --- | --- | --- | --- |
|  | 20 | **Pressure Vessels** |  |  | 2011-11-17 | 2012-10-12 |  |  |  |  |  |  |  |  |  |  |  |  |
| 4229PVE10 |  | Issue RFQ for pressure vessels |  | 2d | 2011-11-17 A | 2011-11-17 A | 4229EPV20, 4229GM10 | 100% |  | 2011-12-04 | 2011-12-05 |  |  |  |  |  | 11301 | 03 |
| 4229PVE20 |  | Bidding for pressure vessels |  | 30d | 2011-11-18 A | 2011-12-08 A | 4229PVE10 | 100% |  | 2011-12-06 | 2012-01-16 |  |  |  |  | SUPPLIER | 11301 | 04 |
| 4229PVE25 |  | T.E.R for pressure vessels | level of effort | 20d | 2011-12-15 A | 2012-02-20 A | 4229EPV40 FF, 4229EPV40 SS | 100% |  | 2011-12-11 | 2012-01-05 |  |  |  |  |  |  |  |
| 4229PVE30 |  | Receive revised commercial offers |  | 5d | 2012-02-21 A | 2012-02-27 A | 4229EPV40 | 100% |  | 2012-03-04 | 2012-03-08 |  |  |  |  |  | 11301 | 10 |
| 4229PVE40 |  | commercial evaluation & bid committee for pressure vessels |  | 10d | 2012-02-28 A | 2012-03-18 A | 4229EPV40, 4229PVE30 | 100% |  | 2012-03-05 | 2012-03-18 |  |  |  |  |  | 11301 | 11 |
| 4229PVE50 |  | Client approval on bid committee reccommendation |  | 2d | 2012-03-19 A | 2012-03-19 A | 4229PVE40 | 100% |  | 2012-04-15 | 2012-04-16 |  |  |  |  |  | 11301 | 12 |
| 4229PVE60 |  | F.O.C for pressure vessels |  | 3d | 2012-03-19 A | 2012-03-20 A | 4229PVE40, 4229PVE50 | 100% |  | 2012-04-17 | 2012-04-19 |  |  |  |  |  | 11301 | 13 |
| 4229PVE65 |  | MRP for K.O drum | level of effort | 2d | 2012-03-21 A | 2012-03-25 A | 4229EPV60 SS, 4229EPV60 FF | 100% |  | 2012-03-21 | 2012-03-22 |  |  |  |  |  |  |  |
| 4229PVE70 |  | P.O for pressure vessels |  | 5d | 2012-03-26 A | 2012-04-01 A | 4229EPV60 | 100% |  | 2012-04-01 | 2012-04-05 |  |  |  |  |  | 11301 | 15 |
| 4229PVE90 |  | Fabrication upto R.F.S |  | 182d | 2012-04-01 A | 2012-09-28 | 4229PVE80, 4229PVE70 | 60% | 73d | 2012-04-06 | 2012-10-16 | 30d | 0d |  | 2012-09-28 | SUPPLIER | 11301 | 16 |
| 4229PVE80 |  | L.C issued by Gupco |  | 5d | 2012-07-01 | 2012-07-05 | 4229PVE70 |  |  |  |  | 20d | 0d |  |  |  | 11301 |  |
| 4229PVE100 |  | Delivery upto site |  | 14d | 2012-09-29 | 2012-10-12 | 4229PVE90 |  |  |  |  | 137d | 98d |  |  | calendar | 11301 | 21 |
|  | 21 | **Open drain Tanks (Cancelled)** |  |  | 2011-10-27 | 2012-03-03 |  |  |  |  |  |  |  |  |  |  |  |  |
| 4229PTA10 |  | Issue RFQ for tanks |  | 2d | 2011-10-27 A | 2011-10-27 A | 4229GM10, 4229EPV10 | 100% |  | 2011-11-20 | 2011-11-21 |  |  |  |  |  | 11303 | 03 |
| 4229PTA20 |  | Bidding for tanks |  | 30d | 2011-10-27 A | 2011-11-24 A |  | 100% |  | 2011-11-22 | 2011-12-21 |  |  |  |  | SUPPLIER | 11303 | 04 |
| 4229PTA25 |  | T.E.R for tanks | level of effort | 20d | 2011-11-24 A | 2011-12-29 A | 4229EPV30 SS, 4229EPV30 FF | 100% |  | 2011-12-04 | 2011-12-29 |  |  |  |  |  |  |  |
| 4229PTA30 |  | Receive revised commercial offers |  | 5d | 2011-12-29 A | 2012-01-05 A | 4229EPV30 | 100% |  | 2012-01-01 | 2012-01-05 |  |  |  |  |  | 11303 | 10 |
| 4229PTA40 |  | commercial evaluation & bid committee for tanks |  | 10d | 2012-01-08 A | 2012-03-03 A | 4229EPV30, 4229PTA30 | 100% |  | 2012-01-08 | 2012-01-19 |  |  | start on or after 2012-01-08 |  |  | 11303 | 11 |
| 4229PTA65 |  | MRP for tanks | level of effort | 5d | 2012-03-01 A | 2012-03-03 A | 4229EPV50 SS, 4229EPV50 FF | 100% |  | 2012-03-18 | 2012-03-22 |  |  |  |  |  |  |  |
| 4229PTA100 |  | Delivery upto site |  | 45d | 2012-03-03 A | 2012-03-03 A | 4229PTA90 | 100% |  | 2012-07-28 | 2012-09-10 |  |  |  |  | calendar | 11303 | 21 |
| 4229PTA50 |  | Client approval on bid committee reccomendation |  | 2d | 2012-03-03 A | 2012-03-03 A | 4229PTA40 | 100% |  | 2012-03-11 | 2012-03-12 |  |  |  |  |  | 11303 | 12 |
| 4229PTA60 |  | F.O.C for tanks |  | 3d | 2012-03-03 A | 2012-03-03 A | 4229PTA40, 4229PTA50 | 100% |  | 2012-03-13 | 2012-03-15 |  |  |  |  |  | 11303 | 13 |
| 4229PTA70 |  | P.O for tanks |  | 5d | 2012-03-03 A | 2012-03-03 A | 4229EPV50 | 100% |  | 2012-03-18 | 2012-03-22 |  |  |  |  |  | 11303 | 15 |
| 4229PTA80 |  | L.C issued by Gupco |  | 5d | 2012-03-03 A | 2012-03-03 A | 4229PTA70 | 100% |  | 2012-03-25 | 2012-03-29 |  |  |  |  |  | 11303 |  |
| 4229PTA90 |  | Fabrication upto R.F.S |  | 120d | 2012-03-03 A | 2012-03-03 A | 4229PTA70, 4229PTA80 | 100% |  | 2012-03-30 | 2012-07-27 |  |  |  |  | SUPPLIER | 11303 | 16 |

| ID | WBS | Activity | Type | Duration | Start | Finish | Predecessors | Complete | Remaining | Planned start | Planned finish | Total float | Free float | Expected finish | Calendar | Global Commodity Code | Global Activity Code |
| --- | --- | --- | --- | --- | --- | --- | --- | --- | --- | --- | --- | --- | --- | --- | --- | --- | --- |
|  | 33 | **Progress cavity pump** |  |  | 2012-03-14 | 2013-01-16 |  |  |  |  |  |  |  |  |  |  |  |
| 4229PPC100 |  | Issue RFQ for pump |  | 2d | 2012-03-14 A | 2012-03-20 A | 4229EME170 | 100% |  | 2012-04-29 | 2012-04-30 |  |  |  |  | 13103 | 03 |
| 4229PPC110 |  | Bidding for pump |  | 40d | 2012-03-21 A | 2012-04-28 A | 4229PPC100 | 100% |  | 2012-04-28 | 2012-06-06 |  |  |  | SUPPLIER | 13103 | 04 |
| 4229PPC120 |  | T.E.R for pump | level of effort | 30d | 2012-04-29 A | 2012-06-12 A | 4229EME180 SS, 4229EME180 FF | 100% |  | 2012-04-29 | 2012-06-07 |  |  |  |  |  |  |
| 4229PPC130 |  | Receive revised commercial offers for pump |  | 5d | 2012-06-13 A | 2012-06-19 A | 4229EME180 | 100% |  | 2012-07-01 | 2012-07-05 |  |  |  |  | 13103 | 10 |
| 4229PPC180 |  | commercial evaluation & bid committee for pump |  | 0d | 2012-06-20 A | 2012-06-21 A | 4229PPC130 | 100% |  | 2012-07-08 | 2012-07-08 |  |  |  |  | 13103 | 11 |
| 4229PPC160 |  | Client approval on bid committee reccomendation |  | 2d | 2012-06-25 A | 2012-07-02 | 4229PPC180 |  | 2d | 2012-07-01 | 2012-07-02 | 25d | 0d |  |  | 13103 | 12 |
| 4229PPC190 |  | F.O.C for pump |  | 3d | 2012-07-03 | 2012-07-05 | 4229PPC160, 4229PPC180 |  |  |  |  | 25d | 0d |  |  | 13103 | 13 |
| 4229PPC140 |  | Fabrication upto R.F.S for pump |  | 140d | 2012-07-06 | 2012-12-04 | 4229PPC190 |  |  |  |  | 37d | 0d |  | SUPPLIER | 13103 | 16 |
| 4229PPC210 |  | MRP for pump | level of effort | 5d | 2012-07-08 | 2012-07-12 | 4229EME200 SS, 4229EME200 FF |  |  |  |  | 141d | 0d |  |  |  |  |
| 4229PPC200 |  | P.O for pump |  | 5d | 2012-07-15 | 2012-07-19 | 4229EME200 |  |  |  |  | 141d | 0d |  |  | 13103 | 15 |
| 4229PPC170 |  | L.C issued by Gupco |  | 5d | 2012-07-22 | 2012-07-26 | 4229PPC200 |  |  |  |  | 141d |  |  |  | 13103 | 12 |
| 4229PPC150 |  | Delivery upto site for pump |  | 45d | 2012-12-05 | 2013-01-16 | 4229PPC140 |  |  |  |  | 39d |  |  | calendar | 13103 | 21 |
|  | 24 | **18" pipeline** |  |  |  |  |  |  |  |  |  |  |  |  |  |  |  |
|  | 5 | **8"pipeline** |  |  | 2011-10-31 | 2012-08-06 |  |  |  |  |  |  |  |  |  |  |  |
| 4229PPL50 |  | Issue RFQ for 8" pipeline |  | 2d | 2011-10-31 A | 2011-10-31 A | 4229EPL560 | 100% |  | 2011-12-04 | 2011-12-05 |  |  |  |  | 61102 | 03 |
| 4229PPL10 |  | Bidding for 8" pipeline |  | 35d | 2011-11-01 A | 2011-11-21 A | 4229EPL560, 4229PPL50 | 100% |  | 2011-12-06 | 2012-01-21 |  |  |  | SUPPLIER | 61102 | 04 |
| 4229PPL15 |  | T.E.R for 8"line pipe | level of effort | 28.88d | 2011-11-22 A | 2012-01-08 A | 4229EPL70 FF, 4229EPL70 SS | 100% |  | 2012-01-22 | 2012-03-01 |  |  |  |  |  |  |
| 4229PPL20 |  | Receive revised commercial offers for 8"pipeline |  | 5d | 2012-01-09 A | 2012-01-24 A | 4229EPL70 | 100% |  | 2012-01-09 | 2012-01-15 |  |  |  |  | 61102 | 10 |
| 4229PPL60 |  | commercial evaluation & bid committee for 8"pipeline |  | 10d | 2012-01-25 A | 2012-01-30 A | 4229PPL20 | 100% |  | 2012-03-06 | 2012-03-19 |  |  |  |  | 61102 | 11 |
| 4229PPL70 |  | Client approval on bid committee reccomendation |  | 2d | 2012-02-13 A | 2012-02-19 A | 4229PPL60 | 100% |  | 2012-03-20 | 2012-03-21 |  |  |  |  | 61102 | 12 |
| 4229PPL65 |  | MRP for 8" pipeline | level of effort | 5d | 2012-02-21 A | 2012-02-26 A | 4229EPL110 FF, 4229EPL110 SS | 100% |  | 2012-03-04 | 2012-03-08 |  |  |  |  |  |  |
| 4229PPL80 |  | F.O.C for 8" pipeline |  | 3d | 2012-02-21 A | 2012-02-26 A | 4229PPL70, 4229PPL60 | 100% |  | 2012-03-04 | 2012-03-06 |  |  |  |  | 61102 | 13 |
| 4229PPL90 |  | P.O for 8" pipeline |  | 5d | 2012-02-27 A | 2012-02-29 A | 4229EPL110 | 100% |  | 2012-03-04 | 2012-03-08 |  |  |  |  | 61102 | 15 |
| 4229PPL110 |  | Fabrication upto R.F.S |  | 126d | 2012-02-29 A | 2012-07-07 | 4229PPL100, 4229PPL90 | 98% | 2d | 2012-03-09 | 2012-07-12 | 190d | 0d | 2012-07-07 | SUPPLIER | 61102 | 16 |
| 4229PPL100 |  | L.C issued by Gupco |  | 5d | 2012-07-01 | 2012-07-05 | 4229PPL90 |  |  |  |  | 134d | 0d |  |  | 61102 |  |
| 4229PPL120 |  | Delivery upto site |  | 30d | 2012-07-08 | 2012-08-06 | 4229PPL110 |  |  |  |  | 204d |  |  | calendar | 61102 | 21 |

| ID | WBS | Activity | Type | Duration | Start | Finish | Predecessors | Complete | Remaining | Planned start | Planned finish | Total float | Free float | Constraint | Expected finish | Calendar | Global Commodity Code | Global Activity Code |
| --- | --- | --- | --- | --- | --- | --- | --- | --- | --- | --- | --- | --- | --- | --- | --- | --- | --- | --- |
|  | 30 | **Hot bends** |  |  | 2011-10-09 | 2012-10-05 |  |  |  |  |  |  |  |  |  |  |  |  |
| 4229PHB10 |  | Issue RFQ for hot bends |  | 2d | 2011-10-09 A | 2011-10-09 A | 4229EPL20 | 100% |  | 2011-08-15 | 2011-08-16 |  |  |  |  |  | 61202 | 03 |
| 4229PHB20 |  | Bidding for hot bends |  | 25d | 2011-10-10 A | 2011-10-30 A | 4229PHB10 | 100% |  | 2011-10-10 | 2011-11-03 |  |  | start on or after 2011-10-10 |  | SUPPLIER | 61202 | 04 |
| 4229PHB25 |  | T.E.R for hot bends | level of effort | 25.88d | 2011-10-30 A | 2011-12-08 A | 4229EPL90 SS, 4229EPL90 FF | 100% |  | 2011-12-04 | 2012-01-08 |  |  |  |  |  |  |  |
| 4229PHB30 |  | Receive revised commercial offers for hot bends |  | 5d | 2011-12-09 A | 2011-12-28 A | 4229EPL90 | 100% |  | 2011-12-28 | 2012-01-03 |  |  |  |  |  | 61202 | 10 |
| 4229PHB50 |  | commercial evaluation & bid committee for hot bends |  | 10d | 2011-12-29 A | 2012-01-24 A | 4229PHB30 | 100% |  | 2012-01-01 | 2012-01-12 |  |  |  |  |  | 61202 | 11 |
| 4229PHB60 |  | Client approval on bid committee reccomendation |  | 2d | 2012-01-26 A | 2012-01-31 A | 4229PHB50 | 100% |  | 2012-01-26 | 2012-01-29 |  |  |  |  |  | 61202 | 12 |
| 4229PHB65 |  | MRP for hot bends | level of effort | 6d | 2012-02-09 A | 2012-02-19 A | 4229EPL190 SS, 4229EPL190 FF | 100% |  | 2012-02-09 | 2012-02-16 |  |  |  |  |  |  |  |
| 4229PHB70 |  | F.O.C for hot bends |  | 3d | 2012-04-01 A | 2012-04-05 A | 4229PHB60, 4229PHB50 | 100% |  | 2012-02-01 | 2012-02-05 |  |  | start on or after 2012-02-01 |  |  | 61202 | 13 |
| 4229PHB100 |  | Fabrication upto R.F.S |  | 112d | 2012-04-06 A | 2012-09-05 | 4229PHB90, 4229PHB70 | 55% | 50d | 2012-02-09 | 2012-05-30 | 142d | 0d | start on or after 2012-02-09 | 2012-09-05 | SUPPLIER | 61202 | 16 |
| 4229PHB80 |  | P.O for hot bends |  | 5d | 2012-04-10 A | 2012-04-18 A | 4229EPL190 | 100% |  | 2012-03-04 | 2012-03-08 |  |  |  |  |  | 61202 | 15 |
| 4229PHB90 |  | L.C issued by Gupco |  | 5d | 2012-07-01 | 2012-07-05 | 4229PHB80 |  |  |  |  | 100d | 0d |  |  |  | 61202 |  |
| 4229PHB110 |  | Delivery upto site |  | 30d | 2012-09-06 | 2012-10-05 | 4229PHB100 |  |  |  |  | 144d |  |  |  | calendar | 61202 | 21 |
|  | 29 | **Flanges** |  |  | 2011-10-31 | 2012-07-29 |  |  |  |  |  |  |  |  |  |  |  |  |
| 4229PFL10 |  | Issue RFQ for Flanges |  | 2d | 2011-10-31 A | 2011-11-02 A | 4229EPL30 | 100% |  | 2011-12-04 | 2011-12-05 |  |  |  |  |  | 61205 | 03 |
| 4229P4220 |  | Bidding for Flanges |  | 2d | 2011-11-03 A | 2011-11-28 A | 4229PFL10 | 100% |  | 2011-12-03 | 2011-12-04 |  |  |  |  | SUPPLIER | 61205 | 04 |
| 4229PFL25 |  | T.E.R for flanges | level of effort | 20d | 2011-12-01 A | 2012-01-18 A | 4229EPL100 FF, 4229EPL100 SS | 100% |  | 2011-12-05 | 2012-01-01 |  |  |  |  |  |  |  |
| 4229PFL30 |  | Receive revised commercial offers for Flanges |  | 5d | 2012-01-19 A | 2012-01-24 A | 4229EPL100 | 100% |  | 2012-01-29 | 2012-02-02 |  |  |  |  |  | 61205 | 10 |
| 4229PFL40 |  | commercial evaluation & bid committee for Flanges |  | 10d | 2012-01-25 A | 2012-02-20 A | 4229PFL30 | 100% |  | 2012-02-05 | 2012-02-16 |  |  |  |  |  | 61205 | 11 |
| 4229PFL50 |  | Client approval on bid committee reccomendation |  | 2d | 2012-02-20 A | 2012-02-21 A | 4229PFL40 | 100% |  |  |  |  |  |  |  |  | 61205 | 12 |
| 4229PFL60 |  | F.O.C for Flanges |  | 3d | 2012-02-22 A | 2012-02-26 A | 4229PFL50, 4229PFL40 | 100% |  | 2012-03-04 | 2012-03-06 |  |  |  |  |  | 61205 | 13 |
| 4229PFL65 |  | MRP for flanges | level of effort | 2d | 2012-02-26 A | 2012-02-27 A | 4229EPL220 SS, 4229EPL220 FF | 100% |  | 2012-03-07 | 2012-03-08 |  |  |  |  |  |  |  |
| 4229PFL70 |  | P.O for Flanges |  | 5d | 2012-02-28 A | 2012-02-28 A | 4229EPL220 | 100% |  | 2012-03-04 | 2012-03-08 |  |  |  |  |  | 61205 | 15 |
| 4229PFL90 |  | Fabrication upto R.F.S |  | 112d | 2012-02-28 A | 2012-07-15 | 4229PFL70 | 86% | 16d | 2012-03-03 | 2012-06-22 | 198d | 0d |  |  | SUPPLIER | 61205 | 16 |
| 4229PFL80 |  | L.C issued by Gupco |  | 5d | 2012-07-01 | 2012-07-05 | 4229PFL70 |  |  |  |  | 156d |  |  |  |  | 61205 |  |
| 4229PFL100 |  | Delivery upto site |  | 14d | 2012-07-16 | 2012-07-29 | 4229PFL90 |  |  |  |  | 212d |  |  |  | calendar | 61205 | 21 |

| ID | WBS | Activity | Type | Duration | Start | Finish | Predecessors | Complete | Remaining | Planned start | Planned finish | Total float | Free float | Constraint | Expected finish | Calendar | Global Commodity Code | Global Activity Code |
| --- | --- | --- | --- | --- | --- | --- | --- | --- | --- | --- | --- | --- | --- | --- | --- | --- | --- | --- |
|  | 26 | **Anchor flanges** |  |  | 2011-10-25 | 2012-07-22 |  |  |  |  |  |  |  |  |  |  |  |  |
| 4229PAF10 |  | Issue RFQ for Anchor Flanges |  | 2d | 2011-10-25 A | 2011-10-26 A | 4229EPL50 | 100% |  | 2011-10-30 | 2011-10-31 |  |  |  |  |  | 44906 | 03 |
| 4229PAF20 |  | Bidding for Anchor Flanges |  | 25d | 2011-10-27 A | 2011-12-01 A | 4229PAF10 | 100% |  | 2011-11-01 | 2011-11-25 |  |  |  |  | SUPPLIER | 44906 | 04 |
| 4229PAF25 |  | T.E.R for anchor flanges | level of effort | 15d | 2011-12-06 A | 2012-01-05 A | 4229EPL150 SS, 4229EPL150 FF | 100% |  | 2011-12-06 | 2011-12-26 |  |  |  |  |  |  |  |
| 4229PAF30 |  | Receive revised commercial offers for Anchor Flanges |  | 5d | 2012-01-08 A | 2012-01-12 A | 4229EPL150 | 100% |  |  |  |  |  | start on or after 2012-01-08 |  |  | 44906 | 10 |
| 4229PAF40 |  | commercial evaluation & bid committee for Anchor Flanges |  | 10d | 2012-01-15 A | 2012-02-06 A | 4229PAF30 | 100% |  | 2012-01-15 | 2012-01-29 |  |  |  |  |  | 44906 | 11 |
| 4229PAF50 |  | Client approval on bid committee reccomendation |  | 2d | 2012-02-07 A | 2012-02-09 A | 4229PAF40 | 100% |  | 2012-03-18 | 2012-03-19 |  |  |  |  |  | 44906 | 12 |
| 4229PAF60 |  | F.O.C for Anchor Flanges |  | 3d | 2012-02-12 A | 2012-02-13 A | 4229PAF50, 4229PAF40 | 100% |  | 2012-03-04 | 2012-03-06 |  |  |  |  |  | 44906 | 13 |
| 4229PAF65 |  | MRP for anchor flanges | level of effort | 5d | 2012-02-14 A | 2012-02-28 A | 4229EPL280 FF, 4229EPL280 SS | 100% |  | 2012-03-04 | 2012-03-08 |  |  |  |  |  |  |  |
| 4229PAF70 |  | P.O for Anchor Flanges |  | 5d | 2012-02-28 A | 2012-02-28 A | 4229EPL280 | 100% |  | 2012-03-04 | 2012-03-08 |  |  |  |  |  | 44906 | 15 |
| 4229PAF90 |  | Fabrication upto R.F.S |  | 56d | 2012-02-28 A | 2012-05-15 A | 4229PAF80, 4229PAF70 | 100% |  | 2012-03-09 | 2012-05-03 |  |  |  |  | SUPPLIER | 44906 | 16 |
| 4229PAF100 |  | Delivery upto site |  | 30d | 2012-05-18 A | 2012-07-22 | 4229PAF90 | 43% | 17d | 2012-06-08 | 2012-07-07 | 219d | 0d |  | 2012-07-22 | calendar | 44906 | 21 |
| 4229PAF80 |  | L.C issued by Gupco |  | 5d | 2012-07-01 | 2012-07-05 | 4229PAF70 |  |  |  |  | 145d | 0d |  |  |  | 44906 |  |
|  | 27 | **Isolating joints** |  |  | 2011-10-19 | 2012-07-21 |  |  |  |  |  |  |  |  |  |  |  |  |
| 4229PIJ10 |  | Issue RFQ for Isolating joints |  | 2d | 2011-10-19 A | 2011-10-19 A | 4229EPL80 | 100% |  | 2011-10-30 | 2011-10-31 |  |  |  |  |  | 61203 | 03 |
| 4229PIJ20 |  | Bidding for Isolating joints |  | 25d | 2011-10-20 A | 2011-11-10 A | 4229PIJ10 | 100% |  | 2011-11-01 | 2011-11-25 |  |  |  |  | SUPPLIER | 61203 | 04 |
| 4229PIJ25 |  | T.E.R for isolating joints | level of effort | 18.88d | 2011-11-13 A | 2011-12-08 A | 4229EPL210 FF, 4229EPL210 SS | 100% |  | 2011-12-04 | 2011-12-28 |  |  |  |  |  |  |  |
| 4229PIJ40 |  | commercial evaluation & bid committee for Isolating joints |  | 10d | 2011-12-13 A | 2011-12-21 A | 4229PIJ30 | 100% |  | 2011-12-22 | 2012-01-04 |  |  |  |  |  | 61203 | 11 |
| 4229PIJ30 |  | Receive revised commercial offers for Isolating joints |  | 5d | 2011-12-13 A | 2011-12-21 A | 4229EPL210 | 100% |  | 2011-12-13 | 2011-12-19 |  |  |  |  |  | 61203 | 10 |
| 4229PIJ50 |  | Client approval on bid committee reccomendation |  | 2d | 2011-12-22 A | 2012-01-03 A | 4229PIJ40 | 100% |  | 2012-01-03 | 2012-01-04 |  |  |  |  |  | 61203 | 12 |
| 4229PIJ60 |  | F.O.C for Isolating joints |  | 3d | 2012-01-04 A | 2012-01-23 A | 4229PIJ40, 4229PIJ50 | 100% |  | 2012-01-23 | 2012-01-26 |  |  |  |  |  | 61203 | 13 |
| 4229PIJ65 |  | MRP for isolating joints | level of effort | 4d | 2012-01-24 A | 2012-01-31 A | 4229EPL300 FF, 4229EPL300 SS | 100% |  | 2012-01-29 | 2012-02-01 |  |  |  |  |  |  |  |
| 4229PIJ70 |  | P.O for Isolating joints |  | 5d | 2012-02-01 A | 2012-02-02 A | 4229EPL300 | 100% |  | 2012-02-01 | 2012-02-07 |  |  |  |  |  | 61203 | 15 |
| 4229PIJ90 |  | Fabrication upto R.F.S |  | 98d | 2012-02-03 A | 2012-06-11 A | 4229PIJ70 | 100% |  | 2012-03-09 | 2012-06-14 |  |  |  |  | SUPPLIER | 61203 | 16 |
| 4229PIJ100 |  | Delivery upto site |  | 30d | 2012-06-11 A | 2012-07-21 A | 4229PIJ90 | 100% |  | 2012-07-06 | 2012-08-04 |  |  |  |  | calendar | 61203 | 21 |

| ID | WBS | Activity | Type | Duration | Start | Finish | Predecessors | Complete | Planned start | Planned finish | Calendar | Global Commodity Code | Global Activity Code |
| --- | --- | --- | --- | --- | --- | --- | --- | --- | --- | --- | --- | --- | --- |
|  | 28 | **Heat shrink sleeves** |  |  | 2011-10-12 | 2012-05-27 |  |  |  |  |  |  |  |
| 4229PHS10 |  | Issue RFQ for Heat shrink sleeves |  | 2d | 2011-10-12 A | 2011-10-12 A | 4229EPL40 | 100% | 2011-10-30 | 2011-10-31 |  | 46201 | 03 |
| 4229PHS20 |  | Bidding for Heat shrink sleeves |  | 25d | 2011-10-13 A | 2011-11-02 A | 4229PHS10 | 100% | 2011-11-01 | 2011-11-25 | SUPPLIER | 46201 | 04 |
| 4229PHS25 |  | T.E.R for heat shrink sleeves | level of effort | 18.88d | 2011-11-03 A | 2011-12-05 A | 4229EPL130 SS, 4229EPL130 FF | 100% | 2011-12-04 | 2011-12-28 |  |  |  |
| 4229PHS30 |  | Receive revised commercial offers for Heat shrink sleeves |  | 5d | 2011-12-06 A | 2011-12-08 A | 4229EPL130 | 100% | 2011-12-06 | 2011-12-12 |  | 46201 | 10 |
| 4229PHS40 |  | commercial evaluation & bid committee for Heat shrink sleeves |  | 10d | 2011-12-09 A | 2011-12-12 A | 4229PHS30 | 100% | 2011-12-14 | 2011-12-27 |  | 46201 | 11 |
| 4229PHS50 |  | Client approval on bid committee reccomendation |  | 2d | 2011-12-22 A | 2012-01-03 A | 4229PHS40 | 100% | 2012-01-01 | 2012-01-02 |  | 46201 | 12 |
| 4229PHS60 |  | F.O.C for Heat shrink sleeves |  | 3d | 2012-01-04 A | 2012-01-23 A | 4229PHS40, 4229PHS50 | 100% | 2012-01-03 | 2012-01-05 |  | 46201 | 13 |
| 4229PHS80 |  | L.C issued by Gupco (not Applicable) |  | 5d | 2012-01-23 A | 2012-01-23 A | 4229PHS70 | 100% | 2012-01-22 | 2012-01-29 |  | 46201 |  |
| 4229PHS90 |  | Fabrication upto R.F.S |  | 49d | 2012-01-24 A | 2012-03-22 A | 4229PHS70, 4229PHS80 | 100% | 2012-01-30 | 2012-03-18 | SUPPLIER | 46201 | 16 |
| 4229PHS65 |  | MRP for heat shrink sleeves | level of effort | 5d | 2012-01-24 A | 2012-01-30 A | 4229EPL260 FF, 4229EPL260 SS | 100% | 2012-01-29 | 2012-02-02 |  |  |  |
| 4229PHS70 |  | P.O for Heat shrink sleeves |  | 5d | 2012-01-30 A | 2012-02-05 A | 4229EPL260 | 100% |  |  |  | 46201 | 15 |
| 4229PHS100 |  | Delivery upto site |  | 15d | 2012-03-23 A | 2012-05-27 A | 4229PHS90 | 100% | 2012-03-31 | 2012-04-14 | calendar | 46201 | 21 |
|  | 25 | **Kamos ring** |  |  | 2011-10-05 | 2012-03-24 |  |  |  |  |  |  |  |
| 4229PKR10 |  | Issue RFQ for Kamos ring |  | 2d | 2011-10-05 A | 2011-10-05 A | 4229EPL60 | 100% | 2011-10-30 | 2011-10-31 |  | 41901 | 03 |
| 4229PKR20 |  | Bidding for Kamos ring |  | 25d | 2011-10-06 A | 2011-11-12 A | 4229PKR10 | 100% | 2011-11-01 | 2011-11-25 | SUPPLIER | 41901 | 04 |
| 4229PKR25 |  | T.E.R for kamos ring | level of effort | 18.88d | 2011-11-13 A | 2011-11-20 A | 4229EPL140 FF, 4229EPL140 SS | 100% | 2011-12-04 | 2011-12-28 |  |  |  |
| 4229PKR30 |  | Receive revised commercial offers for Kamos ring |  | 5d | 2011-11-21 A | 2011-11-27 A | 4229EPL140 | 100% | 2011-12-04 | 2011-12-08 |  | 41901 | 10 |
| 4229PKR40 |  | commercial evaluation & bid committee for Kamos ring |  | 10d | 2011-11-27 A | 2011-12-07 A | 4229PKR30 | 100% | 2011-12-11 | 2011-12-22 |  | 41901 | 11 |
| 4229PKR50 |  | Client approval on bid committee reccomendation |  | 2d | 2011-12-07 A | 2011-12-11 A | 4229PKR40 | 100% | 2012-01-01 | 2012-01-02 |  | 41901 | 12 |
| 4229PKR60 |  | F.O.C for Kamos ring |  | 3d | 2011-12-12 A | 2011-12-20 A | 4229PKR40, 4229PKR50 | 100% | 2012-01-03 | 2012-01-05 |  | 41901 | 13 |
| 4229PKR65 |  | MRP for kamos ring | level of effort | 5d | 2011-12-21 A | 2011-12-26 A | 4229EPL270 FF, 4229EPL270 SS | 100% | 2012-01-08 | 2012-01-12 |  |  |  |
| 4229PKR70 |  | P.O for Kamos ring |  | 4d | 2011-12-27 A | 2012-01-01 A | 4229EPL270 | 100% |  |  |  | 41901 | 15 |
| 4229PKR80 |  | L.C issued by Gupco |  | 1d | 2012-01-02 A | 2012-01-02 A | 4229PKR70 | 100% | 2012-01-01 | 2012-01-01 |  | 41901 |  |
| 4229PKR90 |  | Fabrication upto R.F.S |  | 91d | 2012-01-02 A | 2012-03-04 A | 4229PKR70, 4229PKR80 | 100% | 2012-01-28 | 2012-04-27 | SUPPLIER | 41901 | 16 |
| 4229PKR100 |  | Delivery upto site |  | 30d | 2012-03-05 A | 2012-03-24 A | 4229PKR90 | 100% | 2012-04-02 | 2012-05-01 | calendar | 41901 | 21 |

| WBS | Activity |
| --- | --- |
| 4 | **Construction supervision** |
| 5 | **Pre-commissioning & Commissioning** |
| 6 | **(New WBS)** |

## Activity codes

| Code | Value | Meaning |
| --- | --- | --- |
| Global Activity Code | 01 | MRQ |
| Global Activity Code | 03 | RFQ |
| Global Activity Code | 04 | Bid Due Date |
| Global Activity Code | 09 | TER |
| Global Activity Code | 10 | Receive Revised Comm. Evaluation |
| Global Activity Code | 11 | Comm. Evaluation |
| Global Activity Code | 12 | No Objection Letter |
| Global Activity Code | 13 | F.O.C |
| Global Activity Code | 14 | MRP |
| Global Activity Code | 15 | P.O |
| Global Activity Code | 16 | Fabrication upto RFS |
| Global Activity Code | 19 | Delivery at Site |
| Global Activity Code | 21 | Delivery at Site |
| Global Commodity Code | 11301 | VERTICAL VESSELS |
| Global Commodity Code | 11303 | PRESSURE VESSELS ( LOCAL A7 ) |
| Global Commodity Code | 13103 | RECIPROCATING PUMP |
| Global Commodity Code | 16506 | CORROSION INHIBTOR INJECTION PACKAGES |
| Global Commodity Code | 18502 | SACRIFICIAL ANODES SYSTEM (SUPPLIERS) |
| Global Commodity Code | 19003 | LIFE SAVING EQUIPMENT |
| Global Commodity Code | 19004 | FIRE FIGHTING EQUIPMENT (LOCAL A7 ) |
| Global Commodity Code | 21001 | FIELD INSTRUMENT |
| Global Commodity Code | 21204 | PRESSURE CONTROLLERS |
| Global Commodity Code | 22106 | MULTIPHASE FLOW METERS |
| Global Commodity Code | 23402 | REGULATORS (PRESSURE , TEMPRATURE , FLOW , LEVEL , PURGE) |
| Global Commodity Code | 23406 | CHOKES AND VARIABLE RESTRICTORS |
| Global Commodity Code | 23409 | SPECIAL PURPOSE CONTROL VALVES |
| Global Commodity Code | 24701 | SAFETY AND RELIEF VALVES |
| Global Commodity Code | 25205 | FIRE DETECTION & ALARM SYSTEM |
| Global Commodity Code | 25211 | HYDRAULIC SYSTEM |
| Global Commodity Code | 28601 | TELECOMUNICATION SYSTEMS ROOM EQUIPMENT |
| Global Commodity Code | 29101 | INSTRUMENT MECHANICAL HOOK UP MATERIAL |
| Global Commodity Code | 29201 | INSTRUMENT ELECTRICAL HOOK UP MATERIAL |
| Global Commodity Code | 40001 | PIPING BULK MATERIALS (STOCKHOLDER) |
| Global Commodity Code | 40002 | PIPING BULK MATERIALS ( LOCAL A7 ) |
| Global Commodity Code | 40003 | SPECIAL ITEMS |
| Global Commodity Code | 40601 | CORROSION MONITORING |
| Global Commodity Code | 41901 | GASKETS |
| Global Commodity Code | 42112 | A.S. SPECIAL VALVES |
| Global Commodity Code | 42206 | C.S. BALL VALVES |
| Global Commodity Code | 44906 | ANCHOR FLANGES |
| Global Commodity Code | 46201 | SHRINKAGE SLEEVES |
| Global Commodity Code | 47101 | LAUNCHERS & RECEIVERS |
| Global Commodity Code | 50002 | ELECTRICAL BULK MATERIAL |
| Global Commodity Code | 51010 | NAVIGATIONAL AIDS |
| Global Commodity Code | 51018 | SOLAR SYSTEM POWER SUPPLY |
| Global Commodity Code | 61102 | CARBON STEEL LINE PIPES (SEAMLESS) |
| Global Commodity Code | 61202 | HOT BENDS |
| Global Commodity Code | 61203 | INSULATING JOINTS |
| Global Commodity Code | 61205 | FLANGES |
