# only one building

Schedule from Primavera P6, 2010-01-16 to 2011-06-14, data date 2010-01-15, costs in USD.

## Calendars

- 6days work: Mon-Thu 08:00-16:00; Fri off; Sat-Sun 08:00-16:00.

## Resources

| Resource | Group | Unit | Rate |
| --- | --- | --- | --- |
| خرسانة عادية | material | m3 | 300 |
| خرسانة مسلحة | material | m3 | 350 |
| حديد تسليح | material | ton | 3300 |
| مقاول صب خرسانة | labor |  | 10 |
| مقاول نجارة | labor |  | 110 |
| مقاول حدادة | labor |  | 87 |
| شدة خشبية و معدنية | material | m3 | 95 |

## Schedule

| ID | WBS | Activity | Type | Duration | Start | Finish | Predecessors | Total float | Free float | Resources | Cost | تصنيف الأعمال |
| --- | --- | --- | --- | --- | --- | --- | --- | --- | --- | --- | --- | --- |
|  | اسفل الدكة | **اسفل الدكة** |  |  | 2010-01-16 | 2010-05-26 |  |  |  |  |  |  |
| A1000 |  | الحفر |  | 7d | 2010-01-16 | 2010-01-23 | A1620 | 0d |  |  |  |  |
| A1620 |  | بداية اعمال اسفل الدكة | milestone | 0d | 2010-01-16 | 2010-01-16 |  | 0d |  |  |  |  |
| A1090 |  | اعمال الأحلال |  | 1d | 2010-01-24 | 2010-01-24 | A1000 | 0d |  |  |  |  |
| A1010 |  | فرشة خرسانة عادية |  | 2d | 2010-01-25 | 2010-01-26 | A1090 | 0d |  | خرسانة عادية [16 m3] | 4,800 | pc |
| A1020 |  | خرسانة عادية للقواعد |  | 7d | 2010-01-27 | 2010-02-03 | A1010 | 0d |  | خرسانة عادية [190 m3] | 57,000 | pc |
| A1400 |  | ردم بين القواعد العادية |  | 1d | 2010-02-04 | 2010-02-04 | A1020 | 0d |  |  |  |  |
| A1130 |  | خرسانة عادية اسفل الميد |  | 4d | 2010-02-06 | 2010-02-09 | A1400 | 0d |  | خرسانة عادية [87 m3] | 26,100 | pc |
| A1030 |  | خرسانة مسلحة للقواعد |  | 11d | 2010-02-10 | 2010-02-22 | A1130 | 0d |  | خرسانة مسلحة [88 m3] | 30,800 | rc |
| A2790 |  | رقاب اعمدة |  | 1d | 2010-02-23 | 2010-02-23 | A1030 | 0d |  |  |  |  |
| A1060 |  | مباني قصية الردم |  | 9d | 2010-02-24 | 2010-03-06 | A2790 | 0d |  |  |  |  |
| A1070 |  | عزل قصية الردم |  | 4d | 2010-03-07 | 2010-03-10 | A1060 | 0d |  |  |  |  |
| A1100 |  | ردم حتي منسوب اسفل السملات العلوية |  | 30d | 2010-03-11 | 2010-04-14 | A1070 | 0d |  |  |  |  |
| A1080 |  | خرسانة مسلحة سملات علوية |  | 13d | 2010-04-15 | 2010-04-29 | A1100 | 0d |  | خرسانة مسلحة [104 m3] | 36,400 | rc |
| A1120 |  | عزل السملات العلوية |  | 2d | 2010-05-01 | 2010-05-02 | A1080 | 0d |  |  |  |  |
| A1110 |  | ردم حتي اسفل الدكة |  | 11d | 2010-05-03 | 2010-05-15 | A1120 | 0d |  |  |  |  |
| A1050 |  | دكة خرسانة عادية |  | 2d | 2010-05-16 | 2010-05-17 | A1110 | 0d |  | خرسانة عادية [16 m3] | 4,800 | pc |
| A1390 |  | انتهاء اعمال اسفل الدكة | milestone | 0d | 2010-05-17 | 2010-05-17 | A1050 | 8d | 0d |  |  |  |
| A1140 |  | خرسانة مسلحة اعمدة الأرضي |  | 8d | 2010-05-18 | 2010-05-26 | A1050 | 0d |  | خرسانة مسلحة [16 m3] | 5,600 | rc |
|  | اعمال الهيكل | **اعمال الهيكل** |  |  | 2010-05-18 | 2010-12-29 |  |  |  |  |  |  |
| A1630 |  | بداية اعمال الهيكل | milestone | 0d | 2010-05-18 | 2010-05-18 | A1390 | 8d |  |  |  |  |
| A1150 |  | بلاطة الأرضي |  | 21d | 2010-05-27 | 2010-06-20 | A1140, A1630 | 0d |  | خرسانة مسلحة [97 m3]; حديد تسليح [1 ton]; مقاول صب خرسانة [97 h]; مقاول نجارة [168 h]; مقاول حدادة [168 h]; شدة خشبية و معدنية [97 m3] | 80,531 | slab |
| A1160 |  | اعمدة الدورالاول |  | 8d | 2010-06-21 | 2010-06-29 | A1150 | 0d |  | خرسانة مسلحة [15 m3]; حديد تسليح [3 ton]; مقاول صب خرسانة [15 h]; مقاول نجارة [64 h]; مقاول حدادة [64 h]; شدة خشبية و معدنية [15 m3] | 29,333 | columns |
| A2710 |  | فترة انتظار فك شدة الأرضي |  | 12d | 2010-06-21 | 2010-07-04 | A1150 | 156d | 0d |  |  |  |
| A1170 |  | بلاطة الدور الأول |  | 21d | 2010-06-30 | 2010-07-24 | A1160 | 0d |  | خرسانة مسلحة [97 m3]; حديد تسليح [14 ton]; مقاول صب خرسانة [97 h]; مقاول نجارة [168 h]; مقاول حدادة [168 h]; شدة خشبية و معدنية [97 m3] | 123,431 | slab |
| A1180 |  | اعمدة الدور الثاني |  | 8d | 2010-07-25 | 2010-08-02 | A1170 | 0d |  | خرسانة مسلحة [15 m3]; حديد تسليح [3 ton]; مقاول صب خرسانة [15 h]; مقاول نجارة [64 h]; مقاول حدادة [64 h]; شدة خشبية و معدنية [15 m3] | 29,333 | columns |
| A2700 |  | فترة انتظار فك شدة الاول |  | 12d | 2010-07-25 | 2010-08-07 | A1170 | 127d | 0d |  |  |  |
| A1190 |  | بلاطة الدور الثاني |  | 21d | 2010-08-03 | 2010-08-26 | A1180 | 0d |  | خرسانة مسلحة [97 m3]; حديد تسليح [14 ton]; مقاول صب خرسانة [97 h]; مقاول نجارة [168 h]; مقاول حدادة [168 h]; شدة خشبية و معدنية [97 m3] | 123,431 | slab |
| A1200 |  | اعمدة الدور الثالث |  | 8d | 2010-08-28 | 2010-09-05 | A1190 | 0d |  | خرسانة مسلحة [15 m3]; حديد تسليح [3 ton]; مقاول صب خرسانة [15 h]; مقاول نجارة [64 h]; مقاول حدادة [64 h]; شدة خشبية و معدنية [15 m3] | 29,333 | columns |
| A2730 |  | فترة انتظار فك شدة الثاني |  | 12d | 2010-08-28 | 2010-09-09 | A1190 | 98d | 0d |  |  |  |
| A1210 |  | بلاطة الدور الثالث |  | 21d | 2010-09-06 | 2010-09-29 | A1200 | 0d |  | خرسانة مسلحة [97 m3]; حديد تسليح [14 ton]; مقاول صب خرسانة [97 h]; مقاول نجارة [168 h]; مقاول حدادة [168 h]; شدة خشبية و معدنية [97 m3] | 123,431 | slab |
| A1220 |  | اعمدة الدور الرابع |  | 8d | 2010-09-30 | 2010-10-09 | A1210 | 0d |  | خرسانة مسلحة [15 m3]; حديد تسليح [3 ton]; مقاول صب خرسانة [15 h]; مقاول نجارة [64 h]; مقاول حدادة [64 h]; شدة خشبية و معدنية [15 m3] | 29,333 | columns |
| A2720 |  | فترة انتظار فك شدة الثالث |  | 12d | 2010-09-30 | 2010-10-13 | A1210 | 58d | 0d |  |  |  |
| A1230 |  | بلاطة الدور الرابع |  | 21d | 2010-10-10 | 2010-11-02 | A1220 | 0d |  | خرسانة مسلحة [105 m3]; حديد تسليح [14 ton]; مقاول صب خرسانة [97 h]; مقاول نجارة [168 h]; مقاول حدادة [168 h]; شدة خشبية و معدنية [105 m3] | 126,991 | slab |
| A1240 |  | اعمد الدور الخامس |  | 8d | 2010-11-03 | 2010-11-11 | A1230 | 0d |  | خرسانة مسلحة [15 m3]; حديد تسليح [3 ton]; مقاول صب خرسانة [15 h]; مقاول نجارة [64 h]; مقاول حدادة [64 h]; شدة خشبية و معدنية [15 m3] | 29,333 | columns |
| A1550 |  | فترة انتظار فك شدة الرابع |  | 12d | 2010-11-03 | 2010-11-16 | A1230 | 29d | 0d |  |  |  |
| A1250 |  | بلاطة الدور الخامس |  | 21d | 2010-11-13 | 2010-12-06 | A1240 | 0d |  | خرسانة مسلحة [97 m3]; حديد تسليح [14 ton]; مقاول صب خرسانة [97 h]; مقاول نجارة [14 h]; مقاول حدادة [168 h]; شدة خشبية و معدنية [97 m3] | 106,491 | slab |
| A1260 |  | اعمدة الشخشيخة |  | 4d | 2010-12-07 | 2010-12-11 | A1250 | 31d | 0d | خرسانة مسلحة [3 m3]; مقاول صب خرسانة [3 h]; مقاول نجارة [32 h]; مقاول حدادة [32 h]; شدة خشبية و معدنية [3 m3]; حديد تسليح [2 ton] | 14,269 | columns |
| A2740 |  | فترة انتظار فك شدة الخامس |  | 12d | 2010-12-07 | 2010-12-20 | A1250 | 0d |  |  |  |  |
| A1270 |  | سقف الشخشيخة |  | 4d | 2010-12-12 | 2010-12-15 | A1260 | 31d | 0d | خرسانة مسلحة [18 m3]; حديد تسليح [3 ton]; مقاول صب خرسانة [18 h]; مقاول نجارة [32 h]; مقاول حدادة [32 h]; شدة خشبية و معدنية [18 m3] | 24,394 | slab |
| A1640 |  | نهاية اعمال الهيكل | milestone | 0d | 2010-12-15 | 2010-12-15 | A1270 | 154d |  |  |  |  |
| A2750 |  | فترة انتظار فك شدة الشخشيخة |  | 12d | 2010-12-16 | 2010-12-29 | A1270 | 31d | 0d |  |  |  |

Notes:
- A1080: Expenses: وجبة كفتة 0
- A1150: Expenses: (New Expense Item) 0

| ID | WBS | Activity | Type | Duration | Start | Finish | Predecessors | Total float | Free float | تصنيف الأعمال | الدور |
| --- | --- | --- | --- | --- | --- | --- | --- | --- | --- | --- | --- |
|  | اعمال المباني | **اعمال المباني** |  |  | 2010-07-05 | 2011-01-12 |  |  |  |  |  |
| A1280 |  | مباني الدور الأرضي |  | 20d | 2010-07-05 | 2010-07-27 | A2710, A1650 | 156d | 0d | brick |  |
| A1650 |  | بداية اعمال المباني | milestone | 0d | 2010-07-05 | 2010-07-05 | A2710 | 156d | 0d |  |  |
| A1290 |  | مباني الدور الأول |  | 20d | 2010-08-08 | 2010-08-30 | A2700 | 127d | 29d | brick |  |
| A1300 |  | مباني الدور االثاني |  | 20d | 2010-09-11 | 2010-10-03 | A2730 | 98d | 0d | brick |  |
| A1310 |  | مباني الدور الثالث |  | 20d | 2010-10-14 | 2010-11-06 | A2720 | 58d |  | brick |  |
| A1320 |  | مباني الدور الرابع |  | 20d | 2010-11-17 | 2010-12-09 | A1550 | 29d |  | brick |  |
| A1330 |  | مباني الدورالخامس |  | 20d | 2010-12-21 | 2011-01-12 | A2740 | 0d |  | brick |  |
| A1340 |  | مباني الشخشيخة وغرفة المصعد |  | 6d | 2010-12-30 | 2011-01-05 | A2750 | 31d | 0d | brick |  |
| A1660 |  | نهاية اعمال المباني | milestone | 0d | 2011-01-05 | 2011-01-05 | A1340 | 31d | 0d |  |  |
|  | اعمال التشطيبات | **اعمال التشطيبات** |  |  | 2010-01-16 | 2011-06-14 |  |  |  |  |  |
| A1460 |  | اعمال الصحي الخارجي |  | 20d | 2010-01-16 | 2010-02-07 |  | 417d | 375d |  |  |
| A2770 |  | بداية اعمال التشطيبات الداخلية | milestone | 0d | 2010-07-28 | 2010-07-28 | A1280 | 156d | 58d |  |  |
| A1350 |  | بؤج لأعمال الحلوق و الكهرباء ارضي .1.2 |  | 9d | 2010-10-04 | 2010-10-13 | A1280, A1290, A1300, A2770 | 98d | 0d |  | sec.flo |
| A1370 |  | تركيب حلوق الأبواب و الشبابيك أرضي.1.2 |  | 10d | 2010-10-14 | 2010-10-25 | A1350 | 105d | 7d |  | sec.flo |
| A1590 |  | اعمال الكهرباء ارضي صواعد وعلب و سلك ارضي 1-2 |  | 17d | 2010-10-14 | 2010-11-02 | A1350 | 98d | 0d |  | sec.flo |
| A1440 |  | اعمال بياض و كرانيش الدورالاول |  | 20d | 2010-11-03 | 2010-11-25 | A1370, A1590 | 107d | 0d | blastin | f.floor |
| A2460 |  | اعمال بياض و كرانيش الدورالارضي |  | 20d | 2010-11-03 | 2010-11-25 | A1370, A1590 | 98d | 0d | blastin |  |
| A2500 |  | اعمال بياض و كرانيش الدوراالثاني |  | 20d | 2010-11-03 | 2010-11-25 | A1370, A1590 | 107d | 0d | blastin | sec.flo |
| A1450 |  | اعمال الصحي و عزل الحمامات دور ثاني |  | 10d | 2010-11-27 | 2010-12-07 | A2500 | 107d | 0d |  | sec.flo |
| A2290 |  | اعمال الصحي و عزل الحمامات دور ارضي |  | 10d | 2010-11-27 | 2010-12-07 | A2460 | 98d | 0d |  |  |
| A2660 |  | اعمال الصحي و عزل الحمامات دور اول |  | 10d | 2010-11-27 | 2010-12-07 | A1440 | 107d | 0d |  | f.floor |
| A1470 |  | اعمال سيراميك الارضيات و الحوائط دور ارضي |  | 20d | 2010-12-08 | 2010-12-30 | A2460, A2290 | 98d | 0d |  |  |
| A2610 |  | اعمال سيراميك الارضيات و الحوائط دور اول |  | 20d | 2010-12-08 | 2010-12-30 | A2660, A1440 | 107d | 0d | pnts | f.floor |
| A2650 |  | اعمال سيراميك الارضيات و الحوائط دور ثاني |  | 20d | 2010-12-08 | 2010-12-30 | A1450, A2500 | 107d | 0d |  | sec.flo |
| A1430 |  | اعمال الدهانات دور ثاني |  | 24d | 2011-01-01 | 2011-01-27 | A2650 | 107d | 0d |  | sec.flo |
| A2580 |  | اعمال الدهانات دور اول |  | 24d | 2011-01-01 | 2011-01-27 | A2610 | 107d | 0d |  | f.floor |
| A2600 |  | اعمال الدهانات دور ارضي |  | 24d | 2011-01-01 | 2011-01-27 | A1470 | 98d | 0d |  |  |
| A1670 |  | اعمال البياض الخارجي |  | 75d | 2011-01-06 | 2011-04-03 | A1660 | 31d | 0d |  |  |
| A1360 |  | بؤج لأعمال الحلوق و الكهرباء 3.4.5 |  | 9d | 2011-01-13 | 2011-01-23 | A1310, A1320, A1330 | 0d |  |  |  |
| A1380 |  | تركيب حلوق الأبواب و الشبابيك 3.4.5 |  | 10d | 2011-01-24 | 2011-02-03 | A1360 | 7d |  |  |  |
| A2760 |  | اعمال الكهرباء ارضي صواعد وعلب و سلك 3-4-5 |  | 17d | 2011-01-24 | 2011-02-12 | A1360 | 0d |  |  |  |
| A1420 |  | اعمال النجارة دور ثاني |  | 10d | 2011-01-29 | 2011-02-08 | A2650, A1430 | 107d |  | (New)-2 | sec.flo |
| A2260 |  | اعمال النجارة دور ارضي |  | 10d | 2011-01-29 | 2011-02-08 | A2600, A1470 | 107d |  | (New)-2 |  |
| A2510 |  | اعمال النجارة دور اول |  | 10d | 2011-01-29 | 2011-02-08 | A2610, A2580 | 107d |  | (New)-2 | f.floor |
| A2470 |  | اعمال بياض و كرانيش الدورالخامس و الشخشيخة |  | 20d | 2011-02-13 | 2011-03-07 | A2760, A1360, A1380 | 0d |  | blastin |  |
| A2480 |  | اعمال بياض و كرانيش الدورالثالث |  | 20d | 2011-02-13 | 2011-03-07 | A1360, A2760, A1380 | 20d | 0d | blastin |  |
| A2490 |  | اعمال بياض و كرانيش الدورالرابع |  | 20d | 2011-02-13 | 2011-03-07 | A2760, A1360, A1380 | 20d | 0d | blastin |  |
| A1410 |  | الاعمال المعدنية |  | 30d | 2011-02-28 | 2011-04-03 | A1670 FF | 57d | 15d |  |  |
| A1480 |  | اعمال طبقة عازلة للحرارة للاسطح |  | 7d | 2011-03-08 | 2011-03-15 | A2470 | 56d | 0d |  |  |
| A2670 |  | اعمال الصحي و عزل الحمامات دور ثالث |  | 10d | 2011-03-08 | 2011-03-19 | A2480 | 20d | 0d |  |  |
| A2680 |  | اعمال الصحي و عزل الحمامات دور رابع |  | 10d | 2011-03-08 | 2011-03-19 | A2490 | 20d | 0d |  |  |
| A2690 |  | اعمال الصحي و عزل الحمامات دور خامس |  | 10d | 2011-03-08 | 2011-03-19 | A2470 | 0d |  |  |  |
| A1570 |  | اعمال القرميد |  | 21d | 2011-03-10 | 2011-04-03 | A1670 FF | 31d | 0d |  |  |
| A1580 |  | اعمال الطبقة العازلة للرطوبة للسطح |  | 7d | 2011-03-16 | 2011-03-23 | A1480 | 56d | 0d |  |  |
| A2620 |  | اعمال سيراميك الارضيات و الحوائط دور خامس |  | 20d | 2011-03-20 | 2011-04-11 | A2470, A2690 | 0d |  |  |  |
| A2630 |  | اعمال سيراميك الارضيات و الحوائط دور رابع |  | 20d | 2011-03-20 | 2011-04-11 | A2490, A2680 | 20d | 0d |  |  |
| A2640 |  | اعمال سيراميك الارضيات و الحوائط دور ثالث |  | 20d | 2011-03-20 | 2011-04-11 | A2480, A2670 | 20d | 0d |  |  |
| A1490 |  | اعمال بلاط السطح |  | 14d | 2011-03-24 | 2011-04-09 | A1580 | 56d |  |  |  |
| A1540 |  | تركيب الألمونيوم |  | 15d | 2011-04-04 | 2011-04-20 | A2600, A1670 | 42d | 0d |  |  |
| A1560 |  | اعمال تشطيب الواجهة grc-سافيتو |  | 30d | 2011-04-04 | 2011-05-08 | A1340, A1570 | 31d |  |  |  |
| A2270 |  | اعمال الدهانات دور رابع |  | 24d | 2011-04-12 | 2011-05-09 | A2630 | 20d | 0d |  |  |
| A2570 |  | اعمال الدهانات دور ثالث |  | 24d | 2011-04-12 | 2011-05-09 | A2640 | 20d | 0d |  |  |
| A2590 |  | اعمال الدهانات دور خامس |  | 24d | 2011-04-12 | 2011-05-09 | A2620 | 0d |  |  |  |
| A1510 |  | فك السقالات المعدنية |  | 4d | 2011-04-21 | 2011-04-25 | A1540, A1410, A1570, A1460 | 42d |  |  |  |
| A1500 |  | تركيب الأجهزة الصحية |  | 30d | 2011-05-10 | 2011-06-13 | A2590 | 0d |  |  |  |
| A1520 |  | اعمال الرخام و الدرج للعمارة |  | 25d | 2011-05-10 | 2011-06-07 | A2590 | 5d | 0d |  |  |
| A2530 |  | اعمال النجارة دور ثالث |  | 10d | 2011-05-10 | 2011-05-21 | A2640, A2570 | 20d |  | (New)-2 |  |
| A2540 |  | اعمال النجارة دور رابع |  | 10d | 2011-05-10 | 2011-05-21 | A2630, A2270 | 20d |  | (New)-2 |  |
| A2550 |  | اعمال النجارة دور خامس |  | 10d | 2011-05-10 | 2011-05-21 | A2620, A2590 | 20d | 0d | (New)-2 |  |
| A2780 |  | نهاية اعمال التشطيبات الداخلية | milestone | 0d | 2011-05-21 | 2011-05-21 | A2550 | 20d |  |  |  |
| A1530 |  | تشطيب اعمال الدهانات |  | 15d | 2011-05-22 | 2011-06-07 | A1520 FF | 5d |  |  |  |
| A1600 |  | تشطيب اعمال الكهرباء |  | 10d | 2011-05-28 | 2011-06-07 | A1520 FF | 5d |  |  |  |
| A1610 |  | تسليم اعمال العمارة |  | 0d | 2011-06-14 | 2011-06-14 | A1490, A1500, A1510, A1530, A1560, A1600, A2260, A2510, A2530, A1420, A2550, A2540, A2780 | 0d |  |  |  |

## Activity codes

| Code | Value | Meaning |
| --- | --- | --- |
| الدور | f.floor | الدور الاول |
| الدور | sec.flo | الدور االثاني |
| تصنيف الأعمال | (New)-2 | نجارة ابواب و شبابيك |
| تصنيف الأعمال | blastin | بياض |
| تصنيف الأعمال | brick | مباني |
| تصنيف الأعمال | columns | الاعمدة |
| تصنيف الأعمال | pc | خ عادية |
| تصنيف الأعمال | pnts | دهانات |
| تصنيف الأعمال | rc | خرسانة مسلحة |
| تصنيف الأعمال | slab | البلاطات |
