# Cleopatra Jungle

Schedule from Primavera P6, 2010-06-21 to 2010-12-28, data date 2010-06-21.

## Calendars

- Gama projects calender: Mon-Thu 08:00-16:00; Fri off; Sat-Sun 08:00-16:00. Exceptions (off unless hours are given): 2010-11-15 to 2010-11-18.
- jungle: Mon-Thu 08:00-16:00; Fri off; Sat-Sun 08:00-16:00. Exceptions (off unless hours are given): 2010-09-08 to 2010-09-09, 2010-09-11 to 2010-09-12, 2010-12-24.

## Schedule

| ID | WBS | Activity | Type | Duration | Start | Finish | Predecessors | Total float | Free float | Calendar | zone number | villa number | Work Category | concrete type |
| --- | --- | --- | --- | --- | --- | --- | --- | --- | --- | --- | --- | --- | --- | --- |
|  | Startup | **Startup Phase** |  |  | 2010-06-21 | 2010-06-21 |  |  |  |  |  |  |  |  |
| A1000 |  | Project Start | milestone | 0d | 2010-06-21 | 2010-06-21 | A1020 | 16d | 0d |  |  |  |  |  |
| A1020 |  | Site Taking Over | milestone | 0d | 2010-06-21 | 2010-06-21 |  | 16d | 0d |  |  |  |  |  |
|  | Const. | **Construction Phase** |  |  | 2010-06-21 | 2010-12-28 |  |  |  |  |  |  |  |  |
|  | zone 1 | **Zone.No 1** |  |  | 2010-06-21 | 2010-11-02 |  |  |  |  |  |  |  |  |
|  | villa 10 | **Villa Number D10** |  |  | 2010-06-21 | 2010-10-31 |  |  |  |  |  |  |  |  |
|  | 1 | **general dates** |  |  | 2010-06-21 | 2010-10-31 |  |  |  |  |  |  |  |  |
| A10560 |  | IFC drawings | milestone | 0d | 2010-06-21 | 2010-06-21 |  | 43d | 0d |  | 01 | 10 | 01 |  |
| A10540 |  | Start Villa construction | milestone | 0d | 2010-07-03 | 2010-07-03 | A10560 FS+10d | 43d | 0d |  | 01 | 10 | 07 |  |
| A10610 |  | Fence Drawings IFC |  | 1d | 2010-07-03 | 2010-07-03 | A10540 | 89d | 41d |  | 01 | 10 | 01 |  |
| A10550 |  | finish Villa construction | milestone | 0d | 2010-10-31 | 2010-10-31 | A10520, A10670, A10600 | 46d |  |  | 01 | 10 | 08 |  |
|  | 2 | **earth works** |  |  | 2010-07-03 | 2010-07-04 |  |  |  |  |  |  |  |  |
| A10310 |  | excavation |  | 1d | 2010-07-03 | 2010-07-03 | A10540 | 43d | 0d |  | 01 | 10 | 02 |  |
| A10320 |  | soil replacement |  | 0d | 2010-07-04 | 2010-07-04 | A10310 | 43d | 0d |  | 01 | 10 | 02 |  |
|  | 3 | **foundation level** |  |  | 2010-07-05 | 2010-09-23 |  |  |  |  |  |  |  |  |
| A10330 |  | Plain Concrete Foundation |  | 2d | 2010-07-05 | 2010-07-06 | A10320 FS+1d | 43d | 0d |  | 01 | 10 | 03 | 01 |
| A10620 |  | backfilling between P.C Foundation |  | 4d | 2010-07-12 | 2010-07-15 | A10330 FS+4d | 43d | 0d | jungle | 01 | 10 | 02 |  |
| A10340 |  | Reinforced Concrete Foundation |  | 7d | 2010-07-20 | 2010-07-27 | A10620 FS+3d | 46d | 0d |  | 01 | 10 | 03 | 02 |
| A10350 |  | under ground brick works |  | 2d | 2010-08-11 | 2010-08-12 | A10410 | 46d | 0d |  | 01 | 10 | 09 |  |
| A10360 |  | under ground insulation for RC & Brick work |  | 2d | 2010-08-14 | 2010-08-15 | A10350 | 46d | 0d |  | 01 | 10 | 10 |  |
| A10370 |  | backfilling for under ground |  | 4d | 2010-08-16 | 2010-08-19 | A10360 | 46d | 0d |  | 01 | 10 | 02 |  |
| A10380 |  | P.C slab on grade 10CM |  | 1d | 2010-09-19 | 2010-09-19 | A10530, A10470 | 54d | 0d |  | 01 | 10 | 03 | 03 |
| A10390 |  | moisture insulation with membrane sheets |  | 2d | 2010-09-20 | 2010-09-21 | A10380 | 54d | 0d |  | 01 | 10 | 10 |  |
| A10400 |  | R.C slab on grade |  | 2d | 2010-09-22 | 2010-09-23 | A10390 | 54d | 0d |  | 01 | 10 | 03 | 03 |

| ID | WBS | Activity | Duration | Start | Finish | Predecessors | Total float | Free float | Calendar | zone number | villa number | Work Category | concrete type |
| --- | --- | --- | --- | --- | --- | --- | --- | --- | --- | --- | --- | --- | --- |
|  | 4 | **skeleton & brick walls** |  | 2010-08-04 | 2010-10-28 |  |  |  |  |  |  |  |  |
| A10410 |  | columns for ground floor | 6d | 2010-08-04 | 2010-08-10 | A10340 FS+6d | 46d | 0d |  | 01 | 10 | 03 | 04 |
| A10420 |  | slab for ground floor | 9d | 2010-08-21 | 2010-08-30 | A10410, A10370 | 46d | 0d |  | 01 | 10 | 03 | 05 |
| A10570 |  | pouring for ground floor's slab | 1d | 2010-08-31 | 2010-08-31 | A10420, A10480 FF+3d | 46d | 0d |  | 01 | 10 | 03 |  |
| A10430 |  | columns for 1st floor | 6d | 2010-09-01 | 2010-09-07 | A10570 | 46d | 0d |  | 01 | 10 | 03 | 04 |
| A10600 |  | Fence work | 50d | 2010-09-01 | 2010-10-28 | A10570, A10610 FS+10d | 48d | 2d |  | 01 | 10 | 06 |  |
| A10440 |  | slab for 1st floor | 9d | 2010-09-08 | 2010-09-18 | A10430 | 46d | 0d |  | 01 | 10 | 03 | 05 |
| A10470 |  | Brick works for ground floor | 5d | 2010-09-13 | 2010-09-18 | A10570 FS+10d | 54d | 0d |  | 01 | 10 | 09 |  |
| A10580 |  | pouring for 1st floor's slab | 1d | 2010-09-19 | 2010-09-19 | A10440, A10490 FF+3d | 46d | 0d |  | 01 | 10 | 03 |  |
| A10450 |  | columns for roof floor | 4d | 2010-09-22 | 2010-09-26 | A10580 FS+2d | 46d | 0d |  | 01 | 10 | 03 | 04 |
| A10460 |  | slab for roof floor | 6d | 2010-09-27 | 2010-10-03 | A10450 | 46d | 0d |  | 01 | 10 | 03 | 05 |
| A10640 |  | Brick works for 1st floor | 5d | 2010-10-02 | 2010-10-06 | A10580 FS+10d | 56d | 0d | jungle | 01 | 10 | 09 |  |
| A10590 |  | pouring for roof floor's slab | 1d | 2010-10-04 | 2010-10-04 | A10460, A10500 FF+2d | 46d | 0d |  | 01 | 10 | 03 |  |
| A10650 |  | Brick works for roof floor | 5d | 2010-10-14 | 2010-10-19 | A10590 FS+8d | 50d | 0d | jungle | 01 | 10 | 09 |  |
|  | 5 | **electro mechanical** |  | 2010-08-21 | 2010-10-21 |  |  |  |  |  |  |  |  |
| A10530 |  | plumbing connections under slab on grade | 2d | 2010-08-21 | 2010-08-22 | A10370 | 77d | 23d |  | 01 | 10 | 04 |  |
| A10480 |  | electrical conduits for ground floor's slab | 2d | 2010-08-25 | 2010-08-26 | A10420 SS+4d | 47d | 1d |  | 01 | 10 | 04 |  |
| A10490 |  | electrical conduits for 1st floor slab | 2d | 2010-09-13 | 2010-09-14 | A10440 SS+4d | 47d | 1d |  | 01 | 10 | 04 |  |
| A10680 |  | electrical conduits for ground floor walls | 2d | 2010-09-26 | 2010-09-27 | A10400 FS+1d | 58d | 0d | jungle | 01 | 10 | 04 |  |
| A10500 |  | electrical conduits for roof slab | 1d | 2010-09-30 | 2010-09-30 | A10460 SS+3d | 47d | 1d |  | 01 | 10 | 04 |  |
| A10690 |  | electrical conduits for 1st floor walls | 2d | 2010-10-07 | 2010-10-09 | A10640 | 56d | 0d | jungle | 01 | 10 | 04 |  |
| A10700 |  | electrical conduits for roof floor walls | 2d | 2010-10-20 | 2010-10-21 | A10650 | 53d | 0d | jungle | 01 | 10 | 04 |  |
|  | 6 | **finishing** |  | 2010-09-28 | 2010-10-31 |  |  |  |  |  |  |  |  |
| A10510 |  | Internal plastering for ground floor | 8d | 2010-09-28 | 2010-10-06 | A10680 | 54d | 2d |  | 01 | 10 | 05 |  |
| A10660 |  | Internal plastering for 1st floor | 8d | 2010-10-10 | 2010-10-18 | A10510, A10690 | 56d | 3d | jungle | 01 | 10 | 05 |  |
| A10520 |  | External plastering | 10d | 2010-10-20 | 2010-10-31 | A10650 | 46d | 0d |  | 01 | 10 | 05 |  |
| A10670 |  | Internal plastering for roof floor | 5d | 2010-10-23 | 2010-10-27 | A10660, A10700 | 53d | 3d | jungle | 01 | 10 | 05 |  |

| ID | WBS | Activity | Type | Duration | Start | Finish | Predecessors | Total float | Free float | Calendar | zone number | villa number | Work Category | concrete type |
| --- | --- | --- | --- | --- | --- | --- | --- | --- | --- | --- | --- | --- | --- | --- |
|  | villa 11 | **Villa Number B11** |  |  | 2010-06-21 | 2010-10-19 |  |  |  |  |  |  |  |  |
|  | 1 | **general dates** |  |  | 2010-06-21 | 2010-10-19 |  |  |  |  |  |  |  |  |
| A10960 |  | IFC drawings | milestone | 0d | 2010-06-21 | 2010-06-21 |  | 56d | 0d |  | 01 | 11 | 01 |  |
| A10940 |  | Start Villa construction | milestone | 0d | 2010-06-23 | 2010-06-23 | A10960 FS+2d | 56d | 0d |  | 01 | 11 | 07 |  |
| A11010 |  | Fence Drawings IFC |  | 1d | 2010-06-23 | 2010-06-23 | A10940 | 97d | 39d |  | 01 | 11 | 01 |  |
| A10950 |  | finish Villa construction | milestone | 0d | 2010-10-19 | 2010-10-19 | A10920, A11070, A11000 | 56d |  |  | 01 | 11 | 08 |  |
|  | 2 | **earth works** |  |  | 2010-06-23 | 2010-07-07 |  |  |  |  |  |  |  |  |
| A10710 |  | excavation |  | 1d | 2010-06-23 | 2010-06-23 | A10940 | 56d | 0d |  | 01 | 11 | 02 |  |
| A10720 |  | soil replacement |  | 12d | 2010-06-24 | 2010-07-07 | A10710 | 56d | 0d |  | 01 | 11 | 02 |  |
|  | 3 | **foundation level** |  |  | 2010-07-10 | 2010-09-12 |  |  |  |  |  |  |  |  |
| A10730 |  | Plain Concrete Foundation |  | 2d | 2010-07-10 | 2010-07-11 | A10720 FS+1d | 56d | 0d |  | 01 | 11 | 03 | 01 |
| A11020 |  | backfilling between P.C Foundation |  | 2d | 2010-07-13 | 2010-07-14 | A10730 FS+1d | 52d | 0d | jungle | 01 | 11 | 02 |  |
| A10740 |  | Reinforced Concrete Foundation |  | 7d | 2010-07-15 | 2010-07-22 | A11020 | 56d | 0d |  | 01 | 11 | 03 | 02 |
| A10750 |  | under ground brick works |  | 2d | 2010-07-31 | 2010-08-01 | A10810 | 56d | 0d |  | 01 | 11 | 09 |  |
| A10760 |  | under ground insulation for RC & Brick work |  | 2d | 2010-08-02 | 2010-08-03 | A10750 | 56d | 0d |  | 01 | 11 | 10 |  |
| A10770 |  | backfilling for under ground |  | 4d | 2010-08-04 | 2010-08-08 | A10760 | 56d | 0d |  | 01 | 11 | 02 |  |
| A10780 |  | P.C slab on grade 10CM |  | 1d | 2010-09-07 | 2010-09-07 | A10930, A10870 | 64d | 0d |  | 01 | 11 | 03 | 03 |
| A10790 |  | moisture insulation with membrane sheets |  | 2d | 2010-09-08 | 2010-09-09 | A10780 | 64d | 0d |  | 01 | 11 | 10 |  |
| A10800 |  | R.C slab on grade |  | 2d | 2010-09-11 | 2010-09-12 | A10790 | 64d | 0d |  | 01 | 11 | 03 | 03 |
|  | 4 | **skeleton & brick walls** |  |  | 2010-07-24 | 2010-10-17 |  |  |  |  |  |  |  |  |
| A10810 |  | columns for ground floor |  | 6d | 2010-07-24 | 2010-07-29 | A10740 | 56d | 0d |  | 01 | 11 | 03 | 04 |
| A10820 |  | slab for ground floor |  | 9d | 2010-08-09 | 2010-08-18 | A10810, A10770 | 56d | 0d |  | 01 | 11 | 03 | 05 |
| A10970 |  | pouring for ground floor's slab |  | 1d | 2010-08-19 | 2010-08-19 | A10820, A10880 FF+3d | 56d | 0d |  | 01 | 11 | 03 |  |
| A10830 |  | columns for 1st floor |  | 6d | 2010-08-21 | 2010-08-26 | A10970 | 56d | 0d |  | 01 | 11 | 03 | 04 |
| A11000 |  | Fence work |  | 50d | 2010-08-21 | 2010-10-17 | A10970, A11010 FS+10d | 58d | 2d |  | 01 | 11 | 06 |  |
| A10840 |  | slab for 1st floor |  | 9d | 2010-08-28 | 2010-09-06 | A10830 | 56d | 0d |  | 01 | 11 | 03 | 05 |
| A10870 |  | Brick works for ground floor |  | 5d | 2010-09-01 | 2010-09-06 | A10970 FS+10d | 64d | 0d |  | 01 | 11 | 09 |  |
| A10980 |  | pouring for 1st floor's slab |  | 1d | 2010-09-07 | 2010-09-07 | A10840, A10890 FF+3d | 56d | 0d |  | 01 | 11 | 03 |  |
| A10850 |  | columns for roof floor |  | 4d | 2010-09-11 | 2010-09-14 | A10980 FS+2d | 56d | 0d |  | 01 | 11 | 03 | 04 |
| A10860 |  | slab for roof floor |  | 6d | 2010-09-15 | 2010-09-21 | A10850 | 56d | 0d |  | 01 | 11 | 03 | 05 |
| A11040 |  | Brick works for 1st floor |  | 5d | 2010-09-20 | 2010-09-25 | A10980 FS+10d | 66d | 0d | jungle | 01 | 11 | 09 |  |
| A10990 |  | pouring for roof floor's slab |  | 1d | 2010-09-22 | 2010-09-22 | A10860, A10900 FF+2d | 56d | 0d |  | 01 | 11 | 03 |  |
| A11050 |  | Brick works for roof floor |  | 5d | 2010-10-03 | 2010-10-07 | A10990 FS+8d | 60d | 0d | jungle | 01 | 11 | 09 |  |

| ID | WBS | Activity | Type | Duration | Start | Finish | Predecessors | Total float | Free float | Calendar | zone number | villa number | Work Category | concrete type |
| --- | --- | --- | --- | --- | --- | --- | --- | --- | --- | --- | --- | --- | --- | --- |
|  | 5 | **electro mechanical** |  |  | 2010-08-09 | 2010-10-10 |  |  |  |  |  |  |  |  |
| A10930 |  | plumbing connections under slab on grade |  | 2d | 2010-08-09 | 2010-08-10 | A10770 | 87d | 23d |  | 01 | 11 | 04 |  |
| A10880 |  | electrical conduits for ground floor's slab |  | 2d | 2010-08-14 | 2010-08-15 | A10820 SS+4d | 57d | 1d |  | 01 | 11 | 04 |  |
| A10890 |  | electrical conduits for 1st floor slab |  | 2d | 2010-09-01 | 2010-09-02 | A10840 SS+4d | 57d | 1d |  | 01 | 11 | 04 |  |
| A11080 |  | electrical conduits for ground floor walls |  | 2d | 2010-09-14 | 2010-09-15 | A10800 FS+1d | 68d | 0d | jungle | 01 | 11 | 04 |  |
| A10900 |  | electrical conduits for roof slab |  | 1d | 2010-09-19 | 2010-09-19 | A10860 SS+3d | 57d | 1d |  | 01 | 11 | 04 |  |
| A11090 |  | electrical conduits for 1st floor walls |  | 2d | 2010-09-26 | 2010-09-27 | A11040 | 66d | 0d | jungle | 01 | 11 | 04 |  |
| A11100 |  | electrical conduits for roof floor walls |  | 2d | 2010-10-09 | 2010-10-10 | A11050 | 63d | 0d | jungle | 01 | 11 | 04 |  |
|  | 6 | **finishing** |  |  | 2010-09-16 | 2010-10-19 |  |  |  |  |  |  |  |  |
| A10910 |  | Internal plastering for ground floor |  | 8d | 2010-09-16 | 2010-09-25 | A11080 | 64d | 2d |  | 01 | 11 | 05 |  |
| A11060 |  | Internal plastering for 1st floor |  | 8d | 2010-09-28 | 2010-10-06 | A10910, A11090 | 66d | 3d | jungle | 01 | 11 | 05 |  |
| A10920 |  | External plastering |  | 10d | 2010-10-09 | 2010-10-19 | A11050 | 56d | 0d |  | 01 | 11 | 05 |  |
| A11070 |  | Internal plastering for roof floor |  | 5d | 2010-10-11 | 2010-10-16 | A11060, A11100 | 63d | 3d | jungle | 01 | 11 | 05 |  |
|  | villa 12 | **Villa Number B12** |  |  | 2010-06-21 | 2010-10-18 |  |  |  |  |  |  |  |  |
|  | 1 | **general dates** |  |  | 2010-06-21 | 2010-10-18 |  |  |  |  |  |  |  |  |
| A11340 |  | Start Villa construction | milestone | 0d | 2010-06-21 | 2010-06-21 | A11360 | 57d | 0d |  | 01 | 12 | 07 |  |
| A11360 |  | IFC drawings | milestone | 0d | 2010-06-21 | 2010-06-21 |  | 57d | 0d |  | 01 | 12 | 01 |  |
| A11410 |  | Fence Drawings IFC |  | 1d | 2010-06-21 | 2010-06-21 | A11340 | 99d | 40d |  | 01 | 12 | 01 |  |
| A11350 |  | finish Villa construction | milestone | 0d | 2010-10-18 | 2010-10-18 | A11320, A11470, A11400 | 57d |  |  | 01 | 12 | 08 |  |
|  | 2 | **earth works** |  |  | 2010-06-23 | 2010-07-06 |  |  |  |  |  |  |  |  |
| A11110 |  | excavation |  | 0d | 2010-06-23 | 2010-06-23 | A11340 FS+2d | 57d | 0d |  | 01 | 12 | 02 |  |
| A11120 |  | soil replacement |  | 12d | 2010-06-23 | 2010-07-06 | A11110 | 57d | 0d |  | 01 | 12 | 02 |  |
|  | 3 | **foundation level** |  |  | 2010-07-07 | 2010-09-11 |  |  |  |  |  |  |  |  |
| A11130 |  | Plain Concrete Foundation |  | 2d | 2010-07-07 | 2010-07-08 | A11120 | 57d | 0d |  | 01 | 12 | 03 | 01 |
| A11420 |  | backfilling between P.C Foundation |  | 2d | 2010-07-11 | 2010-07-12 | A11130 FS+1d | 53d | 0d | jungle | 01 | 12 | 02 |  |
| A11140 |  | Reinforced Concrete Foundation |  | 7d | 2010-07-13 | 2010-07-20 | A11420 | 57d | 0d |  | 01 | 12 | 03 | 02 |
| A11150 |  | under ground brick works |  | 2d | 2010-07-29 | 2010-07-31 | A11210 | 57d | 0d |  | 01 | 12 | 09 |  |
| A11160 |  | under ground insulation for RC & Brick work |  | 2d | 2010-08-01 | 2010-08-02 | A11150 | 57d | 0d |  | 01 | 12 | 10 |  |
| A11170 |  | backfilling for under ground |  | 4d | 2010-08-03 | 2010-08-07 | A11160 | 57d | 0d |  | 01 | 12 | 02 |  |
| A11180 |  | P.C slab on grade 10CM |  | 1d | 2010-09-06 | 2010-09-06 | A11330, A11270 | 65d | 0d |  | 01 | 12 | 03 | 03 |
| A11190 |  | moisture insulation with membrane sheets |  | 2d | 2010-09-07 | 2010-09-08 | A11180 | 65d | 0d |  | 01 | 12 | 10 |  |
| A11200 |  | R.C slab on grade |  | 2d | 2010-09-09 | 2010-09-11 | A11190 | 65d | 0d |  | 01 | 12 | 03 | 03 |

| ID | WBS | Activity | Duration | Start | Finish | Predecessors | Total float | Free float | Calendar | zone number | villa number | Work Category | concrete type |
| --- | --- | --- | --- | --- | --- | --- | --- | --- | --- | --- | --- | --- | --- |
|  | 4 | **skeleton & brick walls** |  | 2010-07-22 | 2010-10-16 |  |  |  |  |  |  |  |  |
| A11210 |  | columns for ground floor | 6d | 2010-07-22 | 2010-07-28 | A11140 FS+1d | 57d | 0d |  | 01 | 12 | 03 | 04 |
| A11220 |  | slab for ground floor | 9d | 2010-08-08 | 2010-08-17 | A11210, A11170 | 57d | 0d |  | 01 | 12 | 03 | 05 |
| A11370 |  | pouring for ground floor's slab | 1d | 2010-08-18 | 2010-08-18 | A11220, A11280 FF+3d | 57d | 0d |  | 01 | 12 | 03 |  |
| A11230 |  | columns for 1st floor | 6d | 2010-08-19 | 2010-08-25 | A11370 | 57d | 0d |  | 01 | 12 | 03 | 04 |
| A11400 |  | Fence work | 50d | 2010-08-19 | 2010-10-16 | A11370, A11410 FS+10d | 59d | 2d |  | 01 | 12 | 06 |  |
| A11240 |  | slab for 1st floor | 9d | 2010-08-26 | 2010-09-05 | A11230 | 57d | 0d |  | 01 | 12 | 03 | 05 |
| A11270 |  | Brick works for ground floor | 5d | 2010-08-31 | 2010-09-05 | A11370 FS+10d | 65d | 0d |  | 01 | 12 | 09 |  |
| A11380 |  | pouring for 1st floor's slab | 1d | 2010-09-06 | 2010-09-06 | A11240, A11290 FF+3d | 57d | 0d |  | 01 | 12 | 03 |  |
| A11250 |  | columns for roof floor | 4d | 2010-09-09 | 2010-09-13 | A11380 FS+2d | 57d | 0d |  | 01 | 12 | 03 | 04 |
| A11260 |  | slab for roof floor | 6d | 2010-09-14 | 2010-09-20 | A11250 | 57d | 0d |  | 01 | 12 | 03 | 05 |
| A11440 |  | Brick works for 1st floor | 5d | 2010-09-19 | 2010-09-23 | A11380 FS+10d | 67d | 0d | jungle | 01 | 12 | 09 |  |
| A11390 |  | pouring for roof floor's slab | 1d | 2010-09-21 | 2010-09-21 | A11260, A11300 FF+2d | 57d | 0d |  | 01 | 12 | 03 |  |
| A11450 |  | Brick works for roof floor | 5d | 2010-10-02 | 2010-10-06 | A11390 FS+8d | 61d | 0d | jungle | 01 | 12 | 09 |  |
|  | 5 | **electro mechanical** |  | 2010-08-08 | 2010-10-09 |  |  |  |  |  |  |  |  |
| A11330 |  | plumbing connections under slab on grade | 2d | 2010-08-08 | 2010-08-09 | A11170 | 88d | 23d |  | 01 | 12 | 04 |  |
| A11280 |  | electrical conduits for ground floor's slab | 2d | 2010-08-12 | 2010-08-14 | A11220 SS+4d | 58d | 1d |  | 01 | 12 | 04 |  |
| A11290 |  | electrical conduits for 1st floor slab | 2d | 2010-08-31 | 2010-09-01 | A11240 SS+4d | 58d | 1d |  | 01 | 12 | 04 |  |
| A11480 |  | electrical conduits for ground floor walls | 2d | 2010-09-13 | 2010-09-14 | A11200 FS+1d | 69d | 0d | jungle | 01 | 12 | 04 |  |
| A11300 |  | electrical conduits for roof slab | 1d | 2010-09-18 | 2010-09-18 | A11260 SS+3d | 58d | 1d |  | 01 | 12 | 04 |  |
| A11490 |  | electrical conduits for 1st floor walls | 2d | 2010-09-25 | 2010-09-26 | A11440 | 67d | 0d | jungle | 01 | 12 | 04 |  |
| A11500 |  | electrical conduits for roof floor walls | 2d | 2010-10-07 | 2010-10-09 | A11450 | 64d | 0d | jungle | 01 | 12 | 04 |  |
|  | 6 | **finishing** |  | 2010-09-15 | 2010-10-18 |  |  |  |  |  |  |  |  |
| A11310 |  | Internal plastering for ground floor | 8d | 2010-09-15 | 2010-09-23 | A11480 | 65d | 2d |  | 01 | 12 | 05 |  |
| A11460 |  | Internal plastering for 1st floor | 8d | 2010-09-27 | 2010-10-05 | A11310, A11490 | 67d | 3d | jungle | 01 | 12 | 05 |  |
| A11320 |  | External plastering | 10d | 2010-10-07 | 2010-10-18 | A11450 | 57d | 0d |  | 01 | 12 | 05 |  |
| A11470 |  | Internal plastering for roof floor | 5d | 2010-10-10 | 2010-10-14 | A11460, A11500 | 64d | 3d | jungle | 01 | 12 | 05 |  |

| ID | WBS | Activity | Type | Duration | Start | Finish | Predecessors | Total float | Free float | Calendar | zone number | villa number | Work Category | concrete type |
| --- | --- | --- | --- | --- | --- | --- | --- | --- | --- | --- | --- | --- | --- | --- |
|  | villa 13 | **Villa Number B13** |  |  | 2010-06-21 | 2010-10-30 |  |  |  |  |  |  |  |  |
|  | 1 | **general dates** |  |  | 2010-06-21 | 2010-10-30 |  |  |  |  |  |  |  |  |
| A11760 |  | IFC drawings | milestone | 0d | 2010-06-21 | 2010-06-21 |  | 44d | 0d |  | 01 | 13 | 01 |  |
| A11740 |  | Start Villa construction | milestone | 0d | 2010-06-27 | 2010-06-27 | A11760 FS+5d | 44d | 0d |  | 01 | 13 | 07 |  |
| A11810 |  | Fence Drawings IFC |  | 1d | 2010-06-27 | 2010-06-27 | A11740 | 94d | 45d |  | 01 | 13 | 01 |  |
| A11750 |  | finish Villa construction | milestone | 0d | 2010-10-30 | 2010-10-30 | A11720, A11870, A11800 | 47d |  |  | 01 | 13 | 08 |  |
|  | 2 | **earth works** |  |  | 2010-06-29 | 2010-07-12 |  |  |  |  |  |  |  |  |
| A11510 |  | excavation |  | 0d | 2010-06-29 | 2010-06-29 | A11740 FS+2d | 44d | 0d |  | 01 | 13 | 02 |  |
| A11520 |  | soil replacement |  | 12d | 2010-06-29 | 2010-07-12 | A11510 | 44d | 0d |  | 01 | 13 | 02 |  |
|  | 3 | **foundation level** |  |  | 2010-07-13 | 2010-09-22 |  |  |  |  |  |  |  |  |
| A11530 |  | Plain Concrete Foundation |  | 2d | 2010-07-13 | 2010-07-14 | A11520 | 44d | 0d |  | 01 | 13 | 03 | 01 |
| A11820 |  | backfilling between P.C Foundation |  | 2d | 2010-07-17 | 2010-07-18 | A11530 FS+1d | 44d | 0d | jungle | 01 | 13 | 02 |  |
| A11540 |  | Reinforced Concrete Foundation |  | 13d | 2010-07-19 | 2010-08-02 | A11820 | 47d | 0d |  | 01 | 13 | 03 | 02 |
| A11550 |  | under ground brick works |  | 2d | 2010-08-10 | 2010-08-11 | A11610 | 47d | 0d |  | 01 | 13 | 09 |  |
| A11560 |  | under ground insulation for RC & Brick work |  | 2d | 2010-08-12 | 2010-08-14 | A11550 | 47d | 0d |  | 01 | 13 | 10 |  |
| A11570 |  | backfilling for under ground |  | 4d | 2010-08-15 | 2010-08-18 | A11560 | 47d | 0d |  | 01 | 13 | 02 |  |
| A11580 |  | P.C slab on grade 10CM |  | 1d | 2010-09-18 | 2010-09-18 | A11730, A11670 | 55d | 0d |  | 01 | 13 | 03 | 03 |
| A11590 |  | moisture insulation with membrane sheets |  | 2d | 2010-09-19 | 2010-09-20 | A11580 | 55d | 0d |  | 01 | 13 | 10 |  |
| A11600 |  | R.C slab on grade |  | 2d | 2010-09-21 | 2010-09-22 | A11590 | 55d | 0d |  | 01 | 13 | 03 | 03 |
|  | 4 | **skeleton & brick walls** |  |  | 2010-08-03 | 2010-10-27 |  |  |  |  |  |  |  |  |
| A11610 |  | columns for ground floor |  | 6d | 2010-08-03 | 2010-08-09 | A11540 | 47d | 0d |  | 01 | 13 | 03 | 04 |
| A11620 |  | slab for ground floor |  | 9d | 2010-08-19 | 2010-08-29 | A11610, A11570 | 47d | 0d |  | 01 | 13 | 03 | 05 |
| A11770 |  | pouring for ground floor's slab |  | 1d | 2010-08-30 | 2010-08-30 | A11620, A11680 FF+3d | 47d | 0d |  | 01 | 13 | 03 |  |
| A11630 |  | columns for 1st floor |  | 6d | 2010-08-31 | 2010-09-06 | A11770 | 47d | 0d |  | 01 | 13 | 03 | 04 |
| A11800 |  | Fence work |  | 50d | 2010-08-31 | 2010-10-27 | A11770, A11810 FS+10d | 49d | 2d |  | 01 | 13 | 06 |  |
| A11640 |  | slab for 1st floor |  | 9d | 2010-09-07 | 2010-09-16 | A11630 | 47d | 0d |  | 01 | 13 | 03 | 05 |
| A11670 |  | Brick works for ground floor |  | 5d | 2010-09-12 | 2010-09-16 | A11770 FS+10d | 55d | 0d |  | 01 | 13 | 09 |  |
| A11780 |  | pouring for 1st floor's slab |  | 1d | 2010-09-18 | 2010-09-18 | A11640, A11690 FF+3d | 47d | 0d |  | 01 | 13 | 03 |  |
| A11650 |  | columns for roof floor |  | 4d | 2010-09-21 | 2010-09-25 | A11780 FS+2d | 47d | 0d |  | 01 | 13 | 03 | 04 |
| A11660 |  | slab for roof floor |  | 6d | 2010-09-26 | 2010-10-02 | A11650 | 47d | 0d |  | 01 | 13 | 03 | 05 |
| A11840 |  | Brick works for 1st floor |  | 5d | 2010-09-30 | 2010-10-05 | A11780 FS+10d | 57d | 0d | jungle | 01 | 13 | 09 |  |
| A11790 |  | pouring for roof floor's slab |  | 1d | 2010-10-03 | 2010-10-03 | A11660, A11700 FF+2d | 47d | 0d |  | 01 | 13 | 03 |  |
| A11850 |  | Brick works for roof floor |  | 5d | 2010-10-13 | 2010-10-18 | A11790 FS+8d | 51d | 0d | jungle | 01 | 13 | 09 |  |

| ID | WBS | Activity | Type | Duration | Start | Finish | Predecessors | Total float | Free float | Calendar | zone number | villa number | Work Category | concrete type |
| --- | --- | --- | --- | --- | --- | --- | --- | --- | --- | --- | --- | --- | --- | --- |
|  | 5 | **electro mechanical** |  |  | 2010-08-19 | 2010-10-20 |  |  |  |  |  |  |  |  |
| A11730 |  | plumbing connections under slab on grade |  | 2d | 2010-08-19 | 2010-08-21 | A11570 | 78d | 23d |  | 01 | 13 | 04 |  |
| A11680 |  | electrical conduits for ground floor's slab |  | 2d | 2010-08-24 | 2010-08-25 | A11620 SS+4d | 48d | 1d |  | 01 | 13 | 04 |  |
| A11690 |  | electrical conduits for 1st floor slab |  | 2d | 2010-09-12 | 2010-09-13 | A11640 SS+4d | 48d | 1d |  | 01 | 13 | 04 |  |
| A11880 |  | electrical conduits for ground floor walls |  | 2d | 2010-09-25 | 2010-09-26 | A11600 FS+1d | 59d | 0d | jungle | 01 | 13 | 04 |  |
| A11700 |  | electrical conduits for roof slab |  | 1d | 2010-09-29 | 2010-09-29 | A11660 SS+3d | 48d | 1d |  | 01 | 13 | 04 |  |
| A11890 |  | electrical conduits for 1st floor walls |  | 2d | 2010-10-06 | 2010-10-07 | A11840 | 57d | 0d | jungle | 01 | 13 | 04 |  |
| A11900 |  | electrical conduits for roof floor walls |  | 2d | 2010-10-19 | 2010-10-20 | A11850 | 54d | 0d | jungle | 01 | 13 | 04 |  |
|  | 6 | **finishing** |  |  | 2010-09-27 | 2010-10-30 |  |  |  |  |  |  |  |  |
| A11710 |  | Internal plastering for ground floor |  | 8d | 2010-09-27 | 2010-10-05 | A11880 | 55d | 2d |  | 01 | 13 | 05 |  |
| A11860 |  | Internal plastering for 1st floor |  | 8d | 2010-10-09 | 2010-10-17 | A11710, A11890 | 57d | 3d | jungle | 01 | 13 | 05 |  |
| A11720 |  | External plastering |  | 10d | 2010-10-19 | 2010-10-30 | A11850 | 47d | 0d |  | 01 | 13 | 05 |  |
| A11870 |  | Internal plastering for roof floor |  | 5d | 2010-10-21 | 2010-10-26 | A11860, A11900 | 54d | 3d | jungle | 01 | 13 | 05 |  |
|  | villa 14 | **Villa Number B14** |  |  | 2010-06-21 | 2010-11-02 |  |  |  |  |  |  |  |  |
|  | 1 | **general dates** |  |  | 2010-06-21 | 2010-11-02 |  |  |  |  |  |  |  |  |
| A12140 |  | Start Villa construction | milestone | 0d | 2010-06-21 | 2010-06-21 | A12160 FS+5d | 41d | 0d |  | 01 | 14 | 07 |  |
| A12160 |  | IFC drawings | milestone | 0d | 2010-06-21 | 2010-06-21 |  | 41d | 0d |  | 01 | 14 | 01 |  |
| A12210 |  | Fence Drawings IFC |  | 1d | 2010-06-21 | 2010-06-21 | A12140 | 99d | 53d |  | 01 | 14 | 01 |  |
| A12150 |  | finish Villa construction | milestone | 0d | 2010-11-02 | 2010-11-02 | A12120, A12270, A12200 | 44d |  |  | 01 | 14 | 08 |  |
|  | 2 | **earth works** |  |  | 2010-06-27 | 2010-07-11 |  |  |  |  |  |  |  |  |
| A11910 |  | excavation |  | 0d | 2010-06-27 | 2010-06-27 | A12140 | 41d | 0d |  | 01 | 14 | 02 |  |
| A11920 |  | soil replacement |  | 12d | 2010-06-28 | 2010-07-11 | A11910 FS+1d | 41d | 0d |  | 01 | 14 | 02 |  |
|  | 3 | **foundation level** |  |  | 2010-07-17 | 2010-09-26 |  |  |  |  |  |  |  |  |
| A11930 |  | Plain Concrete Foundation |  | 2d | 2010-07-17 | 2010-07-18 | A11920 FS+4d | 41d | 0d |  | 01 | 14 | 03 | 01 |
| A12220 |  | backfilling between P.C Foundation |  | 2d | 2010-07-20 | 2010-07-21 | A11930 FS+1d | 41d | 0d | jungle | 01 | 14 | 02 |  |
| A11940 |  | Reinforced Concrete Foundation |  | 13d | 2010-07-22 | 2010-08-05 | A12220 | 44d | 0d |  | 01 | 14 | 03 | 02 |
| A11950 |  | under ground brick works |  | 2d | 2010-08-14 | 2010-08-15 | A12010 | 44d | 0d |  | 01 | 14 | 09 |  |
| A11960 |  | under ground insulation for RC & Brick work |  | 2d | 2010-08-16 | 2010-08-17 | A11950 | 44d | 0d |  | 01 | 14 | 10 |  |
| A11970 |  | backfilling for under ground |  | 4d | 2010-08-18 | 2010-08-22 | A11960 | 44d | 0d |  | 01 | 14 | 02 |  |
| A11980 |  | P.C slab on grade 10CM |  | 1d | 2010-09-21 | 2010-09-21 | A12130, A12070 | 52d | 0d |  | 01 | 14 | 03 | 03 |
| A11990 |  | moisture insulation with membrane sheets |  | 2d | 2010-09-22 | 2010-09-23 | A11980 | 52d | 0d |  | 01 | 14 | 10 |  |
| A12000 |  | R.C slab on grade |  | 2d | 2010-09-25 | 2010-09-26 | A11990 | 52d | 0d |  | 01 | 14 | 03 | 03 |

| ID | WBS | Activity | Duration | Start | Finish | Predecessors | Total float | Free float | Calendar | zone number | villa number | Work Category | concrete type |
| --- | --- | --- | --- | --- | --- | --- | --- | --- | --- | --- | --- | --- | --- |
|  | 4 | **skeleton & brick walls** |  | 2010-08-07 | 2010-10-31 |  |  |  |  |  |  |  |  |
| A12010 |  | columns for ground floor | 6d | 2010-08-07 | 2010-08-12 | A11940 | 44d | 0d |  | 01 | 14 | 03 | 04 |
| A12020 |  | slab for ground floor | 9d | 2010-08-23 | 2010-09-01 | A12010, A11970 | 44d | 0d |  | 01 | 14 | 03 | 05 |
| A12170 |  | pouring for ground floor's slab | 1d | 2010-09-02 | 2010-09-02 | A12020, A12080 FF+3d | 44d | 0d |  | 01 | 14 | 03 |  |
| A12030 |  | columns for 1st floor | 6d | 2010-09-04 | 2010-09-09 | A12170 | 44d | 0d |  | 01 | 14 | 03 | 04 |
| A12200 |  | Fence work | 50d | 2010-09-04 | 2010-10-31 | A12170, A12210 FS+10d | 46d | 2d |  | 01 | 14 | 06 |  |
| A12040 |  | slab for 1st floor | 9d | 2010-09-11 | 2010-09-20 | A12030 | 44d | 0d |  | 01 | 14 | 03 | 05 |
| A12070 |  | Brick works for ground floor | 5d | 2010-09-15 | 2010-09-20 | A12170 FS+10d | 52d | 0d |  | 01 | 14 | 09 |  |
| A12180 |  | pouring for 1st floor's slab | 1d | 2010-09-21 | 2010-09-21 | A12040, A12090 FF+3d | 44d | 0d |  | 01 | 14 | 03 |  |
| A12050 |  | columns for roof floor | 4d | 2010-09-25 | 2010-09-28 | A12180 FS+2d | 44d | 0d |  | 01 | 14 | 03 | 04 |
| A12060 |  | slab for roof floor | 6d | 2010-09-29 | 2010-10-05 | A12050 | 44d | 0d |  | 01 | 14 | 03 | 05 |
| A12240 |  | Brick works for 1st floor | 5d | 2010-10-04 | 2010-10-09 | A12180 FS+10d | 54d | 0d | jungle | 01 | 14 | 09 |  |
| A12190 |  | pouring for roof floor's slab | 1d | 2010-10-06 | 2010-10-06 | A12060, A12100 FF+2d | 44d | 0d |  | 01 | 14 | 03 |  |
| A12250 |  | Brick works for roof floor | 5d | 2010-10-17 | 2010-10-21 | A12190 FS+8d | 48d | 0d | jungle | 01 | 14 | 09 |  |
|  | 5 | **electro mechanical** |  | 2010-08-23 | 2010-10-24 |  |  |  |  |  |  |  |  |
| A12130 |  | plumbing connections under slab on grade | 2d | 2010-08-23 | 2010-08-24 | A11970 | 75d | 23d |  | 01 | 14 | 04 |  |
| A12080 |  | electrical conduits for ground floor's slab | 2d | 2010-08-28 | 2010-08-29 | A12020 SS+4d | 45d | 1d |  | 01 | 14 | 04 |  |
| A12090 |  | electrical conduits for 1st floor slab | 2d | 2010-09-15 | 2010-09-16 | A12040 SS+4d | 45d | 1d |  | 01 | 14 | 04 |  |
| A12280 |  | electrical conduits for ground floor walls | 2d | 2010-09-28 | 2010-09-29 | A12000 FS+1d | 56d | 0d | jungle | 01 | 14 | 04 |  |
| A12100 |  | electrical conduits for roof slab | 1d | 2010-10-03 | 2010-10-03 | A12060 SS+3d | 45d | 1d |  | 01 | 14 | 04 |  |
| A12290 |  | electrical conduits for 1st floor walls | 2d | 2010-10-10 | 2010-10-11 | A12240 | 54d | 0d | jungle | 01 | 14 | 04 |  |
| A12300 |  | electrical conduits for roof floor walls | 2d | 2010-10-23 | 2010-10-24 | A12250 | 51d | 0d | jungle | 01 | 14 | 04 |  |
|  | 6 | **finishing** |  | 2010-09-30 | 2010-11-02 |  |  |  |  |  |  |  |  |
| A12110 |  | Internal plastering for ground floor | 8d | 2010-09-30 | 2010-10-09 | A12280 | 52d | 2d |  | 01 | 14 | 05 |  |
| A12260 |  | Internal plastering for 1st floor | 8d | 2010-10-12 | 2010-10-20 | A12110, A12290 | 54d | 3d | jungle | 01 | 14 | 05 |  |
| A12120 |  | External plastering | 10d | 2010-10-23 | 2010-11-02 | A12250 | 44d | 0d |  | 01 | 14 | 05 |  |
| A12270 |  | Internal plastering for roof floor | 5d | 2010-10-25 | 2010-10-30 | A12260, A12300 | 51d | 3d | jungle | 01 | 14 | 05 |  |

| ID | WBS | Activity | Type | Duration | Start | Finish | Predecessors | Total float | Free float | Calendar | zone number | villa number | Work Category | concrete type |
| --- | --- | --- | --- | --- | --- | --- | --- | --- | --- | --- | --- | --- | --- | --- |
|  | zone 2 | **Zone.No 2** |  |  | 2010-06-21 | 2010-11-13 |  |  |  |  |  |  |  |  |
|  | villa 89 | **Villa Number D89** |  |  | 2010-06-21 | 2010-11-02 |  |  |  |  |  |  |  |  |
|  | 1 | **general dates** |  |  | 2010-06-21 | 2010-11-02 |  |  |  |  |  |  |  |  |
| A13340 |  | Start Villa construction | milestone | 0d | 2010-06-21 | 2010-06-21 | A13360 FS+14d | 44d | 0d |  | 02 | 89 | 07 |  |
| A13360 |  | IFC drawings | milestone | 0d | 2010-06-21 | 2010-06-21 |  | 44d | 0d |  | 02 | 89 | 01 |  |
| A13410 |  | Fence Drawings IFC |  | 1d | 2010-06-21 | 2010-06-21 | A13340 | 99d | 53d |  | 02 | 89 | 01 |  |
| A13350 |  | finish Villa construction | milestone | 0d | 2010-11-02 | 2010-11-02 | A13320, A13470, A13400 | 44d |  |  | 02 | 89 | 08 |  |
|  | 2 | **earth works** |  |  | 2010-07-07 | 2010-07-22 |  |  |  |  |  |  |  |  |
| A13110 |  | excavation |  | 2d | 2010-07-07 | 2010-07-08 | A13340 | 44d | 0d |  | 02 | 89 | 02 |  |
| A13120 |  | soil replacement |  | 12d | 2010-07-10 | 2010-07-22 | A13110 | 44d | 0d |  | 02 | 89 | 02 |  |
|  | 3 | **foundation level** |  |  | 2010-07-24 | 2010-09-26 |  |  |  |  |  |  |  |  |
| A13130 |  | Plain Concrete Foundation |  | 2d | 2010-07-24 | 2010-07-25 | A13120 | 44d | 0d |  | 02 | 89 | 03 | 01 |
| A13420 |  | backfilling between P.C Foundation |  | 2d | 2010-07-27 | 2010-07-28 | A13130 FS+1d | 40d | 0d | jungle | 02 | 89 | 02 |  |
| A13140 |  | Reinforced Concrete Foundation |  | 7d | 2010-07-29 | 2010-08-05 | A13420 | 44d | 0d |  | 02 | 89 | 03 | 02 |
| A13150 |  | under ground brick works |  | 2d | 2010-08-14 | 2010-08-15 | A13210 | 44d | 0d |  | 02 | 89 | 09 |  |
| A13160 |  | under ground insulation for RC & Brick work |  | 2d | 2010-08-16 | 2010-08-17 | A13150 | 44d | 0d |  | 02 | 89 | 10 |  |
| A13170 |  | backfilling for under ground |  | 4d | 2010-08-18 | 2010-08-22 | A13160 | 44d | 0d |  | 02 | 89 | 02 |  |
| A13180 |  | P.C slab on grade 10CM |  | 1d | 2010-09-21 | 2010-09-21 | A13330, A13270 | 52d | 0d |  | 02 | 89 | 03 | 03 |
| A13190 |  | moisture insulation with membrane sheets |  | 2d | 2010-09-22 | 2010-09-23 | A13180 | 52d | 0d |  | 02 | 89 | 10 |  |
| A13200 |  | R.C slab on grade |  | 2d | 2010-09-25 | 2010-09-26 | A13190 | 52d | 0d |  | 02 | 89 | 03 | 03 |
|  | 4 | **skeleton & brick walls** |  |  | 2010-08-07 | 2010-10-31 |  |  |  |  |  |  |  |  |
| A13210 |  | columns for ground floor |  | 6d | 2010-08-07 | 2010-08-12 | A13140 | 44d | 0d |  | 02 | 89 | 03 | 04 |
| A13220 |  | slab for ground floor |  | 9d | 2010-08-23 | 2010-09-01 | A13210, A13170 | 44d | 0d |  | 02 | 89 | 03 | 05 |
| A13370 |  | pouring for ground floor's slab |  | 1d | 2010-09-02 | 2010-09-02 | A13220, A13280 FF+3d | 44d | 0d |  | 02 | 89 | 03 |  |
| A13230 |  | columns for 1st floor |  | 6d | 2010-09-04 | 2010-09-09 | A13370 | 44d | 0d |  | 02 | 89 | 03 | 04 |
| A13400 |  | Fence work |  | 50d | 2010-09-04 | 2010-10-31 | A13370, A13410 FS+10d | 46d | 2d |  | 02 | 89 | 06 |  |
| A13240 |  | slab for 1st floor |  | 9d | 2010-09-11 | 2010-09-20 | A13230 | 44d | 0d |  | 02 | 89 | 03 | 05 |
| A13270 |  | Brick works for ground floor |  | 5d | 2010-09-15 | 2010-09-20 | A13370 FS+10d | 52d | 0d |  | 02 | 89 | 09 |  |
| A13380 |  | pouring for 1st floor's slab |  | 1d | 2010-09-21 | 2010-09-21 | A13240, A13290 FF+3d | 44d | 0d |  | 02 | 89 | 03 |  |
| A13250 |  | columns for roof floor |  | 4d | 2010-09-25 | 2010-09-28 | A13380 FS+2d | 44d | 0d |  | 02 | 89 | 03 | 04 |
| A13260 |  | slab for roof floor |  | 6d | 2010-09-29 | 2010-10-05 | A13250 | 44d | 0d |  | 02 | 89 | 03 | 05 |
| A13440 |  | Brick works for 1st floor |  | 5d | 2010-10-04 | 2010-10-09 | A13380 FS+10d | 54d | 0d | jungle | 02 | 89 | 09 |  |
| A13390 |  | pouring for roof floor's slab |  | 1d | 2010-10-06 | 2010-10-06 | A13260, A13300 FF+2d | 44d | 0d |  | 02 | 89 | 03 |  |
| A13450 |  | Brick works for roof floor |  | 5d | 2010-10-17 | 2010-10-21 | A13390 FS+8d | 48d | 0d | jungle | 02 | 89 | 09 |  |

| ID | WBS | Activity | Type | Duration | Start | Finish | Predecessors | Total float | Free float | Calendar | zone number | villa number | Work Category | concrete type |
| --- | --- | --- | --- | --- | --- | --- | --- | --- | --- | --- | --- | --- | --- | --- |
|  | 5 | **electro mechanical** |  |  | 2010-08-23 | 2010-10-24 |  |  |  |  |  |  |  |  |
| A13330 |  | plumbing connections under slab on grade |  | 2d | 2010-08-23 | 2010-08-24 | A13170 | 75d | 23d |  | 02 | 89 | 04 |  |
| A13280 |  | electrical conduits for ground floor's slab |  | 2d | 2010-08-28 | 2010-08-29 | A13220 SS+4d | 45d | 1d |  | 02 | 89 | 04 |  |
| A13290 |  | electrical conduits for 1st floor slab |  | 2d | 2010-09-15 | 2010-09-16 | A13240 SS+4d | 45d | 1d |  | 02 | 89 | 04 |  |
| A13480 |  | electrical conduits for ground floor walls |  | 2d | 2010-09-28 | 2010-09-29 | A13200 FS+1d | 56d | 0d | jungle | 02 | 89 | 04 |  |
| A13300 |  | electrical conduits for roof slab |  | 1d | 2010-10-03 | 2010-10-03 | A13260 SS+3d | 45d | 1d |  | 02 | 89 | 04 |  |
| A13490 |  | electrical conduits for 1st floor walls |  | 2d | 2010-10-10 | 2010-10-11 | A13440 | 54d | 0d | jungle | 02 | 89 | 04 |  |
| A13500 |  | electrical conduits for roof floor walls |  | 2d | 2010-10-23 | 2010-10-24 | A13450 | 51d | 0d | jungle | 02 | 89 | 04 |  |
|  | 6 | **finishing** |  |  | 2010-09-30 | 2010-11-02 |  |  |  |  |  |  |  |  |
| A13310 |  | Internal plastering for ground floor |  | 8d | 2010-09-30 | 2010-10-09 | A13480 | 52d | 2d |  | 02 | 89 | 05 |  |
| A13460 |  | Internal plastering for 1st floor |  | 8d | 2010-10-12 | 2010-10-20 | A13310, A13490 | 54d | 3d | jungle | 02 | 89 | 05 |  |
| A13320 |  | External plastering |  | 10d | 2010-10-23 | 2010-11-02 | A13450 | 44d | 0d |  | 02 | 89 | 05 |  |
| A13470 |  | Internal plastering for roof floor |  | 5d | 2010-10-25 | 2010-10-30 | A13460, A13500 | 51d | 3d | jungle | 02 | 89 | 05 |  |
|  | villa 90 | **Villa Number D90** |  |  | 2010-06-21 | 2010-09-29 |  |  |  |  |  |  |  |  |
|  | 1 | **general dates** |  |  | 2010-06-21 | 2010-09-29 |  |  |  |  |  |  |  |  |
| A13760 |  | IFC drawings | milestone | 0d | 2010-06-21 | 2010-06-21 |  | 84d | 0d |  | 02 | 90 | 01 |  |
| A13740 |  | Start Villa construction | milestone | 0d | 2010-07-08 | 2010-07-08 | A13760 FS+15d | 84d | 0d |  | 02 | 90 | 07 |  |
| A13810 |  | Fence Drawings IFC |  | 1d | 2010-07-08 | 2010-07-08 | A13740 | 84d | 5d |  | 02 | 90 | 01 |  |
| A13750 |  | finish Villa construction | milestone | 0d | 2010-09-29 | 2010-09-29 | A13720, A13870, A13800 | 73d |  |  | 02 | 90 | 08 |  |
|  | 2 | **earth works** |  |  | 2010-07-08 | 2010-07-24 |  |  |  |  |  |  |  |  |
| A13510 |  | excavation |  | 0d | 2010-07-08 | 2010-07-08 | A13740 | 126d | 0d |  | 02 | 90 | 02 |  |
| A13520 |  | soil replacement |  | 14d | 2010-07-08 | 2010-07-24 | A13510 | 126d | 0d |  | 02 | 90 | 02 |  |
|  | 3 | **foundation level** |  |  | 2010-06-21 | 2010-08-18 |  |  |  |  |  |  |  |  |
| A13540 |  | Reinforced Concrete Foundation |  | 7d | 2010-06-21 | 2010-06-28 |  | 77d | 0d |  | 02 | 90 | 03 | 02 |
| A13550 |  | under ground brick works |  | 2d | 2010-07-06 | 2010-07-07 | A13610 | 77d | 0d |  | 02 | 90 | 09 |  |
| A13560 |  | under ground insulation for RC & Brick work |  | 2d | 2010-07-08 | 2010-07-10 | A13550 | 77d | 0d |  | 02 | 90 | 10 |  |
| A13570 |  | backfilling for under ground |  | 4d | 2010-07-11 | 2010-07-14 | A13560 | 77d | 0d |  | 02 | 90 | 02 |  |
| A13530 |  | Plain Concrete Foundation |  | 2d | 2010-07-25 | 2010-07-26 | A13520 | 126d | 0d |  | 02 | 90 | 03 | 01 |
| A13820 |  | backfilling between P.C Foundation |  | 2d | 2010-07-28 | 2010-07-29 | A13530 FS+1d | 126d |  | jungle | 02 | 90 | 02 |  |
| A13580 |  | P.C slab on grade 10CM |  | 1d | 2010-08-14 | 2010-08-14 | A13730, A13670 | 85d | 0d |  | 02 | 90 | 03 | 03 |
| A13590 |  | moisture insulation with membrane sheets |  | 2d | 2010-08-15 | 2010-08-16 | A13580 | 85d | 0d |  | 02 | 90 | 10 |  |
| A13600 |  | R.C slab on grade |  | 2d | 2010-08-17 | 2010-08-18 | A13590 | 85d | 0d |  | 02 | 90 | 03 | 03 |

| ID | WBS | Activity | Duration | Start | Finish | Predecessors | Total float | Free float | Calendar | zone number | villa number | Work Category | concrete type |
| --- | --- | --- | --- | --- | --- | --- | --- | --- | --- | --- | --- | --- | --- |
|  | 4 | **skeleton & brick walls** |  | 2010-06-29 | 2010-09-22 |  |  |  |  |  |  |  |  |
| A13610 |  | columns for ground floor | 6d | 2010-06-29 | 2010-07-05 | A13540 | 77d | 0d |  | 02 | 90 | 03 | 04 |
| A13620 |  | slab for ground floor | 9d | 2010-07-15 | 2010-07-25 | A13610, A13570 | 77d | 0d |  | 02 | 90 | 03 | 05 |
| A13770 |  | pouring for ground floor's slab | 1d | 2010-07-26 | 2010-07-26 | A13620, A13680 FF+3d | 77d | 0d |  | 02 | 90 | 03 |  |
| A13630 |  | columns for 1st floor | 6d | 2010-07-27 | 2010-08-02 | A13770 | 77d | 0d |  | 02 | 90 | 03 | 04 |
| A13800 |  | Fence work | 50d | 2010-07-27 | 2010-09-22 | A13770, A13810 FS+10d | 79d | 6d |  | 02 | 90 | 06 |  |
| A13640 |  | slab for 1st floor | 9d | 2010-08-03 | 2010-08-12 | A13630 | 77d | 0d |  | 02 | 90 | 03 | 05 |
| A13670 |  | Brick works for ground floor | 5d | 2010-08-08 | 2010-08-12 | A13770 FS+10d | 85d | 0d |  | 02 | 90 | 09 |  |
| A13780 |  | pouring for 1st floor's slab | 1d | 2010-08-14 | 2010-08-14 | A13640, A13690 FF+3d | 77d | 0d |  | 02 | 90 | 03 |  |
| A13650 |  | columns for roof floor | 4d | 2010-08-17 | 2010-08-21 | A13780 FS+2d | 77d | 0d |  | 02 | 90 | 03 | 04 |
| A13660 |  | slab for roof floor | 6d | 2010-08-22 | 2010-08-28 | A13650 | 77d | 0d |  | 02 | 90 | 03 | 05 |
| A13840 |  | Brick works for 1st floor | 5d | 2010-08-26 | 2010-08-31 | A13780 FS+10d | 83d | 0d | jungle | 02 | 90 | 09 |  |
| A13790 |  | pouring for roof floor's slab | 1d | 2010-08-29 | 2010-08-29 | A13660, A13700 FF+2d | 77d | 4d |  | 02 | 90 | 03 |  |
| A13850 |  | Brick works for roof floor | 5d | 2010-09-13 | 2010-09-18 | A13790 FS+8d | 77d | 0d | jungle | 02 | 90 | 09 |  |
|  | 5 | **electro mechanical** |  | 2010-07-15 | 2010-09-20 |  |  |  |  |  |  |  |  |
| A13730 |  | plumbing connections under slab on grade | 2d | 2010-07-15 | 2010-07-17 | A13570 | 108d | 23d |  | 02 | 90 | 04 |  |
| A13680 |  | electrical conduits for ground floor's slab | 2d | 2010-07-20 | 2010-07-21 | A13620 SS+4d | 78d | 1d |  | 02 | 90 | 04 |  |
| A13690 |  | electrical conduits for 1st floor slab | 2d | 2010-08-08 | 2010-08-09 | A13640 SS+4d | 78d | 1d |  | 02 | 90 | 04 |  |
| A13880 |  | electrical conduits for ground floor walls | 2d | 2010-08-21 | 2010-08-22 | A13600 FS+1d | 85d | 0d | jungle | 02 | 90 | 04 |  |
| A13700 |  | electrical conduits for roof slab | 1d | 2010-08-25 | 2010-08-25 | A13660 SS+3d | 78d | 1d |  | 02 | 90 | 04 |  |
| A13890 |  | electrical conduits for 1st floor walls | 2d | 2010-09-01 | 2010-09-02 | A13840 | 83d | 0d | jungle | 02 | 90 | 04 |  |
| A13900 |  | electrical conduits for roof floor walls | 2d | 2010-09-19 | 2010-09-20 | A13850 | 80d | 0d | jungle | 02 | 90 | 04 |  |
|  | 6 | **finishing** |  | 2010-08-23 | 2010-09-29 |  |  |  |  |  |  |  |  |
| A13710 |  | Internal plastering for ground floor | 8d | 2010-08-23 | 2010-08-31 | A13880 | 85d | 2d |  | 02 | 90 | 05 |  |
| A13860 |  | Internal plastering for 1st floor | 8d | 2010-09-04 | 2010-09-16 | A13710, A13890 | 83d | 3d | jungle | 02 | 90 | 05 |  |
| A13720 |  | External plastering | 10d | 2010-09-19 | 2010-09-29 | A13850 | 73d | 0d |  | 02 | 90 | 05 |  |
| A13870 |  | Internal plastering for roof floor | 5d | 2010-09-21 | 2010-09-26 | A13860, A13900 | 80d | 3d | jungle | 02 | 90 | 05 |  |

| ID | WBS | Activity | Type | Duration | Start | Finish | Predecessors | Total float | Free float | Calendar | zone number | villa number | Work Category | concrete type |
| --- | --- | --- | --- | --- | --- | --- | --- | --- | --- | --- | --- | --- | --- | --- |
|  | villa 91 | **Villa Number D91** |  |  | 2010-06-21 | 2010-11-04 |  |  |  |  |  |  |  |  |
|  | 1 | **general dates** |  |  | 2010-06-21 | 2010-11-04 |  |  |  |  |  |  |  |  |
| A14160 |  | IFC drawings | milestone | 0d | 2010-06-21 | 2010-06-21 |  | 42d | 0d |  | 02 | 91 | 01 |  |
| A14140 |  | Start Villa construction | milestone | 0d | 2010-07-10 | 2010-07-10 | A14160 FS+16d | 42d | 0d |  | 02 | 91 | 07 |  |
| A14210 |  | Fence Drawings IFC |  | 1d | 2010-07-10 | 2010-07-10 | A14140 | 83d | 39d |  | 02 | 91 | 01 |  |
| A14150 |  | finish Villa construction | milestone | 0d | 2010-11-04 | 2010-11-04 | A14120, A14270, A14200 | 42d |  |  | 02 | 91 | 08 |  |
|  | 2 | **earth works** |  |  | 2010-07-10 | 2010-07-25 |  |  |  |  |  |  |  |  |
| A13910 |  | excavation |  | 2d | 2010-07-10 | 2010-07-11 | A14140 | 42d | 0d |  | 02 | 91 | 02 |  |
| A13920 |  | soil replacement |  | 12d | 2010-07-12 | 2010-07-25 | A13910 | 42d | 0d |  | 02 | 91 | 02 |  |
|  | 3 | **foundation level** |  |  | 2010-07-26 | 2010-09-28 |  |  |  |  |  |  |  |  |
| A13930 |  | Plain Concrete Foundation |  | 2d | 2010-07-26 | 2010-07-27 | A13920 | 42d | 0d |  | 02 | 91 | 03 | 01 |
| A14220 |  | backfilling between P.C Foundation |  | 2d | 2010-07-29 | 2010-07-31 | A13930 FS+1d | 38d | 0d | jungle | 02 | 91 | 02 |  |
| A13940 |  | Reinforced Concrete Foundation |  | 7d | 2010-08-01 | 2010-08-08 | A14220 | 42d | 0d |  | 02 | 91 | 03 | 02 |
| A13950 |  | under ground brick works |  | 2d | 2010-08-16 | 2010-08-17 | A14010 | 42d | 0d |  | 02 | 91 | 09 |  |
| A13960 |  | under ground insulation for RC & Brick work |  | 2d | 2010-08-18 | 2010-08-19 | A13950 | 42d | 0d |  | 02 | 91 | 10 |  |
| A13970 |  | backfilling for under ground |  | 4d | 2010-08-21 | 2010-08-24 | A13960 | 42d | 0d |  | 02 | 91 | 02 |  |
| A13980 |  | P.C slab on grade 10CM |  | 1d | 2010-09-23 | 2010-09-23 | A14130, A14070 | 50d | 0d |  | 02 | 91 | 03 | 03 |
| A13990 |  | moisture insulation with membrane sheets |  | 2d | 2010-09-25 | 2010-09-26 | A13980 | 50d | 0d |  | 02 | 91 | 10 |  |
| A14000 |  | R.C slab on grade |  | 2d | 2010-09-27 | 2010-09-28 | A13990 | 50d | 0d |  | 02 | 91 | 03 | 03 |
|  | 4 | **skeleton & brick walls** |  |  | 2010-08-09 | 2010-11-02 |  |  |  |  |  |  |  |  |
| A14010 |  | columns for ground floor |  | 6d | 2010-08-09 | 2010-08-15 | A13940 | 42d | 0d |  | 02 | 91 | 03 | 04 |
| A14020 |  | slab for ground floor |  | 9d | 2010-08-25 | 2010-09-04 | A14010, A13970 | 42d | 0d |  | 02 | 91 | 03 | 05 |
| A14170 |  | pouring for ground floor's slab |  | 1d | 2010-09-05 | 2010-09-05 | A14020, A14080 FF+3d | 42d | 0d |  | 02 | 91 | 03 |  |
| A14030 |  | columns for 1st floor |  | 6d | 2010-09-06 | 2010-09-12 | A14170 | 42d | 0d |  | 02 | 91 | 03 | 04 |
| A14200 |  | Fence work |  | 50d | 2010-09-06 | 2010-11-02 | A14170, A14210 FS+10d | 44d | 2d |  | 02 | 91 | 06 |  |
| A14040 |  | slab for 1st floor |  | 9d | 2010-09-13 | 2010-09-22 | A14030 | 42d | 0d |  | 02 | 91 | 03 | 05 |
| A14070 |  | Brick works for ground floor |  | 5d | 2010-09-18 | 2010-09-22 | A14170 FS+10d | 50d | 0d |  | 02 | 91 | 09 |  |
| A14180 |  | pouring for 1st floor's slab |  | 1d | 2010-09-23 | 2010-09-23 | A14040, A14090 FF+3d | 42d | 0d |  | 02 | 91 | 03 |  |
| A14050 |  | columns for roof floor |  | 4d | 2010-09-27 | 2010-09-30 | A14180 FS+2d | 42d | 0d |  | 02 | 91 | 03 | 04 |
| A14060 |  | slab for roof floor |  | 6d | 2010-10-02 | 2010-10-07 | A14050 | 42d | 0d |  | 02 | 91 | 03 | 05 |
| A14240 |  | Brick works for 1st floor |  | 5d | 2010-10-06 | 2010-10-11 | A14180 FS+10d | 52d | 0d | jungle | 02 | 91 | 09 |  |
| A14190 |  | pouring for roof floor's slab |  | 1d | 2010-10-09 | 2010-10-09 | A14060, A14100 FF+2d | 42d | 0d |  | 02 | 91 | 03 |  |
| A14250 |  | Brick works for roof floor |  | 5d | 2010-10-19 | 2010-10-24 | A14190 FS+8d | 46d | 0d | jungle | 02 | 91 | 09 |  |

| ID | WBS | Activity | Type | Duration | Start | Finish | Predecessors | Total float | Free float | Calendar | zone number | villa number | Work Category | concrete type |
| --- | --- | --- | --- | --- | --- | --- | --- | --- | --- | --- | --- | --- | --- | --- |
|  | 5 | **electro mechanical** |  |  | 2010-08-25 | 2010-10-26 |  |  |  |  |  |  |  |  |
| A14130 |  | plumbing connections under slab on grade |  | 2d | 2010-08-25 | 2010-08-26 | A13970 | 73d | 23d |  | 02 | 91 | 04 |  |
| A14080 |  | electrical conduits for ground floor's slab |  | 2d | 2010-08-30 | 2010-08-31 | A14020 SS+4d | 43d | 1d |  | 02 | 91 | 04 |  |
| A14090 |  | electrical conduits for 1st floor slab |  | 2d | 2010-09-18 | 2010-09-19 | A14040 SS+4d | 43d | 1d |  | 02 | 91 | 04 |  |
| A14280 |  | electrical conduits for ground floor walls |  | 2d | 2010-09-30 | 2010-10-02 | A14000 FS+1d | 54d | 0d | jungle | 02 | 91 | 04 |  |
| A14100 |  | electrical conduits for roof slab |  | 1d | 2010-10-05 | 2010-10-05 | A14060 SS+3d | 43d | 1d |  | 02 | 91 | 04 |  |
| A14290 |  | electrical conduits for 1st floor walls |  | 2d | 2010-10-12 | 2010-10-13 | A14240 | 52d | 0d | jungle | 02 | 91 | 04 |  |
| A14300 |  | electrical conduits for roof floor walls |  | 2d | 2010-10-25 | 2010-10-26 | A14250 | 49d | 0d | jungle | 02 | 91 | 04 |  |
|  | 6 | **finishing** |  |  | 2010-10-03 | 2010-11-04 |  |  |  |  |  |  |  |  |
| A14110 |  | Internal plastering for ground floor |  | 8d | 2010-10-03 | 2010-10-11 | A14280 | 50d | 2d |  | 02 | 91 | 05 |  |
| A14260 |  | Internal plastering for 1st floor |  | 8d | 2010-10-14 | 2010-10-23 | A14110, A14290 | 52d | 3d | jungle | 02 | 91 | 05 |  |
| A14120 |  | External plastering |  | 10d | 2010-10-25 | 2010-11-04 | A14250 | 42d | 0d |  | 02 | 91 | 05 |  |
| A14270 |  | Internal plastering for roof floor |  | 5d | 2010-10-27 | 2010-11-01 | A14260, A14300 | 49d | 3d | jungle | 02 | 91 | 05 |  |
|  | villa 92 | **Villa Number A92** |  |  | 2010-06-21 | 2010-11-06 |  |  |  |  |  |  |  |  |
|  | 1 | **general dates** |  |  | 2010-06-21 | 2010-11-06 |  |  |  |  |  |  |  |  |
| A14560 |  | IFC drawings | milestone | 0d | 2010-06-21 | 2010-06-21 |  | 41d | 0d |  | 02 | 92 | 01 |  |
| A14540 |  | Start Villa construction | milestone | 0d | 2010-07-11 | 2010-07-11 | A14560 FS+17d | 41d | 0d |  | 02 | 92 | 07 |  |
| A14610 |  | Fence Drawings IFC |  | 1d | 2010-07-11 | 2010-07-11 | A14540 | 82d | 39d |  | 02 | 92 | 01 |  |
| A14550 |  | finish Villa construction | milestone | 0d | 2010-11-06 | 2010-11-06 | A14520, A14670, A14600 | 41d |  |  | 02 | 92 | 08 |  |
|  | 2 | **earth works** |  |  | 2010-07-11 | 2010-07-26 |  |  |  |  |  |  |  |  |
| A14310 |  | excavation |  | 2d | 2010-07-11 | 2010-07-12 | A14540 | 41d | 0d |  | 02 | 92 | 02 |  |
| A14320 |  | soil replacement |  | 12d | 2010-07-13 | 2010-07-26 | A14310 | 41d | 0d |  | 02 | 92 | 02 |  |
|  | 3 | **foundation level** |  |  | 2010-07-27 | 2010-09-29 |  |  |  |  |  |  |  |  |
| A14330 |  | Plain Concrete Foundation |  | 2d | 2010-07-27 | 2010-07-28 | A14320 | 41d | 0d |  | 02 | 92 | 03 | 01 |
| A14620 |  | backfilling between P.C Foundation |  | 2d | 2010-07-31 | 2010-08-01 | A14330 FS+1d | 37d | 0d | jungle | 02 | 92 | 02 |  |
| A14340 |  | Reinforced Concrete Foundation |  | 7d | 2010-08-02 | 2010-08-09 | A14620 | 41d | 0d |  | 02 | 92 | 03 | 02 |
| A14350 |  | under ground brick works |  | 2d | 2010-08-17 | 2010-08-18 | A14410 | 41d | 0d |  | 02 | 92 | 09 |  |
| A14360 |  | under ground insulation for RC & Brick work |  | 2d | 2010-08-19 | 2010-08-21 | A14350 | 41d | 0d |  | 02 | 92 | 10 |  |
| A14370 |  | backfilling for under ground |  | 4d | 2010-08-22 | 2010-08-25 | A14360 | 41d | 0d |  | 02 | 92 | 02 |  |
| A14380 |  | P.C slab on grade 10CM |  | 1d | 2010-09-25 | 2010-09-25 | A14530, A14470 | 49d | 0d |  | 02 | 92 | 03 | 03 |
| A14390 |  | moisture insulation with membrane sheets |  | 2d | 2010-09-26 | 2010-09-27 | A14380 | 49d | 0d |  | 02 | 92 | 10 |  |
| A14400 |  | R.C slab on grade |  | 2d | 2010-09-28 | 2010-09-29 | A14390 | 49d | 0d |  | 02 | 92 | 03 | 03 |

| ID | WBS | Activity | Duration | Start | Finish | Predecessors | Total float | Free float | Calendar | zone number | villa number | Work Category | concrete type |
| --- | --- | --- | --- | --- | --- | --- | --- | --- | --- | --- | --- | --- | --- |
|  | 4 | **skeleton & brick walls** |  | 2010-08-10 | 2010-11-03 |  |  |  |  |  |  |  |  |
| A14410 |  | columns for ground floor | 6d | 2010-08-10 | 2010-08-16 | A14340 | 41d | 0d |  | 02 | 92 | 03 | 04 |
| A14420 |  | slab for ground floor | 9d | 2010-08-26 | 2010-09-05 | A14410, A14370 | 41d | 0d |  | 02 | 92 | 03 | 05 |
| A14570 |  | pouring for ground floor's slab | 1d | 2010-09-06 | 2010-09-06 | A14420, A14480 FF+3d | 41d | 0d |  | 02 | 92 | 03 |  |
| A14430 |  | columns for 1st floor | 6d | 2010-09-07 | 2010-09-13 | A14570 | 41d | 0d |  | 02 | 92 | 03 | 04 |
| A14600 |  | Fence work | 50d | 2010-09-07 | 2010-11-03 | A14570, A14610 FS+10d | 43d | 2d |  | 02 | 92 | 06 |  |
| A14440 |  | slab for 1st floor | 9d | 2010-09-14 | 2010-09-23 | A14430 | 41d | 0d |  | 02 | 92 | 03 | 05 |
| A14470 |  | Brick works for ground floor | 5d | 2010-09-19 | 2010-09-23 | A14570 FS+10d | 49d | 0d |  | 02 | 92 | 09 |  |
| A14580 |  | pouring for 1st floor's slab | 1d | 2010-09-25 | 2010-09-25 | A14440, A14490 FF+3d | 41d | 0d |  | 02 | 92 | 03 |  |
| A14450 |  | columns for roof floor | 4d | 2010-09-28 | 2010-10-02 | A14580 FS+2d | 41d | 0d |  | 02 | 92 | 03 | 04 |
| A14460 |  | slab for roof floor | 6d | 2010-10-03 | 2010-10-09 | A14450 | 41d | 0d |  | 02 | 92 | 03 | 05 |
| A14640 |  | Brick works for 1st floor | 5d | 2010-10-07 | 2010-10-12 | A14580 FS+10d | 51d | 0d | jungle | 02 | 92 | 09 |  |
| A14590 |  | pouring for roof floor's slab | 1d | 2010-10-10 | 2010-10-10 | A14460, A14500 FF+2d | 41d | 0d |  | 02 | 92 | 03 |  |
| A14650 |  | Brick works for roof floor | 5d | 2010-10-20 | 2010-10-25 | A14590 FS+8d | 45d | 0d | jungle | 02 | 92 | 09 |  |
|  | 5 | **electro mechanical** |  | 2010-08-26 | 2010-10-27 |  |  |  |  |  |  |  |  |
| A14530 |  | plumbing connections under slab on grade | 2d | 2010-08-26 | 2010-08-28 | A14370 | 72d | 23d |  | 02 | 92 | 04 |  |
| A14480 |  | electrical conduits for ground floor's slab | 2d | 2010-08-31 | 2010-09-01 | A14420 SS+4d | 42d | 1d |  | 02 | 92 | 04 |  |
| A14490 |  | electrical conduits for 1st floor slab | 2d | 2010-09-19 | 2010-09-20 | A14440 SS+4d | 42d | 1d |  | 02 | 92 | 04 |  |
| A14680 |  | electrical conduits for ground floor walls | 2d | 2010-10-02 | 2010-10-03 | A14400 FS+1d | 53d | 0d | jungle | 02 | 92 | 04 |  |
| A14500 |  | electrical conduits for roof slab | 1d | 2010-10-06 | 2010-10-06 | A14460 SS+3d | 42d | 1d |  | 02 | 92 | 04 |  |
| A14690 |  | electrical conduits for 1st floor walls | 2d | 2010-10-13 | 2010-10-14 | A14640 | 51d | 0d | jungle | 02 | 92 | 04 |  |
| A14700 |  | electrical conduits for roof floor walls | 2d | 2010-10-26 | 2010-10-27 | A14650 | 48d | 0d | jungle | 02 | 92 | 04 |  |
|  | 6 | **finishing** |  | 2010-10-04 | 2010-11-06 |  |  |  |  |  |  |  |  |
| A14510 |  | Internal plastering for ground floor | 8d | 2010-10-04 | 2010-10-12 | A14680 | 49d | 2d |  | 02 | 92 | 05 |  |
| A14660 |  | Internal plastering for 1st floor | 8d | 2010-10-16 | 2010-10-24 | A14510, A14690 | 51d | 3d | jungle | 02 | 92 | 05 |  |
| A14520 |  | External plastering | 10d | 2010-10-26 | 2010-11-06 | A14650 | 41d | 0d |  | 02 | 92 | 05 |  |
| A14670 |  | Internal plastering for roof floor | 5d | 2010-10-28 | 2010-11-02 | A14660, A14700 | 48d | 3d | jungle | 02 | 92 | 05 |  |

| ID | WBS | Activity | Type | Duration | Start | Finish | Predecessors | Total float | Free float | Calendar | zone number | villa number | Work Category | concrete type |
| --- | --- | --- | --- | --- | --- | --- | --- | --- | --- | --- | --- | --- | --- | --- |
|  | villa 93 | **Villa Number F93** |  |  | 2010-06-21 | 2010-11-07 |  |  |  |  |  |  |  |  |
|  | 1 | **general dates** |  |  | 2010-06-21 | 2010-11-07 |  |  |  |  |  |  |  |  |
| A14960 |  | IFC drawings | milestone | 0d | 2010-06-21 | 2010-06-21 |  | 40d | 0d |  | 02 | 93 | 01 |  |
| A14940 |  | Start Villa construction | milestone | 0d | 2010-07-12 | 2010-07-12 | A14960 FS+18d | 40d | 0d |  | 02 | 93 | 07 |  |
| A15010 |  | Fence Drawings IFC |  | 1d | 2010-07-12 | 2010-07-12 | A14940 | 81d | 39d |  | 02 | 93 | 01 |  |
| A14950 |  | finish Villa construction | milestone | 0d | 2010-11-07 | 2010-11-07 | A14920, A15070, A15000 | 40d |  |  | 02 | 93 | 08 |  |
|  | 2 | **earth works** |  |  | 2010-07-12 | 2010-07-27 |  |  |  |  |  |  |  |  |
| A14710 |  | excavation |  | 0d | 2010-07-12 | 2010-07-12 | A14940 | 40d | 0d |  | 02 | 93 | 02 |  |
| A14720 |  | soil replacement |  | 14d | 2010-07-12 | 2010-07-27 | A14710 | 40d | 0d |  | 02 | 93 | 02 |  |
|  | 3 | **foundation level** |  |  | 2010-07-28 | 2010-09-30 |  |  |  |  |  |  |  |  |
| A14730 |  | Plain Concrete Foundation |  | 2d | 2010-07-28 | 2010-07-29 | A14720 | 40d | 0d |  | 02 | 93 | 03 | 01 |
| A15020 |  | backfilling between P.C Foundation |  | 2d | 2010-08-01 | 2010-08-02 | A14730 FS+1d | 36d | 0d | jungle | 02 | 93 | 02 |  |
| A14740 |  | Reinforced Concrete Foundation |  | 7d | 2010-08-03 | 2010-08-10 | A15020 | 40d | 0d |  | 02 | 93 | 03 | 02 |
| A14750 |  | under ground brick works |  | 2d | 2010-08-18 | 2010-08-19 | A14810 | 40d | 0d |  | 02 | 93 | 09 |  |
| A14760 |  | under ground insulation for RC & Brick work |  | 2d | 2010-08-21 | 2010-08-22 | A14750 | 40d | 0d |  | 02 | 93 | 10 |  |
| A14770 |  | backfilling for under ground |  | 4d | 2010-08-23 | 2010-08-26 | A14760 | 40d | 0d |  | 02 | 93 | 02 |  |
| A14780 |  | P.C slab on grade 10CM |  | 1d | 2010-09-26 | 2010-09-26 | A14930, A14870 | 48d | 0d |  | 02 | 93 | 03 | 03 |
| A14790 |  | moisture insulation with membrane sheets |  | 2d | 2010-09-27 | 2010-09-28 | A14780 | 48d | 0d |  | 02 | 93 | 10 |  |
| A14800 |  | R.C slab on grade |  | 2d | 2010-09-29 | 2010-09-30 | A14790 | 48d | 0d |  | 02 | 93 | 03 | 03 |
|  | 4 | **skeleton & brick walls** |  |  | 2010-08-11 | 2010-11-04 |  |  |  |  |  |  |  |  |
| A14810 |  | columns for ground floor |  | 6d | 2010-08-11 | 2010-08-17 | A14740 | 40d | 0d |  | 02 | 93 | 03 | 04 |
| A14820 |  | slab for ground floor |  | 9d | 2010-08-28 | 2010-09-06 | A14810, A14770 | 40d | 0d |  | 02 | 93 | 03 | 05 |
| A14970 |  | pouring for ground floor's slab |  | 1d | 2010-09-07 | 2010-09-07 | A14820, A14880 FF+3d | 40d | 0d |  | 02 | 93 | 03 |  |
| A14830 |  | columns for 1st floor |  | 6d | 2010-09-08 | 2010-09-14 | A14970 | 40d | 0d |  | 02 | 93 | 03 | 04 |
| A15000 |  | Fence work |  | 50d | 2010-09-08 | 2010-11-04 | A14970, A15010 FS+10d | 42d | 2d |  | 02 | 93 | 06 |  |
| A14840 |  | slab for 1st floor |  | 9d | 2010-09-15 | 2010-09-25 | A14830 | 40d | 0d |  | 02 | 93 | 03 | 05 |
| A14870 |  | Brick works for ground floor |  | 5d | 2010-09-20 | 2010-09-25 | A14970 FS+10d | 48d | 0d |  | 02 | 93 | 09 |  |
| A14980 |  | pouring for 1st floor's slab |  | 1d | 2010-09-26 | 2010-09-26 | A14840, A14890 FF+3d | 40d | 0d |  | 02 | 93 | 03 |  |
| A14850 |  | columns for roof floor |  | 4d | 2010-09-29 | 2010-10-03 | A14980 FS+2d | 40d | 0d |  | 02 | 93 | 03 | 04 |
| A14860 |  | slab for roof floor |  | 6d | 2010-10-04 | 2010-10-10 | A14850 | 40d | 0d |  | 02 | 93 | 03 | 05 |
| A15040 |  | Brick works for 1st floor |  | 5d | 2010-10-09 | 2010-10-13 | A14980 FS+10d | 50d | 0d | jungle | 02 | 93 | 09 |  |
| A14990 |  | pouring for roof floor's slab |  | 1d | 2010-10-11 | 2010-10-11 | A14860, A14900 FF+2d | 40d | 0d |  | 02 | 93 | 03 |  |
| A15050 |  | Brick works for roof floor |  | 5d | 2010-10-21 | 2010-10-26 | A14990 FS+8d | 44d | 0d | jungle | 02 | 93 | 09 |  |

| ID | WBS | Activity | Type | Duration | Start | Finish | Predecessors | Total float | Free float | Calendar | zone number | villa number | Work Category | concrete type |
| --- | --- | --- | --- | --- | --- | --- | --- | --- | --- | --- | --- | --- | --- | --- |
|  | 5 | **electro mechanical** |  |  | 2010-08-28 | 2010-10-28 |  |  |  |  |  |  |  |  |
| A14930 |  | plumbing connections under slab on grade |  | 2d | 2010-08-28 | 2010-08-29 | A14770 | 71d | 23d |  | 02 | 93 | 04 |  |
| A14880 |  | electrical conduits for ground floor's slab |  | 2d | 2010-09-01 | 2010-09-02 | A14820 SS+4d | 41d | 1d |  | 02 | 93 | 04 |  |
| A14890 |  | electrical conduits for 1st floor slab |  | 2d | 2010-09-20 | 2010-09-21 | A14840 SS+4d | 41d | 1d |  | 02 | 93 | 04 |  |
| A15080 |  | electrical conduits for ground floor walls |  | 2d | 2010-10-03 | 2010-10-04 | A14800 FS+1d | 52d | 0d | jungle | 02 | 93 | 04 |  |
| A14900 |  | electrical conduits for roof slab |  | 1d | 2010-10-07 | 2010-10-07 | A14860 SS+3d | 41d | 1d |  | 02 | 93 | 04 |  |
| A15090 |  | electrical conduits for 1st floor walls |  | 2d | 2010-10-14 | 2010-10-16 | A15040 | 50d | 0d | jungle | 02 | 93 | 04 |  |
| A15100 |  | electrical conduits for roof floor walls |  | 2d | 2010-10-27 | 2010-10-28 | A15050 | 47d | 0d | jungle | 02 | 93 | 04 |  |
|  | 6 | **finishing** |  |  | 2010-10-05 | 2010-11-07 |  |  |  |  |  |  |  |  |
| A14910 |  | Internal plastering for ground floor |  | 8d | 2010-10-05 | 2010-10-13 | A15080 | 48d | 2d |  | 02 | 93 | 05 |  |
| A15060 |  | Internal plastering for 1st floor |  | 8d | 2010-10-17 | 2010-10-25 | A14910, A15090 | 50d | 3d | jungle | 02 | 93 | 05 |  |
| A14920 |  | External plastering |  | 10d | 2010-10-27 | 2010-11-07 | A15050 | 40d | 0d |  | 02 | 93 | 05 |  |
| A15070 |  | Internal plastering for roof floor |  | 5d | 2010-10-30 | 2010-11-03 | A15060, A15100 | 47d | 3d | jungle | 02 | 93 | 05 |  |
|  | villa 94 | **Villa Number F94** |  |  | 2010-06-21 | 2010-11-08 |  |  |  |  |  |  |  |  |
|  | 1 | **general dates** |  |  | 2010-06-21 | 2010-11-08 |  |  |  |  |  |  |  |  |
| A15360 |  | IFC drawings | milestone | 0d | 2010-06-21 | 2010-06-21 |  | 39d | 0d |  | 02 | 94 | 01 |  |
| A15340 |  | Start Villa construction | milestone | 0d | 2010-07-13 | 2010-07-13 | A15360 FS+19d | 39d | 0d |  | 02 | 94 | 07 |  |
| A15410 |  | Fence Drawings IFC |  | 1d | 2010-07-13 | 2010-07-13 | A15340 | 80d | 39d |  | 02 | 94 | 01 |  |
| A15350 |  | finish Villa construction | milestone | 0d | 2010-11-08 | 2010-11-08 | A15320, A15470, A15400 | 39d |  |  | 02 | 94 | 08 |  |
|  | 2 | **earth works** |  |  | 2010-07-13 | 2010-07-28 |  |  |  |  |  |  |  |  |
| A15110 |  | excavation |  | 0d | 2010-07-13 | 2010-07-13 | A15340 | 39d | 0d |  | 02 | 94 | 02 |  |
| A15120 |  | soil replacement |  | 14d | 2010-07-13 | 2010-07-28 | A15110 | 39d | 0d |  | 02 | 94 | 02 |  |
|  | 3 | **foundation level** |  |  | 2010-07-29 | 2010-10-02 |  |  |  |  |  |  |  |  |
| A15130 |  | Plain Concrete Foundation |  | 2d | 2010-07-29 | 2010-07-31 | A15120 | 39d | 0d |  | 02 | 94 | 03 | 01 |
| A15420 |  | backfilling between P.C Foundation |  | 2d | 2010-08-02 | 2010-08-03 | A15130 FS+1d | 35d | 0d | jungle | 02 | 94 | 02 |  |
| A15140 |  | Reinforced Concrete Foundation |  | 7d | 2010-08-04 | 2010-08-11 | A15420 | 39d | 0d |  | 02 | 94 | 03 | 02 |
| A15150 |  | under ground brick works |  | 2d | 2010-08-19 | 2010-08-21 | A15210 | 39d | 0d |  | 02 | 94 | 09 |  |
| A15160 |  | under ground insulation for RC & Brick work |  | 2d | 2010-08-22 | 2010-08-23 | A15150 | 39d | 0d |  | 02 | 94 | 10 |  |
| A15170 |  | backfilling for under ground |  | 4d | 2010-08-24 | 2010-08-28 | A15160 | 39d | 0d |  | 02 | 94 | 02 |  |
| A15180 |  | P.C slab on grade 10CM |  | 1d | 2010-09-27 | 2010-09-27 | A15330, A15270 | 47d | 0d |  | 02 | 94 | 03 | 03 |
| A15190 |  | moisture insulation with membrane sheets |  | 2d | 2010-09-28 | 2010-09-29 | A15180 | 47d | 0d |  | 02 | 94 | 10 |  |
| A15200 |  | R.C slab on grade |  | 2d | 2010-09-30 | 2010-10-02 | A15190 | 47d | 0d |  | 02 | 94 | 03 | 03 |

| ID | WBS | Activity | Duration | Start | Finish | Predecessors | Total float | Free float | Calendar | zone number | villa number | Work Category | concrete type |
| --- | --- | --- | --- | --- | --- | --- | --- | --- | --- | --- | --- | --- | --- |
|  | 4 | **skeleton & brick walls** |  | 2010-08-12 | 2010-11-06 |  |  |  |  |  |  |  |  |
| A15210 |  | columns for ground floor | 6d | 2010-08-12 | 2010-08-18 | A15140 | 39d | 0d |  | 02 | 94 | 03 | 04 |
| A15220 |  | slab for ground floor | 9d | 2010-08-29 | 2010-09-07 | A15210, A15170 | 39d | 0d |  | 02 | 94 | 03 | 05 |
| A15370 |  | pouring for ground floor's slab | 1d | 2010-09-08 | 2010-09-08 | A15220, A15280 FF+3d | 39d | 0d |  | 02 | 94 | 03 |  |
| A15230 |  | columns for 1st floor | 6d | 2010-09-09 | 2010-09-15 | A15370 | 39d | 0d |  | 02 | 94 | 03 | 04 |
| A15400 |  | Fence work | 50d | 2010-09-09 | 2010-11-06 | A15370, A15410 FS+10d | 41d | 2d |  | 02 | 94 | 06 |  |
| A15240 |  | slab for 1st floor | 9d | 2010-09-16 | 2010-09-26 | A15230 | 39d | 0d |  | 02 | 94 | 03 | 05 |
| A15270 |  | Brick works for ground floor | 5d | 2010-09-21 | 2010-09-26 | A15370 FS+10d | 47d | 0d |  | 02 | 94 | 09 |  |
| A15380 |  | pouring for 1st floor's slab | 1d | 2010-09-27 | 2010-09-27 | A15240, A15290 FF+3d | 39d | 0d |  | 02 | 94 | 03 |  |
| A15250 |  | columns for roof floor | 4d | 2010-09-30 | 2010-10-04 | A15380 FS+2d | 39d | 0d |  | 02 | 94 | 03 | 04 |
| A15260 |  | slab for roof floor | 6d | 2010-10-05 | 2010-10-11 | A15250 | 39d | 0d |  | 02 | 94 | 03 | 05 |
| A15440 |  | Brick works for 1st floor | 5d | 2010-10-10 | 2010-10-14 | A15380 FS+10d | 49d | 0d | jungle | 02 | 94 | 09 |  |
| A15390 |  | pouring for roof floor's slab | 1d | 2010-10-12 | 2010-10-12 | A15260, A15300 FF+2d | 39d | 0d |  | 02 | 94 | 03 |  |
| A15450 |  | Brick works for roof floor | 5d | 2010-10-23 | 2010-10-27 | A15390 FS+8d | 43d | 0d | jungle | 02 | 94 | 09 |  |
|  | 5 | **electro mechanical** |  | 2010-08-29 | 2010-10-30 |  |  |  |  |  |  |  |  |
| A15330 |  | plumbing connections under slab on grade | 2d | 2010-08-29 | 2010-08-30 | A15170 | 70d | 23d |  | 02 | 94 | 04 |  |
| A15280 |  | electrical conduits for ground floor's slab | 2d | 2010-09-02 | 2010-09-04 | A15220 SS+4d | 40d | 1d |  | 02 | 94 | 04 |  |
| A15290 |  | electrical conduits for 1st floor slab | 2d | 2010-09-21 | 2010-09-22 | A15240 SS+4d | 40d | 1d |  | 02 | 94 | 04 |  |
| A15480 |  | electrical conduits for ground floor walls | 2d | 2010-10-04 | 2010-10-05 | A15200 FS+1d | 51d | 0d | jungle | 02 | 94 | 04 |  |
| A15300 |  | electrical conduits for roof slab | 1d | 2010-10-09 | 2010-10-09 | A15260 SS+3d | 40d | 1d |  | 02 | 94 | 04 |  |
| A15490 |  | electrical conduits for 1st floor walls | 2d | 2010-10-16 | 2010-10-17 | A15440 | 49d | 0d | jungle | 02 | 94 | 04 |  |
| A15500 |  | electrical conduits for roof floor walls | 2d | 2010-10-28 | 2010-10-30 | A15450 | 46d | 0d | jungle | 02 | 94 | 04 |  |
|  | 6 | **finishing** |  | 2010-10-06 | 2010-11-08 |  |  |  |  |  |  |  |  |
| A15310 |  | Internal plastering for ground floor | 8d | 2010-10-06 | 2010-10-14 | A15480 | 47d | 2d |  | 02 | 94 | 05 |  |
| A15460 |  | Internal plastering for 1st floor | 8d | 2010-10-18 | 2010-10-26 | A15310, A15490 | 49d | 3d | jungle | 02 | 94 | 05 |  |
| A15320 |  | External plastering | 10d | 2010-10-28 | 2010-11-08 | A15450 | 39d | 0d |  | 02 | 94 | 05 |  |
| A15470 |  | Internal plastering for roof floor | 5d | 2010-10-31 | 2010-11-04 | A15460, A15500 | 46d | 3d | jungle | 02 | 94 | 05 |  |

| ID | WBS | Activity | Type | Duration | Start | Finish | Predecessors | Total float | Free float | Calendar | zone number | villa number | Work Category | concrete type |
| --- | --- | --- | --- | --- | --- | --- | --- | --- | --- | --- | --- | --- | --- | --- |
|  | villa 95 | **Villa Number A95** |  |  | 2010-06-21 | 2010-11-07 |  |  |  |  |  |  |  |  |
|  | 1 | **general dates** |  |  | 2010-06-21 | 2010-11-07 |  |  |  |  |  |  |  |  |
| A15760 |  | IFC drawings | milestone | 0d | 2010-06-21 | 2010-06-21 |  | 40d | 0d |  | 02 | 95 | 01 |  |
| A15740 |  | Start Villa construction | milestone | 0d | 2010-07-12 | 2010-07-12 | A15760 FS+18d | 40d | 0d |  | 02 | 95 | 07 |  |
| A15810 |  | Fence Drawings IFC |  | 1d | 2010-07-12 | 2010-07-12 | A15740 | 81d | 39d |  | 02 | 95 | 01 |  |
| A15750 |  | finish Villa construction | milestone | 0d | 2010-11-07 | 2010-11-07 | A15720, A15870, A15800 | 40d |  |  | 02 | 95 | 08 |  |
|  | 2 | **earth works** |  |  | 2010-07-12 | 2010-07-27 |  |  |  |  |  |  |  |  |
| A15510 |  | excavation |  | 2d | 2010-07-12 | 2010-07-13 | A15740 | 40d | 0d |  | 02 | 95 | 02 |  |
| A15520 |  | soil replacement |  | 12d | 2010-07-14 | 2010-07-27 | A15510 | 40d | 0d |  | 02 | 95 | 02 |  |
|  | 3 | **foundation level** |  |  | 2010-07-28 | 2010-09-30 |  |  |  |  |  |  |  |  |
| A15530 |  | Plain Concrete Foundation |  | 2d | 2010-07-28 | 2010-07-29 | A15520 | 40d | 0d |  | 02 | 95 | 03 | 01 |
| A15820 |  | backfilling between P.C Foundation |  | 2d | 2010-08-01 | 2010-08-02 | A15530 FS+1d | 36d | 0d | jungle | 02 | 95 | 02 |  |
| A15540 |  | Reinforced Concrete Foundation |  | 7d | 2010-08-03 | 2010-08-10 | A15820 | 40d | 0d |  | 02 | 95 | 03 | 02 |
| A15550 |  | under ground brick works |  | 2d | 2010-08-18 | 2010-08-19 | A15610 | 40d | 0d |  | 02 | 95 | 09 |  |
| A15560 |  | under ground insulation for RC & Brick work |  | 2d | 2010-08-21 | 2010-08-22 | A15550 | 40d | 0d |  | 02 | 95 | 10 |  |
| A15570 |  | backfilling for under ground |  | 4d | 2010-08-23 | 2010-08-26 | A15560 | 40d | 0d |  | 02 | 95 | 02 |  |
| A15580 |  | P.C slab on grade 10CM |  | 1d | 2010-09-26 | 2010-09-26 | A15730, A15670 | 48d | 0d |  | 02 | 95 | 03 | 03 |
| A15590 |  | moisture insulation with membrane sheets |  | 2d | 2010-09-27 | 2010-09-28 | A15580 | 48d | 0d |  | 02 | 95 | 10 |  |
| A15600 |  | R.C slab on grade |  | 2d | 2010-09-29 | 2010-09-30 | A15590 | 48d | 0d |  | 02 | 95 | 03 | 03 |
|  | 4 | **skeleton & brick walls** |  |  | 2010-08-11 | 2010-11-04 |  |  |  |  |  |  |  |  |
| A15610 |  | columns for ground floor |  | 6d | 2010-08-11 | 2010-08-17 | A15540 | 40d | 0d |  | 02 | 95 | 03 | 04 |
| A15620 |  | slab for ground floor |  | 9d | 2010-08-28 | 2010-09-06 | A15610, A15570 | 40d | 0d |  | 02 | 95 | 03 | 05 |
| A15770 |  | pouring for ground floor's slab |  | 1d | 2010-09-07 | 2010-09-07 | A15620, A15680 FF+3d | 40d | 0d |  | 02 | 95 | 03 |  |
| A15630 |  | columns for 1st floor |  | 6d | 2010-09-08 | 2010-09-14 | A15770 | 40d | 0d |  | 02 | 95 | 03 | 04 |
| A15800 |  | Fence work |  | 50d | 2010-09-08 | 2010-11-04 | A15770, A15810 FS+10d | 42d | 2d |  | 02 | 95 | 06 |  |
| A15640 |  | slab for 1st floor |  | 9d | 2010-09-15 | 2010-09-25 | A15630 | 40d | 0d |  | 02 | 95 | 03 | 05 |
| A15670 |  | Brick works for ground floor |  | 5d | 2010-09-20 | 2010-09-25 | A15770 FS+10d | 48d | 0d |  | 02 | 95 | 09 |  |
| A15780 |  | pouring for 1st floor's slab |  | 1d | 2010-09-26 | 2010-09-26 | A15640, A15690 FF+3d | 40d | 0d |  | 02 | 95 | 03 |  |
| A15650 |  | columns for roof floor |  | 4d | 2010-09-29 | 2010-10-03 | A15780 FS+2d | 40d | 0d |  | 02 | 95 | 03 | 04 |
| A15660 |  | slab for roof floor |  | 6d | 2010-10-04 | 2010-10-10 | A15650 | 40d | 0d |  | 02 | 95 | 03 | 05 |
| A15840 |  | Brick works for 1st floor |  | 5d | 2010-10-09 | 2010-10-13 | A15780 FS+10d | 50d | 0d | jungle | 02 | 95 | 09 |  |
| A15790 |  | pouring for roof floor's slab |  | 1d | 2010-10-11 | 2010-10-11 | A15660, A15700 FF+2d | 40d | 0d |  | 02 | 95 | 03 |  |
| A15850 |  | Brick works for roof floor |  | 5d | 2010-10-21 | 2010-10-26 | A15790 FS+8d | 44d | 0d | jungle | 02 | 95 | 09 |  |

| ID | WBS | Activity | Type | Duration | Start | Finish | Predecessors | Total float | Free float | Calendar | zone number | villa number | Work Category | concrete type |
| --- | --- | --- | --- | --- | --- | --- | --- | --- | --- | --- | --- | --- | --- | --- |
|  | 5 | **electro mechanical** |  |  | 2010-08-28 | 2010-10-28 |  |  |  |  |  |  |  |  |
| A15730 |  | plumbing connections under slab on grade |  | 2d | 2010-08-28 | 2010-08-29 | A15570 | 71d | 23d |  | 02 | 95 | 04 |  |
| A15680 |  | electrical conduits for ground floor's slab |  | 2d | 2010-09-01 | 2010-09-02 | A15620 SS+4d | 41d | 1d |  | 02 | 95 | 04 |  |
| A15690 |  | electrical conduits for 1st floor slab |  | 2d | 2010-09-20 | 2010-09-21 | A15640 SS+4d | 41d | 1d |  | 02 | 95 | 04 |  |
| A15880 |  | electrical conduits for ground floor walls |  | 2d | 2010-10-03 | 2010-10-04 | A15600 FS+1d | 52d | 0d | jungle | 02 | 95 | 04 |  |
| A15700 |  | electrical conduits for roof slab |  | 1d | 2010-10-07 | 2010-10-07 | A15660 SS+3d | 41d | 1d |  | 02 | 95 | 04 |  |
| A15890 |  | electrical conduits for 1st floor walls |  | 2d | 2010-10-14 | 2010-10-16 | A15840 | 50d | 0d | jungle | 02 | 95 | 04 |  |
| A15900 |  | electrical conduits for roof floor walls |  | 2d | 2010-10-27 | 2010-10-28 | A15850 | 47d | 0d | jungle | 02 | 95 | 04 |  |
|  | 6 | **finishing** |  |  | 2010-10-05 | 2010-11-07 |  |  |  |  |  |  |  |  |
| A15710 |  | Internal plastering for ground floor |  | 8d | 2010-10-05 | 2010-10-13 | A15880 | 48d | 2d |  | 02 | 95 | 05 |  |
| A15860 |  | Internal plastering for 1st floor |  | 8d | 2010-10-17 | 2010-10-25 | A15710, A15890 | 50d | 3d | jungle | 02 | 95 | 05 |  |
| A15720 |  | External plastering |  | 10d | 2010-10-27 | 2010-11-07 | A15850 | 40d | 0d |  | 02 | 95 | 05 |  |
| A15870 |  | Internal plastering for roof floor |  | 5d | 2010-10-30 | 2010-11-03 | A15860, A15900 | 47d | 3d | jungle | 02 | 95 | 05 |  |
|  | villa 96 | **Villa Number A96** |  |  | 2010-06-21 | 2010-11-13 |  |  |  |  |  |  |  |  |
|  | 1 | **general dates** |  |  | 2010-06-21 | 2010-11-13 |  |  |  |  |  |  |  |  |
| A16160 |  | IFC drawings | milestone | 0d | 2010-06-21 | 2010-06-21 |  | 35d | 0d |  | 02 | 96 | 01 |  |
| A16140 |  | Start Villa construction | milestone | 0d | 2010-07-18 | 2010-07-18 | A16160 FS+23d | 35d | 0d |  | 02 | 96 | 07 |  |
| A16210 |  | Fence Drawings IFC |  | 1d | 2010-07-18 | 2010-07-18 | A16140 | 76d | 39d |  | 02 | 96 | 01 |  |
| A16150 |  | finish Villa construction | milestone | 0d | 2010-11-13 | 2010-11-13 | A16120, A16270, A16200 | 35d |  |  | 02 | 96 | 08 |  |
|  | 2 | **earth works** |  |  | 2010-07-18 | 2010-08-02 |  |  |  |  |  |  |  |  |
| A15910 |  | excavation |  | 2d | 2010-07-18 | 2010-07-19 | A16140 | 35d | 0d |  | 02 | 96 | 02 |  |
| A15920 |  | soil replacement |  | 12d | 2010-07-20 | 2010-08-02 | A15910 | 35d | 0d |  | 02 | 96 | 02 |  |
|  | 3 | **foundation level** |  |  | 2010-08-03 | 2010-10-06 |  |  |  |  |  |  |  |  |
| A15930 |  | Plain Concrete Foundation |  | 2d | 2010-08-03 | 2010-08-04 | A15920 | 35d | 0d |  | 02 | 96 | 03 | 01 |
| A16220 |  | backfilling between P.C Foundation |  | 2d | 2010-08-07 | 2010-08-08 | A15930 FS+1d | 31d | 0d | jungle | 02 | 96 | 02 |  |
| A15940 |  | Reinforced Concrete Foundation |  | 7d | 2010-08-09 | 2010-08-16 | A16220 | 35d | 0d |  | 02 | 96 | 03 | 02 |
| A15950 |  | under ground brick works |  | 2d | 2010-08-24 | 2010-08-25 | A16010 | 35d | 0d |  | 02 | 96 | 09 |  |
| A15960 |  | under ground insulation for RC & Brick work |  | 2d | 2010-08-26 | 2010-08-28 | A15950 | 35d | 0d |  | 02 | 96 | 10 |  |
| A15970 |  | backfilling for under ground |  | 4d | 2010-08-29 | 2010-09-01 | A15960 | 35d | 0d |  | 02 | 96 | 02 |  |
| A15980 |  | P.C slab on grade 10CM |  | 1d | 2010-10-02 | 2010-10-02 | A16130, A16070 | 43d | 0d |  | 02 | 96 | 03 | 03 |
| A15990 |  | moisture insulation with membrane sheets |  | 2d | 2010-10-03 | 2010-10-04 | A15980 | 43d | 0d |  | 02 | 96 | 10 |  |
| A16000 |  | R.C slab on grade |  | 2d | 2010-10-05 | 2010-10-06 | A15990 | 43d | 0d |  | 02 | 96 | 03 | 03 |

| ID | WBS | Activity | Duration | Start | Finish | Predecessors | Total float | Free float | Calendar | zone number | villa number | Work Category | concrete type |
| --- | --- | --- | --- | --- | --- | --- | --- | --- | --- | --- | --- | --- | --- |
|  | 4 | **skeleton & brick walls** |  | 2010-08-17 | 2010-11-10 |  |  |  |  |  |  |  |  |
| A16010 |  | columns for ground floor | 6d | 2010-08-17 | 2010-08-23 | A15940 | 35d | 0d |  | 02 | 96 | 03 | 04 |
| A16020 |  | slab for ground floor | 9d | 2010-09-02 | 2010-09-12 | A16010, A15970 | 35d | 0d |  | 02 | 96 | 03 | 05 |
| A16170 |  | pouring for ground floor's slab | 1d | 2010-09-13 | 2010-09-13 | A16020, A16080 FF+3d | 35d | 0d |  | 02 | 96 | 03 |  |
| A16030 |  | columns for 1st floor | 6d | 2010-09-14 | 2010-09-20 | A16170 | 35d | 0d |  | 02 | 96 | 03 | 04 |
| A16200 |  | Fence work | 50d | 2010-09-14 | 2010-11-10 | A16170, A16210 FS+10d | 37d | 2d |  | 02 | 96 | 06 |  |
| A16040 |  | slab for 1st floor | 9d | 2010-09-21 | 2010-09-30 | A16030 | 35d | 0d |  | 02 | 96 | 03 | 05 |
| A16070 |  | Brick works for ground floor | 5d | 2010-09-26 | 2010-09-30 | A16170 FS+10d | 43d | 0d |  | 02 | 96 | 09 |  |
| A16180 |  | pouring for 1st floor's slab | 1d | 2010-10-02 | 2010-10-02 | A16040, A16090 FF+3d | 35d | 0d |  | 02 | 96 | 03 |  |
| A16050 |  | columns for roof floor | 4d | 2010-10-05 | 2010-10-09 | A16180 FS+2d | 35d | 0d |  | 02 | 96 | 03 | 04 |
| A16060 |  | slab for roof floor | 6d | 2010-10-10 | 2010-10-16 | A16050 | 35d | 0d |  | 02 | 96 | 03 | 05 |
| A16240 |  | Brick works for 1st floor | 5d | 2010-10-14 | 2010-10-19 | A16180 FS+10d | 45d | 0d | jungle | 02 | 96 | 09 |  |
| A16190 |  | pouring for roof floor's slab | 1d | 2010-10-17 | 2010-10-17 | A16060, A16100 FF+2d | 35d | 0d |  | 02 | 96 | 03 |  |
| A16250 |  | Brick works for roof floor | 5d | 2010-10-27 | 2010-11-01 | A16190 FS+8d | 39d | 0d | jungle | 02 | 96 | 09 |  |
|  | 5 | **electro mechanical** |  | 2010-09-02 | 2010-11-03 |  |  |  |  |  |  |  |  |
| A16130 |  | plumbing connections under slab on grade | 2d | 2010-09-02 | 2010-09-04 | A15970 | 66d | 23d |  | 02 | 96 | 04 |  |
| A16080 |  | electrical conduits for ground floor's slab | 2d | 2010-09-07 | 2010-09-08 | A16020 SS+4d | 36d | 1d |  | 02 | 96 | 04 |  |
| A16090 |  | electrical conduits for 1st floor slab | 2d | 2010-09-26 | 2010-09-27 | A16040 SS+4d | 36d | 1d |  | 02 | 96 | 04 |  |
| A16280 |  | electrical conduits for ground floor walls | 2d | 2010-10-09 | 2010-10-10 | A16000 FS+1d | 47d | 0d | jungle | 02 | 96 | 04 |  |
| A16100 |  | electrical conduits for roof slab | 1d | 2010-10-13 | 2010-10-13 | A16060 SS+3d | 36d | 1d |  | 02 | 96 | 04 |  |
| A16290 |  | electrical conduits for 1st floor walls | 2d | 2010-10-20 | 2010-10-21 | A16240 | 45d | 0d | jungle | 02 | 96 | 04 |  |
| A16300 |  | electrical conduits for roof floor walls | 2d | 2010-11-02 | 2010-11-03 | A16250 | 42d | 0d | jungle | 02 | 96 | 04 |  |
|  | 6 | **finishing** |  | 2010-10-11 | 2010-11-13 |  |  |  |  |  |  |  |  |
| A16110 |  | Internal plastering for ground floor | 8d | 2010-10-11 | 2010-10-19 | A16280 | 43d | 2d |  | 02 | 96 | 05 |  |
| A16260 |  | Internal plastering for 1st floor | 8d | 2010-10-23 | 2010-10-31 | A16110, A16290 | 45d | 3d | jungle | 02 | 96 | 05 |  |
| A16120 |  | External plastering | 10d | 2010-11-02 | 2010-11-13 | A16250 | 35d | 0d |  | 02 | 96 | 05 |  |
| A16270 |  | Internal plastering for roof floor | 5d | 2010-11-04 | 2010-11-09 | A16260, A16300 | 42d | 3d | jungle | 02 | 96 | 05 |  |

| ID | WBS | Activity | Type | Duration | Start | Finish | Predecessors | Total float | Free float | Calendar | zone number | villa number | Work Category | concrete type |
| --- | --- | --- | --- | --- | --- | --- | --- | --- | --- | --- | --- | --- | --- | --- |
|  | villa 97 | **Villa Number A97** |  |  | 2010-06-21 | 2010-11-11 |  |  |  |  |  |  |  |  |
|  | 1 | **general dates** |  |  | 2010-06-21 | 2010-11-11 |  |  |  |  |  |  |  |  |
| A16560 |  | IFC drawings | milestone | 0d | 2010-06-21 | 2010-06-21 |  | 36d | 0d |  | 02 | 97 | 01 |  |
| A16540 |  | Start Villa construction | milestone | 0d | 2010-07-17 | 2010-07-17 | A16560 FS+22d | 36d | 0d |  | 02 | 97 | 07 |  |
| A16610 |  | Fence Drawings IFC |  | 1d | 2010-07-17 | 2010-07-17 | A16540 | 77d | 39d |  | 02 | 97 | 01 |  |
| A16550 |  | finish Villa construction | milestone | 0d | 2010-11-11 | 2010-11-11 | A16520, A16670, A16600 | 36d |  |  | 02 | 97 | 08 |  |
|  | 2 | **earth works** |  |  | 2010-07-17 | 2010-08-01 |  |  |  |  |  |  |  |  |
| A16310 |  | excavation |  | 2d | 2010-07-17 | 2010-07-18 | A16540 | 36d | 0d |  | 02 | 97 | 02 |  |
| A16320 |  | soil replacement |  | 12d | 2010-07-19 | 2010-08-01 | A16310 | 36d | 0d |  | 02 | 97 | 02 |  |
|  | 3 | **foundation level** |  |  | 2010-08-02 | 2010-10-05 |  |  |  |  |  |  |  |  |
| A16330 |  | Plain Concrete Foundation |  | 2d | 2010-08-02 | 2010-08-03 | A16320 | 36d | 0d |  | 02 | 97 | 03 | 01 |
| A16620 |  | backfilling between P.C Foundation |  | 2d | 2010-08-05 | 2010-08-07 | A16330 FS+1d | 32d | 0d | jungle | 02 | 97 | 02 |  |
| A16340 |  | Reinforced Concrete Foundation |  | 7d | 2010-08-08 | 2010-08-15 | A16620 | 36d | 0d |  | 02 | 97 | 03 | 02 |
| A16350 |  | under ground brick works |  | 2d | 2010-08-23 | 2010-08-24 | A16410 | 36d | 0d |  | 02 | 97 | 09 |  |
| A16360 |  | under ground insulation for RC & Brick work |  | 2d | 2010-08-25 | 2010-08-26 | A16350 | 36d | 0d |  | 02 | 97 | 10 |  |
| A16370 |  | backfilling for under ground |  | 4d | 2010-08-28 | 2010-08-31 | A16360 | 36d | 0d |  | 02 | 97 | 02 |  |
| A16380 |  | P.C slab on grade 10CM |  | 1d | 2010-09-30 | 2010-09-30 | A16530, A16470 | 44d | 0d |  | 02 | 97 | 03 | 03 |
| A16390 |  | moisture insulation with membrane sheets |  | 2d | 2010-10-02 | 2010-10-03 | A16380 | 44d | 0d |  | 02 | 97 | 10 |  |
| A16400 |  | R.C slab on grade |  | 2d | 2010-10-04 | 2010-10-05 | A16390 | 44d | 0d |  | 02 | 97 | 03 | 03 |
|  | 4 | **skeleton & brick walls** |  |  | 2010-08-16 | 2010-11-09 |  |  |  |  |  |  |  |  |
| A16410 |  | columns for ground floor |  | 6d | 2010-08-16 | 2010-08-22 | A16340 | 36d | 0d |  | 02 | 97 | 03 | 04 |
| A16420 |  | slab for ground floor |  | 9d | 2010-09-01 | 2010-09-11 | A16410, A16370 | 36d | 0d |  | 02 | 97 | 03 | 05 |
| A16570 |  | pouring for ground floor's slab |  | 1d | 2010-09-12 | 2010-09-12 | A16420, A16480 FF+3d | 36d | 0d |  | 02 | 97 | 03 |  |
| A16430 |  | columns for 1st floor |  | 6d | 2010-09-13 | 2010-09-19 | A16570 | 36d | 0d |  | 02 | 97 | 03 | 04 |
| A16600 |  | Fence work |  | 50d | 2010-09-13 | 2010-11-09 | A16570, A16610 FS+10d | 38d | 2d |  | 02 | 97 | 06 |  |
| A16440 |  | slab for 1st floor |  | 9d | 2010-09-20 | 2010-09-29 | A16430 | 36d | 0d |  | 02 | 97 | 03 | 05 |
| A16470 |  | Brick works for ground floor |  | 5d | 2010-09-25 | 2010-09-29 | A16570 FS+10d | 44d | 0d |  | 02 | 97 | 09 |  |
| A16580 |  | pouring for 1st floor's slab |  | 1d | 2010-09-30 | 2010-09-30 | A16440, A16490 FF+3d | 36d | 0d |  | 02 | 97 | 03 |  |
| A16450 |  | columns for roof floor |  | 4d | 2010-10-04 | 2010-10-07 | A16580 FS+2d | 36d | 0d |  | 02 | 97 | 03 | 04 |
| A16460 |  | slab for roof floor |  | 6d | 2010-10-09 | 2010-10-14 | A16450 | 36d | 0d |  | 02 | 97 | 03 | 05 |
| A16640 |  | Brick works for 1st floor |  | 5d | 2010-10-13 | 2010-10-18 | A16580 FS+10d | 46d | 0d | jungle | 02 | 97 | 09 |  |
| A16590 |  | pouring for roof floor's slab |  | 1d | 2010-10-16 | 2010-10-16 | A16460, A16500 FF+2d | 36d | 0d |  | 02 | 97 | 03 |  |
| A16650 |  | Brick works for roof floor |  | 5d | 2010-10-26 | 2010-10-31 | A16590 FS+8d | 40d | 0d | jungle | 02 | 97 | 09 |  |

| ID | WBS | Activity | Type | Duration | Start | Finish | Predecessors | Total float | Free float | Calendar | zone number | villa number | Work Category | concrete type |
| --- | --- | --- | --- | --- | --- | --- | --- | --- | --- | --- | --- | --- | --- | --- |
|  | 5 | **electro mechanical** |  |  | 2010-09-01 | 2010-11-02 |  |  |  |  |  |  |  |  |
| A16530 |  | plumbing connections under slab on grade |  | 2d | 2010-09-01 | 2010-09-02 | A16370 | 67d | 23d |  | 02 | 97 | 04 |  |
| A16480 |  | electrical conduits for ground floor's slab |  | 2d | 2010-09-06 | 2010-09-07 | A16420 SS+4d | 37d | 1d |  | 02 | 97 | 04 |  |
| A16490 |  | electrical conduits for 1st floor slab |  | 2d | 2010-09-25 | 2010-09-26 | A16440 SS+4d | 37d | 1d |  | 02 | 97 | 04 |  |
| A16680 |  | electrical conduits for ground floor walls |  | 2d | 2010-10-07 | 2010-10-09 | A16400 FS+1d | 48d | 0d | jungle | 02 | 97 | 04 |  |
| A16500 |  | electrical conduits for roof slab |  | 1d | 2010-10-12 | 2010-10-12 | A16460 SS+3d | 37d | 1d |  | 02 | 97 | 04 |  |
| A16690 |  | electrical conduits for 1st floor walls |  | 2d | 2010-10-19 | 2010-10-20 | A16640 | 46d | 0d | jungle | 02 | 97 | 04 |  |
| A16700 |  | electrical conduits for roof floor walls |  | 2d | 2010-11-01 | 2010-11-02 | A16650 | 43d | 0d | jungle | 02 | 97 | 04 |  |
|  | 6 | **finishing** |  |  | 2010-10-10 | 2010-11-11 |  |  |  |  |  |  |  |  |
| A16510 |  | Internal plastering for ground floor |  | 8d | 2010-10-10 | 2010-10-18 | A16680 | 44d | 2d |  | 02 | 97 | 05 |  |
| A16660 |  | Internal plastering for 1st floor |  | 8d | 2010-10-21 | 2010-10-30 | A16510, A16690 | 46d | 3d | jungle | 02 | 97 | 05 |  |
| A16520 |  | External plastering |  | 10d | 2010-11-01 | 2010-11-11 | A16650 | 36d | 0d |  | 02 | 97 | 05 |  |
| A16670 |  | Internal plastering for roof floor |  | 5d | 2010-11-03 | 2010-11-08 | A16660, A16700 | 43d | 3d | jungle | 02 | 97 | 05 |  |
|  | zone 3 | **Zone.No 3** |  |  | 2010-06-21 | 2010-12-14 |  |  |  |  |  |  |  |  |
|  | villa 9 | **Villa Number D9** |  |  | 2010-06-21 | 2010-12-09 |  |  |  |  |  |  |  |  |
|  | 1 | **general dates** |  |  | 2010-06-21 | 2010-12-09 |  |  |  |  |  |  |  |  |
| A10250 |  | IFC drawings | milestone | 0d | 2010-06-21 | 2010-06-21 |  | 60d | 44d |  | 01 | 9 | 01 |  |
| A10230 |  | Start Villa construction | milestone | 0d | 2010-08-11 | 2010-08-11 | A10250, A1000 FS+44d | 16d | 0d |  | 01 | 9 | 07 |  |
| A10300 |  | Fence Drawings IFC |  | 1d | 2010-08-11 | 2010-08-11 | A10230 | 55d | 37d |  | 01 | 9 | 01 |  |
| A10240 |  | finish Villa construction | milestone | 0d | 2010-12-09 | 2010-12-09 | A10200, A10192, A10290 | 16d |  |  | 01 | 9 | 08 |  |
|  | 2 | **earth works** |  |  | 2010-08-11 | 2010-08-26 |  |  |  |  |  |  |  |  |
| A9980 |  | excavation |  | 2d | 2010-08-11 | 2010-08-12 | A10230 | 16d | 0d |  | 01 | 9 | 02 |  |
| A9990 |  | soil replacement |  | 12d | 2010-08-14 | 2010-08-26 | A9980 | 16d | 0d |  | 01 | 9 | 02 |  |
|  | 3 | **foundation level** |  |  | 2010-08-28 | 2010-10-28 |  |  |  |  |  |  |  |  |
| A10000 |  | Plain Concrete Foundation |  | 2d | 2010-08-28 | 2010-08-29 | A9990 | 16d | 0d |  | 01 | 9 | 03 | 01 |
| A10001 |  | backfilling between P.C Foundation |  | 2d | 2010-08-31 | 2010-09-01 | A10000 FS+1d | 12d | 0d | jungle | 01 | 9 | 02 |  |
| A10010 |  | Reinforced Concrete Foundation |  | 7d | 2010-09-02 | 2010-09-09 | A10001 | 16d | 0d |  | 01 | 9 | 03 | 02 |
| A10020 |  | under ground brick works |  | 2d | 2010-09-18 | 2010-09-19 | A10080 | 16d | 0d |  | 01 | 9 | 09 |  |
| A10030 |  | under ground insulation for RC & Brick work |  | 2d | 2010-09-20 | 2010-09-21 | A10020 | 16d | 0d |  | 01 | 9 | 10 |  |
| A10040 |  | backfilling for under ground |  | 2d | 2010-09-22 | 2010-09-23 | A10030 | 16d | 0d |  | 01 | 9 | 02 |  |
| A10050 |  | P.C slab on grade 10CM |  | 1d | 2010-10-24 | 2010-10-24 | A10210, A10140 | 24d | 0d |  | 01 | 9 | 03 | 03 |
| A10060 |  | moisture insulation with membrane sheets |  | 2d | 2010-10-25 | 2010-10-26 | A10050 | 24d | 0d |  | 01 | 9 | 10 |  |
| A10070 |  | R.C slab on grade |  | 2d | 2010-10-27 | 2010-10-28 | A10060 | 24d | 0d |  | 01 | 9 | 03 | 03 |

| ID | WBS | Activity | Duration | Start | Finish | Predecessors | Total float | Free float | Calendar | zone number | villa number | Work Category | concrete type |
| --- | --- | --- | --- | --- | --- | --- | --- | --- | --- | --- | --- | --- | --- |
|  | 4 | **skeleton & brick walls** |  | 2010-09-11 | 2010-12-07 |  |  |  |  |  |  |  |  |
| A10080 |  | columns for ground floor | 6d | 2010-09-11 | 2010-09-16 | A10010 | 16d | 0d |  | 01 | 9 | 03 | 04 |
| A10090 |  | slab for ground floor | 9d | 2010-09-25 | 2010-10-04 | A10080, A10040 | 16d | 0d |  | 01 | 9 | 03 | 05 |
| A10260 |  | pouring for ground floor's slab | 1d | 2010-10-05 | 2010-10-05 | A10090, A10150 FF+3d | 16d | 0d |  | 01 | 9 | 03 |  |
| A10100 |  | columns for 1st floor | 6d | 2010-10-06 | 2010-10-12 | A10260 | 16d | 0d |  | 01 | 9 | 03 | 04 |
| A10290 |  | Fence work | 50d | 2010-10-06 | 2010-12-07 | A10260, A10300 FS+10d | 18d | 2d |  | 01 | 9 | 06 |  |
| A10110 |  | slab for 1st floor | 9d | 2010-10-13 | 2010-10-23 | A10100 | 16d | 0d |  | 01 | 9 | 03 | 05 |
| A10140 |  | Brick works for ground floor | 5d | 2010-10-18 | 2010-10-23 | A10260 FS+10d | 24d | 0d |  | 01 | 9 | 09 |  |
| A10270 |  | pouring for 1st floor's slab | 1d | 2010-10-24 | 2010-10-24 | A10110, A10160 FF+3d | 16d | 0d |  | 01 | 9 | 03 |  |
| A10120 |  | columns for roof floor | 4d | 2010-10-27 | 2010-10-31 | A10270 FS+2d | 16d | 0d |  | 01 | 9 | 03 | 04 |
| A10130 |  | slab for roof floor | 6d | 2010-11-01 | 2010-11-07 | A10120 | 16d | 0d |  | 01 | 9 | 03 | 05 |
| A10141 |  | Brick works for 1st floor | 5d | 2010-11-06 | 2010-11-10 | A10270 FS+10d | 26d | 0d | jungle | 01 | 9 | 09 |  |
| A10280 |  | pouring for roof floor's slab | 1d | 2010-11-08 | 2010-11-08 | A10130, A10170 FF+2d | 16d | 0d |  | 01 | 9 | 03 |  |
| A10142 |  | Brick works for roof floor | 5d | 2010-11-23 | 2010-11-28 | A10280 FS+8d | 16d | 0d | jungle | 01 | 9 | 09 |  |
|  | 5 | **electro mechanical** |  | 2010-09-25 | 2010-11-30 |  |  |  |  |  |  |  |  |
| A10210 |  | plumbing connections under slab on grade | 2d | 2010-09-25 | 2010-09-26 | A10040 | 47d | 23d |  | 01 | 9 | 04 |  |
| A10150 |  | electrical conduits for ground floor's slab | 2d | 2010-09-29 | 2010-09-30 | A10090 SS+4d | 17d | 1d |  | 01 | 9 | 04 |  |
| A10160 |  | electrical conduits for 1st floor slab | 2d | 2010-10-18 | 2010-10-19 | A10110 SS+4d | 17d | 1d |  | 01 | 9 | 04 |  |
| A10171 |  | electrical conduits for ground floor walls | 2d | 2010-10-31 | 2010-11-01 | A10070 FS+1d | 28d | 0d | jungle | 01 | 9 | 04 |  |
| A10170 |  | electrical conduits for roof slab | 1d | 2010-11-04 | 2010-11-04 | A10130 SS+3d | 17d | 1d |  | 01 | 9 | 04 |  |
| A10172 |  | electrical conduits for 1st floor walls | 2d | 2010-11-11 | 2010-11-13 | A10141 | 26d | 0d | jungle | 01 | 9 | 04 |  |
| A10173 |  | electrical conduits for roof floor walls | 2d | 2010-11-29 | 2010-11-30 | A10142 | 19d | 0d | jungle | 01 | 9 | 04 |  |
|  | 6 | **finishing** |  | 2010-11-02 | 2010-12-09 |  |  |  |  |  |  |  |  |
| A10190 |  | Internal plastering for ground floor | 8d | 2010-11-02 | 2010-11-10 | A10171 | 24d | 2d |  | 01 | 9 | 05 |  |
| A10191 |  | Internal plastering for 1st floor | 8d | 2010-11-14 | 2010-11-22 | A10190, A10172 | 26d | 7d | jungle | 01 | 9 | 05 |  |
| A10200 |  | External plastering | 10d | 2010-11-29 | 2010-12-09 | A10142 | 16d | 0d |  | 01 | 9 | 05 |  |
| A10192 |  | Internal plastering for roof floor | 5d | 2010-12-01 | 2010-12-06 | A10191, A10173 | 19d | 3d | jungle | 01 | 9 | 05 |  |

| ID | WBS | Activity | Type | Duration | Start | Finish | Predecessors | Total float | Free float | Calendar | zone number | villa number | Work Category | concrete type |
| --- | --- | --- | --- | --- | --- | --- | --- | --- | --- | --- | --- | --- | --- | --- |
|  | villa 102 | **Villa Number B102** |  |  | 2010-06-21 | 2010-12-08 |  |  |  |  |  |  |  |  |
|  | 1 | **general dates** |  |  | 2010-06-21 | 2010-12-08 |  |  |  |  |  |  |  |  |
| A12560 |  | IFC drawings | milestone | 0d | 2010-06-21 | 2010-06-21 |  | 17d | 0d |  | 01 | 102 | 01 |  |
| A12540 |  | Start Villa construction | milestone | 0d | 2010-08-10 | 2010-08-10 | A12560 FS+43d | 17d | 0d |  | 01 | 102 | 07 |  |
| A12610 |  | Fence Drawings IFC |  | 1d | 2010-08-10 | 2010-08-10 | A12540 | 56d | 39d |  | 01 | 102 | 01 |  |
| A12550 |  | finish Villa construction | milestone | 0d | 2010-12-08 | 2010-12-08 | A12520, A12670, A12600 | 17d |  |  | 01 | 102 | 08 |  |
|  | 2 | **earth works** |  |  | 2010-08-12 | 2010-08-28 |  |  |  |  |  |  |  |  |
| A12310 |  | excavation |  | 2d | 2010-08-12 | 2010-08-14 | A12540 FS+2d | 17d | 0d |  | 01 | 102 | 02 |  |
| A12320 |  | soil replacement |  | 12d | 2010-08-15 | 2010-08-28 | A12310 | 17d | 0d |  | 01 | 102 | 02 |  |
|  | 3 | **foundation level** |  |  | 2010-08-29 | 2010-10-30 |  |  |  |  |  |  |  |  |
| A12330 |  | Plain Concrete Foundation |  | 2d | 2010-08-29 | 2010-08-30 | A12320 | 17d | 0d |  | 01 | 102 | 03 | 01 |
| A12620 |  | backfilling between P.C Foundation |  | 2d | 2010-09-01 | 2010-09-02 | A12330 FS+1d | 13d | 0d | jungle | 01 | 102 | 02 |  |
| A12340 |  | Reinforced Concrete Foundation |  | 7d | 2010-09-04 | 2010-09-11 | A12620 | 17d | 0d |  | 01 | 102 | 03 | 02 |
| A12350 |  | under ground brick works |  | 2d | 2010-09-19 | 2010-09-20 | A12410 | 17d | 0d |  | 01 | 102 | 09 |  |
| A12360 |  | under ground insulation for RC & Brick work |  | 2d | 2010-09-21 | 2010-09-22 | A12350 | 17d | 0d |  | 01 | 102 | 10 |  |
| A12370 |  | backfilling for under ground |  | 2d | 2010-09-23 | 2010-09-25 | A12360 | 17d | 0d |  | 01 | 102 | 02 |  |
| A12380 |  | P.C slab on grade 10CM |  | 1d | 2010-10-25 | 2010-10-25 | A12530, A12470 | 23d | 0d |  | 01 | 102 | 03 | 03 |
| A12390 |  | moisture insulation with membrane sheets |  | 2d | 2010-10-26 | 2010-10-27 | A12380 | 23d | 0d |  | 01 | 102 | 10 |  |
| A12400 |  | R.C slab on grade |  | 2d | 2010-10-28 | 2010-10-30 | A12390 | 23d | 0d |  | 01 | 102 | 03 | 03 |
|  | 4 | **skeleton & brick walls** |  |  | 2010-09-12 | 2010-12-08 |  |  |  |  |  |  |  |  |
| A12410 |  | columns for ground floor |  | 6d | 2010-09-12 | 2010-09-18 | A12340 | 17d | 0d |  | 01 | 102 | 03 | 04 |
| A12420 |  | slab for ground floor |  | 9d | 2010-09-26 | 2010-10-05 | A12410, A12370 | 17d | 0d |  | 01 | 102 | 03 | 05 |
| A12570 |  | pouring for ground floor's slab |  | 1d | 2010-10-06 | 2010-10-06 | A12420, A12480 FF+3d | 17d | 0d |  | 01 | 102 | 03 |  |
| A12430 |  | columns for 1st floor |  | 6d | 2010-10-07 | 2010-10-13 | A12570 | 17d | 0d |  | 01 | 102 | 03 | 04 |
| A12600 |  | Fence work |  | 50d | 2010-10-07 | 2010-12-08 | A12570, A12610 FS+10d | 17d | 0d |  | 01 | 102 | 06 |  |
| A12440 |  | slab for 1st floor |  | 9d | 2010-10-14 | 2010-10-24 | A12430 | 17d | 0d |  | 01 | 102 | 03 | 05 |
| A12470 |  | Brick works for ground floor |  | 5d | 2010-10-19 | 2010-10-24 | A12570 FS+10d | 23d | 0d |  | 01 | 102 | 09 |  |
| A12580 |  | pouring for 1st floor's slab |  | 1d | 2010-10-25 | 2010-10-25 | A12440, A12490 FF+3d | 17d | 0d |  | 01 | 102 | 03 |  |
| A12450 |  | columns for roof floor |  | 4d | 2010-10-28 | 2010-11-01 | A12580 FS+2d | 17d | 0d |  | 01 | 102 | 03 | 04 |
| A12460 |  | slab for roof floor |  | 6d | 2010-11-02 | 2010-11-08 | A12450 | 17d | 0d |  | 01 | 102 | 03 | 05 |
| A12640 |  | Brick works for 1st floor |  | 5d | 2010-11-07 | 2010-11-11 | A12580 FS+10d | 25d | 0d | jungle | 01 | 102 | 09 |  |
| A12590 |  | pouring for roof floor's slab |  | 1d | 2010-11-09 | 2010-11-09 | A12460, A12500 FF+2d | 17d | 0d |  | 01 | 102 | 03 |  |
| A12650 |  | Brick works for roof floor |  | 5d | 2010-11-24 | 2010-11-29 | A12590 FS+8d | 17d | 0d | jungle | 01 | 102 | 09 |  |

| ID | WBS | Activity | Type | Duration | Start | Finish | Predecessors | Total float | Free float | Calendar | zone number | villa number | Work Category | concrete type |
| --- | --- | --- | --- | --- | --- | --- | --- | --- | --- | --- | --- | --- | --- | --- |
|  | 5 | **electro mechanical** |  |  | 2010-09-26 | 2010-12-01 |  |  |  |  |  |  |  |  |
| A12530 |  | plumbing connections under slab on grade |  | 2d | 2010-09-26 | 2010-09-27 | A12370 | 46d | 23d |  | 01 | 102 | 04 |  |
| A12480 |  | electrical conduits for ground floor's slab |  | 2d | 2010-09-30 | 2010-10-02 | A12420 SS+4d | 18d | 1d |  | 01 | 102 | 04 |  |
| A12490 |  | electrical conduits for 1st floor slab |  | 2d | 2010-10-19 | 2010-10-20 | A12440 SS+4d | 18d | 1d |  | 01 | 102 | 04 |  |
| A12680 |  | electrical conduits for ground floor walls |  | 2d | 2010-11-01 | 2010-11-02 | A12400 FS+1d | 27d | 0d | jungle | 01 | 102 | 04 |  |
| A12500 |  | electrical conduits for roof slab |  | 1d | 2010-11-06 | 2010-11-06 | A12460 SS+3d | 18d | 1d |  | 01 | 102 | 04 |  |
| A12690 |  | electrical conduits for 1st floor walls |  | 2d | 2010-11-13 | 2010-11-14 | A12640 | 25d | 0d | jungle | 01 | 102 | 04 |  |
| A12700 |  | electrical conduits for roof floor walls |  | 2d | 2010-11-30 | 2010-12-01 | A12650 | 18d | 0d | jungle | 01 | 102 | 04 |  |
|  | 6 | **finishing** |  |  | 2010-11-03 | 2010-12-08 |  |  |  |  |  |  |  |  |
| A12510 |  | Internal plastering for ground floor |  | 8d | 2010-11-03 | 2010-11-11 | A12680 | 23d | 2d |  | 01 | 102 | 05 |  |
| A12660 |  | Internal plastering for 1st floor |  | 8d | 2010-11-15 | 2010-11-23 | A12510, A12690 | 25d | 7d | jungle | 01 | 102 | 05 |  |
| A12520 |  | External plastering |  | 8d | 2010-11-30 | 2010-12-08 | A12650 | 17d | 0d |  | 01 | 102 | 05 |  |
| A12670 |  | Internal plastering for roof floor |  | 5d | 2010-12-02 | 2010-12-07 | A12660, A12700 | 18d | 1d | jungle | 01 | 102 | 05 |  |
|  | villa 107 | **Villa Number B107** |  |  | 2010-06-21 | 2010-12-08 |  |  |  |  |  |  |  |  |
|  | 1 | **general dates** |  |  | 2010-06-21 | 2010-12-08 |  |  |  |  |  |  |  |  |
| A12960 |  | IFC drawings | milestone | 0d | 2010-06-21 | 2010-06-21 |  | 17d | 0d |  | 01 | 107 | 01 |  |
| A12940 |  | Start Villa construction | milestone | 0d | 2010-08-10 | 2010-08-10 | A12960 FS+43d | 17d | 0d |  | 01 | 107 | 07 |  |
| A13010 |  | Fence Drawings IFC |  | 1d | 2010-08-10 | 2010-08-10 | A12940 | 56d | 39d |  | 01 | 107 | 01 |  |
| A12950 |  | finish Villa construction | milestone | 0d | 2010-12-08 | 2010-12-08 | A12920, A13070, A13000 | 17d |  |  | 01 | 107 | 08 |  |
|  | 2 | **earth works** |  |  | 2010-08-12 | 2010-08-28 |  |  |  |  |  |  |  |  |
| A12710 |  | excavation |  | 2d | 2010-08-12 | 2010-08-14 | A12940 FS+2d | 17d | 0d |  | 01 | 107 | 02 |  |
| A12720 |  | soil replacement |  | 12d | 2010-08-15 | 2010-08-28 | A12710 | 17d | 0d |  | 01 | 107 | 02 |  |
|  | 3 | **foundation level** |  |  | 2010-08-29 | 2010-10-30 |  |  |  |  |  |  |  |  |
| A12730 |  | Plain Concrete Foundation |  | 2d | 2010-08-29 | 2010-08-30 | A12720 | 17d | 0d |  | 01 | 107 | 03 | 01 |
| A13020 |  | backfilling between P.C Foundation |  | 2d | 2010-09-01 | 2010-09-02 | A12730 FS+1d | 13d | 0d | jungle | 01 | 107 | 02 |  |
| A12740 |  | Reinforced Concrete Foundation |  | 7d | 2010-09-04 | 2010-09-11 | A13020 | 17d | 0d |  | 01 | 107 | 03 | 02 |
| A12750 |  | under ground brick works |  | 2d | 2010-09-19 | 2010-09-20 | A12810 | 17d | 0d |  | 01 | 107 | 09 |  |
| A12760 |  | under ground insulation for RC & Brick work |  | 2d | 2010-09-21 | 2010-09-22 | A12750 | 17d | 0d |  | 01 | 107 | 10 |  |
| A12770 |  | backfilling for under ground |  | 2d | 2010-09-23 | 2010-09-25 | A12760 | 17d | 0d |  | 01 | 107 | 02 |  |
| A12780 |  | P.C slab on grade 10CM |  | 1d | 2010-10-25 | 2010-10-25 | A12930, A12870 | 23d | 0d |  | 01 | 107 | 03 | 03 |
| A12790 |  | moisture insulation with membrane sheets |  | 2d | 2010-10-26 | 2010-10-27 | A12780 | 23d | 0d |  | 01 | 107 | 10 |  |
| A12800 |  | R.C slab on grade |  | 2d | 2010-10-28 | 2010-10-30 | A12790 | 23d | 0d |  | 01 | 107 | 03 | 03 |

| ID | WBS | Activity | Duration | Start | Finish | Predecessors | Total float | Free float | Calendar | zone number | villa number | Work Category | concrete type |
| --- | --- | --- | --- | --- | --- | --- | --- | --- | --- | --- | --- | --- | --- |
|  | 4 | **skeleton & brick walls** |  | 2010-09-12 | 2010-12-08 |  |  |  |  |  |  |  |  |
| A12810 |  | columns for ground floor | 6d | 2010-09-12 | 2010-09-18 | A12740 | 17d | 0d |  | 01 | 107 | 03 | 04 |
| A12820 |  | slab for ground floor | 9d | 2010-09-26 | 2010-10-05 | A12810, A12770 | 17d | 0d |  | 01 | 107 | 03 | 05 |
| A12970 |  | pouring for ground floor's slab | 1d | 2010-10-06 | 2010-10-06 | A12820, A12880 FF+3d | 17d | 0d |  | 01 | 107 | 03 |  |
| A12830 |  | columns for 1st floor | 6d | 2010-10-07 | 2010-10-13 | A12970 | 17d | 0d |  | 01 | 107 | 03 | 04 |
| A13000 |  | Fence work | 50d | 2010-10-07 | 2010-12-08 | A12970, A13010 FS+10d | 17d | 0d |  | 01 | 107 | 06 |  |
| A12840 |  | slab for 1st floor | 9d | 2010-10-14 | 2010-10-24 | A12830 | 17d | 0d |  | 01 | 107 | 03 | 05 |
| A12870 |  | Brick works for ground floor | 5d | 2010-10-19 | 2010-10-24 | A12970 FS+10d | 23d | 0d |  | 01 | 107 | 09 |  |
| A12980 |  | pouring for 1st floor's slab | 1d | 2010-10-25 | 2010-10-25 | A12840, A12890 FF+3d | 17d | 0d |  | 01 | 107 | 03 |  |
| A12850 |  | columns for roof floor | 4d | 2010-10-28 | 2010-11-01 | A12980 FS+2d | 17d | 0d |  | 01 | 107 | 03 | 04 |
| A12860 |  | slab for roof floor | 6d | 2010-11-02 | 2010-11-08 | A12850 | 17d | 0d |  | 01 | 107 | 03 | 05 |
| A13040 |  | Brick works for 1st floor | 5d | 2010-11-07 | 2010-11-11 | A12980 FS+10d | 25d | 0d | jungle | 01 | 107 | 09 |  |
| A12990 |  | pouring for roof floor's slab | 1d | 2010-11-09 | 2010-11-09 | A12860, A12900 FF+2d | 17d | 0d |  | 01 | 107 | 03 |  |
| A13050 |  | Brick works for roof floor | 5d | 2010-11-24 | 2010-11-29 | A12990 FS+8d | 17d | 0d | jungle | 01 | 107 | 09 |  |
|  | 5 | **electro mechanical** |  | 2010-09-26 | 2010-12-01 |  |  |  |  |  |  |  |  |
| A12930 |  | plumbing connections under slab on grade | 2d | 2010-09-26 | 2010-09-27 | A12770 | 46d | 23d |  | 01 | 107 | 04 |  |
| A12880 |  | electrical conduits for ground floor's slab | 2d | 2010-09-30 | 2010-10-02 | A12820 SS+4d | 18d | 1d |  | 01 | 107 | 04 |  |
| A12890 |  | electrical conduits for 1st floor slab | 2d | 2010-10-19 | 2010-10-20 | A12840 SS+4d | 18d | 1d |  | 01 | 107 | 04 |  |
| A13080 |  | electrical conduits for ground floor walls | 2d | 2010-11-01 | 2010-11-02 | A12800 FS+1d | 27d | 0d | jungle | 01 | 107 | 04 |  |
| A12900 |  | electrical conduits for roof slab | 1d | 2010-11-06 | 2010-11-06 | A12860 SS+3d | 18d | 1d |  | 01 | 107 | 04 |  |
| A13090 |  | electrical conduits for 1st floor walls | 2d | 2010-11-13 | 2010-11-14 | A13040 | 25d | 0d | jungle | 01 | 107 | 04 |  |
| A13100 |  | electrical conduits for roof floor walls | 2d | 2010-11-30 | 2010-12-01 | A13050 | 18d | 0d | jungle | 01 | 107 | 04 |  |
|  | 6 | **finishing** |  | 2010-11-03 | 2010-12-08 |  |  |  |  |  |  |  |  |
| A12910 |  | Internal plastering for ground floor | 8d | 2010-11-03 | 2010-11-11 | A13080 | 23d | 2d |  | 01 | 107 | 05 |  |
| A13060 |  | Internal plastering for 1st floor | 8d | 2010-11-15 | 2010-11-23 | A12910, A13090 | 25d | 7d | jungle | 01 | 107 | 05 |  |
| A12920 |  | External plastering | 8d | 2010-11-30 | 2010-12-08 | A13050 | 17d | 0d |  | 01 | 107 | 05 |  |
| A13070 |  | Internal plastering for roof floor | 5d | 2010-12-02 | 2010-12-07 | A13060, A13100 | 18d | 1d | jungle | 01 | 107 | 05 |  |

| ID | WBS | Activity | Type | Duration | Start | Finish | Predecessors | Total float | Free float | Calendar | zone number | villa number | Work Category | concrete type |
| --- | --- | --- | --- | --- | --- | --- | --- | --- | --- | --- | --- | --- | --- | --- |
|  | villa 52 | **Villa Number E08** |  |  | 2010-06-21 | 2010-12-14 |  |  |  |  |  |  |  |  |
|  | 1 | **general dates** |  |  | 2010-06-21 | 2010-12-14 |  |  |  |  |  |  |  |  |
| A16960 |  | IFC drawings | milestone | 0d | 2010-06-21 | 2010-06-21 |  | 12d | 0d |  | 03 | 52 | 01 |  |
| A16940 |  | Start Villa construction | milestone | 0d | 2010-08-14 | 2010-08-14 | A16960 FS+46d | 12d | 0d |  | 03 | 52 | 07 |  |
| A17010 |  | Fence Drawings IFC |  | 1d | 2010-08-14 | 2010-08-14 | A16940 | 53d | 39d |  | 03 | 52 | 01 |  |
| A16950 |  | finish Villa construction | milestone | 0d | 2010-12-14 | 2010-12-14 | A16920, A17070, A17000 | 12d |  |  | 03 | 52 | 08 |  |
|  | 2 | **earth works** |  |  | 2010-08-14 | 2010-08-29 |  |  |  |  |  |  |  |  |
| A16710 |  | excavation |  | 2d | 2010-08-14 | 2010-08-15 | A16940 | 12d | 0d |  | 03 | 52 | 02 |  |
| A16720 |  | soil replacement |  | 12d | 2010-08-16 | 2010-08-29 | A16710 | 12d | 0d |  | 03 | 52 | 02 |  |
|  | 3 | **foundation level** |  |  | 2010-08-30 | 2010-11-02 |  |  |  |  |  |  |  |  |
| A16730 |  | Plain Concrete Foundation |  | 2d | 2010-08-30 | 2010-08-31 | A16720 | 12d | 0d |  | 03 | 52 | 03 | 01 |
| A17020 |  | backfilling between P.C Foundation |  | 2d | 2010-09-02 | 2010-09-04 | A16730 FS+1d | 8d | 0d | jungle | 03 | 52 | 02 |  |
| A16740 |  | Reinforced Concrete Foundation |  | 7d | 2010-09-05 | 2010-09-12 | A17020 | 12d | 0d |  | 03 | 52 | 03 | 02 |
| A16750 |  | under ground brick works |  | 2d | 2010-09-20 | 2010-09-21 | A16810 | 12d | 0d |  | 03 | 52 | 09 |  |
| A16760 |  | under ground insulation for RC & Brick work |  | 2d | 2010-09-22 | 2010-09-23 | A16750 | 12d | 0d |  | 03 | 52 | 10 |  |
| A16770 |  | backfilling for under ground |  | 4d | 2010-09-25 | 2010-09-28 | A16760 | 12d | 0d |  | 03 | 52 | 02 |  |
| A16780 |  | P.C slab on grade 10CM |  | 1d | 2010-10-28 | 2010-10-28 | A16930, A16870 | 20d | 0d |  | 03 | 52 | 03 | 03 |
| A16790 |  | moisture insulation with membrane sheets |  | 2d | 2010-10-30 | 2010-10-31 | A16780 | 20d | 0d |  | 03 | 52 | 10 |  |
| A16800 |  | R.C slab on grade |  | 2d | 2010-11-01 | 2010-11-02 | A16790 | 20d | 0d |  | 03 | 52 | 03 | 03 |
|  | 4 | **skeleton & brick walls** |  |  | 2010-09-13 | 2010-12-12 |  |  |  |  |  |  |  |  |
| A16810 |  | columns for ground floor |  | 6d | 2010-09-13 | 2010-09-19 | A16740 | 12d | 0d |  | 03 | 52 | 03 | 04 |
| A16820 |  | slab for ground floor |  | 9d | 2010-09-29 | 2010-10-09 | A16810, A16770 | 12d | 0d |  | 03 | 52 | 03 | 05 |
| A16970 |  | pouring for ground floor's slab |  | 1d | 2010-10-10 | 2010-10-10 | A16820, A16880 FF+3d | 12d | 0d |  | 03 | 52 | 03 |  |
| A16830 |  | columns for 1st floor |  | 6d | 2010-10-11 | 2010-10-17 | A16970 | 12d | 0d |  | 03 | 52 | 03 | 04 |
| A17000 |  | Fence work |  | 50d | 2010-10-11 | 2010-12-12 | A16970, A17010 FS+10d | 14d | 2d |  | 03 | 52 | 06 |  |
| A16840 |  | slab for 1st floor |  | 9d | 2010-10-18 | 2010-10-27 | A16830 | 12d | 0d |  | 03 | 52 | 03 | 05 |
| A16870 |  | Brick works for ground floor |  | 5d | 2010-10-23 | 2010-10-27 | A16970 FS+10d | 20d | 0d |  | 03 | 52 | 09 |  |
| A16980 |  | pouring for 1st floor's slab |  | 1d | 2010-10-28 | 2010-10-28 | A16840, A16890 FF+3d | 12d | 0d |  | 03 | 52 | 03 |  |
| A16850 |  | columns for roof floor |  | 4d | 2010-11-01 | 2010-11-04 | A16980 FS+2d | 12d | 0d |  | 03 | 52 | 03 | 04 |
| A16860 |  | slab for roof floor |  | 6d | 2010-11-06 | 2010-11-11 | A16850 | 12d | 0d |  | 03 | 52 | 03 | 05 |
| A17040 |  | Brick works for 1st floor |  | 5d | 2010-11-10 | 2010-11-15 | A16980 FS+10d | 22d | 0d | jungle | 03 | 52 | 09 |  |
| A16990 |  | pouring for roof floor's slab |  | 1d | 2010-11-13 | 2010-11-13 | A16860, A16900 FF+2d | 12d | 0d |  | 03 | 52 | 03 |  |
| A17050 |  | Brick works for roof floor |  | 5d | 2010-11-28 | 2010-12-02 | A16990 FS+8d | 12d | 0d | jungle | 03 | 52 | 09 |  |

| ID | WBS | Activity | Type | Duration | Start | Finish | Predecessors | Total float | Free float | Calendar | zone number | villa number | Work Category | concrete type |
| --- | --- | --- | --- | --- | --- | --- | --- | --- | --- | --- | --- | --- | --- | --- |
|  | 5 | **electro mechanical** |  |  | 2010-09-29 | 2010-12-05 |  |  |  |  |  |  |  |  |
| A16930 |  | plumbing connections under slab on grade |  | 2d | 2010-09-29 | 2010-09-30 | A16770 | 43d | 23d |  | 03 | 52 | 04 |  |
| A16880 |  | electrical conduits for ground floor's slab |  | 2d | 2010-10-04 | 2010-10-05 | A16820 SS+4d | 13d | 1d |  | 03 | 52 | 04 |  |
| A16890 |  | electrical conduits for 1st floor slab |  | 2d | 2010-10-23 | 2010-10-24 | A16840 SS+4d | 13d | 1d |  | 03 | 52 | 04 |  |
| A17080 |  | electrical conduits for ground floor walls |  | 2d | 2010-11-04 | 2010-11-06 | A16800 FS+1d | 24d | 0d | jungle | 03 | 52 | 04 |  |
| A16900 |  | electrical conduits for roof slab |  | 1d | 2010-11-09 | 2010-11-09 | A16860 SS+3d | 13d | 1d |  | 03 | 52 | 04 |  |
| A17090 |  | electrical conduits for 1st floor walls |  | 2d | 2010-11-16 | 2010-11-17 | A17040 | 22d | 2d | jungle | 03 | 52 | 04 |  |
| A17100 |  | electrical conduits for roof floor walls |  | 2d | 2010-12-04 | 2010-12-05 | A17050 | 15d | 0d | jungle | 03 | 52 | 04 |  |
|  | 6 | **finishing** |  |  | 2010-11-07 | 2010-12-14 |  |  |  |  |  |  |  |  |
| A16910 |  | Internal plastering for ground floor |  | 8d | 2010-11-07 | 2010-11-20 | A17080 | 20d | 0d |  | 03 | 52 | 05 |  |
| A17060 |  | Internal plastering for 1st floor |  | 8d | 2010-11-21 | 2010-11-29 | A16910, A17090 | 20d | 5d | jungle | 03 | 52 | 05 |  |
| A16920 |  | External plastering |  | 10d | 2010-12-04 | 2010-12-14 | A17050 | 12d | 0d |  | 03 | 52 | 05 |  |
| A17070 |  | Internal plastering for roof floor |  | 5d | 2010-12-06 | 2010-12-11 | A17060, A17100 | 15d | 3d | jungle | 03 | 52 | 05 |  |
|  | villa 111 | **Villa Number B106** |  |  | 2010-06-21 | 2010-12-13 |  |  |  |  |  |  |  |  |
|  | 1 | **general dates** |  |  | 2010-06-21 | 2010-12-13 |  |  |  |  |  |  |  |  |
| A18560 |  | IFC drawings | milestone | 0d | 2010-06-21 | 2010-06-21 |  | 13d | 0d |  | 03 | 111 | 01 |  |
| A18540 |  | Start Villa construction | milestone | 0d | 2010-08-12 | 2010-08-12 | A18560 FS+45d | 13d | 0d |  | 03 | 111 | 07 |  |
| A18610 |  | Fence Drawings IFC |  | 1d | 2010-08-12 | 2010-08-12 | A18540 | 54d | 39d |  | 03 | 111 | 01 |  |
| A18550 |  | finish Villa construction | milestone | 0d | 2010-12-13 | 2010-12-13 | A18520, A18670, A18600 | 13d |  |  | 03 | 111 | 08 |  |
|  | 2 | **earth works** |  |  | 2010-08-12 | 2010-08-28 |  |  |  |  |  |  |  |  |
| A18310 |  | excavation |  | 2d | 2010-08-12 | 2010-08-14 | A18540 | 13d | 0d |  | 03 | 111 | 02 |  |
| A18320 |  | soil replacement |  | 12d | 2010-08-15 | 2010-08-28 | A18310 | 13d | 0d |  | 03 | 111 | 02 |  |
|  | 3 | **foundation level** |  |  | 2010-08-29 | 2010-11-01 |  |  |  |  |  |  |  |  |
| A18330 |  | Plain Concrete Foundation |  | 2d | 2010-08-29 | 2010-08-30 | A18320 | 13d | 0d |  | 03 | 111 | 03 | 01 |
| A18620 |  | backfilling between P.C Foundation |  | 2d | 2010-09-01 | 2010-09-02 | A18330 FS+1d | 9d | 0d | jungle | 03 | 111 | 02 |  |
| A18340 |  | Reinforced Concrete Foundation |  | 7d | 2010-09-04 | 2010-09-11 | A18620 | 13d | 0d |  | 03 | 111 | 03 | 02 |
| A18350 |  | under ground brick works |  | 2d | 2010-09-19 | 2010-09-20 | A18410 | 13d | 0d |  | 03 | 111 | 09 |  |
| A18360 |  | under ground insulation for RC & Brick work |  | 2d | 2010-09-21 | 2010-09-22 | A18350 | 13d | 0d |  | 03 | 111 | 10 |  |
| A18370 |  | backfilling for under ground |  | 4d | 2010-09-23 | 2010-09-27 | A18360 | 13d | 0d |  | 03 | 111 | 02 |  |
| A18380 |  | P.C slab on grade 10CM |  | 1d | 2010-10-27 | 2010-10-27 | A18530, A18470 | 21d | 0d |  | 03 | 111 | 03 | 03 |
| A18390 |  | moisture insulation with membrane sheets |  | 2d | 2010-10-28 | 2010-10-30 | A18380 | 21d | 0d |  | 03 | 111 | 10 |  |
| A18400 |  | R.C slab on grade |  | 2d | 2010-10-31 | 2010-11-01 | A18390 | 21d | 0d |  | 03 | 111 | 03 | 03 |

| ID | WBS | Activity | Duration | Start | Finish | Predecessors | Total float | Free float | Calendar | zone number | villa number | Work Category | concrete type |
| --- | --- | --- | --- | --- | --- | --- | --- | --- | --- | --- | --- | --- | --- |
|  | 4 | **skeleton & brick walls** |  | 2010-09-12 | 2010-12-11 |  |  |  |  |  |  |  |  |
| A18410 |  | columns for ground floor | 6d | 2010-09-12 | 2010-09-18 | A18340 | 13d | 0d |  | 03 | 111 | 03 | 04 |
| A18420 |  | slab for ground floor | 9d | 2010-09-28 | 2010-10-07 | A18410, A18370 | 13d | 0d |  | 03 | 111 | 03 | 05 |
| A18570 |  | pouring for ground floor's slab | 1d | 2010-10-09 | 2010-10-09 | A18420, A18480 FF+3d | 13d | 0d |  | 03 | 111 | 03 |  |
| A18430 |  | columns for 1st floor | 6d | 2010-10-10 | 2010-10-16 | A18570 | 13d | 0d |  | 03 | 111 | 03 | 04 |
| A18600 |  | Fence work | 50d | 2010-10-10 | 2010-12-11 | A18570, A18610 FS+10d | 15d | 2d |  | 03 | 111 | 06 |  |
| A18440 |  | slab for 1st floor | 9d | 2010-10-17 | 2010-10-26 | A18430 | 13d | 0d |  | 03 | 111 | 03 | 05 |
| A18470 |  | Brick works for ground floor | 5d | 2010-10-21 | 2010-10-26 | A18570 FS+10d | 21d | 0d |  | 03 | 111 | 09 |  |
| A18580 |  | pouring for 1st floor's slab | 1d | 2010-10-27 | 2010-10-27 | A18440, A18490 FF+3d | 13d | 0d |  | 03 | 111 | 03 |  |
| A18450 |  | columns for roof floor | 4d | 2010-10-31 | 2010-11-03 | A18580 FS+2d | 13d | 0d |  | 03 | 111 | 03 | 04 |
| A18460 |  | slab for roof floor | 6d | 2010-11-04 | 2010-11-10 | A18450 | 13d | 0d |  | 03 | 111 | 03 | 05 |
| A18640 |  | Brick works for 1st floor | 5d | 2010-11-09 | 2010-11-14 | A18580 FS+10d | 23d | 0d | jungle | 03 | 111 | 09 |  |
| A18590 |  | pouring for roof floor's slab | 1d | 2010-11-11 | 2010-11-11 | A18460, A18500 FF+2d | 13d | 0d |  | 03 | 111 | 03 |  |
| A18650 |  | Brick works for roof floor | 5d | 2010-11-27 | 2010-12-01 | A18590 FS+8d | 13d | 0d | jungle | 03 | 111 | 09 |  |
|  | 5 | **electro mechanical** |  | 2010-09-28 | 2010-12-04 |  |  |  |  |  |  |  |  |
| A18530 |  | plumbing connections under slab on grade | 2d | 2010-09-28 | 2010-09-29 | A18370 | 44d | 23d |  | 03 | 111 | 04 |  |
| A18480 |  | electrical conduits for ground floor's slab | 2d | 2010-10-03 | 2010-10-04 | A18420 SS+4d | 14d | 1d |  | 03 | 111 | 04 |  |
| A18490 |  | electrical conduits for 1st floor slab | 2d | 2010-10-21 | 2010-10-23 | A18440 SS+4d | 14d | 1d |  | 03 | 111 | 04 |  |
| A18680 |  | electrical conduits for ground floor walls | 2d | 2010-11-03 | 2010-11-04 | A18400 FS+1d | 25d | 0d | jungle | 03 | 111 | 04 |  |
| A18500 |  | electrical conduits for roof slab | 1d | 2010-11-08 | 2010-11-08 | A18460 SS+3d | 14d | 1d |  | 03 | 111 | 04 |  |
| A18690 |  | electrical conduits for 1st floor walls | 2d | 2010-11-15 | 2010-11-16 | A18640 | 23d | 0d | jungle | 03 | 111 | 04 |  |
| A18700 |  | electrical conduits for roof floor walls | 2d | 2010-12-02 | 2010-12-04 | A18650 | 16d | 0d | jungle | 03 | 111 | 04 |  |
|  | 6 | **finishing** |  | 2010-11-06 | 2010-12-13 |  |  |  |  |  |  |  |  |
| A18510 |  | Internal plastering for ground floor | 8d | 2010-11-06 | 2010-11-14 | A18680 | 21d | 0d |  | 03 | 111 | 05 |  |
| A18660 |  | Internal plastering for 1st floor | 8d | 2010-11-17 | 2010-11-25 | A18510, A18690 | 23d | 7d | jungle | 03 | 111 | 05 |  |
| A18520 |  | External plastering | 10d | 2010-12-02 | 2010-12-13 | A18650 | 13d | 0d |  | 03 | 111 | 05 |  |
| A18670 |  | Internal plastering for roof floor | 5d | 2010-12-05 | 2010-12-09 | A18660, A18700 | 16d | 3d | jungle | 03 | 111 | 05 |  |

| ID | WBS | Activity | Type | Duration | Start | Finish | Predecessors | Total float | Free float | Calendar | zone number | villa number | Work Category | concrete type |
| --- | --- | --- | --- | --- | --- | --- | --- | --- | --- | --- | --- | --- | --- | --- |
|  | villa 112 | **Villa Number B105** |  |  | 2010-06-21 | 2010-12-13 |  |  |  |  |  |  |  |  |
|  | 1 | **general dates** |  |  | 2010-06-21 | 2010-12-13 |  |  |  |  |  |  |  |  |
| A18960 |  | IFC drawings | milestone | 0d | 2010-06-21 | 2010-06-21 |  | 13d | 0d |  | 03 | 112 | 01 |  |
| A18940 |  | Start Villa construction | milestone | 0d | 2010-08-12 | 2010-08-12 | A18960 FS+45d | 13d | 0d |  | 03 | 112 | 07 |  |
| A19010 |  | Fence Drawings IFC |  | 1d | 2010-08-12 | 2010-08-12 | A18940 | 54d | 39d |  | 03 | 112 | 01 |  |
| A18950 |  | finish Villa construction | milestone | 0d | 2010-12-13 | 2010-12-13 | A18920, A19070, A19000 | 13d |  |  | 03 | 112 | 08 |  |
|  | 2 | **earth works** |  |  | 2010-08-12 | 2010-08-28 |  |  |  |  |  |  |  |  |
| A18710 |  | excavation |  | 2d | 2010-08-12 | 2010-08-14 | A18940 | 13d | 0d |  | 03 | 112 | 02 |  |
| A18720 |  | soil replacement |  | 12d | 2010-08-15 | 2010-08-28 | A18710 | 13d | 0d |  | 03 | 112 | 02 |  |
|  | 3 | **foundation level** |  |  | 2010-08-29 | 2010-11-01 |  |  |  |  |  |  |  |  |
| A18730 |  | Plain Concrete Foundation |  | 2d | 2010-08-29 | 2010-08-30 | A18720 | 13d | 0d |  | 03 | 112 | 03 | 01 |
| A19020 |  | backfilling between P.C Foundation |  | 2d | 2010-09-01 | 2010-09-02 | A18730 FS+1d | 9d | 0d | jungle | 03 | 112 | 02 |  |
| A18740 |  | Reinforced Concrete Foundation |  | 7d | 2010-09-04 | 2010-09-11 | A19020 | 13d | 0d |  | 03 | 112 | 03 | 02 |
| A18750 |  | under ground brick works |  | 2d | 2010-09-19 | 2010-09-20 | A18810 | 13d | 0d |  | 03 | 112 | 09 |  |
| A18760 |  | under ground insulation for RC & Brick work |  | 2d | 2010-09-21 | 2010-09-22 | A18750 | 13d | 0d |  | 03 | 112 | 10 |  |
| A18770 |  | backfilling for under ground |  | 4d | 2010-09-23 | 2010-09-27 | A18760 | 13d | 0d |  | 03 | 112 | 02 |  |
| A18780 |  | P.C slab on grade 10CM |  | 1d | 2010-10-27 | 2010-10-27 | A18930, A18870 | 21d | 0d |  | 03 | 112 | 03 | 03 |
| A18790 |  | moisture insulation with membrane sheets |  | 2d | 2010-10-28 | 2010-10-30 | A18780 | 21d | 0d |  | 03 | 112 | 10 |  |
| A18800 |  | R.C slab on grade |  | 2d | 2010-10-31 | 2010-11-01 | A18790 | 21d | 0d |  | 03 | 112 | 03 | 03 |
|  | 4 | **skeleton & brick walls** |  |  | 2010-09-12 | 2010-12-11 |  |  |  |  |  |  |  |  |
| A18810 |  | columns for ground floor |  | 6d | 2010-09-12 | 2010-09-18 | A18740 | 13d | 0d |  | 03 | 112 | 03 | 04 |
| A18820 |  | slab for ground floor |  | 9d | 2010-09-28 | 2010-10-07 | A18810, A18770 | 13d | 0d |  | 03 | 112 | 03 | 05 |
| A18970 |  | pouring for ground floor's slab |  | 1d | 2010-10-09 | 2010-10-09 | A18820, A18880 FF+3d | 13d | 0d |  | 03 | 112 | 03 |  |
| A18830 |  | columns for 1st floor |  | 6d | 2010-10-10 | 2010-10-16 | A18970 | 13d | 0d |  | 03 | 112 | 03 | 04 |
| A19000 |  | Fence work |  | 50d | 2010-10-10 | 2010-12-11 | A18970, A19010 FS+10d | 15d | 2d |  | 03 | 112 | 06 |  |
| A18840 |  | slab for 1st floor |  | 9d | 2010-10-17 | 2010-10-26 | A18830 | 13d | 0d |  | 03 | 112 | 03 | 05 |
| A18870 |  | Brick works for ground floor |  | 5d | 2010-10-21 | 2010-10-26 | A18970 FS+10d | 21d | 0d |  | 03 | 112 | 09 |  |
| A18980 |  | pouring for 1st floor's slab |  | 1d | 2010-10-27 | 2010-10-27 | A18840, A18890 FF+3d | 13d | 0d |  | 03 | 112 | 03 |  |
| A18850 |  | columns for roof floor |  | 4d | 2010-10-31 | 2010-11-03 | A18980 FS+2d | 13d | 0d |  | 03 | 112 | 03 | 04 |
| A18860 |  | slab for roof floor |  | 6d | 2010-11-04 | 2010-11-10 | A18850 | 13d | 0d |  | 03 | 112 | 03 | 05 |
| A19040 |  | Brick works for 1st floor |  | 5d | 2010-11-09 | 2010-11-14 | A18980 FS+10d | 23d | 0d | jungle | 03 | 112 | 09 |  |
| A18990 |  | pouring for roof floor's slab |  | 1d | 2010-11-11 | 2010-11-11 | A18860, A18900 FF+2d | 13d | 0d |  | 03 | 112 | 03 |  |
| A19050 |  | Brick works for roof floor |  | 5d | 2010-11-27 | 2010-12-01 | A18990 FS+8d | 13d | 0d | jungle | 03 | 112 | 09 |  |

| ID | WBS | Activity | Type | Duration | Start | Finish | Predecessors | Total float | Free float | Calendar | zone number | villa number | Work Category | concrete type |
| --- | --- | --- | --- | --- | --- | --- | --- | --- | --- | --- | --- | --- | --- | --- |
|  | 5 | **electro mechanical** |  |  | 2010-09-28 | 2010-12-04 |  |  |  |  |  |  |  |  |
| A18930 |  | plumbing connections under slab on grade |  | 2d | 2010-09-28 | 2010-09-29 | A18770 | 44d | 23d |  | 03 | 112 | 04 |  |
| A18880 |  | electrical conduits for ground floor's slab |  | 2d | 2010-10-03 | 2010-10-04 | A18820 SS+4d | 14d | 1d |  | 03 | 112 | 04 |  |
| A18890 |  | electrical conduits for 1st floor slab |  | 2d | 2010-10-21 | 2010-10-23 | A18840 SS+4d | 14d | 1d |  | 03 | 112 | 04 |  |
| A19080 |  | electrical conduits for ground floor walls |  | 2d | 2010-11-03 | 2010-11-04 | A18800 FS+1d | 25d | 0d | jungle | 03 | 112 | 04 |  |
| A18900 |  | electrical conduits for roof slab |  | 1d | 2010-11-08 | 2010-11-08 | A18860 SS+3d | 14d | 1d |  | 03 | 112 | 04 |  |
| A19090 |  | electrical conduits for 1st floor walls |  | 2d | 2010-11-15 | 2010-11-16 | A19040 | 23d | 0d | jungle | 03 | 112 | 04 |  |
| A19100 |  | electrical conduits for roof floor walls |  | 2d | 2010-12-02 | 2010-12-04 | A19050 | 16d | 0d | jungle | 03 | 112 | 04 |  |
|  | 6 | **finishing** |  |  | 2010-11-06 | 2010-12-13 |  |  |  |  |  |  |  |  |
| A18910 |  | Internal plastering for ground floor |  | 8d | 2010-11-06 | 2010-11-14 | A19080 | 21d | 0d |  | 03 | 112 | 05 |  |
| A19060 |  | Internal plastering for 1st floor |  | 8d | 2010-11-17 | 2010-11-25 | A18910, A19090 | 23d | 7d | jungle | 03 | 112 | 05 |  |
| A18920 |  | External plastering |  | 10d | 2010-12-02 | 2010-12-13 | A19050 | 13d | 0d |  | 03 | 112 | 05 |  |
| A19070 |  | Internal plastering for roof floor |  | 5d | 2010-12-05 | 2010-12-09 | A19060, A19100 | 16d | 3d | jungle | 03 | 112 | 05 |  |
|  | ] | **Zone.No 4 (Hold)** |  |  | 2010-06-21 | 2010-12-28 |  |  |  |  |  |  |  |  |
|  | villa 55 | **Villa Number A55** |  |  | 2010-06-21 | 2010-12-28 |  |  |  |  |  |  |  |  |
|  | 1 | **general dates** |  |  | 2010-06-21 | 2010-12-28 |  |  |  |  |  |  |  |  |
| A17360 |  | IFC drawings | milestone | 0d | 2010-06-21 | 2010-06-21 |  | 0d |  |  | 03 | 55 | 01 |  |
| A17340 |  | Start Villa construction | milestone | 0d | 2010-08-18 | 2010-08-18 | A17360 FS+50d | 0d |  |  | 03 | 55 | 07 |  |
| A17410 |  | Fence Drawings IFC |  | 1d | 2010-08-18 | 2010-08-18 | A17340 | 49d | 47d |  | 03 | 55 | 01 |  |
| A17350 |  | finish Villa construction | milestone | 0d | 2010-12-28 | 2010-12-28 | A17320, A17470, A17400 | 0d |  |  | 03 | 55 | 08 |  |
|  | 2 | **earth works** |  |  | 2010-08-18 | 2010-09-12 |  |  |  |  |  |  |  |  |
| A17110 |  | excavation |  | 10d | 2010-08-18 | 2010-08-29 | A17340 | 0d |  |  | 03 | 55 | 02 |  |
| A17120 |  | soil replacement |  | 12d | 2010-08-30 | 2010-09-12 | A17110 | 0d |  |  | 03 | 55 | 02 |  |
|  | 3 | **foundation level** |  |  | 2010-09-13 | 2010-11-21 |  |  |  |  |  |  |  |  |
| A17130 |  | Plain Concrete Foundation |  | 2d | 2010-09-13 | 2010-09-14 | A17120 | 0d |  |  | 03 | 55 | 03 | 01 |
| A17420 |  | backfilling between P.C Foundation |  | 2d | 2010-09-16 | 2010-09-18 | A17130 FS+1d | 0d |  | jungle | 03 | 55 | 02 |  |
| A17140 |  | Reinforced Concrete Foundation |  | 7d | 2010-09-19 | 2010-09-26 | A17420 | 0d |  |  | 03 | 55 | 03 | 02 |
| A17150 |  | under ground brick works |  | 2d | 2010-10-04 | 2010-10-05 | A17210 | 0d |  |  | 03 | 55 | 09 |  |
| A17160 |  | under ground insulation for RC & Brick work |  | 2d | 2010-10-06 | 2010-10-07 | A17150 | 0d |  |  | 03 | 55 | 10 |  |
| A17170 |  | backfilling for under ground |  | 4d | 2010-10-09 | 2010-10-12 | A17160 | 0d |  |  | 03 | 55 | 02 |  |
| A17180 |  | P.C slab on grade 10CM |  | 1d | 2010-11-11 | 2010-11-11 | A17330, A17270 | 8d | 0d |  | 03 | 55 | 03 | 03 |
| A17190 |  | moisture insulation with membrane sheets |  | 2d | 2010-11-13 | 2010-11-14 | A17180 | 8d | 0d |  | 03 | 55 | 10 |  |
| A17200 |  | R.C slab on grade |  | 2d | 2010-11-20 | 2010-11-21 | A17190 | 8d | 0d |  | 03 | 55 | 03 | 03 |

| ID | WBS | Activity | Duration | Start | Finish | Predecessors | Total float | Free float | Calendar | zone number | villa number | Work Category | concrete type |
| --- | --- | --- | --- | --- | --- | --- | --- | --- | --- | --- | --- | --- | --- |
|  | 4 | **skeleton & brick walls** |  | 2010-09-27 | 2010-12-26 |  |  |  |  |  |  |  |  |
| A17210 |  | columns for ground floor | 6d | 2010-09-27 | 2010-10-03 | A17140 | 0d |  |  | 03 | 55 | 03 | 04 |
| A17220 |  | slab for ground floor | 9d | 2010-10-13 | 2010-10-23 | A17210, A17170 | 0d |  |  | 03 | 55 | 03 | 05 |
| A17370 |  | pouring for ground floor's slab | 1d | 2010-10-24 | 2010-10-24 | A17220, A17280 FF+3d | 0d |  |  | 03 | 55 | 03 |  |
| A17230 |  | columns for 1st floor | 6d | 2010-10-25 | 2010-10-31 | A17370 | 0d |  |  | 03 | 55 | 03 | 04 |
| A17400 |  | Fence work | 50d | 2010-10-25 | 2010-12-26 | A17370, A17410 FS+10d | 2d |  |  | 03 | 55 | 06 |  |
| A17240 |  | slab for 1st floor | 9d | 2010-11-01 | 2010-11-10 | A17230 | 0d |  |  | 03 | 55 | 03 | 05 |
| A17270 |  | Brick works for ground floor | 5d | 2010-11-06 | 2010-11-10 | A17370 FS+10d | 8d | 0d |  | 03 | 55 | 09 |  |
| A17380 |  | pouring for 1st floor's slab | 1d | 2010-11-11 | 2010-11-11 | A17240, A17290 FF+3d | 0d |  |  | 03 | 55 | 03 |  |
| A17250 |  | columns for roof floor | 4d | 2010-11-20 | 2010-11-23 | A17380 FS+2d | 0d |  |  | 03 | 55 | 03 | 04 |
| A17260 |  | slab for roof floor | 6d | 2010-11-24 | 2010-11-30 | A17250 | 0d |  |  | 03 | 55 | 03 | 05 |
| A17440 |  | Brick works for 1st floor | 5d | 2010-11-29 | 2010-12-04 | A17380 FS+10d | 6d | 0d | jungle | 03 | 55 | 09 |  |
| A17390 |  | pouring for roof floor's slab | 1d | 2010-12-01 | 2010-12-01 | A17260, A17300 FF+2d | 0d |  |  | 03 | 55 | 03 |  |
| A17450 |  | Brick works for roof floor | 5d | 2010-12-12 | 2010-12-16 | A17390 FS+8d | 0d |  | jungle | 03 | 55 | 09 |  |
|  | 5 | **electro mechanical** |  | 2010-10-13 | 2010-12-19 |  |  |  |  |  |  |  |  |
| A17330 |  | plumbing connections under slab on grade | 2d | 2010-10-13 | 2010-10-14 | A17170 | 31d | 23d |  | 03 | 55 | 04 |  |
| A17280 |  | electrical conduits for ground floor's slab | 2d | 2010-10-18 | 2010-10-19 | A17220 SS+4d | 1d |  |  | 03 | 55 | 04 |  |
| A17290 |  | electrical conduits for 1st floor slab | 2d | 2010-11-06 | 2010-11-07 | A17240 SS+4d | 1d |  |  | 03 | 55 | 04 |  |
| A17480 |  | electrical conduits for ground floor walls | 2d | 2010-11-23 | 2010-11-24 | A17200 FS+1d | 8d | 0d | jungle | 03 | 55 | 04 |  |
| A17300 |  | electrical conduits for roof slab | 1d | 2010-11-28 | 2010-11-28 | A17260 SS+3d | 1d |  |  | 03 | 55 | 04 |  |
| A17490 |  | electrical conduits for 1st floor walls | 2d | 2010-12-05 | 2010-12-06 | A17440 | 6d | 0d | jungle | 03 | 55 | 04 |  |
| A17500 |  | electrical conduits for roof floor walls | 2d | 2010-12-18 | 2010-12-19 | A17450 | 3d | 0d | jungle | 03 | 55 | 04 |  |
|  | 6 | **finishing** |  | 2010-11-25 | 2010-12-28 |  |  |  |  |  |  |  |  |
| A17310 |  | Internal plastering for ground floor | 8d | 2010-11-25 | 2010-12-04 | A17480 | 8d | 2d |  | 03 | 55 | 05 |  |
| A17460 |  | Internal plastering for 1st floor | 8d | 2010-12-07 | 2010-12-15 | A17310, A17490 | 6d | 3d | jungle | 03 | 55 | 05 |  |
| A17320 |  | External plastering | 10d | 2010-12-18 | 2010-12-28 | A17450 | 0d |  |  | 03 | 55 | 05 |  |
| A17470 |  | Internal plastering for roof floor | 5d | 2010-12-20 | 2010-12-25 | A17460, A17500 | 3d |  | jungle | 03 | 55 | 05 |  |

| ID | WBS | Activity | Type | Duration | Start | Finish | Predecessors | Total float | Free float | Calendar | zone number | villa number | Work Category | concrete type |
| --- | --- | --- | --- | --- | --- | --- | --- | --- | --- | --- | --- | --- | --- | --- |
|  | villa 86 | **Villa Number A86** |  |  | 2010-06-21 | 2010-12-28 |  |  |  |  |  |  |  |  |
|  | 1 | **general dates** |  |  | 2010-06-21 | 2010-12-28 |  |  |  |  |  |  |  |  |
| A17760 |  | IFC drawings | milestone | 0d | 2010-06-21 | 2010-06-21 |  | 0d |  |  | 03 | 86 | 01 |  |
| A17740 |  | Start Villa construction | milestone | 0d | 2010-08-18 | 2010-08-18 | A17760 FS+50d | 0d |  |  | 03 | 86 | 07 |  |
| A17810 |  | Fence Drawings IFC |  | 1d | 2010-08-18 | 2010-08-18 | A17740 | 49d | 47d |  | 03 | 86 | 01 |  |
| A17750 |  | finish Villa construction | milestone | 0d | 2010-12-28 | 2010-12-28 | A17720, A17870, A17800 | 0d |  |  | 03 | 86 | 08 |  |
|  | 2 | **earth works** |  |  | 2010-08-18 | 2010-09-12 |  |  |  |  |  |  |  |  |
| A17510 |  | excavation |  | 10d | 2010-08-18 | 2010-08-29 | A17740 | 0d |  |  | 03 | 86 | 02 |  |
| A17520 |  | soil replacement |  | 12d | 2010-08-30 | 2010-09-12 | A17510 | 0d |  |  | 03 | 86 | 02 |  |
|  | 3 | **foundation level** |  |  | 2010-09-13 | 2010-11-21 |  |  |  |  |  |  |  |  |
| A17530 |  | Plain Concrete Foundation |  | 2d | 2010-09-13 | 2010-09-14 | A17520 | 0d |  |  | 03 | 86 | 03 | 01 |
| A17820 |  | backfilling between P.C Foundation |  | 2d | 2010-09-16 | 2010-09-18 | A17530 FS+1d | 0d |  | jungle | 03 | 86 | 02 |  |
| A17540 |  | Reinforced Concrete Foundation |  | 7d | 2010-09-19 | 2010-09-26 | A17820 | 0d |  |  | 03 | 86 | 03 | 02 |
| A17550 |  | under ground brick works |  | 2d | 2010-10-04 | 2010-10-05 | A17610 | 0d |  |  | 03 | 86 | 09 |  |
| A17560 |  | under ground insulation for RC & Brick work |  | 2d | 2010-10-06 | 2010-10-07 | A17550 | 0d |  |  | 03 | 86 | 10 |  |
| A17570 |  | backfilling for under ground |  | 4d | 2010-10-09 | 2010-10-12 | A17560 | 0d |  |  | 03 | 86 | 02 |  |
| A17580 |  | P.C slab on grade 10CM |  | 1d | 2010-11-11 | 2010-11-11 | A17730, A17670 | 8d | 0d |  | 03 | 86 | 03 | 03 |
| A17590 |  | moisture insulation with membrane sheets |  | 2d | 2010-11-13 | 2010-11-14 | A17580 | 8d | 0d |  | 03 | 86 | 10 |  |
| A17600 |  | R.C slab on grade |  | 2d | 2010-11-20 | 2010-11-21 | A17590 | 8d | 0d |  | 03 | 86 | 03 | 03 |
|  | 4 | **skeleton & brick walls** |  |  | 2010-09-27 | 2010-12-26 |  |  |  |  |  |  |  |  |
| A17610 |  | columns for ground floor |  | 6d | 2010-09-27 | 2010-10-03 | A17540 | 0d |  |  | 03 | 86 | 03 | 04 |
| A17620 |  | slab for ground floor |  | 9d | 2010-10-13 | 2010-10-23 | A17610, A17570 | 0d |  |  | 03 | 86 | 03 | 05 |
| A17770 |  | pouring for ground floor's slab |  | 1d | 2010-10-24 | 2010-10-24 | A17620, A17680 FF+3d | 0d |  |  | 03 | 86 | 03 |  |
| A17630 |  | columns for 1st floor |  | 6d | 2010-10-25 | 2010-10-31 | A17770 | 0d |  |  | 03 | 86 | 03 | 04 |
| A17800 |  | Fence work |  | 50d | 2010-10-25 | 2010-12-26 | A17770, A17810 FS+10d | 2d |  |  | 03 | 86 | 06 |  |
| A17640 |  | slab for 1st floor |  | 9d | 2010-11-01 | 2010-11-10 | A17630 | 0d |  |  | 03 | 86 | 03 | 05 |
| A17670 |  | Brick works for ground floor |  | 5d | 2010-11-06 | 2010-11-10 | A17770 FS+10d | 8d | 0d |  | 03 | 86 | 09 |  |
| A17780 |  | pouring for 1st floor's slab |  | 1d | 2010-11-11 | 2010-11-11 | A17640, A17690 FF+3d | 0d |  |  | 03 | 86 | 03 |  |
| A17650 |  | columns for roof floor |  | 4d | 2010-11-20 | 2010-11-23 | A17780 FS+2d | 0d |  |  | 03 | 86 | 03 | 04 |
| A17660 |  | slab for roof floor |  | 6d | 2010-11-24 | 2010-11-30 | A17650 | 0d |  |  | 03 | 86 | 03 | 05 |
| A17840 |  | Brick works for 1st floor |  | 5d | 2010-11-29 | 2010-12-04 | A17780 FS+10d | 6d | 0d | jungle | 03 | 86 | 09 |  |
| A17790 |  | pouring for roof floor's slab |  | 1d | 2010-12-01 | 2010-12-01 | A17660, A17700 FF+2d | 0d |  |  | 03 | 86 | 03 |  |
| A17850 |  | Brick works for roof floor |  | 5d | 2010-12-12 | 2010-12-16 | A17790 FS+8d | 0d |  | jungle | 03 | 86 | 09 |  |

| ID | WBS | Activity | Type | Duration | Start | Finish | Predecessors | Total float | Free float | Calendar | zone number | villa number | Work Category | concrete type |
| --- | --- | --- | --- | --- | --- | --- | --- | --- | --- | --- | --- | --- | --- | --- |
|  | 5 | **electro mechanical** |  |  | 2010-10-13 | 2010-12-19 |  |  |  |  |  |  |  |  |
| A17730 |  | plumbing connections under slab on grade |  | 2d | 2010-10-13 | 2010-10-14 | A17570 | 31d | 23d |  | 03 | 86 | 04 |  |
| A17680 |  | electrical conduits for ground floor's slab |  | 2d | 2010-10-18 | 2010-10-19 | A17620 SS+4d | 1d |  |  | 03 | 86 | 04 |  |
| A17690 |  | electrical conduits for 1st floor slab |  | 2d | 2010-11-06 | 2010-11-07 | A17640 SS+4d | 1d |  |  | 03 | 86 | 04 |  |
| A17880 |  | electrical conduits for ground floor walls |  | 2d | 2010-11-23 | 2010-11-24 | A17600 FS+1d | 8d | 0d | jungle | 03 | 86 | 04 |  |
| A17700 |  | electrical conduits for roof slab |  | 1d | 2010-11-28 | 2010-11-28 | A17660 SS+3d | 1d |  |  | 03 | 86 | 04 |  |
| A17890 |  | electrical conduits for 1st floor walls |  | 2d | 2010-12-05 | 2010-12-06 | A17840 | 6d | 0d | jungle | 03 | 86 | 04 |  |
| A17900 |  | electrical conduits for roof floor walls |  | 2d | 2010-12-18 | 2010-12-19 | A17850 | 3d | 0d | jungle | 03 | 86 | 04 |  |
|  | 6 | **finishing** |  |  | 2010-11-25 | 2010-12-28 |  |  |  |  |  |  |  |  |
| A17710 |  | Internal plastering for ground floor |  | 8d | 2010-11-25 | 2010-12-04 | A17880 | 8d | 2d |  | 03 | 86 | 05 |  |
| A17860 |  | Internal plastering for 1st floor |  | 8d | 2010-12-07 | 2010-12-15 | A17710, A17890 | 6d | 3d | jungle | 03 | 86 | 05 |  |
| A17720 |  | External plastering |  | 10d | 2010-12-18 | 2010-12-28 | A17850 | 0d |  |  | 03 | 86 | 05 |  |
| A17870 |  | Internal plastering for roof floor |  | 5d | 2010-12-20 | 2010-12-25 | A17860, A17900 | 3d |  | jungle | 03 | 86 | 05 |  |
|  | villa 87 | **Villa Number A87** |  |  | 2010-06-21 | 2010-12-28 |  |  |  |  |  |  |  |  |
|  | 1 | **general dates** |  |  | 2010-06-21 | 2010-12-28 |  |  |  |  |  |  |  |  |
| A18160 |  | IFC drawings | milestone | 0d | 2010-06-21 | 2010-06-21 |  | 0d |  |  | 03 | 87 | 01 |  |
| A18140 |  | Start Villa construction | milestone | 0d | 2010-08-18 | 2010-08-18 | A18160 FS+50d | 0d |  |  | 03 | 87 | 07 |  |
| A18210 |  | Fence Drawings IFC |  | 1d | 2010-08-18 | 2010-08-18 | A18140 | 49d | 47d |  | 03 | 87 | 01 |  |
| A18150 |  | finish Villa construction | milestone | 0d | 2010-12-28 | 2010-12-28 | A18120, A18270, A18200 | 0d |  |  | 03 | 87 | 08 |  |
|  | 2 | **earth works** |  |  | 2010-08-18 | 2010-09-12 |  |  |  |  |  |  |  |  |
| A17910 |  | excavation |  | 10d | 2010-08-18 | 2010-08-29 | A18140 | 0d |  |  | 03 | 87 | 02 |  |
| A17920 |  | soil replacement |  | 12d | 2010-08-30 | 2010-09-12 | A17910 | 0d |  |  | 03 | 87 | 02 |  |
|  | 3 | **foundation level** |  |  | 2010-09-13 | 2010-11-21 |  |  |  |  |  |  |  |  |
| A17930 |  | Plain Concrete Foundation |  | 2d | 2010-09-13 | 2010-09-14 | A17920 | 0d |  |  | 03 | 87 | 03 | 01 |
| A18220 |  | backfilling between P.C Foundation |  | 2d | 2010-09-16 | 2010-09-18 | A17930 FS+1d | 0d |  | jungle | 03 | 87 | 02 |  |
| A17940 |  | Reinforced Concrete Foundation |  | 7d | 2010-09-19 | 2010-09-26 | A18220 | 0d |  |  | 03 | 87 | 03 | 02 |
| A17950 |  | under ground brick works |  | 2d | 2010-10-04 | 2010-10-05 | A18010 | 0d |  |  | 03 | 87 | 09 |  |
| A17960 |  | under ground insulation for RC & Brick work |  | 2d | 2010-10-06 | 2010-10-07 | A17950 | 0d |  |  | 03 | 87 | 10 |  |
| A17970 |  | backfilling for under ground |  | 4d | 2010-10-09 | 2010-10-12 | A17960 | 0d |  |  | 03 | 87 | 02 |  |
| A17980 |  | P.C slab on grade 10CM |  | 1d | 2010-11-11 | 2010-11-11 | A18130, A18070 | 8d | 0d |  | 03 | 87 | 03 | 03 |
| A17990 |  | moisture insulation with membrane sheets |  | 2d | 2010-11-13 | 2010-11-14 | A17980 | 8d | 0d |  | 03 | 87 | 10 |  |
| A18000 |  | R.C slab on grade |  | 2d | 2010-11-20 | 2010-11-21 | A17990 | 8d | 0d |  | 03 | 87 | 03 | 03 |

| ID | WBS | Activity | Duration | Start | Finish | Predecessors | Total float | Free float | Calendar | zone number | villa number | Work Category | concrete type |
| --- | --- | --- | --- | --- | --- | --- | --- | --- | --- | --- | --- | --- | --- |
|  | 4 | **skeleton & brick walls** |  | 2010-09-27 | 2010-12-26 |  |  |  |  |  |  |  |  |
| A18010 |  | columns for ground floor | 6d | 2010-09-27 | 2010-10-03 | A17940 | 0d |  |  | 03 | 87 | 03 | 04 |
| A18020 |  | slab for ground floor | 9d | 2010-10-13 | 2010-10-23 | A18010, A17970 | 0d |  |  | 03 | 87 | 03 | 05 |
| A18170 |  | pouring for ground floor's slab | 1d | 2010-10-24 | 2010-10-24 | A18020, A18080 FF+3d | 0d |  |  | 03 | 87 | 03 |  |
| A18030 |  | columns for 1st floor | 6d | 2010-10-25 | 2010-10-31 | A18170 | 0d |  |  | 03 | 87 | 03 | 04 |
| A18200 |  | Fence work | 50d | 2010-10-25 | 2010-12-26 | A18170, A18210 FS+10d | 2d |  |  | 03 | 87 | 06 |  |
| A18040 |  | slab for 1st floor | 9d | 2010-11-01 | 2010-11-10 | A18030 | 0d |  |  | 03 | 87 | 03 | 05 |
| A18070 |  | Brick works for ground floor | 5d | 2010-11-06 | 2010-11-10 | A18170 FS+10d | 8d | 0d |  | 03 | 87 | 09 |  |
| A18180 |  | pouring for 1st floor's slab | 1d | 2010-11-11 | 2010-11-11 | A18040, A18090 FF+3d | 0d |  |  | 03 | 87 | 03 |  |
| A18050 |  | columns for roof floor | 4d | 2010-11-20 | 2010-11-23 | A18180 FS+2d | 0d |  |  | 03 | 87 | 03 | 04 |
| A18060 |  | slab for roof floor | 6d | 2010-11-24 | 2010-11-30 | A18050 | 0d |  |  | 03 | 87 | 03 | 05 |
| A18240 |  | Brick works for 1st floor | 5d | 2010-11-29 | 2010-12-04 | A18180 FS+10d | 6d | 0d | jungle | 03 | 87 | 09 |  |
| A18190 |  | pouring for roof floor's slab | 1d | 2010-12-01 | 2010-12-01 | A18060, A18100 FF+2d | 0d |  |  | 03 | 87 | 03 |  |
| A18250 |  | Brick works for roof floor | 5d | 2010-12-12 | 2010-12-16 | A18190 FS+8d | 0d |  | jungle | 03 | 87 | 09 |  |
|  | 5 | **electro mechanical** |  | 2010-10-13 | 2010-12-19 |  |  |  |  |  |  |  |  |
| A18130 |  | plumbing connections under slab on grade | 2d | 2010-10-13 | 2010-10-14 | A17970 | 31d | 23d |  | 03 | 87 | 04 |  |
| A18080 |  | electrical conduits for ground floor's slab | 2d | 2010-10-18 | 2010-10-19 | A18020 SS+4d | 1d |  |  | 03 | 87 | 04 |  |
| A18090 |  | electrical conduits for 1st floor slab | 2d | 2010-11-06 | 2010-11-07 | A18040 SS+4d | 1d |  |  | 03 | 87 | 04 |  |
| A18280 |  | electrical conduits for ground floor walls | 2d | 2010-11-23 | 2010-11-24 | A18000 FS+1d | 8d | 0d | jungle | 03 | 87 | 04 |  |
| A18100 |  | electrical conduits for roof slab | 1d | 2010-11-28 | 2010-11-28 | A18060 SS+3d | 1d |  |  | 03 | 87 | 04 |  |
| A18290 |  | electrical conduits for 1st floor walls | 2d | 2010-12-05 | 2010-12-06 | A18240 | 6d | 0d | jungle | 03 | 87 | 04 |  |
| A18300 |  | electrical conduits for roof floor walls | 2d | 2010-12-18 | 2010-12-19 | A18250 | 3d | 0d | jungle | 03 | 87 | 04 |  |
|  | 6 | **finishing** |  | 2010-11-25 | 2010-12-28 |  |  |  |  |  |  |  |  |
| A18110 |  | Internal plastering for ground floor | 8d | 2010-11-25 | 2010-12-04 | A18280 | 8d | 2d |  | 03 | 87 | 05 |  |
| A18260 |  | Internal plastering for 1st floor | 8d | 2010-12-07 | 2010-12-15 | A18110, A18290 | 6d | 3d | jungle | 03 | 87 | 05 |  |
| A18120 |  | External plastering | 10d | 2010-12-18 | 2010-12-28 | A18250 | 0d |  |  | 03 | 87 | 05 |  |
| A18270 |  | Internal plastering for roof floor | 5d | 2010-12-20 | 2010-12-25 | A18260, A18300 | 3d |  | jungle | 03 | 87 | 05 |  |

| ID | WBS | Activity | Type | Duration | Start | Finish | Predecessors | Total float |
| --- | --- | --- | --- | --- | --- | --- | --- | --- |
|  | Close | **Closing phase** |  |  | 2010-12-28 | 2010-12-28 |  |  |
| A1280 |  | end project | milestone | 0d | 2010-12-28 | 2010-12-28 | A10240, A10550, A10950, A11350, A11750, A12150, A12550, A12950, A13350, A13750, A14150, A14550, A14950, A15350, A15750, A16150, A16550, A16950, A17350, A17750, A18150, A18550, A18950 | 0d |

## Activity codes

| Code | Value | Meaning |
| --- | --- | --- |
| Work Category | 01 | engineering |
| Work Category | 02 | earth works |
| Work Category | 03 | concrete works |
| Work Category | 04 | electro mechanical works |
| Work Category | 05 | finishes |
| Work Category | 06 | fence works |
| Work Category | 07 | start construction |
| Work Category | 08 | finish construction |
| Work Category | 09 | Brick Works |
| Work Category | 10 | Insulation works |
| concrete type | 01 | plain concrete |
| concrete type | 02 | R.C For Foundation |
| concrete type | 03 | slab on grade |
| concrete type | 04 | columns |
| concrete type | 05 | slabs |
| villa number | 10 | villa D10 |
| villa number | 102 | villa B102 |
| villa number | 107 | villa B107 |
| villa number | 11 | villa B11 |
| villa number | 111 | villa TH111 |
| villa number | 112 | villa TH112 |
| villa number | 12 | villa B12 |
| villa number | 13 | villa B13 |
| villa number | 14 | villa B14 |
| villa number | 52 | vila A52 |
| villa number | 55 | villa B55 |
| villa number | 86 | villa F86 |
| villa number | 87 | villa F87 |
| villa number | 89 | villa D89 |
| villa number | 9 | villa D9 |
| villa number | 90 | villa D90 |
| villa number | 91 | villa D91 |
| villa number | 92 | villa D92 |
| villa number | 93 | villa F93 |
| villa number | 94 | villa F94 |
| villa number | 95 | villa A95 |
| villa number | 96 | villa A96 |
| villa number | 97 | villa A97 |
| zone number | 01 | zone 1 |
| zone number | 02 | zone 2 |
| zone number | 03 | zone 3 |
