# ORIANA VILLAS PHASE-3-B

Schedule from Primavera P6, 2012-05-02 to 2014-10-30, data date 2012-04-18, costs in EGP.
Must finish by 2014-10-31

## Calendars

- 7-Day Workweek: Mon-Sun 08:00-12:00, 13:00-17:00.
- ORIANA VILLAS: Mon-Thu 08:00-16:00; Fri off; Sat-Sun 08:00-16:00. Exceptions (off unless hours are given): 2012-08-18 to 2012-08-23, 2012-10-25, 2012-10-27 to 2012-11-01, 2013-08-07 to 2013-08-08, 2013-08-10 to 2013-08-15, 2013-10-12 to 2013-10-17.
- 6 Days Workweek: Mon-Thu 08:00-16:00; Fri off; Sat-Sun 08:00-16:00.

## Resources

| Resource | Group | Unit | Rate |
| --- | --- | --- | --- |
| CASH | material |  | 1 |
| PLAIN CONCRETE | material | M3 |  |
| REINFORCED CONCRETE | material | M3 |  |
| STEEL LABOUR | labor |  |  |
| CARPENTER | labor |  |  |
| STEEL RFT | material | KG |  |
| FORM WORK | material | m2 |  |
| Brickwork Labor | labor |  |  |
| EXTERNAL PLASTER WORKER | labor |  |  |
| PAINTER WORKER | labor |  |  |

## Schedule

| ID | WBS | Activity | Type | Duration | Start | Finish | Predecessors | Total float | Free float | Calendar |
| --- | --- | --- | --- | --- | --- | --- | --- | --- | --- | --- |
|  | 14 | **MILESTONES** |  |  | 2012-05-02 | 2014-10-30 |  |  |  |  |
| A1250 |  | Site handing over | milestone | 0d | 2012-05-02 | 2012-05-02 |  | 0.8d | 0d | 6 Days Workweek |
| A1270 |  | Contract signature | milestone | 0d | 2012-05-02 | 2012-05-02 | A1250 | 0.8d | 0d | 6 Days Workweek |
| A1260 |  | Recieve advanced payments | milestone | 0d | 2012-05-02 | 2012-05-02 | A1270 FS+0.1d | 0.8d | 0d | 6 Days Workweek |
| A1230 |  | Commencement date | milestone | 0d | 2012-05-02 | 2012-05-02 | A1260 FS+0.1d | 0.8d | 0d | 6 Days Workweek |
| A1240 |  | Project handing over | milestone | 0d | 2014-10-30 | 2014-10-30 | A1420, A1570 | 0.8d | 0d | 6 Days Workweek |
|  | 11 | **MOBILIZATION & DEMOBILIZATION** |  |  | 2012-05-02 | 2014-10-30 |  |  |  |  |
| A1200 |  | Mobilization |  | 21d | 2012-05-02 | 2012-05-23 | A1230 | 0.68d | 0d |  |
| A1210 |  | Demobilization |  | 7d | 2014-10-23 | 2014-10-30 | A1240 FF | 0.8d | 0d |  |
|  | 2 | **CONSTRUCTION** |  |  | 2012-05-02 | 2014-10-30 |  |  |  |  |
|  | 2 | **LAYOUT WORKS** |  |  | 2012-05-09 | 2014-09-30 |  |  |  |  |
| A1290 |  | Excavation&Replacement works |  | 600d | 2012-05-09 | 2013-12-30 | A1200 SS+7d | 304.8d | 0d |  |
| A1310 |  | Retaining walls for internal fences |  | 500d | 2013-03-19 | 2014-08-01 | A1200 FS+300d | 30.8d | 0d |  |
| A1300 |  | Backfilling arround retaining wall |  | 500d | 2013-05-18 | 2014-09-30 | A1310 SS+60d | 30.8d | 30d |  |
|  | 3 | **LANDSCAPE** |  |  | 2013-03-19 | 2014-10-30 |  |  |  |  |
| A1420 |  | landscape works |  | 590d | 2013-03-19 | 2014-10-30 | A1200 FS+300d | 0.68d | 0d |  |
|  | 4 | **INFRASTRUCTURE WORKS** |  |  | 2012-07-22 | 2014-10-20 |  |  |  |  |
| A1430 |  | Water supply networks |  | 500d | 2012-07-22 | 2013-12-04 | A1200 FS+60d | 330.8d | 330d |  |
| A1440 |  | Sewage network |  | 500d | 2012-09-20 | 2014-02-02 | A1200 FS+120d | 270.8d | 270d |  |
| A1450 |  | Storm drainage network |  | 500d | 2012-12-09 | 2014-04-23 | A1200 FS+200d | 190.8d | 190d |  |
| A1470 |  | Irrigation equipment |  | 400d | 2012-12-09 | 2014-01-13 | A1200 FS+200d | 290.8d | 290d |  |
| A1460 |  | Fire & irrigation network |  | 400d | 2013-01-28 | 2014-03-04 | A1200 FS+250d | 240.8d | 240d |  |
| A1490 |  | Electrical networks |  | 500d | 2013-01-28 | 2014-06-12 | A1200 FS+250d | 140.8d | 140d |  |
| A1480 |  | Water features |  | 180d | 2014-04-23 | 2014-10-20 | A1200 FS+700d | 10.8d | 10d |  |

| ID | WBS | Activity | Duration | Start | Finish | Predecessors | Total float | Free float | Resources | Cost |
| --- | --- | --- | --- | --- | --- | --- | --- | --- | --- | --- |
|  | 5 | **ROADS** |  | 2012-05-12 | 2014-10-19 |  |  |  |  |  |
| A1500 |  | Excavation to the grading levels | 60d | 2012-05-12 | 2012-07-11 | A1200 SS+10d | 11.68d | 0d |  |  |
| A1510 |  | Filling & compaction to the grading levels | 60d | 2012-06-11 | 2012-08-10 | A1500 SS+30d | 11.68d | 0d |  |  |
| A1520 |  | Furnishing and constructing the base coarse | 90d | 2014-03-03 | 2014-06-01 | A1510 FS+570d | 11.68d | 0d |  |  |
| A1550 |  | Supply and install precast concrete curbs | 60d | 2014-06-01 | 2014-07-31 | A1520 | 11.68d | 0d |  |  |
| A1530 |  | Apply and spread of diffrent asphalt layers | 60d | 2014-06-21 | 2014-08-20 | A1550 SS+20d | 11.68d | 0d |  |  |
| A1540 |  | supply and install interlook tiles | 60d | 2014-07-11 | 2014-09-09 | A1530 SS+20d | 11.68d | 0d |  |  |
| A1560 |  | Road markings | 30d | 2014-08-20 | 2014-09-19 | A1540 SS+40d | 11.68d | 0d |  |  |
| A1570 |  | Traffic signs installation | 30d | 2014-09-19 | 2014-10-19 | A1560 | 11.68d | 11d |  |  |
|  | 6 | **GATES** |  | 2014-06-02 | 2014-10-25 |  |  |  |  |  |
| A1320 |  | Gate - 1 | 145d | 2014-06-02 | 2014-10-25 | A1200 FS+740d | 5.8d | 5d |  |  |
| A1330 |  | Gate - 2 | 145d | 2014-06-02 | 2014-10-25 | A1200 FS+740d | 5.8d | 5d |  |  |
|  | 7 | **EXTERNAL FENCE** |  | 2014-04-23 | 2014-10-30 |  |  |  |  |  |
| A1340 |  | Excavation | 120d | 2014-04-23 | 2014-08-21 | A1200 FS+700d | 0.8d | 0d |  |  |
| A1350 |  | P.C & R.C Footings | 120d | 2014-05-03 | 2014-08-31 | A1340 SS+10d | 0.8d | 0d |  |  |
| A1360 |  | Coulmns & retaining walls | 120d | 2014-05-13 | 2014-09-10 | A1350 SS+10d | 0.8d | 0d |  |  |
| A1370 |  | Bituminous Insulation | 120d | 2014-05-23 | 2014-09-20 | A1360 SS+10d | 0.8d | 0d |  |  |
| A1380 |  | Masonry works | 120d | 2014-06-02 | 2014-09-30 | A1370 SS+10d | 0.8d | 0d |  |  |
| A1390 |  | External plaster | 120d | 2014-06-12 | 2014-10-10 | A1380 SS+10d | 0.8d | 0d |  |  |
| A1400 |  | Stone cladding | 120d | 2014-06-22 | 2014-10-20 | A1390 SS+10d | 0.8d | 0d |  |  |
| A1410 |  | Painting | 120d | 2014-07-02 | 2014-10-30 | A1400 SS+10d | 0.8d | 0d |  |  |
|  | 12 | **GROUP-1** |  | 2012-05-23 | 2012-11-14 |  |  |  |  |  |
|  | 2 | **FOUNDATIONS** |  | 2012-05-23 | 2012-06-09 |  |  |  |  |  |
| V-1-10 |  | P.c footing | 5d | 2012-05-23 | 2012-05-28 | A1290 SS+14d | 721.8d | 0d | CASH [40]; PLAIN CONCRETE [30 M3] | 40 |
| V-1-20 |  | R.c concrete foundations | 12d | 2012-05-28 | 2012-06-09 | V-1-10 | 721.8d | 0d | CASH [96]; REINFORCED CONCRETE [14 M3]; STEEL LABOUR [200 h]; CARPENTER [200 h]; STEEL RFT [2000 KG] | 96 |

| ID | WBS | Activity | Duration | Start | Finish | Predecessors | Total float | Free float | Calendar | Resources | Cost |
| --- | --- | --- | --- | --- | --- | --- | --- | --- | --- | --- | --- |
|  | 1 | **EARTH WORKS** |  | 2012-06-25 | 2012-06-29 |  |  |  |  |  |  |
| V-1-60 |  | Backfilling under slab on grade | 4d | 2012-06-25 | 2012-06-29 | V-1-50 | 721.8d | 0d |  | CASH [32] | 32 |
|  | 3 | **SKELETON WORKS** |  | 2012-06-09 | 2012-08-25 |  |  |  |  |  |  |
| V-1-30 |  | Ground floor columns | 8d | 2012-06-09 | 2012-06-17 | V-1-20 | 721.8d | 0d |  | CASH [64]; FORM WORK [64 m2]; STEEL LABOUR [100 h]; CARPENTER [100 h]; STEEL RFT [1500 KG]; REINFORCED CONCRETE [9 M3] | 64 |
| V-1-70 |  | Ground floor slab&beams&staircase | 15d | 2012-06-29 | 2012-07-14 | V-1-60 | 721.8d | 0d |  | CASH [120]; FORM WORK [120 m2]; STEEL LABOUR [800 h]; CARPENTER [800 h]; STEEL RFT [9000 KG]; REINFORCED CONCRETE [60 M3] | 120 |
| V-1-80 |  | First floor columns | 8d | 2012-07-14 | 2012-07-22 | V-1-70 | 728.8d | 7d |  | CASH [64]; FORM WORK [64 m2]; STEEL LABOUR [100 h]; CARPENTER [100 h]; STEEL RFT [1000 KG]; REINFORCED CONCRETE [9 M3] | 64 |
| V-1-90 |  | First floor slab&beams&staircase | 15d | 2012-07-29 | 2012-08-13 | V-1-80, V-1-70 FS+15d | 721.8d | 0d |  | CASH [120]; FORM WORK [120 m2]; STEEL LABOUR [800 h]; CARPENTER [800 h]; STEEL RFT [9000 KG]; REINFORCED CONCRETE [60 M3] | 120 |
| V-1-100 |  | Roof columns | 5d | 2012-08-13 | 2012-08-18 | V-1-90 | 767.8d | 0d |  | CASH [40]; FORM WORK [40 m2]; STEEL LABOUR [66 h]; CARPENTER [66 h]; STEEL RFT [500 KG]; REINFORCED CONCRETE [2 M3] | 40 |
| V-1-110 |  | Slab on grade(R.C&P.C) | 5d | 2012-08-13 | 2012-08-18 | V-1-90 | 731.8d | 10d |  | CASH [40]; STEEL RFT [1650 KG]; PLAIN CONCRETE [8 M3]; REINFORCED CONCRETE [40 M3] | 40 |
| V-1-120 |  | Roof slab | 5d | 2012-08-18 | 2012-08-23 | V-1-100 | 767.8d | 0d |  | CASH [40]; FORM WORK [40 m2]; STEEL LABOUR [200 h]; CARPENTER [200 h]; STEEL RFT [1000 KG]; REINFORCED CONCRETE [20 M3] | 40 |
| V-1-125 |  | Roof parapet | 7d | 2012-08-18 | 2012-08-25 | V-1-120 SS | 767.8d | 0d |  | CASH [56]; STEEL RFT [3240 KG]; REINFORCED CONCRETE [30 M3] | 56 |
|  | 9 | **MASONRY WORKS** |  | 2012-06-17 | 2012-09-17 |  |  |  |  |  |  |
| V-1-40 |  | Masonry under slab on grade | 4d | 2012-06-17 | 2012-06-21 | V-1-30 | 721.8d | 0d |  | CASH [32]; Brickwork Labor [400 h] | 32 |
| V-1-140 |  | Masonry works | 20d | 2012-08-28 | 2012-09-17 | V-1-90 FS+15d, V-1-110 | 721.8d | 0d |  | CASH [160]; Brickwork Labor [1700 h] | 160 |
|  | 10 | **INSULATION WORKS** |  | 2012-06-21 | 2012-09-23 |  |  |  |  |  |  |
| V-1-50 |  | Footings&masonry insulation | 4d | 2012-06-21 | 2012-06-25 | V-1-40 | 721.8d | 0d |  | CASH [32] | 32 |
| V-1-130 |  | Slopped concrete | 5d | 2012-08-25 | 2012-08-30 | V-1-125 | 767.8d | 0d |  | CASH [40]; PLAIN CONCRETE [14 M3] | 40 |
| V-1-150 |  | Water proofing insulation | 7d | 2012-08-30 | 2012-09-06 | V-1-130 | 767.8d | 0d |  | CASH [56] | 56 |
| V-1-160 |  | Thermal insulation | 7d | 2012-09-06 | 2012-09-13 | V-1-150 | 767.8d | 0d |  | CASH [56] | 56 |
| V-1-170 |  | Ceramic tiles | 10d | 2012-09-13 | 2012-09-23 | V-1-160 | 767.8d | 767d |  | CASH [80] | 80 |
|  | 4 | **PLASTER WORKS** |  | 2012-09-17 | 2012-10-08 |  |  |  |  |  |  |
| V-1-180 |  | External plaster works | 21d | 2012-09-17 | 2012-10-08 | V-1-140 | 721.8d | 0d |  | CASH [168]; EXTERNAL PLASTER WORKER [400 h] | 168 |
|  | 5 | **FLOORING WORKS** |  | 2012-10-08 | 2012-10-24 |  |  |  |  |  |  |
| V-1-200 |  | Flooring works(garnite& marbles) | 10d | 2012-10-08 | 2012-10-18 | V-1-180 | 721.8d | 6.67d |  | CASH [80] | 80 |
| V-1-210 |  | Stone cladding | 7d | 2012-10-17 | 2012-10-24 | V-2-130 | 613d | 0d | 6 Days Workweek | CASH [56] | 56 |

| ID | WBS | Activity | Duration | Start | Finish | Predecessors | Total float | Free float | Calendar | Resources | Cost |
| --- | --- | --- | --- | --- | --- | --- | --- | --- | --- | --- | --- |
|  | 6 | **PAINTING WORKS** |  | 2012-10-24 | 2012-11-03 |  |  |  |  |  |  |
| V-1-220 |  | External painting | 10d | 2012-10-24 | 2012-11-03 | V-1-200, V-1-210 | 715.12d | 0d |  | CASH [80]; PAINTER WORKER [400 h] | 80 |
|  | 7 | **DOORS&WINDOWS** |  | 2012-11-03 | 2012-11-14 |  |  |  |  |  |  |
| V-1-230 |  | Doors & windows erection | 10d | 2012-11-03 | 2012-11-13 | V-1-220 | 716.12d | 715.33d |  | CASH [80] | 80 |
| V-1-240 |  | Wood cladding | 10d | 2012-11-04 | 2012-11-14 | V-1-220 | 613d | 612.2d | 6 Days Workweek | CASH [80] | 80 |
| V-1-250 |  | Hand rails&louvers | 5d | 2012-11-04 | 2012-11-08 | V-1-220 | 618d | 617.2d | 6 Days Workweek | CASH [40] | 40 |
|  | 8 | **EXTERNAL WORKS** |  | 2012-09-17 | 2012-09-27 |  |  |  |  |  |  |
| V-1-190 |  | Mechanical & electrical works | 10d | 2012-09-17 | 2012-09-27 | V-1-180 SS | 763.8d | 763d |  | CASH [80] | 80 |
|  | 1 | **GROUP-2(oriana calendar)** |  | 2012-05-02 | 2012-11-28 |  |  |  |  |  |  |
|  | 2 | **FOUNDATIONS** |  | 2012-05-02 | 2012-05-21 |  |  |  |  |  |  |
| V-2-20 |  | P.c footing | 5d | 2012-05-02 | 2012-05-07 |  | 587d | 0d | ORIANA VILLAS |  |  |
| V-2-30 |  | R.c concrete foundations | 12d | 2012-05-08 | 2012-05-21 | V-2-20 | 587d | 0d | ORIANA VILLAS |  |  |
|  | 1 | **EARTH WORKS** |  | 2012-06-10 | 2012-06-13 |  |  |  |  |  |  |
| V-2-10 |  | Backfilling under slab on grade | 4d | 2012-06-10 | 2012-06-13 | V-2-110 | 587d | 0d | ORIANA VILLAS |  |  |
|  | 3 | **SKELETON WORKS** |  | 2012-05-22 | 2012-08-16 |  |  |  |  |  |  |
| V-2-40 |  | Ground floor columns | 8d | 2012-05-22 | 2012-05-30 | V-2-30 | 587d | 0d | ORIANA VILLAS |  |  |
| V-2-50 |  | Ground floor slab&beams&staircase | 15d | 2012-06-14 | 2012-07-01 | V-2-10 | 587d | 0d | ORIANA VILLAS |  |  |
| V-2-60 |  | First floor columns | 8d | 2012-07-02 | 2012-07-10 | V-2-50 | 594d | 7d | ORIANA VILLAS |  |  |
| V-2-70 |  | First floor slab&beams&staircase | 15d | 2012-07-19 | 2012-08-05 | V-2-60, V-2-50 FS+15d | 587d | 0d | ORIANA VILLAS |  |  |
| V-2-220 |  | Slab on grade(R.C&P.C) | 5d | 2012-08-06 | 2012-08-11 | V-2-70 | 597d | 10d | ORIANA VILLAS |  |  |
| V-2-80 |  | Roof columns | 5d | 2012-08-06 | 2012-08-11 | V-2-70 | 634d | 0d | ORIANA VILLAS |  |  |
| V-2-90 |  | Roof slab | 5d | 2012-08-12 | 2012-08-16 | V-2-80 | 634d | 0d | ORIANA VILLAS |  |  |
|  | 9 | **MASONRY WORKS** |  | 2012-05-31 | 2012-09-22 |  |  |  |  |  |  |
| V-2-100 |  | Masonry under slab on grade | 4d | 2012-05-31 | 2012-06-04 | V-2-40 | 587d | 0d | ORIANA VILLAS |  |  |
| V-2-120 |  | Masonry works | 20d | 2012-08-30 | 2012-09-22 | V-2-70 FS+15d, V-2-220 | 587d | 0d | ORIANA VILLAS |  |  |

| ID | WBS | Activity | Duration | Start | Finish | Predecessors | Total float | Free float | Calendar |
| --- | --- | --- | --- | --- | --- | --- | --- | --- | --- |
|  | 10 | **INSULATION WORKS** |  | 2012-06-05 | 2012-09-26 |  |  |  |  |
| V-2-110 |  | Footings&masonry insulation | 4d | 2012-06-05 | 2012-06-09 | V-2-100 | 587d | 0d | ORIANA VILLAS |
| V-2-200 |  | Slopped concrete | 5d | 2012-08-25 | 2012-08-29 | V-2-90 | 634d | 0d | ORIANA VILLAS |
| V-2-190 |  | Water proofing insulation | 7d | 2012-08-30 | 2012-09-06 | V-2-200 | 634d | 0d | ORIANA VILLAS |
| V-2-180 |  | Thermal insulation | 7d | 2012-09-08 | 2012-09-15 | V-2-190 | 634d | 0d | ORIANA VILLAS |
| V-2-210 |  | Cement tiles | 10d | 2012-09-16 | 2012-09-26 | V-2-180 | 634d | 633.2d | ORIANA VILLAS |
|  | 4 | **PLASTER WORKS** |  | 2012-09-23 | 2012-10-16 |  |  |  |  |
| V-2-130 |  | External plaster works | 21d | 2012-09-23 | 2012-10-16 | V-2-120 | 587d | 0d | ORIANA VILLAS |
|  | 5 | **FLOORING WORKS** |  | 2012-10-17 | 2012-11-05 |  |  |  |  |
| V-2-140 |  | Flooring works | 10d | 2012-10-17 | 2012-11-05 | V-2-130 | 587d | 0d | ORIANA VILLAS |
|  | 6 | **PAINTING WORKS** |  | 2012-11-06 | 2012-11-17 |  |  |  |  |
| V-2-150 |  | External painting | 10d | 2012-11-06 | 2012-11-17 | V-2-140 | 587d | 0d | ORIANA VILLAS |
|  | 7 | **DOORS&WINDOWS** |  | 2012-11-18 | 2012-11-28 |  |  |  |  |
| V-2-160 |  | Doors & windows erection | 10d | 2012-11-18 | 2012-11-28 | V-2-150 | 587d | 586.2d | ORIANA VILLAS |
|  | 8 | **EXTERNAL WORKS** |  | 2012-09-23 | 2012-10-03 |  |  |  |  |
| V-2-170 |  | Mechanical & electrical works | 10d | 2012-09-23 | 2012-10-03 | V-2-130 SS | 628d | 627.2d | ORIANA VILLAS |
