# ORIANA VILLAS PHASE-3

Schedule from Primavera P6, 2012-05-01 to 2014-10-13, data date 2012-04-08.

## Calendars

- ORIANA VILLAS: Mon-Thu 08:00-16:00; Fri off; Sat-Sun 08:00-16:00. Exceptions (off unless hours are given): 2012-08-18 to 2012-08-23, 2012-10-25, 2012-10-27 to 2012-11-01, 2013-08-07 to 2013-08-08, 2013-08-10 to 2013-08-15, 2013-10-12 to 2013-10-17.

## Schedule

| ID | WBS | Activity | Duration | Start | Finish | Predecessors | Total float | Free float |
| --- | --- | --- | --- | --- | --- | --- | --- | --- |
|  | 14 | **MILESTONES** |  |  |  |  |  |  |
|  | 11 | **MOBILIZATION & DEMOBILIZATION** |  | 2012-05-01 | 2012-06-04 |  |  |  |
| A1200 |  | Mobilization | 30d | 2012-05-01 | 2012-06-04 |  | 0d |  |
| A1210 |  | Demobilization | 3d | 2012-05-01 | 2012-05-03 |  | 738d |  |
|  | 13 | **ENGINEERING** |  |  |  |  |  |  |
|  | 1 | **CONSTRUCTION** |  | 2012-05-19 | 2014-10-13 |  |  |  |
|  | 12 | **GROUP-1** |  | 2012-05-19 | 2012-12-15 |  |  |  |
|  | 2 | **FOUNDATIONS** |  | 2012-05-19 | 2012-06-06 |  |  |  |
| V1-10 |  | P.c footing | 5d | 2012-05-19 | 2012-05-23 | A1200 SS+15d | 0d |  |
| V1-20 |  | R.c concrete foundations | 12d | 2012-05-24 | 2012-06-06 | V1-10 | 0d |  |
|  | 1 | **EARTH WORKS** |  | 2012-06-26 | 2012-06-30 |  |  |  |
| V1-60 |  | Backfilling under slab on grade | 4d | 2012-06-26 | 2012-06-30 | V1-50 | 0d |  |
|  | 3 | **SKELETON WORKS** |  | 2012-06-07 | 2012-09-09 |  |  |  |
| V1-30 |  | Ground floor columns | 8d | 2012-06-07 | 2012-06-16 | V1-20 | 0d |  |
| V1-70 |  | Ground floor slab&beams&staircase | 15d | 2012-07-01 | 2012-07-17 | V1-60 | 0d |  |
| V1-80 |  | First floor columns | 8d | 2012-07-18 | 2012-07-26 | V1-70 | 7d | 0d |
| V1-90 |  | First floor slab&beams&staircase | 15d | 2012-08-05 | 2012-08-28 | V1-80, V1-70 FS+15d | 0d |  |
| V1-100 |  | Roof columns | 5d | 2012-08-29 | 2012-09-03 | V1-90 | 605d | 0d |
| V1-110 |  | Slab on grade(R.C&P.C) | 5d | 2012-08-29 | 2012-09-03 | V1-90 | 568d | 10d |
| V1-120 |  | Roof slab | 5d | 2012-09-04 | 2012-09-09 | V1-100 | 605d | 0d |
|  | 9 | **MASONRY WORKS** |  | 2012-06-17 | 2012-10-08 |  |  |  |
| V1-40 |  | Masonry under slab on grade | 4d | 2012-06-17 | 2012-06-20 | V1-30 | 0d |  |
| V1-140 |  | Masonry works | 20d | 2012-09-16 | 2012-10-08 | V1-90 FS+15d, V1-110 | 558d | 0d |
|  | 10 | **INSULATION WORKS** |  | 2012-06-21 | 2012-10-13 |  |  |  |
| V1-50 |  | Footings&masonry insulation | 4d | 2012-06-21 | 2012-06-25 | V1-40 | 0d |  |
| V1-130 |  | Slopped concrete | 5d | 2012-09-10 | 2012-09-15 | V1-120 | 605d | 0d |
| V1-150 |  | Water proofing insulation | 7d | 2012-09-16 | 2012-09-23 | V1-130 | 605d | 0d |
| V1-160 |  | Thermal insulation | 7d | 2012-09-24 | 2012-10-01 | V1-150 | 605d | 0d |
| V1-170 |  | Cement tiles | 10d | 2012-10-02 | 2012-10-13 | V1-160 | 605d |  |

| ID | WBS | Activity | Duration | Start | Finish | Predecessors | Total float | Free float |
| --- | --- | --- | --- | --- | --- | --- | --- | --- |
|  | 4 | **PLASTER WORKS** |  | 2012-10-09 | 2012-11-10 |  |  |  |
| V1-180 |  | External plaster works | 21d | 2012-10-09 | 2012-11-10 | V1-140 | 558d | 0d |
|  | 5 | **FLOORING WORKS** |  | 2012-11-11 | 2012-11-21 |  |  |  |
| V1-200 |  | Flooring works | 10d | 2012-11-11 | 2012-11-21 | V1-180 | 558d | 0d |
|  | 6 | **PAINTING WORKS** |  | 2012-11-22 | 2012-12-03 |  |  |  |
| V1-210 |  | External painting | 10d | 2012-11-22 | 2012-12-03 | V1-200 | 558d | 0d |
|  | 7 | **DOORS&WINDOWS** |  | 2012-12-04 | 2012-12-15 |  |  |  |
| V1-220 |  | Doors & windows erection | 10d | 2012-12-04 | 2012-12-15 | V1-210 | 558d |  |
|  | 8 | **EXTERNAL WORKS** |  | 2012-10-09 | 2012-10-20 |  |  |  |
| V1-190 |  | Mechanical & electrical works | 10d | 2012-10-09 | 2012-10-20 | V1-180 SS | 599d |  |
|  | 1 | **GROUP-2** |  | 2012-07-10 | 2013-02-25 |  |  |  |
|  | 2 | **FOUNDATIONS** |  | 2012-07-10 | 2012-07-29 |  |  |  |
| V2-10 |  | P.c footing | 5d | 2012-07-10 | 2012-07-15 | V1-20, A1200 FS+30d | 17d | 0d |
| V2-20 |  | R.c concrete foundations | 12d | 2012-07-16 | 2012-07-29 | V2-10 | 17d | 2d |
|  | 1 | **EARTH WORKS** |  | 2012-08-27 | 2012-08-30 |  |  |  |
| V2-60 |  | Backfilling under slab on grade | 4d | 2012-08-27 | 2012-08-30 | V2-50 | 15d |  |
|  | 3 | **SKELETON WORKS** |  | 2012-08-01 | 2012-11-28 |  |  |  |
| V2-30 |  | Ground floor columns | 8d | 2012-08-01 | 2012-08-09 | V2-20, V1-80 FS+4d | 15d | 0d |
| V2-70 |  | Ground floor slab&beams&staircase | 15d | 2012-09-18 | 2012-10-04 | V2-60, V1-90 FS+17d | 0d |  |
| V2-80 |  | First floor columns | 8d | 2012-10-06 | 2012-10-14 | V2-70 | 7d | 0d |
| V2-90 |  | First floor slab&beams&staircase | 15d | 2012-10-23 | 2012-11-17 | V2-80, V2-70 FS+15d | 0d |  |
| V2-100 |  | Roof columns | 5d | 2012-11-18 | 2012-11-22 | V2-90 | 543d | 0d |
| V2-110 |  | Slab on grade(R.C&P.C) | 5d | 2012-11-18 | 2012-11-22 | V2-90 | 506d | 10d |
| V2-120 |  | Roof slab | 5d | 2012-11-24 | 2012-11-28 | V2-100 | 543d | 0d |

| ID | WBS | Activity | Duration | Start | Finish | Predecessors | Total float | Free float |
| --- | --- | --- | --- | --- | --- | --- | --- | --- |
|  | 9 | **MASONRY WORKS** |  | 2012-08-11 | 2012-12-27 |  |  |  |
| V2-40 |  | Masonry under slab on grade | 4d | 2012-08-11 | 2012-08-14 | V2-30 | 15d | 0d |
| V2-140 |  | Masonry works | 20d | 2012-12-05 | 2012-12-27 | V2-90 FS+15d, V2-110 | 496d | 0d |
|  | 10 | **INSULATION WORKS** |  | 2012-08-15 | 2013-01-01 |  |  |  |
| V2-50 |  | Footings&masonry insulation | 4d | 2012-08-15 | 2012-08-26 | V2-40 | 15d | 0d |
| V2-130 |  | Slopped concrete | 5d | 2012-11-29 | 2012-12-04 | V2-120 | 543d | 0d |
| V2-150 |  | Water proofing insulation | 7d | 2012-12-05 | 2012-12-12 | V2-130 | 543d | 0d |
| V2-160 |  | Thermal insulation | 7d | 2012-12-13 | 2012-12-20 | V2-150 | 543d | 0d |
| V2-170 |  | Cement tiles | 10d | 2012-12-22 | 2013-01-01 | V2-160 | 543d |  |
|  | 4 | **PLASTER WORKS** |  | 2012-12-29 | 2013-01-21 |  |  |  |
| V2-180 |  | External plaster works | 21d | 2012-12-29 | 2013-01-21 | V2-140 | 496d | 0d |
|  | 5 | **FLOORING WORKS** |  | 2013-01-22 | 2013-02-02 |  |  |  |
| V2-200 |  | Flooring works | 10d | 2013-01-22 | 2013-02-02 | V2-180 | 496d | 0d |
|  | 6 | **PAINTING WORKS** |  | 2013-02-03 | 2013-02-13 |  |  |  |
| V2-210 |  | External painting | 10d | 2013-02-03 | 2013-02-13 | V2-200 | 496d | 0d |
|  | 7 | **DOORS&WINDOWS** |  | 2013-02-14 | 2013-02-25 |  |  |  |
| V2-220 |  | Doors & windows erection | 10d | 2013-02-14 | 2013-02-25 | V2-210 | 496d |  |
|  | 8 | **EXTERNAL WORKS** |  | 2012-12-29 | 2013-01-08 |  |  |  |
| V2-190 |  | Mechanical & electrical works | 10d | 2012-12-29 | 2013-01-08 | V2-180 SS | 537d |  |
|  | 2 | **GROUP-3** |  | 2012-09-25 | 2013-05-08 |  |  |  |
|  | 2 | **FOUNDATIONS** |  | 2012-09-25 | 2012-10-14 |  |  |  |
| V3-10 |  | P.c footing | 5d | 2012-09-25 | 2012-09-30 | V2-20, A1200 FS+90d | 19d | 0d |
| V3-20 |  | R.c concrete foundations | 12d | 2012-10-01 | 2012-10-14 | V3-10 | 19d | 4d |
|  | 1 | **EARTH WORKS** |  | 2012-11-15 | 2012-11-19 |  |  |  |
| V3-60 |  | Backfilling under slab on grade | 4d | 2012-11-15 | 2012-11-19 | V3-50 | 15d |  |

| ID | WBS | Activity | Duration | Start | Finish | Predecessors | Total float | Free float |
| --- | --- | --- | --- | --- | --- | --- | --- | --- |
|  | 3 | **SKELETON WORKS** |  | 2012-10-20 | 2013-02-09 |  |  |  |
| V3-30 |  | Ground floor columns | 8d | 2012-10-20 | 2012-11-05 | V3-20, V2-80 FS+4d | 15d | 0d |
| V3-70 |  | Ground floor slab&beams&staircase | 15d | 2012-12-08 | 2012-12-24 | V3-60, V2-90 FS+17d | 0d |  |
| V3-80 |  | First floor columns | 8d | 2012-12-25 | 2013-01-02 | V3-70 | 7d | 0d |
| V3-90 |  | First floor slab&beams&staircase | 15d | 2013-01-12 | 2013-01-28 | V3-80, V3-70 FS+15d | 0d |  |
| V3-100 |  | Roof columns | 5d | 2013-01-29 | 2013-02-03 | V3-90 | 481d | 0d |
| V3-110 |  | Slab on grade(R.C&P.C) | 5d | 2013-01-29 | 2013-02-03 | V3-90 | 444d | 10d |
| V3-120 |  | Roof slab | 5d | 2013-02-04 | 2013-02-09 | V3-100 | 481d | 0d |
|  | 9 | **MASONRY WORKS** |  | 2012-11-06 | 2013-03-10 |  |  |  |
| V3-40 |  | Masonry under slab on grade | 4d | 2012-11-06 | 2012-11-10 | V3-30 | 15d | 0d |
| V3-140 |  | Masonry works | 20d | 2013-02-16 | 2013-03-10 | V3-90 FS+15d, V3-110 | 434d | 0d |
|  | 10 | **INSULATION WORKS** |  | 2012-11-11 | 2013-03-14 |  |  |  |
| V3-50 |  | Footings&masonry insulation | 4d | 2012-11-11 | 2012-11-14 | V3-40 | 15d | 0d |
| V3-130 |  | Slopped concrete | 5d | 2013-02-10 | 2013-02-14 | V3-120 | 481d | 0d |
| V3-150 |  | Water proofing insulation | 7d | 2013-02-16 | 2013-02-23 | V3-130 | 481d | 0d |
| V3-160 |  | Thermal insulation | 7d | 2013-02-24 | 2013-03-03 | V3-150 | 481d | 0d |
| V3-170 |  | Cement tiles | 10d | 2013-03-04 | 2013-03-14 | V3-160 | 481d |  |
|  | 4 | **PLASTER WORKS** |  | 2013-03-11 | 2013-04-03 |  |  |  |
| V3-180 |  | External plaster works | 21d | 2013-03-11 | 2013-04-03 | V3-140 | 434d | 0d |
|  | 5 | **FLOORING WORKS** |  | 2013-04-04 | 2013-04-15 |  |  |  |
| V3-200 |  | Flooring works | 10d | 2013-04-04 | 2013-04-15 | V3-180 | 434d | 0d |
|  | 6 | **PAINTING WORKS** |  | 2013-04-16 | 2013-04-27 |  |  |  |
| V3-210 |  | External painting | 10d | 2013-04-16 | 2013-04-27 | V3-200 | 434d | 0d |
|  | 7 | **DOORS&WINDOWS** |  | 2013-04-28 | 2013-05-08 |  |  |  |
| V3-220 |  | Doors & windows erection | 10d | 2013-04-28 | 2013-05-08 | V3-210 | 434d |  |

| ID | WBS | Activity | Duration | Start | Finish | Predecessors | Total float | Free float |
| --- | --- | --- | --- | --- | --- | --- | --- | --- |
|  | 8 | **EXTERNAL WORKS** |  | 2013-03-11 | 2013-03-21 |  |  |  |
| V3-190 |  | Mechanical & electrical works | 10d | 2013-03-11 | 2013-03-21 | V3-180 SS | 475d |  |
|  | 3 | **GROUP-4** |  | 2012-12-12 | 2013-07-20 |  |  |  |
|  | 2 | **FOUNDATIONS** |  | 2012-12-12 | 2012-12-31 |  |  |  |
| V4-20 |  | P.c footing | 5d | 2012-12-12 | 2012-12-17 | V3-20, A1200 FS+150d | 21d | 0d |
| V4-30 |  | R.c concrete foundations | 12d | 2012-12-18 | 2012-12-31 | V4-20 | 21d | 6d |
|  | 1 | **EARTH WORKS** |  | 2013-01-27 | 2013-01-30 |  |  |  |
| V4-10 |  | Backfilling under slab on grade | 4d | 2013-01-27 | 2013-01-30 | V4-110 | 15d |  |
|  | 3 | **SKELETON WORKS** |  | 2013-01-08 | 2013-04-22 |  |  |  |
| V4-40 |  | Ground floor columns | 8d | 2013-01-08 | 2013-01-16 | V4-30, V3-80 FS+4d | 15d | 0d |
| V4-50 |  | Ground floor slab&beams&staircase | 15d | 2013-02-18 | 2013-03-06 | V4-10, V3-90 FS+17d | 0d |  |
| V4-60 |  | First floor columns | 8d | 2013-03-07 | 2013-03-16 | V4-50 | 7d | 0d |
| V4-70 |  | First floor slab&beams&staircase | 15d | 2013-03-25 | 2013-04-10 | V4-60, V4-50 FS+15d | 0d |  |
| V4-220 |  | Slab on grade(R.C&P.C) | 5d | 2013-04-11 | 2013-04-16 | V4-70 | 382d | 10d |
| V4-80 |  | Roof columns | 5d | 2013-04-11 | 2013-04-16 | V4-70 | 419d | 0d |
| V4-90 |  | Roof slab | 5d | 2013-04-17 | 2013-04-22 | V4-80 | 419d | 0d |
|  | 9 | **MASONRY WORKS** |  | 2013-01-17 | 2013-05-21 |  |  |  |
| V4-100 |  | Masonry under slab on grade | 4d | 2013-01-17 | 2013-01-21 | V4-40 | 15d | 0d |
| V4-120 |  | Masonry works | 20d | 2013-04-29 | 2013-05-21 | V4-70 FS+15d, V4-220 | 372d | 0d |
|  | 10 | **INSULATION WORKS** |  | 2013-01-22 | 2013-05-26 |  |  |  |
| V4-110 |  | Footings&masonry insulation | 4d | 2013-01-22 | 2013-01-26 | V4-100 | 15d | 0d |
| V4-200 |  | Slopped concrete | 5d | 2013-04-23 | 2013-04-28 | V4-90 | 419d | 0d |
| V4-190 |  | Water proofing insulation | 7d | 2013-04-29 | 2013-05-06 | V4-200 | 419d | 0d |
| V4-180 |  | Thermal insulation | 7d | 2013-05-07 | 2013-05-14 | V4-190 | 419d | 0d |
| V4-210 |  | Cement tiles | 10d | 2013-05-15 | 2013-05-26 | V4-180 | 419d |  |

| ID | WBS | Activity | Duration | Start | Finish | Predecessors | Total float | Free float |
| --- | --- | --- | --- | --- | --- | --- | --- | --- |
|  | 4 | **PLASTER WORKS** |  | 2013-05-22 | 2013-06-15 |  |  |  |
| V4-130 |  | External plaster works | 21d | 2013-05-22 | 2013-06-15 | V4-120 | 372d | 0d |
|  | 5 | **FLOORING WORKS** |  | 2013-06-16 | 2013-06-26 |  |  |  |
| V4-140 |  | Flooring works | 10d | 2013-06-16 | 2013-06-26 | V4-130 | 372d | 0d |
|  | 6 | **PAINTING WORKS** |  | 2013-06-27 | 2013-07-08 |  |  |  |
| V4-150 |  | External painting | 10d | 2013-06-27 | 2013-07-08 | V4-140 | 372d | 0d |
|  | 7 | **DOORS&WINDOWS** |  | 2013-07-09 | 2013-07-20 |  |  |  |
| V4-160 |  | Doors & windows erection | 10d | 2013-07-09 | 2013-07-20 | V4-150 | 372d |  |
|  | 8 | **EXTERNAL WORKS** |  | 2013-05-22 | 2013-06-02 |  |  |  |
| V4-170 |  | Mechanical & electrical works | 10d | 2013-05-22 | 2013-06-02 | V4-130 SS | 413d |  |
|  | 4 | **GROUP-5** |  | 2013-02-26 | 2013-10-09 |  |  |  |
|  | 2 | **FOUNDATIONS** |  | 2013-02-26 | 2013-03-17 |  |  |  |
| V5-20 |  | P.c footing | 5d | 2013-02-26 | 2013-03-03 | V4-30, A1200 FS+215d | 18d | 0d |
| V5-30 |  | R.c concrete foundations | 12d | 2013-03-04 | 2013-03-17 | V5-20 | 18d | 3d |
|  | 1 | **EARTH WORKS** |  | 2013-04-09 | 2013-04-13 |  |  |  |
| V5-10 |  | Backfilling under slab on grade | 4d | 2013-04-09 | 2013-04-13 | V5-110 | 15d |  |
|  | 3 | **SKELETON WORKS** |  | 2013-03-21 | 2013-07-03 |  |  |  |
| V5-40 |  | Ground floor columns | 8d | 2013-03-21 | 2013-03-30 | V5-30, V4-60 FS+4d | 15d | 0d |
| V5-50 |  | Ground floor slab&beams&staircase | 15d | 2013-05-01 | 2013-05-18 | V5-10, V4-70 FS+17d | 0d |  |
| V5-60 |  | First floor columns | 8d | 2013-05-19 | 2013-05-27 | V5-50 | 7d | 0d |
| V5-70 |  | First floor slab&beams&staircase | 15d | 2013-06-05 | 2013-06-22 | V5-60, V5-50 FS+15d | 0d |  |
| V5-220 |  | Slab on grade(R.C&P.C) | 5d | 2013-06-23 | 2013-06-27 | V5-70 | 320d | 10d |
| V5-80 |  | Roof columns | 5d | 2013-06-23 | 2013-06-27 | V5-70 | 357d | 0d |
| V5-90 |  | Roof slab | 5d | 2013-06-29 | 2013-07-03 | V5-80 | 357d | 0d |

| ID | WBS | Activity | Duration | Start | Finish | Predecessors | Total float | Free float |
| --- | --- | --- | --- | --- | --- | --- | --- | --- |
|  | 9 | **MASONRY WORKS** |  | 2013-03-31 | 2013-08-01 |  |  |  |
| V5-100 |  | Masonry under slab on grade | 4d | 2013-03-31 | 2013-04-03 | V5-40 | 15d | 0d |
| V5-120 |  | Masonry works | 20d | 2013-07-10 | 2013-08-01 | V5-70 FS+15d, V5-220 | 310d | 0d |
|  | 10 | **INSULATION WORKS** |  | 2013-04-04 | 2013-08-06 |  |  |  |
| V5-110 |  | Footings&masonry insulation | 4d | 2013-04-04 | 2013-04-08 | V5-100 | 15d | 0d |
| V5-200 |  | Slopped concrete | 5d | 2013-07-04 | 2013-07-09 | V5-90 | 357d | 0d |
| V5-190 |  | Water proofing insulation | 7d | 2013-07-10 | 2013-07-17 | V5-200 | 357d | 0d |
| V5-180 |  | Thermal insulation | 7d | 2013-07-18 | 2013-07-25 | V5-190 | 357d | 0d |
| V5-210 |  | Cement tiles | 10d | 2013-07-27 | 2013-08-06 | V5-180 | 357d |  |
|  | 4 | **PLASTER WORKS** |  | 2013-08-03 | 2013-09-04 |  |  |  |
| V5-130 |  | External plaster works | 21d | 2013-08-03 | 2013-09-04 | V5-120 | 310d | 0d |
|  | 5 | **FLOORING WORKS** |  | 2013-09-05 | 2013-09-16 |  |  |  |
| V5-140 |  | Flooring works | 10d | 2013-09-05 | 2013-09-16 | V5-130 | 310d | 0d |
|  | 6 | **PAINTING WORKS** |  | 2013-09-17 | 2013-09-28 |  |  |  |
| V5-150 |  | External painting | 10d | 2013-09-17 | 2013-09-28 | V5-140 | 310d | 0d |
|  | 7 | **DOORS&WINDOWS** |  | 2013-09-29 | 2013-10-09 |  |  |  |
| V5-160 |  | Doors & windows erection | 10d | 2013-09-29 | 2013-10-09 | V5-150 | 310d |  |
|  | 8 | **EXTERNAL WORKS** |  | 2013-08-03 | 2013-08-22 |  |  |  |
| V5-170 |  | Mechanical & electrical works | 10d | 2013-08-03 | 2013-08-22 | V5-130 SS | 351d |  |
|  | 11 | **GROUP-6** |  | 2013-04-20 | 2013-12-28 |  |  |  |
|  | 2 | **FOUNDATIONS** |  | 2013-04-20 | 2013-05-08 |  |  |  |
| V6-20 |  | P.c footing | 5d | 2013-04-20 | 2013-04-24 | A1200 FS+260d | 35d | 0d |
| V6-30 |  | R.c concrete foundations | 12d | 2013-04-25 | 2013-05-08 | V6-20 | 35d | 20d |
|  | 1 | **EARTH WORKS** |  | 2013-06-20 | 2013-06-24 |  |  |  |
| V6-10 |  | Backfilling under slab on grade | 4d | 2013-06-20 | 2013-06-24 | V6-110 | 15d |  |

| ID | WBS | Activity | Duration | Start | Finish | Predecessors | Total float | Free float |
| --- | --- | --- | --- | --- | --- | --- | --- | --- |
|  | 3 | **SKELETON WORKS** |  | 2013-06-02 | 2013-09-23 |  |  |  |
| V6-40 |  | Ground floor columns | 8d | 2013-06-02 | 2013-06-10 | V6-30, V5-60 FS+4d | 15d | 0d |
| V6-50 |  | Ground floor slab&beams&staircase | 15d | 2013-07-13 | 2013-07-29 | V6-10, V5-70 FS+17d | 0d |  |
| V6-60 |  | First floor columns | 8d | 2013-07-30 | 2013-08-17 | V6-50 | 7d | 0d |
| V6-70 |  | First floor slab&beams&staircase | 15d | 2013-08-26 | 2013-09-11 | V6-60, V6-50 FS+15d | 0d |  |
| V6-220 |  | Slab on grade(R.C&P.C) | 5d | 2013-09-12 | 2013-09-17 | V6-70 | 258d | 10d |
| V6-80 |  | Roof columns | 5d | 2013-09-12 | 2013-09-17 | V6-70 | 295d | 0d |
| V6-90 |  | Roof slab | 5d | 2013-09-18 | 2013-09-23 | V6-80 | 295d | 0d |
|  | 9 | **MASONRY WORKS** |  | 2013-06-11 | 2013-10-29 |  |  |  |
| V6-100 |  | Masonry under slab on grade | 4d | 2013-06-11 | 2013-06-15 | V6-40 | 15d | 0d |
| V6-120 |  | Masonry works | 20d | 2013-09-30 | 2013-10-29 | V6-70 FS+15d, V6-220 | 248d | 0d |
|  | 10 | **INSULATION WORKS** |  | 2013-06-16 | 2013-11-03 |  |  |  |
| V6-110 |  | Footings&masonry insulation | 4d | 2013-06-16 | 2013-06-19 | V6-100 | 15d | 0d |
| V6-200 |  | Slopped concrete | 5d | 2013-09-24 | 2013-09-29 | V6-90 | 295d | 0d |
| V6-190 |  | Water proofing insulation | 7d | 2013-09-30 | 2013-10-07 | V6-200 | 295d | 0d |
| V6-180 |  | Thermal insulation | 7d | 2013-10-08 | 2013-10-22 | V6-190 | 295d | 0d |
| V6-210 |  | Cement tiles | 10d | 2013-10-23 | 2013-11-03 | V6-180 | 295d |  |
|  | 4 | **PLASTER WORKS** |  | 2013-10-30 | 2013-11-23 |  |  |  |
| V6-130 |  | External plaster works | 21d | 2013-10-30 | 2013-11-23 | V6-120 | 248d | 0d |
|  | 5 | **FLOORING WORKS** |  | 2013-11-24 | 2013-12-04 |  |  |  |
| V6-140 |  | Flooring works | 10d | 2013-11-24 | 2013-12-04 | V6-130 | 248d | 0d |
|  | 6 | **PAINTING WORKS** |  | 2013-12-05 | 2013-12-16 |  |  |  |
| V6-150 |  | External painting | 10d | 2013-12-05 | 2013-12-16 | V6-140 | 248d | 0d |
|  | 7 | **DOORS&WINDOWS** |  | 2013-12-17 | 2013-12-28 |  |  |  |
| V6-160 |  | Doors & windows erection | 10d | 2013-12-17 | 2013-12-28 | V6-150 | 248d |  |

| ID | WBS | Activity | Duration | Start | Finish | Predecessors | Total float | Free float |
| --- | --- | --- | --- | --- | --- | --- | --- | --- |
|  | 8 | **EXTERNAL WORKS** |  | 2013-10-30 | 2013-11-10 |  |  |  |
| V6-170 |  | Mechanical & electrical works | 10d | 2013-10-30 | 2013-11-10 | V6-130 SS | 289d |  |
|  | 5 | **GROUP-7** |  | 2013-07-22 | 2014-03-10 |  |  |  |
|  | 2 | **FOUNDATIONS** |  | 2013-07-22 | 2013-08-19 |  |  |  |
| V7-10 |  | P.c footing | 5d | 2013-07-22 | 2013-07-27 | A1200 FS+340d | 17d | 0d |
| V7-20 |  | R.c concrete foundations | 12d | 2013-07-28 | 2013-08-19 | V7-10 | 17d | 2d |
|  | 1 | **EARTH WORKS** |  | 2013-09-10 | 2013-09-14 |  |  |  |
| V7-60 |  | Backfilling under slab on grade | 4d | 2013-09-10 | 2013-09-14 | V7-50 | 15d |  |
|  | 3 | **SKELETON WORKS** |  | 2013-08-22 | 2013-12-11 |  |  |  |
| V7-30 |  | Ground floor columns | 8d | 2013-08-22 | 2013-08-31 | V7-20, V6-60 FS+4d | 15d | 0d |
| V7-70 |  | Ground floor slab&beams&staircase | 15d | 2013-10-02 | 2013-10-26 | V7-60, V6-70 FS+17d | 0d |  |
| V7-80 |  | First floor columns | 8d | 2013-10-27 | 2013-11-04 | V7-70 | 7d | 0d |
| V7-90 |  | First floor slab&beams&staircase | 15d | 2013-11-13 | 2013-11-30 | V7-80, V7-70 FS+15d | 0d |  |
| V7-100 |  | Roof columns | 5d | 2013-12-01 | 2013-12-05 | V7-90 | 233d | 0d |
| V7-110 |  | Slab on grade(R.C&P.C) | 5d | 2013-12-01 | 2013-12-05 | V7-90 | 196d | 10d |
| V7-120 |  | Roof slab | 5d | 2013-12-07 | 2013-12-11 | V7-100 | 233d | 0d |
|  | 9 | **MASONRY WORKS** |  | 2013-09-01 | 2014-01-09 |  |  |  |
| V7-40 |  | Masonry under slab on grade | 4d | 2013-09-01 | 2013-09-04 | V7-30 | 15d | 0d |
| V7-140 |  | Masonry works | 20d | 2013-12-18 | 2014-01-09 | V7-90 FS+15d, V7-110 | 186d | 0d |
|  | 10 | **INSULATION WORKS** |  | 2013-09-05 | 2014-01-14 |  |  |  |
| V7-50 |  | Footings&masonry insulation | 4d | 2013-09-05 | 2013-09-09 | V7-40 | 15d | 0d |
| V7-130 |  | Slopped concrete | 5d | 2013-12-12 | 2013-12-17 | V7-120 | 233d | 0d |
| V7-150 |  | Water proofing insulation | 7d | 2013-12-18 | 2013-12-25 | V7-130 | 233d | 0d |
| V7-160 |  | Thermal insulation | 7d | 2013-12-26 | 2014-01-02 | V7-150 | 233d | 0d |
| V7-170 |  | Cement tiles | 10d | 2014-01-04 | 2014-01-14 | V7-160 | 233d |  |

| ID | WBS | Activity | Duration | Start | Finish | Predecessors | Total float | Free float |
| --- | --- | --- | --- | --- | --- | --- | --- | --- |
|  | 4 | **PLASTER WORKS** |  | 2014-01-11 | 2014-02-03 |  |  |  |
| V7-180 |  | External plaster works | 21d | 2014-01-11 | 2014-02-03 | V7-140 | 186d | 0d |
|  | 5 | **FLOORING WORKS** |  | 2014-02-04 | 2014-02-15 |  |  |  |
| V7-200 |  | Flooring works | 10d | 2014-02-04 | 2014-02-15 | V7-180 | 186d | 0d |
|  | 6 | **PAINTING WORKS** |  | 2014-02-16 | 2014-02-26 |  |  |  |
| V7-210 |  | External painting | 10d | 2014-02-16 | 2014-02-26 | V7-200 | 186d | 0d |
|  | 7 | **DOORS&WINDOWS** |  | 2014-02-27 | 2014-03-10 |  |  |  |
| V7-220 |  | Doors & windows erection | 10d | 2014-02-27 | 2014-03-10 | V7-210 | 186d |  |
|  | 8 | **EXTERNAL WORKS** |  | 2014-01-11 | 2014-01-21 |  |  |  |
| V7-190 |  | Mechanical & electrical works | 10d | 2014-01-11 | 2014-01-21 | V7-180 SS | 227d |  |
|  | 6 | **GROUP-8** |  | 2013-10-09 | 2014-05-21 |  |  |  |
|  | 2 | **FOUNDATIONS** |  | 2013-10-09 | 2013-11-04 |  |  |  |
| V8-10 |  | P.c footing | 5d | 2013-10-09 | 2013-10-21 | A1200 FS+400d | 19d | 0d |
| V8-20 |  | R.c concrete foundations | 12d | 2013-10-22 | 2013-11-04 | V8-10 | 19d | 4d |
|  | 1 | **EARTH WORKS** |  | 2013-11-28 | 2013-12-02 |  |  |  |
| V8-60 |  | Backfilling under slab on grade | 4d | 2013-11-28 | 2013-12-02 | V8-50 | 15d |  |
|  | 3 | **SKELETON WORKS** |  | 2013-11-10 | 2014-02-22 |  |  |  |
| V8-30 |  | Ground floor columns | 8d | 2013-11-10 | 2013-11-18 | V8-20, V7-80 FS+4d | 15d | 0d |
| V8-70 |  | Ground floor slab&beams&staircase | 15d | 2013-12-21 | 2014-01-06 | V8-60, V7-90 FS+17d | 0d |  |
| V8-80 |  | First floor columns | 8d | 2014-01-07 | 2014-01-15 | V8-70 | 7d | 0d |
| V8-90 |  | First floor slab&beams&staircase | 15d | 2014-01-25 | 2014-02-10 | V8-80, V8-70 FS+15d | 0d |  |
| V8-100 |  | Roof columns | 5d | 2014-02-11 | 2014-02-16 | V8-90 | 171d | 0d |
| V8-110 |  | Slab on grade(R.C&P.C) | 5d | 2014-02-11 | 2014-02-16 | V8-90 | 134d | 10d |
| V8-120 |  | Roof slab | 5d | 2014-02-17 | 2014-02-22 | V8-100 | 171d | 0d |

| ID | WBS | Activity | Duration | Start | Finish | Predecessors | Total float | Free float |
| --- | --- | --- | --- | --- | --- | --- | --- | --- |
|  | 9 | **MASONRY WORKS** |  | 2013-11-19 | 2014-03-23 |  |  |  |
| V8-40 |  | Masonry under slab on grade | 4d | 2013-11-19 | 2013-11-23 | V8-30 | 15d | 0d |
| V8-140 |  | Masonry works | 20d | 2014-03-01 | 2014-03-23 | V8-90 FS+15d, V8-110 | 124d | 0d |
|  | 10 | **INSULATION WORKS** |  | 2013-11-24 | 2014-03-27 |  |  |  |
| V8-50 |  | Footings&masonry insulation | 4d | 2013-11-24 | 2013-11-27 | V8-40 | 15d | 0d |
| V8-130 |  | Slopped concrete | 5d | 2014-02-23 | 2014-02-27 | V8-120 | 171d | 0d |
| V8-150 |  | Water proofing insulation | 7d | 2014-03-01 | 2014-03-08 | V8-130 | 171d | 0d |
| V8-160 |  | Thermal insulation | 7d | 2014-03-09 | 2014-03-16 | V8-150 | 171d | 0d |
| V8-170 |  | Cement tiles | 10d | 2014-03-17 | 2014-03-27 | V8-160 | 171d |  |
|  | 4 | **PLASTER WORKS** |  | 2014-03-24 | 2014-04-16 |  |  |  |
| V8-180 |  | External plaster works | 21d | 2014-03-24 | 2014-04-16 | V8-140 | 124d | 0d |
|  | 5 | **FLOORING WORKS** |  | 2014-04-17 | 2014-04-28 |  |  |  |
| V8-200 |  | Flooring works | 10d | 2014-04-17 | 2014-04-28 | V8-180 | 124d | 0d |
|  | 6 | **PAINTING WORKS** |  | 2014-04-29 | 2014-05-10 |  |  |  |
| V8-210 |  | External painting | 10d | 2014-04-29 | 2014-05-10 | V8-200 | 124d | 0d |
|  | 7 | **DOORS&WINDOWS** |  | 2014-05-11 | 2014-05-21 |  |  |  |
| V8-220 |  | Doors & windows erection | 10d | 2014-05-11 | 2014-05-21 | V8-210 | 124d |  |
|  | 8 | **EXTERNAL WORKS** |  | 2014-03-24 | 2014-04-03 |  |  |  |
| V8-190 |  | Mechanical & electrical works | 10d | 2014-03-24 | 2014-04-03 | V8-180 SS | 165d |  |
|  | 7 | **GROUP-9** |  | 2013-12-25 | 2014-08-02 |  |  |  |
|  | 2 | **FOUNDATIONS** |  | 2013-12-25 | 2014-01-13 |  |  |  |
| V9-10 |  | P.c footing | 5d | 2013-12-25 | 2013-12-30 | A1200 FS+460d | 21d | 0d |
| V9-20 |  | R.c concrete foundations | 12d | 2013-12-31 | 2014-01-13 | V9-10 | 21d | 6d |
|  | 1 | **EARTH WORKS** |  | 2014-02-09 | 2014-02-12 |  |  |  |
| V9-60 |  | Backfilling under slab on grade | 4d | 2014-02-09 | 2014-02-12 | V9-50 | 15d |  |

| ID | WBS | Activity | Duration | Start | Finish | Predecessors | Total float | Free float |
| --- | --- | --- | --- | --- | --- | --- | --- | --- |
|  | 3 | **SKELETON WORKS** |  | 2014-01-21 | 2014-05-05 |  |  |  |
| V9-30 |  | Ground floor columns | 8d | 2014-01-21 | 2014-01-29 | V9-20, V8-80 FS+4d | 15d | 0d |
| V9-70 |  | Ground floor slab&beams&staircase | 15d | 2014-03-03 | 2014-03-19 | V9-60, V8-90 FS+17d | 0d |  |
| V9-80 |  | First floor columns | 8d | 2014-03-20 | 2014-03-29 | V9-70 | 7d | 0d |
| V9-90 |  | First floor slab&beams&staircase | 15d | 2014-04-07 | 2014-04-23 | V9-80, V9-70 FS+15d | 0d |  |
| V9-100 |  | Roof columns | 5d | 2014-04-24 | 2014-04-29 | V9-90 | 109d | 0d |
| V9-110 |  | Slab on grade(R.C&P.C) | 5d | 2014-04-24 | 2014-04-29 | V9-90 | 72d | 10d |
| V9-120 |  | Roof slab | 5d | 2014-04-30 | 2014-05-05 | V9-100 | 109d | 0d |
|  | 9 | **MASONRY WORKS** |  | 2014-01-30 | 2014-06-03 |  |  |  |
| V9-40 |  | Masonry under slab on grade | 4d | 2014-01-30 | 2014-02-03 | V9-30 | 15d | 0d |
| V9-140 |  | Masonry works | 20d | 2014-05-12 | 2014-06-03 | V9-90 FS+15d, V9-110 | 62d | 0d |
|  | 10 | **INSULATION WORKS** |  | 2014-02-04 | 2014-06-08 |  |  |  |
| V9-50 |  | Footings&masonry insulation | 4d | 2014-02-04 | 2014-02-08 | V9-40 | 15d | 0d |
| V9-130 |  | Slopped concrete | 5d | 2014-05-06 | 2014-05-11 | V9-120 | 109d | 0d |
| V9-150 |  | Water proofing insulation | 7d | 2014-05-12 | 2014-05-19 | V9-130 | 109d | 0d |
| V9-160 |  | Thermal insulation | 7d | 2014-05-20 | 2014-05-27 | V9-150 | 109d | 0d |
| V9-170 |  | Cement tiles | 10d | 2014-05-28 | 2014-06-08 | V9-160 | 109d |  |
|  | 4 | **PLASTER WORKS** |  | 2014-06-04 | 2014-06-28 |  |  |  |
| V9-180 |  | External plaster works | 21d | 2014-06-04 | 2014-06-28 | V9-140 | 62d | 0d |
|  | 5 | **FLOORING WORKS** |  | 2014-06-29 | 2014-07-09 |  |  |  |
| V9-200 |  | Flooring works | 10d | 2014-06-29 | 2014-07-09 | V9-180 | 62d | 0d |
|  | 6 | **PAINTING WORKS** |  | 2014-07-10 | 2014-07-21 |  |  |  |
| V9-210 |  | External painting | 10d | 2014-07-10 | 2014-07-21 | V9-200 | 62d | 0d |
|  | 7 | **DOORS&WINDOWS** |  | 2014-07-22 | 2014-08-02 |  |  |  |
| V9-220 |  | Doors & windows erection | 10d | 2014-07-22 | 2014-08-02 | V9-210 | 62d |  |

| ID | WBS | Activity | Duration | Start | Finish | Predecessors | Total float | Free float |
| --- | --- | --- | --- | --- | --- | --- | --- | --- |
|  | 8 | **EXTERNAL WORKS** |  | 2014-06-04 | 2014-06-15 |  |  |  |
| V9-190 |  | Mechanical & electrical works | 10d | 2014-06-04 | 2014-06-15 | V9-180 SS | 103d |  |
|  | 8 | **GROUP-10** |  | 2014-03-05 | 2014-10-13 |  |  |  |
|  | 2 | **FOUNDATIONS** |  | 2014-03-05 | 2014-03-24 |  |  |  |
| V10-10 |  | P.c footing | 5d | 2014-03-05 | 2014-03-10 | A1200 FS+520d | 23d | 0d |
| V10-20 |  | R.c concrete foundations | 12d | 2014-03-11 | 2014-03-24 | V10-10 | 23d | 8d |
|  | 1 | **EARTH WORKS** |  | 2014-04-22 | 2014-04-26 |  |  |  |
| V10-60 |  | Backfilling under slab on grade | 4d | 2014-04-22 | 2014-04-26 | V10-50 | 15d |  |
|  | 3 | **SKELETON WORKS** |  | 2014-04-03 | 2014-07-16 |  |  |  |
| V10-30 |  | Ground floor columns | 8d | 2014-04-03 | 2014-04-12 | V10-20, V9-80 FS+4d | 15d | 0d |
| V10-70 |  | Ground floor slab&beams&staircase | 15d | 2014-05-14 | 2014-05-31 | V10-60, V9-90 FS+17d | 0d |  |
| V10-80 |  | First floor columns | 8d | 2014-06-01 | 2014-06-09 | V10-70 | 7d |  |
| V10-90 |  | First floor slab&beams&staircase | 15d | 2014-06-18 | 2014-07-05 | V10-80, V10-70 FS+15d | 0d |  |
| V10-100 |  | Roof columns | 5d | 2014-07-06 | 2014-07-10 | V10-90 | 47d | 0d |
| V10-110 |  | Slab on grade(R.C&P.C) | 5d | 2014-07-06 | 2014-07-10 | V10-90 | 10d |  |
| V10-120 |  | Roof slab | 5d | 2014-07-12 | 2014-07-16 | V10-100 | 47d | 0d |
|  | 9 | **MASONRY WORKS** |  | 2014-04-13 | 2014-08-14 |  |  |  |
| V10-40 |  | Masonry under slab on grade | 4d | 2014-04-13 | 2014-04-16 | V10-30 | 15d | 0d |
| V10-140 |  | Masonry works | 20d | 2014-07-23 | 2014-08-14 | V10-90 FS+15d, V10-110 | 0d |  |
|  | 10 | **INSULATION WORKS** |  | 2014-04-17 | 2014-08-19 |  |  |  |
| V10-50 |  | Footings&masonry insulation | 4d | 2014-04-17 | 2014-04-21 | V10-40 | 15d | 0d |
| V10-130 |  | Slopped concrete | 5d | 2014-07-17 | 2014-07-22 | V10-120 | 47d | 0d |
| V10-150 |  | Water proofing insulation | 7d | 2014-07-23 | 2014-07-30 | V10-130 | 47d | 0d |
| V10-160 |  | Thermal insulation | 7d | 2014-07-31 | 2014-08-07 | V10-150 | 47d | 0d |
| V10-170 |  | Cement tiles | 10d | 2014-08-09 | 2014-08-19 | V10-160 | 47d |  |

| ID | WBS | Activity | Duration | Start | Finish | Predecessors | Total float |
| --- | --- | --- | --- | --- | --- | --- | --- |
|  | 4 | **PLASTER WORKS** |  | 2014-08-16 | 2014-09-08 |  |  |
| V10-180 |  | External plaster works | 21d | 2014-08-16 | 2014-09-08 | V10-140 | 0d |
|  | 5 | **FLOORING WORKS** |  | 2014-09-09 | 2014-09-20 |  |  |
| V10-200 |  | Flooring works | 10d | 2014-09-09 | 2014-09-20 | V10-180 | 0d |
|  | 6 | **PAINTING WORKS** |  | 2014-09-21 | 2014-10-01 |  |  |
| V10-210 |  | External painting | 10d | 2014-09-21 | 2014-10-01 | V10-200 | 0d |
|  | 7 | **DOORS&WINDOWS** |  | 2014-10-02 | 2014-10-13 |  |  |
| V10-220 |  | Doors & windows erection | 10d | 2014-10-02 | 2014-10-13 | V10-210 | 0d |
|  | 8 | **EXTERNAL WORKS** |  | 2014-08-16 | 2014-08-26 |  |  |
| V10-190 |  | Mechanical & electrical works | 10d | 2014-08-16 | 2014-08-26 | V10-180 SS | 41d |
