# ORIANA VILLAS PHASE-3-B

Schedule from Primavera P6, 2012-05-02 to 2014-10-30, data date 2012-04-18, costs in EGP.
Must finish by 2014-10-31

## Calendars

- 7-Day Workweek: Mon-Sun 08:00-12:00, 13:00-17:00.
- ORIANA VILLAS: Mon-Thu 08:00-16:00; Fri off; Sat-Sun 08:00-16:00. Exceptions (off unless hours are given): 2012-08-18 to 2012-08-23, 2012-10-25, 2012-10-27 to 2012-11-01, 2013-08-07 to 2013-08-08, 2013-08-10 to 2013-08-15, 2013-10-12 to 2013-10-17.
- 6 Days Workweek: Mon-Thu 08:00-16:00; Fri off; Sat-Sun 08:00-16:00.

## Resources

| Resource | Group | Unit | Rate |
| --- | --- | --- | --- |
| CASH | material |  | 1 |
| PLAIN CONCRETE | material | M3 |  |
| REINFORCED CONCRETE | material |  |  |
| FORM WORK | material | m2 |  |
| STEEL LABOUR | labor |  |  |
| CARPENTER | labor |  |  |
| Brickwork Labor | labor |  |  |

## Schedule

| ID | WBS | Activity | Type | Duration | Start | Finish | Predecessors | Total float | Free float | Calendar |
| --- | --- | --- | --- | --- | --- | --- | --- | --- | --- | --- |
|  | 14 | **MILESTONES** |  |  | 2012-05-02 | 2014-10-30 |  |  |  |  |
| A1230 |  | Commencement date | milestone | 0d | 2012-05-02 | 2012-05-02 |  | 782d | 781d | 6 Days Workweek |
| A1250 |  | Site handing over | WBS summary | 781d | 2012-05-02 | 2014-10-30 |  | 1d | 0d | 6 Days Workweek |
| A1260 |  | Recieve advanced payments | milestone | 0d | 2012-05-02 | 2012-05-02 |  | 782d | 781d | 6 Days Workweek |
| A1270 |  | Contract signature | milestone | 0d | 2012-05-02 | 2012-05-02 |  | 782d | 781d | 6 Days Workweek |
| A1240 |  | Project handing over | milestone | 0d | 2014-10-30 | 2014-10-30 | A1210 FF, A1420 | 1d | 0d | 6 Days Workweek |
|  | 11 | **MOBILIZATION & DEMOBILIZATION** |  |  | 2012-05-02 | 2012-05-22 |  |  |  |  |
| A1200 |  | Mobilization |  | 21d | 2012-05-02 | 2012-05-22 |  | 0.88d | 0d |  |
| A1210 |  | Demobilization |  | 3d | 2012-05-02 | 2012-05-04 |  | 908.88d | 908d |  |
|  | 13 | **ENGINEERING** |  |  |  |  |  |  |  |  |
|  | 2 | **CONSTRUCTION** |  |  | 2012-05-02 | 2014-10-29 |  |  |  |  |
|  | 2 | **LAYOUT WORKS** |  |  | 2012-05-02 | 2013-12-29 |  |  |  |  |
| A1300 |  | Backfilling arround retaining wall |  | 190d | 2012-05-02 | 2012-11-07 |  | 722d | 721d |  |
| A1310 |  | Retaining walls for internal fences |  | 190d | 2012-05-02 | 2012-11-07 |  | 722d | 721d |  |
| A1290 |  | Excavation&Replacement works |  | 600d | 2012-05-09 | 2013-12-29 | A1200 SS+7d | 305d | 0d |  |
|  | 3 | **LANDSCAPE** |  |  | 2013-03-19 | 2014-10-29 |  |  |  |  |
| A1420 |  | landscape works |  | 590d | 2013-03-19 | 2014-10-29 | A1200 FS+300d | 0.88d | 0d |  |
|  | 4 | **INFRASTRUCTURE WORKS** |  |  | 2012-07-22 | 2014-10-19 |  |  |  |  |
| A1430 |  | Water supply networks |  | 500d | 2012-07-22 | 2013-12-03 | A1200 FS+60d | 331d | 330d |  |
| A1440 |  | Sewage network |  | 500d | 2012-09-20 | 2014-02-01 | A1200 FS+120d | 271d | 270d |  |
| A1460 |  | Fire & irrigation network |  | 400d | 2012-10-20 | 2013-11-23 | A1200 FS+150d | 341d | 340d |  |
| A1450 |  | Storm drainage network |  | 500d | 2012-12-09 | 2014-04-22 | A1200 FS+200d | 191d | 190d |  |
| A1470 |  | Irrigation equipment |  | 400d | 2012-12-09 | 2014-01-12 | A1200 FS+200d | 291d | 290d |  |
| A1490 |  | Electrical networks |  | 500d | 2013-01-28 | 2014-06-11 | A1200 FS+250d | 141d | 140d |  |
| A1480 |  | Water features |  | 180d | 2014-04-23 | 2014-10-19 | A1200 FS+700d | 11d | 10d |  |

| ID | WBS | Activity | Duration | Start | Finish | Predecessors | Total float | Free float | Resources | Cost |
| --- | --- | --- | --- | --- | --- | --- | --- | --- | --- | --- |
|  | 5 | **ROADS** |  |  |  |  |  |  |  |  |
|  | 6 | **GATES** |  | 2014-06-02 | 2014-10-24 |  |  |  |  |  |
| A1320 |  | Gate - 1 | 145d | 2014-06-02 | 2014-10-24 | A1200 FS+740d | 6d | 5d |  |  |
| A1330 |  | Gate - 2 | 145d | 2014-06-02 | 2014-10-24 | A1200 FS+740d | 6d | 5d |  |  |
|  | 7 | **EXTERNAL FENCE** |  | 2014-04-23 | 2014-10-29 |  |  |  |  |  |
| A1340 |  | Excavation | 120d | 2014-04-23 | 2014-08-20 | A1200 FS+700d | 1d | 0d |  |  |
| A1350 |  | P.C & R.C Footings | 120d | 2014-05-03 | 2014-08-30 | A1340 SS+10d | 1d | 0d |  |  |
| A1360 |  | Coulmns & retaining walls | 120d | 2014-05-13 | 2014-09-09 | A1350 SS+10d | 1d | 0d |  |  |
| A1370 |  | Bituminous Insulation | 120d | 2014-05-23 | 2014-09-19 | A1360 SS+10d | 1d | 0d |  |  |
| A1380 |  | Masonry works | 120d | 2014-06-02 | 2014-09-29 | A1370 SS+10d | 1d | 0d |  |  |
| A1390 |  | External plaster | 120d | 2014-06-12 | 2014-10-09 | A1380 SS+10d | 1d | 0d |  |  |
| A1400 |  | Stone cladding | 120d | 2014-06-22 | 2014-10-19 | A1390 SS+10d | 1d | 0d |  |  |
| A1410 |  | Painting | 120d | 2014-07-02 | 2014-10-29 | A1400 SS+10d | 1d | 0d |  |  |
|  | 12 | **GROUP-1** |  | 2012-05-23 | 2012-11-14 |  |  |  |  |  |
|  | 2 | **FOUNDATIONS** |  | 2012-05-23 | 2012-06-08 |  |  |  |  |  |
| V-1-10 |  | P.c footing | 5d | 2012-05-23 | 2012-05-27 | A1290 SS+14d | 722d | 0d | CASH [40]; PLAIN CONCRETE [40 M3] | 40 |
| V-1-20 |  | R.c concrete foundations | 12d | 2012-05-28 | 2012-06-08 | V-1-10 | 722d | 0d | CASH [96]; REINFORCED CONCRETE [96] | 96 |
|  | 1 | **EARTH WORKS** |  | 2012-06-25 | 2012-06-28 |  |  |  |  |  |
| V-1-60 |  | Backfilling under slab on grade | 4d | 2012-06-25 | 2012-06-28 | V-1-50 | 722d | 0d | CASH [32] | 32 |
|  | 3 | **SKELETON WORKS** |  | 2012-06-09 | 2012-08-22 |  |  |  |  |  |
| V-1-30 |  | Ground floor columns | 8d | 2012-06-09 | 2012-06-16 | V-1-20 | 722d | 0d | CASH [64]; FORM WORK [64 m2]; STEEL LABOUR [64 h]; CARPENTER [64 h] | 64 |
| V-1-70 |  | Ground floor slab&beams&staircase | 15d | 2012-06-29 | 2012-07-13 | V-1-60 | 722d | 0d | CASH [120]; FORM WORK [120 m2]; STEEL LABOUR [120 h]; CARPENTER [120 h] | 120 |
| V-1-80 |  | First floor columns | 8d | 2012-07-14 | 2012-07-21 | V-1-70 | 729d | 7d | CASH [64]; FORM WORK [64 m2]; STEEL LABOUR [64 h]; CARPENTER [64 h] | 64 |
| V-1-90 |  | First floor slab&beams&staircase | 15d | 2012-07-29 | 2012-08-12 | V-1-80, V-1-70 FS+15d | 722d | 0d | CASH [120]; FORM WORK [120 m2]; STEEL LABOUR [120 h]; CARPENTER [120 h] | 120 |
| V-1-100 |  | Roof columns | 5d | 2012-08-13 | 2012-08-17 | V-1-90 | 770d | 0d | CASH [40]; FORM WORK [40 m2]; STEEL LABOUR [40 h]; CARPENTER [40 h] | 40 |
| V-1-110 |  | Slab on grade(R.C&P.C) | 5d | 2012-08-13 | 2012-08-17 | V-1-90 | 732d | 10d | CASH [40]; FORM WORK [40 m2]; STEEL LABOUR [40 h]; CARPENTER [40 h] | 40 |
| V-1-120 |  | Roof slab | 5d | 2012-08-18 | 2012-08-22 | V-1-100 | 770d | 0d | CASH [40]; FORM WORK [40 m2]; STEEL LABOUR [40 h]; CARPENTER [40 h] | 40 |

| ID | WBS | Activity | Duration | Start | Finish | Predecessors | Total float | Free float | Calendar | Resources | Cost |
| --- | --- | --- | --- | --- | --- | --- | --- | --- | --- | --- | --- |
|  | 9 | **MASONRY WORKS** |  | 2012-06-17 | 2012-09-16 |  |  |  |  |  |  |
| V-1-40 |  | Masonry under slab on grade | 4d | 2012-06-17 | 2012-06-20 | V-1-30 | 722d | 0d |  | CASH [32]; Brickwork Labor [32 h] | 32 |
| V-1-140 |  | Masonry works | 20d | 2012-08-28 | 2012-09-16 | V-1-90 FS+15d, V-1-110 | 722d | 0d |  | CASH [160]; Brickwork Labor [160 h] | 160 |
|  | 10 | **INSULATION WORKS** |  | 2012-06-21 | 2012-09-20 |  |  |  |  |  |  |
| V-1-50 |  | Footings&masonry insulation | 4d | 2012-06-21 | 2012-06-24 | V-1-40 | 722d | 0d |  | CASH [32] | 32 |
| V-1-130 |  | Slopped concrete | 5d | 2012-08-23 | 2012-08-27 | V-1-120 | 770d | 0d |  | CASH [40] | 40 |
| V-1-150 |  | Water proofing insulation | 7d | 2012-08-28 | 2012-09-03 | V-1-130 | 770d | 0d |  | CASH [56] | 56 |
| V-1-160 |  | Thermal insulation | 7d | 2012-09-04 | 2012-09-10 | V-1-150 | 770d | 0d |  | CASH [56] | 56 |
| V-1-170 |  | Ceramic tiles | 10d | 2012-09-11 | 2012-09-20 | V-1-160 | 770d | 769d |  | CASH [80] | 80 |
|  | 4 | **PLASTER WORKS** |  | 2012-09-17 | 2012-10-07 |  |  |  |  |  |  |
| V-1-180 |  | External plaster works | 21d | 2012-09-17 | 2012-10-07 | V-1-140 | 722d | 0d |  | CASH [168] | 168 |
|  | 5 | **FLOORING WORKS** |  | 2012-10-08 | 2012-10-24 |  |  |  |  |  |  |
| V-1-200 |  | Flooring works(garnite& marbles) | 10d | 2012-10-08 | 2012-10-17 | V-1-180 | 722d | 6.88d |  | CASH [80] | 80 |
| V-1-210 |  | Stone cladding | 7d | 2012-10-17 | 2012-10-24 | V-2-130 | 613d | 0d | 6 Days Workweek | CASH [56] | 56 |
|  | 6 | **PAINTING WORKS** |  | 2012-10-24 | 2012-11-03 |  |  |  |  |  |  |
| V-1-220 |  | External painting | 10d | 2012-10-24 | 2012-11-03 | V-1-200, V-1-210 | 715.12d | 0d |  | CASH [80] | 80 |
|  | 7 | **DOORS&WINDOWS** |  | 2012-11-03 | 2012-11-14 |  |  |  |  |  |  |
| V-1-230 |  | Doors & windows erection | 10d | 2012-11-03 | 2012-11-13 | V-1-220 | 716.12d | 715.12d |  | CASH [80] | 80 |
| V-1-240 |  | Wood cladding | 10d | 2012-11-04 | 2012-11-14 | V-1-220 | 613d | 612d | 6 Days Workweek | CASH [80] | 80 |
| V-1-250 |  | Hand rails&louvers | 5d | 2012-11-04 | 2012-11-08 | V-1-220 | 618d | 617d | 6 Days Workweek | CASH [40] | 40 |
|  | 8 | **EXTERNAL WORKS** |  | 2012-09-17 | 2012-09-26 |  |  |  |  |  |  |
| V-1-190 |  | Mechanical & electrical works | 10d | 2012-09-17 | 2012-09-26 | V-1-180 SS | 764d | 763d |  | CASH [80] | 80 |
|  | 1 | **GROUP-2** |  | 2012-05-02 | 2012-11-28 |  |  |  |  |  |  |
|  | 2 | **FOUNDATIONS** |  | 2012-05-02 | 2012-05-21 |  |  |  |  |  |  |
| V-2-20 |  | P.c footing | 5d | 2012-05-02 | 2012-05-07 |  | 587d | 0d | ORIANA VILLAS |  |  |
| V-2-30 |  | R.c concrete foundations | 12d | 2012-05-08 | 2012-05-21 | V-2-20 | 587d | 0d | ORIANA VILLAS |  |  |

| ID | WBS | Activity | Duration | Start | Finish | Predecessors | Total float | Free float | Calendar |
| --- | --- | --- | --- | --- | --- | --- | --- | --- | --- |
|  | 1 | **EARTH WORKS** |  | 2012-06-10 | 2012-06-13 |  |  |  |  |
| V-2-10 |  | Backfilling under slab on grade | 4d | 2012-06-10 | 2012-06-13 | V-2-110 | 587d | 0d | ORIANA VILLAS |
|  | 3 | **SKELETON WORKS** |  | 2012-05-22 | 2012-08-16 |  |  |  |  |
| V-2-40 |  | Ground floor columns | 8d | 2012-05-22 | 2012-05-30 | V-2-30 | 587d | 0d | ORIANA VILLAS |
| V-2-50 |  | Ground floor slab&beams&staircase | 15d | 2012-06-14 | 2012-07-01 | V-2-10 | 587d | 0d | ORIANA VILLAS |
| V-2-60 |  | First floor columns | 8d | 2012-07-02 | 2012-07-10 | V-2-50 | 594d | 7d | ORIANA VILLAS |
| V-2-70 |  | First floor slab&beams&staircase | 15d | 2012-07-19 | 2012-08-05 | V-2-60, V-2-50 FS+15d | 587d | 0d | ORIANA VILLAS |
| V-2-220 |  | Slab on grade(R.C&P.C) | 5d | 2012-08-06 | 2012-08-11 | V-2-70 | 597d | 10d | ORIANA VILLAS |
| V-2-80 |  | Roof columns | 5d | 2012-08-06 | 2012-08-11 | V-2-70 | 634d | 0d | ORIANA VILLAS |
| V-2-90 |  | Roof slab | 5d | 2012-08-12 | 2012-08-16 | V-2-80 | 634d | 0d | ORIANA VILLAS |
|  | 9 | **MASONRY WORKS** |  | 2012-05-31 | 2012-09-22 |  |  |  |  |
| V-2-100 |  | Masonry under slab on grade | 4d | 2012-05-31 | 2012-06-04 | V-2-40 | 587d | 0d | ORIANA VILLAS |
| V-2-120 |  | Masonry works | 20d | 2012-08-30 | 2012-09-22 | V-2-70 FS+15d, V-2-220 | 587d | 0d | ORIANA VILLAS |
|  | 10 | **INSULATION WORKS** |  | 2012-06-05 | 2012-09-26 |  |  |  |  |
| V-2-110 |  | Footings&masonry insulation | 4d | 2012-06-05 | 2012-06-09 | V-2-100 | 587d | 0d | ORIANA VILLAS |
| V-2-200 |  | Slopped concrete | 5d | 2012-08-25 | 2012-08-29 | V-2-90 | 634d | 0d | ORIANA VILLAS |
| V-2-190 |  | Water proofing insulation | 7d | 2012-08-30 | 2012-09-06 | V-2-200 | 634d | 0d | ORIANA VILLAS |
| V-2-180 |  | Thermal insulation | 7d | 2012-09-08 | 2012-09-15 | V-2-190 | 634d | 0d | ORIANA VILLAS |
| V-2-210 |  | Cement tiles | 10d | 2012-09-16 | 2012-09-26 | V-2-180 | 634d | 633d | ORIANA VILLAS |
|  | 4 | **PLASTER WORKS** |  | 2012-09-23 | 2012-10-16 |  |  |  |  |
| V-2-130 |  | External plaster works | 21d | 2012-09-23 | 2012-10-16 | V-2-120 | 587d | 0d | ORIANA VILLAS |
|  | 5 | **FLOORING WORKS** |  | 2012-10-17 | 2012-11-05 |  |  |  |  |
| V-2-140 |  | Flooring works | 10d | 2012-10-17 | 2012-11-05 | V-2-130 | 587d | 0d | ORIANA VILLAS |
|  | 6 | **PAINTING WORKS** |  | 2012-11-06 | 2012-11-17 |  |  |  |  |
| V-2-150 |  | External painting | 10d | 2012-11-06 | 2012-11-17 | V-2-140 | 587d | 0d | ORIANA VILLAS |

| ID | WBS | Activity | Duration | Start | Finish | Predecessors | Total float | Free float | Calendar |
| --- | --- | --- | --- | --- | --- | --- | --- | --- | --- |
|  | 7 | **DOORS&WINDOWS** |  | 2012-11-18 | 2012-11-28 |  |  |  |  |
| V-2-160 |  | Doors & windows erection | 10d | 2012-11-18 | 2012-11-28 | V-2-150 | 587d | 586d | ORIANA VILLAS |
|  | 8 | **EXTERNAL WORKS** |  | 2012-09-23 | 2012-10-03 |  |  |  |  |
| V-2-170 |  | Mechanical & electrical works | 10d | 2012-09-23 | 2012-10-03 | V-2-130 SS | 628d | 627d | ORIANA VILLAS |
