# Beyti Diary Plant Extension

Schedule from Primavera P6, 2011-09-17 to 2012-04-02, data date 2011-09-17, costs in EGP.

## Calendars

- Beyti: Mon-Thu 08:00-16:00; Fri off; Sat-Sun 08:00-16:00. Exceptions (off unless hours are given): 2011-11-05 to 2011-11-10, 2011-11-13 to 2011-11-17 08:00-16:00, 2011-11-27.
- walkable calendar: Mon-Thu 08:00-12:00, 13:00-17:00; Fri off; Sat-Sun 08:00-12:00, 13:00-17:00. Exceptions (off unless hours are given): 2011-12-18 to 2011-12-22, 2011-12-24 to 2011-12-29, 2011-12-31.

## Resources

| Resource | Group | Unit |
| --- | --- | --- |
| CARPENTER | labor |  |
| P.C. CONCRETE | material |  |
| STEEL LABOUR | labor |  |
| R.C. CONCRETE | material |  |
| STEEL STRUCTURE | material | ton |
| SANDWICH PANEL FOR WALLS 120MM THK | material | m2 |
| POLYURETHANE | material | m2 |
| EPOXY PAINTER | labor |  |
| SANDWICH PANEL FOR WALLS 120MM(FIRE RATED) | material | m2 |
| Painter | labor |  |
| STEEL STRUCTURE LABOUR | labor |  |
| POLYETHELENE SHEET 400M | material | m2 |
| Brickwork Labor | labor |  |
| BRICKS | material | m2 |
| plastering worker | labor |  |
| SANDWICH PANEL FOR ROOF 150MM THK | material | m2 |

## Schedule

| ID | WBS | Activity | Type | Duration | Start | Finish | Predecessors | Total float | Free float | user_text1 | TYPE OF WORK |
| --- | --- | --- | --- | --- | --- | --- | --- | --- | --- | --- | --- |
|  | BEYTI-REV A | **Project Milestones** |  |  | 2011-09-17 | 2012-04-02 |  |  |  |  |  |
| Ms 100 |  | Letter of Acceptance |  | 0d | 2011-09-17 | 2011-09-17 |  | 0d |  |  |  |
| Ms 105 |  | Site handing over | milestone | 0d | 2011-09-17 | 2011-09-17 | Ms 100 | 0d |  |  |  |
| Ms 106 |  | Contract agreement | milestone | 0d | 2011-09-17 | 2011-09-17 | Ms 105 | 0d |  |  |  |
| Ms 107 |  | Receive advanced payment | milestone | 0d | 2011-09-17 | 2011-09-17 | Ms 106 | 0d |  |  |  |
| Ms 108 |  | Commencement date | milestone | 0d | 2011-09-17 | 2011-09-17 | Ms 107 | 0d |  | Ms 100 |  |
| Ms 110 |  | Mobilization & temporary facilities |  | 7d | 2011-09-17 | 2011-09-24 | Ms 108 | 0d |  | Ms 110 |  |
| Ms 111 |  | Site survey |  | 7d | 2011-09-25 | 2011-10-02 | Ms 110 | 0d |  | Ms 111 |  |
| Ms 190 |  | Soil Investigation Report |  | 15d | 2011-09-25 | 2011-10-11 | Ms 110 | 19d |  | Ms 190 |  |
| QA 001 |  | Internal quality audit #1 |  | 7d | 2011-11-19 | 2011-11-26 | Ms 108 FS+48d | 95d |  |  |  |
| QA 002 |  | Internal quality audit #2 |  | 7d | 2012-02-18 | 2012-02-25 | Ms 108 FS+125d | 18d |  |  |  |
| Ms 160 |  | Juice preparation finish dates | milestone | 0d | 2012-03-14 | 2012-03-14 | JP-A280, JP-A260, JP-A310, JP-A150, JP-A230, JP-A190, JP-A320 | 2d |  | Ms 160 |  |
| Ms 120 |  | As built drawings | milestone | 0d | 2012-03-17 | 2012-03-17 | SD 300 | 0d |  | Ms 120 |  |
| Ms 130 |  | UHT FINISH DATE | milestone | 0d | 2012-03-17 | 2012-03-17 | UHT 200, UHT 250, UHT 220 | 0d |  | Ms 130 |  |
| Ms 170 |  | Pet filling finish date | milestone | 0d | 2012-03-17 | 2012-03-17 | PET-Z1-CC-290, PET-Z1-AR-140, PET-Z2-AR-190, PET-Z1-AR-220, PET-Z1-AR-180, PET-Z1-AR-290, PET-Z2-AR-220, PET-Z2-AR-240, PET-Z2-AR-130, PET-Z1-AR-200, PET-Z1-AR-270, PET-Z1-AR-120, PET-Z1-CC-280, PET-Z1-AR-250, PET-Z1-AR-260, PET-Z2-AR-260, PET-Z2-AR-210, PET-Z1-AR-220 FF, PET-Z2-AR-230, PET-Z2-AR-280, PET-Z1-AR-330, PET-Z1-AR-340, PET-Z1-AR-350 | 0d |  | Ms 170 |  |
| Ms 180 |  | Snag list finish dates | milestone | 0d | 2012-03-17 | 2012-03-17 | JP-A320, PET-Z2-AR-260, UHT 250, PET-Z1-AR-290 | 0d |  | Ms 180 |  |
| Ms 200 |  | Project completion & final handing over | milestone | 0d | 2012-03-17 | 2012-03-17 | Ms 160, Ms 170, Ms 130, Ms 120, Ms 180, QA 002, QA 001 | 0d |  | Ms 200 |  |
| Ms 210 |  | Dismantling all temporary facilities |  | 14d | 2012-03-18 | 2012-04-02 | Ms 200 | 0d |  |  |  |
|  | Procurement | **Procurement** |  |  | 2011-10-18 | 2012-02-29 |  |  |  |  |  |
|  | Procurement | **Purchase order** |  |  | 2011-10-18 | 2011-12-05 |  |  |  |  |  |
| PO 120 |  | Steel structure purchase order | milestone | 0d | 2011-10-18 | 2011-10-18 | Ms 110 FS+20d | 0d |  | PO 120 | civil |
| PO 150 |  | Guard bollard purchase order | milestone | 0d | 2011-10-18 | 2011-10-18 | Ms 110 FS+20d | 11d | 0d |  |  |
| PO 110 |  | Sandwich panel purchase order | milestone | 0d | 2011-10-23 | 2011-10-23 | MT-1090 FS+5d | 33d | 0d | PO 110 | arch |
| PO 130 |  | Walk on ceiling purchase order | milestone | 0d | 2011-10-27 | 2011-10-27 | MT-1130 FS+2d | 0d |  | PO 130 | arch |
| PO 100 |  | Polyurethane purchase order | milestone | 0d | 2011-11-15 | 2011-11-15 | Ms 108 FS+45d | 0d |  | PO 100 | arch |
| PO 140 |  | Doors&windows&metal works purchase order | milestone | 0d | 2011-12-05 | 2011-12-05 | SD 290, SD 260, SD 270, SD 280, MT-1160 | 1d | 0d | PO 140 | metal |

| ID | WBS | Activity | Type | Duration | Start | Finish | Predecessors | Total float | Free float | user_text1 | TYPE OF WORK |
| --- | --- | --- | --- | --- | --- | --- | --- | --- | --- | --- | --- |
|  | Delivery date | **Delivery date** |  |  | 2011-12-15 | 2012-02-29 |  |  |  |  |  |
| DD110 |  | Steel structure delivery on site | milestone | 0d | 2011-12-15 | 2011-12-15 | SD 240 FS+15d | 0d |  | DD110 | civil |
| DD100 |  | Sandwich panel delivery on site | milestone | 0d | 2011-12-22 | 2011-12-22 | SD 190 FS+30d | 33d | 9d | DD100 | arch |
| DD120 |  | Delivery of walk-on-ceiling laminated with electrostatic galvanized steel | milestone | 0d | 2012-02-01 | 2012-02-01 | SD 170 FS+41d | 0d |  | DD120 | arch |
| DD170 |  | Guard bollard delivery on site | milestone | 0d | 2012-02-08 | 2012-02-08 | PO 150 FS+90d | 11d | 4d |  |  |
| DD130 |  | Doors&windows&metal works delivery on site | milestone | 0d | 2012-02-13 | 2012-02-13 | PO 140 FS+60d | 3d | 0d | DD130 | metal |
| DD150 |  | Steel stairs Delivery on site | milestone | 0d | 2012-02-20 | 2012-02-20 | Ms 110 FS+120d | 13d | 0d |  |  |
| DD160 |  | Roll up shutter doors delivery on site | milestone | 0d | 2012-02-25 | 2012-02-25 | PO 140 FS+70d | 1d | 0d |  |  |
| DD140 |  | Polyurethane delivery on site | milestone | 0d | 2012-02-29 | 2012-02-29 | PO 100 FS+90d | 0d |  | DD140 | arch |
|  | Engineering | **Engineering** |  |  | 2011-09-27 | 2012-03-17 |  |  |  |  |  |
|  | 1 | **Material** |  |  | 2011-09-27 | 2011-11-02 |  |  |  |  |  |
|  | 3 | **Sandwich panel** |  |  | 2011-09-27 | 2011-10-16 |  |  |  |  |  |
| MT-1000 |  | Material submittal |  | 3d | 2011-09-27 | 2011-09-29 | Ms 110 FS+2d | 33d | 0d |  |  |
| MT-1090 |  | Material approval |  | 3d | 2011-10-13 | 2011-10-16 | MT-1000 SS+14d, MT-1000 FF+14d | 33d | 0d |  |  |
|  | 9 | **Sprayed fire resistance** |  |  | 2011-10-02 | 2011-10-19 |  |  |  |  |  |
| MT-1030 |  | Material submittal |  | 2d | 2011-10-02 | 2011-10-03 | Ms 110 FS+6d | 84d | 0d |  |  |
| MT-1140 |  | Material approval |  | 2d | 2011-10-18 | 2011-10-19 | MT-1030 SS+14d, MT-1030 FF+14d | 84d | 76d |  |  |
|  | 8 | **Galvanized steel flashing** |  |  | 2011-10-11 | 2011-10-29 |  |  |  |  |  |
| MT-1080 |  | Material submittal |  | 2d | 2011-10-11 | 2011-10-12 | Ms 110 FS+14d | 95d | 0d |  |  |
| MT-1190 |  | Material approval |  | 2d | 2011-10-27 | 2011-10-29 | MT-1080 SS+14d, MT-1080 FF+14d | 95d | 94d |  |  |
|  | 1 | **Corrugated sheets** |  |  | 2011-10-16 | 2011-11-02 |  |  |  |  |  |
| MT-1100 |  | Material submittal |  | 2d | 2011-10-16 | 2011-10-17 | Ms 110 FS+18d | 77d | 0d |  |  |
| MT-1200 |  | Material approval |  | 2d | 2011-11-01 | 2011-11-02 | MT-1100 SS+14d, MT-1100 FF+14d | 77d | 64d |  |  |
|  | 11 | **Steel doors** |  |  | 2011-09-29 | 2011-10-17 |  |  |  |  |  |
| MT-1010 |  | Material submittal |  | 2d | 2011-09-29 | 2011-10-01 | Ms 110 FS+4d | 11d | 0d |  |  |
| MT-1120 |  | Material approval |  | 2d | 2011-10-16 | 2011-10-17 | MT-1010 SS+14d, MT-1010 FF+14d | 11d | 10d |  |  |

| ID | WBS | Activity | Duration | Start | Finish | Predecessors | Total float | Free float | user_text1 | TYPE OF WORK |
| --- | --- | --- | --- | --- | --- | --- | --- | --- | --- | --- |
|  | 10 | **Stainless steel doors** |  | 2011-10-06 | 2011-10-24 |  |  |  |  |  |
| MT-1070 |  | Material submittal | 2d | 2011-10-06 | 2011-10-08 | Ms 110 FS+10d | 5d | 0d |  |  |
| MT-1180 |  | Material approval | 2d | 2011-10-23 | 2011-10-24 | MT-1070 SS+14d, MT-1070 FF+14d | 5d | 4d |  |  |
|  | 4 | **Roll up shutter door** |  | 2011-10-06 | 2011-10-24 |  |  |  |  |  |
| MT-1060 |  | Material submittal | 2d | 2011-10-06 | 2011-10-08 | Ms 110 FS+10d | 5d | 0d |  |  |
| MT-1170 |  | Material approval | 2d | 2011-10-23 | 2011-10-24 | MT-1060 SS+14d, MT-1060 FF+14d | 5d | 4d |  |  |
|  | 5 | **Over head door** |  | 2011-10-02 | 2011-10-19 |  |  |  |  |  |
| MT-1040 |  | Material submittal | 2d | 2011-10-02 | 2011-10-03 | Ms 110 FS+6d | 9d | 0d |  |  |
| MT-1150 |  | Material approval | 2d | 2011-10-18 | 2011-10-19 | MT-1040 SS+14d, MT-1040 FF+14d | 9d | 8d |  |  |
|  | 6 | **Aluminum windows** |  | 2011-10-06 | 2011-10-30 |  |  |  |  |  |
| MT-1050 |  | Material submittal | 7d | 2011-10-06 | 2011-10-13 | Ms 110 FS+10d | 24d | 0d |  |  |
| MT-1160 |  | Material approval | 7d | 2011-10-23 | 2011-10-30 | MT-1050 SS+14d, MT-1050 FF+14d | 24d | 23d |  |  |
|  | 7 | **walk on ceiling** |  | 2011-10-01 | 2011-10-24 |  |  |  |  |  |
| MT-1020 |  | Material submittal | 7d | 2011-10-01 | 2011-10-08 | Ms 110 FS+5d | 0d |  |  |  |
| MT-1130 |  | Material approval | 7d | 2011-10-17 | 2011-10-24 | MT-1020 SS+14d, MT-1020 FF+14d | 0d |  |  |  |
|  | 2 | **Rain water gutter** |  | 2011-10-16 | 2011-11-02 |  |  |  |  |  |
| MT-1110 |  | Material submittal | 2d | 2011-10-16 | 2011-10-17 | Ms 110 FS+18d | 83d | 0d |  |  |
| MT-1210 |  | Material approval | 2d | 2011-11-01 | 2011-11-02 | MT-1110 SS+14d, MT-1110 FF+14d | 83d | 69d |  |  |
|  | 12 | **Shop drawings** |  | 2011-10-03 | 2012-03-17 |  |  |  |  |  |
|  | 6 | **R.c footings** |  | 2011-10-11 | 2011-11-02 |  |  |  |  |  |
| SD 120 |  | Shop Drawings submittal | 6d | 2011-10-11 | 2011-10-17 | Ms 110 FS+14d | 0d |  | SD 120 | civil |
| SD 180 |  | Shop Drawings Approval | 6d | 2011-10-27 | 2011-11-02 | SD 120 SS+14d, SD 120 FF+14d | 0d |  | SD 180 | civil |
|  | 5 | **Plain concrete footings** |  | 2011-10-03 | 2011-10-25 |  |  |  |  |  |
| SD 100 |  | Shop Drawings submittal | 6d | 2011-10-03 | 2011-10-09 | Ms 111 | 0d |  | SD 100 | civil |
| SD 150 |  | Shop Drawings Approval | 6d | 2011-10-19 | 2011-10-25 | SD 100 FF+14d, SD 100 SS+14d | 0d |  | SD 150 | civil |

| ID | WBS | Activity | Duration | Start | Finish | Predecessors | Total float | Free float | user_text1 | TYPE OF WORK |
| --- | --- | --- | --- | --- | --- | --- | --- | --- | --- | --- |
|  | 10 | **Metal fabrications** |  | 2011-10-30 | 2011-11-30 |  |  |  |  |  |
| SD 220 |  | Shop Drawings submittal | 7d | 2011-10-30 | 2011-11-13 | Ms 110 FS+30d | 4d | 0d | SD 220 | arch |
| SD 280 |  | Shop Drawings Approval | 7d | 2011-11-22 | 2011-11-30 | SD 220 FF+14d, SD 220 SS+14d | 4d | 3d | SD 280 | arch |
|  | 11 | **Sandwich panel** |  | 2011-10-23 | 2011-11-15 |  |  |  |  |  |
| SD 130 |  | Shop Drawings submittal | 1d | 2011-10-23 | 2011-10-23 | PO 110 | 33d | 0d | SD 130 | arch |
| SD 190 |  | Shop Drawings Approval | 1d | 2011-11-15 | 2011-11-15 | SD 130 SS+14d, SD 130 FF+14d | 33d | 0d | SD 190 | arch |
|  | 1 | **steel structure** |  | 2011-10-26 | 2011-11-26 |  |  |  |  |  |
| SD 140 |  | Shop Drawings submittal | 7d | 2011-10-26 | 2011-11-02 | PO 120 FS+7d | 0d |  | SD 140 | civil |
| SD 240 |  | Shop Drawings Approval | 7d | 2011-11-19 | 2011-11-26 | SD 140 SS+14d, SD 140 FF+14d | 0d |  | SD 240 | civil |
|  | 2 | **masonry** |  | 2011-10-24 | 2011-11-23 |  |  |  |  |  |
| SD 160 |  | Shop Drawings submittal | 7d | 2011-10-24 | 2011-10-31 | Ms 110 FS+25d | 13d | 0d | SD 160 | arch |
| SD 250 |  | Shop Drawings Approval | 7d | 2011-11-16 | 2011-11-23 | SD 160 FF+14d, SD 160 SS+14d | 13d | 5d | SD 250 | arch |
|  | 8 | **Windows** |  | 2011-10-30 | 2011-11-30 |  |  |  |  |  |
| SD 210 |  | Shop Drawings submittal | 7d | 2011-10-30 | 2011-11-13 | Ms 110 FS+30d | 4d | 0d | SD 210 | arch |
| SD 270 |  | Shop Drawings Approval | 7d | 2011-11-22 | 2011-11-30 | SD 210 SS+14d, SD 210 FF+14d | 4d | 3d | SD 270 | arch |
|  | 9 | **Louvers** |  | 2011-10-30 | 2011-11-30 |  |  |  |  |  |
| SD 230 |  | Shop Drawings submittal | 7d | 2011-10-30 | 2011-11-13 | Ms 110 FS+30d | 4d | 0d | SD 230 | arch |
| SD 290 |  | Shop Drawings Approval | 7d | 2011-11-22 | 2011-11-30 | SD 230 SS+14d, SD 230 FF+14d | 4d | 3d | SD 290 | arch |
|  | 4 | **Doors** |  | 2011-10-30 | 2011-12-04 |  |  |  |  |  |
| SD 200 |  | Shop Drawings submittal | 10d | 2011-10-30 | 2011-11-16 | Ms 110 FS+30d, MT-1120, MT-1180, MT-1170, MT-1150 | 1d | 0d | SD 200 | arch |
| SD 260 |  | Shop Drawings Approval | 10d | 2011-11-22 | 2011-12-04 | SD 200 FF+14d, SD 200 SS+14d | 1d | 0d | SD 260 | arch |
|  | 3 | **walk on ceiling** |  | 2011-10-27 | 2011-12-14 |  |  |  |  |  |
| SD 110 |  | Shop Drawings submittal | 21d | 2011-10-27 | 2011-11-28 | PO 130 | 0d |  | SD 110 | arch |
| SD 170 |  | Shop Drawings Approval | 21d | 2011-11-20 | 2011-12-14 | SD 110 FF+14d, SD 110 SS+14d | 0d |  | SD 170 | arch |

| ID | WBS | Activity | Type | Duration | Start | Finish | Predecessors | Total float | Free float | Resources | Cost | user_text1 | TYPE OF WORK | FLOOR LEVEL |
| --- | --- | --- | --- | --- | --- | --- | --- | --- | --- | --- | --- | --- | --- | --- |
|  | 7 | **As built** |  |  | 2012-03-17 | 2012-03-17 |  |  |  |  |  |  |  |  |
| SD 300 |  | As built submittal | milestone | 0d | 2012-03-17 | 2012-03-17 | UHT 250, JP-A320, PET-Z2-AR-260, PET-Z1-AR-290 | 0d |  |  |  | SD 300 | arch |  |
|  | 7 | **Construction** |  |  | 2011-09-25 | 2012-03-17 |  |  |  |  |  |  |  |  |
|  | 3 | **Juice Preparation** |  |  | 2011-09-25 | 2012-03-14 |  |  |  |  |  |  |  |  |
|  | 3 | **Civil works** |  |  | 2011-09-28 | 2012-02-15 |  |  |  |  |  |  |  |  |
| JP-C100 |  | Demolishing Slab on Grade |  | 7d | 2011-09-28 | 2011-10-05 | JP-A110 | 2d | 0d |  | 20,000 | JP-C100 | civil | FOOTING |
| JP-C110 |  | Utilities diversion(plumbing) |  | 8d | 2011-10-06 | 2011-10-15 | JP-C100 | 2d | 0d |  |  | JP-C110 | civil | FOOTING |
| JP-C120 |  | Excavation |  | 12d | 2011-10-13 | 2011-10-26 | JP-C110 FF+10d, JP-C110 SS+6d | 2d | 0d |  | 11,000 | JP-C120 | civil | FOOTING |
| JP-C130 |  | Demolishing Footing and Tie Beam |  | 7d | 2011-10-27 | 2011-11-03 | JP-C120 | 2d | 0d |  | 21,432 | JP-C130 | civil | FOOTING |
| JP-C140 |  | Replacement & back fill Under Footing |  | 10d | 2011-11-12 | 2011-11-22 | JP-C130 | 2d | 0d |  | 17,880 | JP-C140 | civil | FOOTING |
| JP-C150 |  | Plain concrete 100 under footings |  | 3d | 2011-11-23 | 2011-11-26 | JP-C140, SD 150 | 2d | 0d | CARPENTER [66 h]; P.C. CONCRETE [100] | 6,000 | JP-C150 | civil | FOOTING |
| JP-C160 |  | R.C. for footings & tie beams |  | 7d | 2011-11-28 | 2011-12-05 | JP-C150, Ms 190, SD 180 | 2d | 0d | CARPENTER [27 h]; STEEL LABOUR [40 h]; R.C. CONCRETE [40] | 69,240 | JP-C160 | civil | FOOTING |
| JP-C170 |  | R.c for pedestals |  | 8d | 2011-12-06 | 2011-12-14 | JP-C160 | 2d | 0d | R.C. CONCRETE [4] | 10,872 | JP-C170 | civil | FOOTING |
| JP-C190 |  | Soil replacement under slab on grade |  | 7d | 2011-12-15 | 2011-12-22 | JP-C170 | 2d | 0d |  | 6,120 | JP-C190 | civil | FOOTING |
| JP-C230 |  | Footings insulation/water proofing |  | 2d | 2011-12-15 | 2011-12-17 | JP-C170 | 6d | 0d |  |  | JP-C230 | civil | FOOTING |
| JP-C180 |  | Anchors for steel structure |  | 6d | 2011-12-18 | 2011-12-24 | JP-C230, JP-C160, JP-C170 FF | 6d | 4d |  |  | JP-C180 | civil | GROUND |
| JP-C210 |  | Slab On Grade |  | 5d | 2011-12-24 | 2011-12-28 | JP-C190 | 2d | 0d | P.C. CONCRETE [170] | 34,850 | JP-C210 | civil | GROUND |
| JP-C200 |  | Steel structure erection |  | 25d | 2011-12-29 | 2012-01-26 | JP-C180, DD110, JP-C170, JP-C210 | 2d | 0d | STEEL STRUCTURE [40 ton] | 412,000 | JP-C200 | civil | GROUND |
| JP-C220 |  | Concrete Screed |  | 10d | 2012-01-28 | 2012-02-07 | JP-C210, JP-C200 | 14d | 0d | P.C. CONCRETE [355] | 19,275 | JP-C220 | civil | GROUND |
| JP-C240 |  | Concrete guard base |  | 10d | 2012-01-28 | 2012-02-07 | JP-C220 SS, JP-C220 FF | 24d | 18d |  | 8,100 |  |  |  |
| JP-A160 |  | RC for deck floors |  | 7d | 2012-02-08 | 2012-02-15 | JP-A130 | 11d | 0d | R.C. CONCRETE [170] | 31,110 | JP-A160 | civil | MEZZ |
| JP-A170 |  | Roof R.c slab |  | 5d | 2012-02-08 | 2012-02-13 | JP-A140 | 13d | 0d |  | 18,000 | JP-A170 | civil | ROOF |
|  | 4 | **Arch works** |  |  | 2011-09-25 | 2012-03-14 |  |  |  |  |  |  |  |  |
| JP-A100 |  | Utilities diversion(Electrical) |  | 10d | 2011-09-25 | 2011-10-05 | Ms 110 | 2d | 0d |  | 33,500 | JP-A100 | arch | GROUND |
| JP-A110 |  | Dismantle Steel Handrail |  | 2d | 2011-09-26 | 2011-09-27 | JP-A100 SS+1d | 2d | 0d |  | 136 | JP-A110 | arch | GROUND |
| JP-A120 |  | Sandwich Panel for roofs & walls |  | 15d | 2012-01-28 | 2012-02-13 | JP-C200, DD100 | 2d | 0d | SANDWICH PANEL FOR WALLS 120MM THK [130 m2]; SANDWICH PANEL FOR WALLS 120MM THK [145 m2] | 101,045 | JP-A120 | arch | GROUND |
| JP-A130 |  | Install corrugated sheets on roof level |  | 10d | 2012-01-28 | 2012-02-07 | JP-C200 | 11d | 0d |  | 17,000 | JP-A130 | arch | MEZZ |
| JP-A140 |  | Install corrugated sheets on mezzanine level |  | 10d | 2012-01-28 | 2012-02-07 | JP-C200 | 13d | 0d |  |  | JP-A140 | arch | MEZZ |
| JP-A150 |  | Steel structure paintings |  | 30d | 2012-01-28 | 2012-03-01 | JP-C200 | 13d | 11d |  |  | JP-A150 | arch | GROUND |
| JP-A250 |  | Doors erection | resource dependent | 10d | 2012-02-13 | 2012-02-23 | DD130 | 10d | 0d |  | 216,442 | JP-A250 | arch | GROUND |
| JP-A260 |  | Louvers erection for upper roof |  | 13d | 2012-02-13 | 2012-02-27 | JP-A250 FF, JP-A250 SS | 16d | 14d |  | 17,115 | JP-A260 | arch | ROOF |
| JP-A270 |  | Dismantle Sandwich Panel(after construction) |  | 13d | 2012-02-13 | 2012-02-27 | JP-A250 SS, JP-A250 FF, JP-A350 SS, JP-A350 FF | 24d | 13d |  | 15,400 | JP-A270 | arch | GROUND |
| JP-A330 |  | Steel ladder &steel habd rail erection |  | 14d | 2012-02-13 | 2012-02-28 | DD130 | 6d | 0d |  | 15,670 | JP-A330 | arch | GROUND |
| JP-A350 |  | Over head sectional Door erection | resource dependent | 12d | 2012-02-13 | 2012-02-26 | DD130 | 8d | 0d |  | 61,776 | JP-A250 | arch | GROUND |
| JP-A180 |  | External Cement Plaster |  | 9d | 2012-02-14 | 2012-02-23 | JP-A120 | 2d | 0d |  | 1,060 | JP-A180 | arch | GROUND |
| JP-A200 |  | Slopped plain concrete |  | 5d | 2012-02-14 | 2012-02-19 | JP-A170 | 13d | 0d | P.C. CONCRETE [170] | 15,980 | JP-A200 | arch | ROOF |
| JP-A340 |  | Guard bollard erection |  | 7d | 2012-02-15 | 2012-02-22 | DD130 FS+2d, DD170 | 13d | 11d |  | 31,000 |  |  |  |
| JP-A190 |  | Sandwich Panel for walls |  | 10d | 2012-02-16 | 2012-02-27 | JP-A160, DD100 | 11d | 0d | SANDWICH PANEL FOR WALLS 120MM(FIRE RATED) [150 m2] | 122,375 | JP-A190 | civil | MEZZ |
| JP-A210 |  | Sheet Waterproofing |  | 5d | 2012-02-20 | 2012-02-25 | JP-A200 | 13d | 0d |  | 50,150 | JP-A210 | arch | ROOF |
| JP-A240 |  | Epoxy Paint |  | 10d | 2012-02-25 | 2012-03-06 | JP-A180 | 2d | 0d | EPOXY PAINTER [4 h] | 18,930 | JP-A240 | arch | GROUND |
| JP-A220 |  | Thermal Insulation |  | 5d | 2012-02-26 | 2012-03-01 | JP-A210 | 13d | 0d |  | 11,730 | JP-A220 | arch | ROOF |
| JP-A230 |  | Roof Finish& rigid insulation 20mm thick |  | 5d | 2012-02-26 | 2012-03-01 | JP-A220 FF, JP-A220 SS | 13d | 11d |  | 18,370 | JP-A230 | arch | ROOF |
| JP-A310 |  | Acrylic paint |  | 5d | 2012-02-26 | 2012-03-01 | JP-A180 FS+1d | 6d | 4d | Painter [2 h] | 940 | JP-A310 | arch | GROUND |
| JP-A280 |  | Dismantle the old existed doors |  | 5d | 2012-02-28 | 2012-03-04 | JP-A190, JP-A270 SS | 11d | 9d |  | 4,020 | JP-A280 | arch | GROUND |
| JP-A290 |  | Polyurethane Flooring |  | 7d | 2012-02-29 | 2012-03-07 | DD140, JP-A250, JP-A330, JP-C220 FS+10d, JP-C240, JP-A350 | 6d | 4d | POLYURETHANE [415 m2] | 244,240 | JP-A290 | arch | GROUND |
| JP-A300 |  | Final touch up |  | 4d | 2012-03-07 | 2012-03-11 | JP-A290 SS+2d, JP-A310, JP-A240, JP-A340 | 2d | 0d |  |  | JP-A300 | arch | GROUND |
| JP-A320 |  | Handing over & comissioning |  | 3d | 2012-03-12 | 2012-03-14 | JP-A300 | 2d | 0d |  |  | JP-A320 | arch | GROUND |

Notes:
- JP-C100: Expenses: (New Expense Item) 20000
- JP-C110: Expenses: (New Expense Item) 0
- JP-C120: Expenses: (New Expense Item) 11000
- JP-C130: Expenses: (New Expense Item) 21432
- JP-C140: Expenses: (New Expense Item) 17880
- JP-C150: Expenses: (New Expense Item) 6000
- JP-C160: Expenses: (New Expense Item) 69240
- JP-C170: Expenses: (New Expense Item) 10872
- JP-C190: Expenses: (New Expense Item) 6120
- JP-C210: Expenses: (New Expense Item) 34850
- JP-C200: Expenses: (New Expense Item) 412000
- JP-C220: Expenses: (New Expense Item) 19275
- JP-C240: Expenses: (New Expense Item) 8100
- JP-A160: Expenses: (New Expense Item) 31110
- JP-A170: Expenses: (New Expense Item) 18000
- JP-A100: Expenses: (New Expense Item) 33500
- JP-A110: Expenses: (New Expense Item) 136
- JP-A120: Expenses: (New Expense Item) 101045
- JP-A130: Expenses: (New Expense Item) 17000
- JP-A250: Expenses: (New Expense Item) 216442
- JP-A260: Expenses: (New Expense Item) 17115
- JP-A270: Expenses: (New Expense Item) 15400
- JP-A330: Expenses: (New Expense Item) 15670
- JP-A350: Expenses: (New Expense Item) 61776
- JP-A180: Expenses: (New Expense Item) 1060
- JP-A200: Expenses: (New Expense Item) 15980
- JP-A340: Expenses: (New Expense Item) 31000
- JP-A190: Expenses: (New Expense Item) 122375
- JP-A210: Expenses: (New Expense Item) 50150
- JP-A240: Expenses: (New Expense Item) 18930
- JP-A220: Expenses: (New Expense Item) 11730
- JP-A230: Expenses: (New Expense Item) 18370
- JP-A310: Expenses: (New Expense Item) 940
- JP-A280: Expenses: Dismantle Doors 4020
- JP-A290: Expenses: (New Expense Item) 244240

| ID | WBS | Activity | Duration | Start | Finish | Predecessors | Total float | Free float | Resources | Cost | user_text1 | TYPE OF WORK | FLOOR LEVEL | PET FILLING BUILDING |
| --- | --- | --- | --- | --- | --- | --- | --- | --- | --- | --- | --- | --- | --- | --- |
|  | 4 | **UHT Processing Area** |  | 2011-09-25 | 2012-03-17 |  |  |  |  |  |  |  |  |  |
|  | 1 | **Civil works** |  | 2011-10-06 | 2012-01-12 |  |  |  |  |  |  |  |  |  |
| UHT 110 |  | Demolishing Slab on Grade | 30d | 2011-10-06 | 2011-11-16 | UHT 100 | 26d | 0d |  | 108,540 | UHT 110 | civil | GROUND |  |
| UHT 120 |  | Utilities diversion (Plumbing) | 10d | 2011-11-17 | 2011-11-29 | UHT 110 | 26d | 0d |  |  | UHT 120 | civil | GROUND |  |
| UHT 130 |  | Plain concrete screed (150mm) | 14d | 2011-11-30 | 2011-12-15 | UHT 120 | 26d | 0d | P.C. CONCRETE [405] | 36,045 | UHT 130 | civil | GROUND |  |
| UHT 140 |  | Fair face conc. guard base(kerb) | 14d | 2011-12-17 | 2012-01-01 | UHT 130 | 26d | 0d |  | 4,590 | UHT 140 | civil | GROUND |  |
| UHT 190 |  | Stainless steel grating cover erection | 10d | 2012-01-02 | 2012-01-12 | UHT 140 | 40d |  |  | 104,500 | UHT 190 | civil | GROUND |  |
|  | 2 | **Arch works** |  | 2011-09-25 | 2012-03-17 |  |  |  |  |  |  |  |  |  |
| UHT 100 |  | Utilities diversion(Electrical) | 10d | 2011-09-25 | 2011-10-05 | Ms 110 | 26d | 0d |  | 33,500 | UHT 100 | arch | GROUND |  |
| UHT 150 |  | Sandwich Panel erection | 7d | 2012-01-02 | 2012-01-09 | UHT 140, DD100 | 26d | 0d |  | 4,851 | UHT 150 | arch | GROUND |  |
| UHT 160 |  | Epoxy Paint for old sandwich panel & column base | 10d | 2012-01-10 | 2012-01-21 | UHT 150 | 26d | 19d | EPOXY PAINTER [16 h] | 48,735 | UHT 160 | arch | GROUND |  |
| UHT 260 |  | Guard bollard erection | 4d | 2012-02-13 | 2012-02-16 | DD130, UHT 160, DD170 | 7d | 0d |  | 15,500 |  |  |  |  |
| UHT 170 |  | Dismantle Doors & Louvers | 4d | 2012-02-18 | 2012-02-21 | UHT 180 SS, UHT 270 SS | 16d | 0d |  | 1,377 | UHT 170 | arch | GROUND |  |
| UHT 180 |  | Doors erection | 3d | 2012-02-18 | 2012-02-20 | DD130, UHT 260 | 7d | 0d |  | 15,250 | UHT 180 | arch | GROUND |  |
| UHT 200 |  | Louvers erection | 4d | 2012-02-18 | 2012-02-21 | UHT 180 FF, UHT 180 SS | 21d |  |  | 9,626 | UHT 200 | arch | GROUND |  |
| UHT 270 |  | Over head sectional Door erection | 3d | 2012-02-18 | 2012-02-20 | DD130, UHT 260 | 7d | 0d |  | 92,664 | UHT 180 | arch | GROUND |  |
| UHT 220 |  | Dismantle Sandwich Panel | 5d | 2012-02-22 | 2012-02-27 | UHT 170 | 16d |  |  | 65 | UHT 220 | arch | GROUND |  |
| UHT 230 |  | Polyurethane Flooring | 10d | 2012-02-29 | 2012-03-11 | DD140, UHT 130 FS+10d, UHT 180, UHT 190, UHT 270 | 0d |  | POLYURETHANE [415 m2] | 285,520 | UHT 230 | arch | GROUND |  |
| UHT 240 |  | Final touch up | 2d | 2012-03-12 | 2012-03-13 | UHT 230, UHT 260 | 0d |  |  |  | UHT 240 | arch | GROUND |  |
| UHT 250 |  | Handing over & comissioning | 3d | 2012-03-14 | 2012-03-17 | UHT 240 | 0d |  |  |  | UHT 250 | arch | GROUND |  |
|  | 2 | **Pet Filling Line** |  | 2011-09-25 | 2012-03-17 |  |  |  |  |  |  |  |  |  |
|  | 1 | **zone-2 (b30 to b313)-stroage area** |  | 2011-10-01 | 2012-03-15 |  |  |  |  |  |  |  |  |  |
|  | 1 | **Civil works** |  | 2011-10-01 | 2012-02-23 |  |  |  |  |  |  |  |  |  |
| PET-Z2-CC-100 |  | Demolishing Of Existing Concrete | 3d | 2011-10-01 | 2011-10-03 | Ms 110 FS+5d | 1d | 0d |  | 44,443 | PET-C130 | civil | FOOTING | PET-Z 2 |
| PET-Z2-CC-110 |  | Excavation | 12d | 2011-10-04 | 2011-10-17 | PET-Z2-CC-100 | 1d | 0d |  | 50,000 | PET-C140 | civil | FOOTING | PET-Z 2 |
| PET-Z2-CC-120 |  | Detect underground Utilities | 12d | 2011-10-04 | 2011-10-17 | PET-Z2-CC-110 SS, PET-Z2-CC-110 FF | 1d | 0d |  | 29,070 | PET-C150 | civil | FOOTING | PET-Z 2 |
| PET-Z2-CC-130 |  | Replacement Under Footings | 12d | 2011-10-18 | 2011-10-31 | PET-Z2-CC-110 | 1d | 0d |  | 40,000 | PET-C180 | civil | FOOTING | PET-Z 2 |
| PET-Z2-CC-140 |  | Utilities diversion | 18d | 2011-10-18 | 2011-11-14 | PET-Z2-CC-120 | 1d | 0d |  |  | PET-C190 | civil | FOOTING | PET-Z 2 |
| PET-Z2-CC-150 |  | Plain Concrete footings | 10d | 2011-11-01 | 2011-11-19 | SD 150, PET-Z2-CC-140 FF+4d, PET-Z2-CC-130, PET-Z2-CC-140 SS+5d | 1d | 0d | CARPENTER [12 h]; P.C. CONCRETE [305] | 18,000 | PET-C210 | civil | FOOTING | PET-Z 2 |
| PET-Z2-CC-160 |  | R.C. footings & tie beams | 15d | 2011-11-16 | 2011-12-04 | PET-Z2-CC-150 SS+7d, PET-Z2-CC-150 FF+12d, Ms 190, SD 180 | 1d | 0d | CARPENTER [75 h]; STEEL LABOUR [110 h]; R.C. CONCRETE [145] | 225,000 | PET-C230 | civil | FOOTING | PET-Z 2 |
| PET-Z2-CC-170 |  | Bituminus waterproofing for foundations | 10d | 2011-11-24 | 2011-12-06 | PET-Z2-CC-160 SS+7d, PET-Z2-CC-160 FF+2d | 1d | 0d |  | 18,500 | PET-C250 | civil | FOOTING | PET-Z 2 |
| PET-Z2-CC-180 |  | RC for pedestals | 10d | 2011-12-05 | 2011-12-15 | PET-Z2-CC-160 | 1d | 0d | R.C. CONCRETE [8] | 23,448 | PET-C290 | civil | FOOTING | PET-Z 2 |
| PET-Z2-CC-190 |  | Backfilling under plain concrete | 10d | 2011-12-07 | 2011-12-18 | PET-Z2-CC-170 | 1d | 0d |  | 72,920 | PET-C300 | civil | GROUND | PET-Z 2 |
| PET-Z2-CC-200 |  | Anchors for steel structure | 8d | 2011-12-07 | 2011-12-15 | PET-Z2-CC-180 FF | 1d | 0d |  |  | PET-C310 | civil | GROUND | PET-Z 2 |
| PET-Z2-CC-210 |  | Concrete beams&columns for masonry | 30d | 2011-12-14 | 2012-01-17 | PET-Z2-AR-100 FF+6d, PET-Z2-AR-100 SS+6d | 3d | 0d |  |  | PET-C500 | civil | GROUND | PET-Z 2 |
| PET-Z2-CC-220 |  | Steel structure erection(columns&rafters) | 20d | 2011-12-17 | 2012-01-08 | PET-Z2-CC-180, DD110, PET-Z2-CC-200 | 1d | 0d | STEEL STRUCTURE LABOUR [100 h]; STEEL STRUCTURE [110 ton] | 836,035 | PET-C320 | civil | GROUND | PET-Z 2 |
| PET-Z2-CC-225 |  | Steel structure erection(perlins&portal frames) | 20d | 2011-12-28 | 2012-01-19 | PET-Z2-CC-220 SS+10d, DD110, PET-Z2-CC-200, PET-Z2-CC-220 FF+10d, PET-Z2-CC-180 | 1d | 0d | STEEL STRUCTURE LABOUR [70 h] | 358,300 | PET-C320 | civil | GROUND | PET-Z 2 |
| PET-Z2-CC-230 |  | Plain concrete 50mm thick | 10d | 2012-01-09 | 2012-01-19 | PET-Z2-CC-190 FS+18d | 1d | 0d | P.C. CONCRETE [1985] | 59,100 | PET-C340 | civil | GROUND | PET-Z 2 |
| PET-Z2-CC-240 |  | Membrane sheet 400 micron | 10d | 2012-01-09 | 2012-01-19 | PET-Z2-CC-230 FF, PET-Z2-CC-230 SS | 1d | 0d | POLYETHELENE SHEET 400M [1970 m2] | 33,745 | PET-C350 | civil | GROUND | PET-Z 2 |
| PET-Z2-CC-250 |  | Slab On Grade | 15d | 2012-01-21 | 2012-02-06 | PET-Z2-CC-220 FF+15d, PET-Z2-CC-225 SS+10d, PET-Z2-CC-225 FF+15d, PET-Z2-CC-240, PET-Z2-CC-230, PET-Z2-CC-220 SS+10d | 1d | 0d | P.C. CONCRETE [1985] | 400,000 | PET-C380 | civil | GROUND | PET-Z 2 |
| PET-Z2-CC-290 |  | Steel structure erection(bracings & tie rods) | 15d | 2012-01-21 | 2012-02-06 | PET-Z2-CC-225 SS+15d, PET-Z2-CC-225 FF+15d | 16d | 15d | STEEL STRUCTURE LABOUR [30 h] |  |  |  |  | PET-Z 2 |
| PET-Z2-CC-260 |  | Plain Concrete Screed | 25d | 2012-01-26 | 2012-02-23 | PET-Z2-CC-250 SS+5d, PET-Z2-CC-250 FF+15d | 1d | 0d | P.C. CONCRETE [1600] | 171,200 | PET-C410 | civil | GROUND | PET-Z 2 |
| PET-Z2-CC-270 |  | Stainless steel pane fixation | 7d | 2012-02-16 | 2012-02-23 | PET-Z2-CC-260 SS, PET-Z2-CC-260 FF, PET-Z2-AR-300 | 1d | 0d |  |  |  | civil | GROUND | PET-Z 2 |
| PET-Z2-CC-280 |  | Expansion joint | 7d | 2012-02-16 | 2012-02-23 | PET-Z2-CC-260 FF, PET-Z2-CC-260 SS | 1d | 0d |  |  |  | civil | GROUND | PET-Z 2 |

Notes:
- UHT 110: Expenses: (New Expense Item) 108540
- UHT 130: Expenses: (New Expense Item) 36045
- UHT 140: Expenses: (New Expense Item) 4590
- UHT 190: Expenses: (New Expense Item) 104500
- UHT 100: Expenses: (New Expense Item) 33500
- UHT 150: Expenses: (New Expense Item) 4851
- UHT 160: Expenses: (New Expense Item) 48735
- UHT 260: Expenses: (New Expense Item) 15500
- UHT 170: Expenses: (New Expense Item) 1377
- UHT 180: Expenses: (New Expense Item) 15250
- UHT 200: Expenses: (New Expense Item) 9626
- UHT 270: Expenses: (New Expense Item) 92664
- UHT 220: Expenses: (New Expense Item) 65
- UHT 230: Expenses: (New Expense Item) 285520
- PET-Z2-CC-100: Expenses: (New Expense Item) 44443
- PET-Z2-CC-110: Expenses: (New Expense Item) 50000
- PET-Z2-CC-120: Expenses: (New Expense Item) 29070
- PET-Z2-CC-130: Expenses: (New Expense Item) 40000
- PET-Z2-CC-150: Expenses: (New Expense Item) 18000
- PET-Z2-CC-160: Expenses: (New Expense Item) 225000
- PET-Z2-CC-170: Expenses: (New Expense Item) 18500
- PET-Z2-CC-180: Expenses: (New Expense Item) 23448
- PET-Z2-CC-190: Expenses: (New Expense Item) 72920
- PET-Z2-CC-220: Expenses: (New Expense Item) 836035
- PET-Z2-CC-225: Expenses: (New Expense Item) 358300
- PET-Z2-CC-230: Expenses: (New Expense Item) 59100
- PET-Z2-CC-240: Expenses: (New Expense Item) 33745
- PET-Z2-CC-250: Expenses: (New Expense Item) 400000
- PET-Z2-CC-260: Expenses: (New Expense Item) 171200

| ID | WBS | Activity | Duration | Start | Finish | Predecessors | Total float | Free float | Resources | Cost | user_text1 | TYPE OF WORK | FLOOR LEVEL | PET FILLING BUILDING |
| --- | --- | --- | --- | --- | --- | --- | --- | --- | --- | --- | --- | --- | --- | --- |
|  | 2 | **Arch works** |  | 2011-12-07 | 2012-03-15 |  |  |  |  |  |  |  |  |  |
| PET-Z2-AR-100 |  | Masonry | 30d | 2011-12-07 | 2012-01-10 | SD 250, PET-Z2-CC-170 SS+10d | 3d | 0d | Brickwork Labor [120 h]; BRICKS [900 m2] | 145,000 | PET-A110 | arch | GROUND | PET-Z 2 |
| PET-Z2-AR-110 |  | Internal Cement Plaster | 30d | 2012-01-18 | 2012-02-21 | PET-Z2-AR-100, PET-Z2-CC-210 | 3d | 2d | plastering worker [120 h] | 34,510 | PET-A140 | arch | GROUND | PET-Z 2 |
| PET-Z2-AR-120 |  | Erection of Roof Sandwich Panel(@level 19.5&20.40) | 30d | 2012-01-21 | 2012-02-23 | PET-Z2-CC-225, PET-Z2-CC-220 | 1d | 0d | SANDWICH PANEL FOR ROOF 150MM THK [1700 m2] | 825,000 | PET-A160 | arch | GROUND | PET-Z 2 |
| PET-Z2-AR-290 |  | Piping for drainage system(between old&new pet building) | 10d | 2012-01-21 | 2012-01-31 | PET-Z2-CC-230 | 9d | 0d |  | 33,595 |  |  |  | PET-Z 2 |
| PET-Z2-AR-130 |  | Steel structure paintings | 30d | 2012-01-26 | 2012-02-29 | PET-Z2-CC-220 FS+5d, PET-Z2-CC-225 FS+5d, MT-1140 | 7d | 0d |  |  | PET-A170 | civil | GROUND | PET-Z 2 |
| PET-Z2-AR-300 |  | Floor clean-outs | 5d | 2012-02-01 | 2012-02-06 | PET-Z2-AR-290 | 9d | 8d |  | 17,688 |  |  |  | PET-Z 2 |
| PET-Z2-AR-140 |  | Fair face conc. guard base(kerb) | 15d | 2012-02-07 | 2012-02-23 | PET-Z2-CC-260 SS+5d, PET-Z2-CC-280 FF, PET-Z2-CC-270 FF | 1d | 0d |  | 24,000 | PET-A190 | arch | GROUND | PET-Z 2 |
| PET-Z2-AR-150 |  | Sandwich Panel For Walls | 15d | 2012-02-25 | 2012-03-12 | DD100, PET-Z2-AR-140, PET-Z2-CC-290 | 1d | 0d | SANDWICH PANEL FOR WALLS 120MM(FIRE RATED) [500 m2]; SANDWICH PANEL FOR WALLS 120MM(FIRE RATED) [350 m2]; SANDWICH PANEL FOR WALLS 120MM(FIRE RATED) [145 m2]; SANDWICH PANEL FOR WALLS 120MM THK [90 m2] | 498,675 | PET-A220 | arch | GROUND | PET-Z 2 |
| PET-Z2-AR-160 |  | Epoxy Paint | 10d | 2012-02-25 | 2012-03-06 | PET-Z2-AR-110, PET-Z2-CC-260 | 1d | 0d | EPOXY PAINTER [16 h] | 50,650 | PET-A250 | arch | GROUND | PET-Z 2 |
| PET-Z2-AR-170 |  | External Cement Plaster | 10d | 2012-02-25 | 2012-03-06 | PET-Z2-AR-100, PET-Z2-CC-210, PET-Z2-AR-120 | 4d | 0d | plastering worker [20 h] | 9,550 | PET-A150 | arch | GROUND | PET-Z 2 |
| PET-Z2-AR-310 |  | Stainless steel doors erection | 10d | 2012-02-25 | 2012-03-06 | SD 260, DD130, PET-Z2-AR-150 SS, PET-Z2-AR-160 SS, SD 260 FF | 7d | 6d |  | 221,046 |  |  |  | PET-Z 2 |
| PET-Z2-AR-320 |  | Roll up shutter doors erection | 10d | 2012-02-25 | 2012-03-06 | DD160 | 1d | 0d |  | 218,146 |  |  |  | PET-Z 2 |
| PET-Z2-AR-330 |  | Galvanized steel flashing&pur foam | 10d | 2012-02-25 | 2012-03-06 | PET-Z2-AR-120, MT-1190 | 1d | 0d |  |  |  |  |  |  |
| PET-Z2-AR-180 |  | Guard bollard erection | 7d | 2012-02-29 | 2012-03-07 | DD130 FS+14d, DD170 | 3d | 2d |  | 54,250 | PET-A440 | civil | GROUND | PET-Z 2 |
| PET-Z2-AR-280 |  | Erection of Roof Sandwich Panel(@level 21.85&22.75) | 7d | 2012-03-01 | 2012-03-08 | PET-Z2-AR-130 | 7d |  | SANDWICH PANEL FOR ROOF 150MM THK [50 m2] |  |  |  |  | PET-Z 2 |
| PET-Z2-AR-190 |  | Dismantle Works (doors & windows) | 3d | 2012-03-03 | 2012-03-05 | PET-Z2-AR-200 SS, PET-Z2-AR-310 SS | 2d | 0d |  | 2,881 | PET-A320 | arch | GROUND | PET-Z 2 |
| PET-Z2-AR-200 |  | Steel Doors erection | 10d | 2012-03-03 | 2012-03-13 | DD130, PET-Z2-AR-160 SS+6d, PET-Z2-AR-150 SS+6d, SD 260 | 1d | 0d |  | 67,700 | PET-A330 | arch | GROUND | PET-Z 2 |
| PET-Z2-AR-210 |  | Louvers erection | 10d | 2012-03-03 | 2012-03-13 | PET-Z2-AR-150 FF+1d, PET-Z2-AR-150 SS+1d | 3d |  |  | 14,518 | PET-A350 | civil | GROUND | PET-Z 2 |
| PET-Z2-AR-220 |  | Windows erection | 10d | 2012-03-03 | 2012-03-13 | PET-Z2-AR-150 SS+1d, PET-Z2-AR-150 FF+1d, DD130 | 3d |  |  | 5,000 | PET-A360 | civil | GROUND | PET-Z 2 |
| PET-Z2-AR-230 |  | Steel ladder& steel handrail | 10d | 2012-03-03 | 2012-03-13 | PET-Z2-AR-150 SS+1d, PET-Z2-AR-150 FF+1d | 3d |  |  | 32,170 | PET-A370 | civil | GROUND | PET-Z 2 |
| PET-Z2-AR-270 |  | Dismantle sandwich panels& rain gutter | 3d | 2012-03-06 | 2012-03-08 | PET-Z2-AR-190 | 2d | 1d |  | 5,236 |  |  |  | PET-Z 2 |
| PET-Z2-AR-240 |  | Acrylic paint for external plaster | 5d | 2012-03-07 | 2012-03-12 | PET-Z2-AR-160, PET-Z2-AR-170 | 4d |  | Painter [16 h] | 8,450 | PET-A390 | arch | GROUND | PET-Z 2 |
| PET-Z2-AR-250 |  | Final touch up | 3d | 2012-03-07 | 2012-03-10 | PET-Z2-AR-200 SS+4d, PET-Z2-AR-310 SS+4d, PET-Z2-AR-320, PET-Z2-AR-330 | 1d | 0d |  |  | PET-A400 | arch | GROUND | PET-Z 2 |
| PET-Z2-AR-260 |  | Handing over & comissioning | 5d | 2012-03-11 | 2012-03-15 | PET-Z2-AR-180, PET-Z2-AR-250 SS+3d, PET-Z2-AR-270 | 1d |  |  |  | PET-A420 | arch | GROUND | PET-Z 2 |

Notes:
- PET-Z2-AR-100: Expenses: (New Expense Item) 145000
- PET-Z2-AR-110: Expenses: (New Expense Item) 34510
- PET-Z2-AR-120: Expenses: (New Expense Item) 825000
- PET-Z2-AR-290: Expenses: (New Expense Item) 33595
- PET-Z2-AR-300: Expenses: (New Expense Item) 17688
- PET-Z2-AR-140: Expenses: (New Expense Item) 24000
- PET-Z2-AR-150: Expenses: (New Expense Item) 498675
- PET-Z2-AR-160: Expenses: (New Expense Item) 50650
- PET-Z2-AR-170: Expenses: (New Expense Item) 9550
- PET-Z2-AR-310: Expenses: (New Expense Item) 221046
- PET-Z2-AR-320: Expenses: (New Expense Item) 218146
- PET-Z2-AR-180: Expenses: (New Expense Item) 54250
- PET-Z2-AR-190: Expenses: (New Expense Item) 2881
- PET-Z2-AR-200: Expenses: (New Expense Item) 67700
- PET-Z2-AR-210: Expenses: (New Expense Item) 14518
- PET-Z2-AR-220: Expenses: (New Expense Item) 5000
- PET-Z2-AR-230: Expenses: (New Expense Item) 32170
- PET-Z2-AR-270: Expenses: (New Expense Item) 5236
- PET-Z2-AR-240: Expenses: (New Expense Item) 8450

| ID | WBS | Activity | Duration | Start | Finish | Predecessors | Total float | Free float | Calendar | Resources | Cost | user_text1 | TYPE OF WORK | FLOOR LEVEL | PET FILLING BUILDING |
| --- | --- | --- | --- | --- | --- | --- | --- | --- | --- | --- | --- | --- | --- | --- | --- |
|  | 2 | **zone-1 (b314 to b325) processing area** |  | 2011-09-25 | 2012-03-17 |  |  |  |  |  |  |  |  |  |  |
|  | 2 | **Civil works** |  | 2011-09-25 | 2012-03-14 |  |  |  |  |  |  |  |  |  |  |
| PET-Z1-CC-100 |  | Demolishing and/or chamfering the existed Concrete parts | 3d | 2011-09-25 | 2011-09-27 | Ms 110 | 0d |  |  |  | 42,000 | PET-C100 | civil | FOOTING | PET-Z 1 |
| PET-Z1-CC-110 |  | Excavation | 12d | 2011-09-28 | 2011-10-11 | PET-Z1-CC-100 | 0d |  |  |  | 50,000 | PET-C110 | civil | FOOTING | PET-Z 1 |
| PET-Z1-CC-120 |  | Detect underground Utilities | 12d | 2011-09-28 | 2011-10-11 | PET-Z1-CC-110 SS, PET-Z1-CC-110 FF | 2d | 0d |  |  | 29,070 | PET-C120 | civil | FOOTING | PET-Z 1 |
| PET-Z1-CC-130 |  | Replacement Under Footings | 12d | 2011-10-12 | 2011-10-25 | PET-Z1-CC-110 | 0d |  |  |  | 40,000 | PET-C160 | civil | FOOTING | PET-Z 1 |
| PET-Z1-CC-140 |  | Utilities diversion | 18d | 2011-10-12 | 2011-11-01 | PET-Z1-CC-120 | 2d |  |  |  |  | PET-C170 | civil | FOOTING | PET-Z 1 |
| PET-Z1-CC-150 |  | Plain Concrete footings | 15d | 2011-10-26 | 2011-11-19 | PET-Z1-CC-140 FF+7d, PET-Z1-CC-130, PET-Z1-CC-140 SS+10d, SD 150 | 0d |  |  | CARPENTER [12 h]; P.C. CONCRETE [300] | 18,300 | PET-C200 | civil | FOOTING | PET-Z 1 |
| PET-Z1-CC-160 |  | R.C. footings & tie beams | 15d | 2011-11-03 | 2011-11-28 | PET-Z1-CC-150 FF+7d, PET-Z1-CC-150 SS+7d, Ms 190, SD 180 | 0d |  |  | STEEL LABOUR [110 h]; CARPENTER [75 h]; R.C. CONCRETE [145] | 232,800 | PET-C220 | civil | FOOTING | PET-Z 1 |
| PET-Z1-CC-170 |  | Bituminous waterproofing for foundations | 12d | 2011-11-19 | 2011-12-03 | PET-Z1-CC-160 SS+7d, PET-Z1-CC-160 FF+4d | 0d |  |  |  | 19,300 | PET-C240 | civil | FOOTING | PET-Z 1 |
| PET-Z1-CC-180 |  | RC for pedestals | 10d | 2011-11-29 | 2011-12-10 | PET-Z1-CC-160 | 4d | 0d |  | R.C. CONCRETE [8] | 23,000 | PET-C260 | civil | FOOTING | PET-Z 1 |
| PET-Z1-CC-190 |  | Anchors for steel structure | 10d | 2011-11-29 | 2011-12-10 | PET-Z1-CC-180 FF | 4d |  |  |  |  | PET-C270 | civil | GROUND | PET-Z 1 |
| PET-Z1-CC-200 |  | Backfilling under plain concrete | 13d | 2011-12-04 | 2011-12-18 | PET-Z1-CC-170 | 0d |  |  |  | 70,000 | PET-C280 | civil | GROUND | PET-Z 1 |
| PET-Z1-CC-210 |  | Concrete beams&columns for masonry | 30d | 2011-12-08 | 2012-01-11 | PET-Z1-AR-100 SS+6d, PET-Z1-AR-100 FF+6d | 8d | 0d |  |  |  | PET-C510 | civil | GROUND | PET-Z 1 |
| PET-Z1-CC-220 |  | Steel structure erection(columns&rafters) | 20d | 2011-12-15 | 2012-01-07 | DD110, PET-Z1-CC-180, PET-Z1-CC-190 | 0d |  |  | STEEL STRUCTURE [100 ton]; STEEL STRUCTURE LABOUR [100 h] | 836,035 | PET-C330 | civil | GROUND | PET-Z 1 |
| PET-Z1-CC-225 |  | Steel structure erection(perlins&portal frames) | 20d | 2011-12-27 | 2012-01-18 | PET-Z1-CC-220 FF+10d, PET-Z1-CC-220 SS+10d, DD110, PET-Z1-CC-190, PET-Z1-CC-180 | 0d |  |  | STEEL STRUCTURE LABOUR [70 h] | 358,300 | PET-C330 | civil | GROUND | PET-Z 1 |
| PET-Z1-CC-230 |  | Plain concrete 50mm thick | 10d | 2012-01-05 | 2012-01-16 | PET-Z1-CC-200 FS+15d | 0d |  |  | P.C. CONCRETE [1985] | 60,000 | PET-C360 | civil | GROUND | PET-Z 1 |
| PET-Z1-CC-240 |  | Membrane sheet 400 micron | 10d | 2012-01-05 | 2012-01-16 | PET-Z1-CC-230 SS, PET-Z1-CC-230 FF | 0d |  |  | POLYETHELENE SHEET 400M [2000 m2] | 33,745 | PET-C370 | civil | GROUND | PET-Z 1 |
| PET-Z1-CC-350 |  | Steel structure erection(bracings & tie rods) | 15d | 2012-01-14 | 2012-01-30 | PET-Z1-CC-225 SS+10d, PET-Z1-CC-225 FF+10d | 14d | 0d |  | STEEL STRUCTURE LABOUR [30 h] |  |  |  |  | PET-Z 1 |
| PET-Z1-CC-260 |  | Slab On Grade | 15d | 2012-01-17 | 2012-02-02 | PET-Z1-CC-225 FF+13d, PET-Z1-CC-220 SS+10d, PET-Z1-CC-230, PET-Z1-CC-220 FF+13d, PET-Z1-CC-240, PET-Z1-CC-225 SS+10d | 0d |  |  | P.C. CONCRETE [1985] | 413,850 | PET-C390 | civil | GROUND | PET-Z 1 |
| PET-Z1-CC-250 |  | corrugated sheet (@level 16) area-2 | 15d | 2012-01-25 | 2012-02-11 | PET-Z1-CC-220 FF+10d, PET-Z1-CC-225 SS+25d, PET-Z1-CC-225 FF+10d, PET-Z1-CC-220 SS+25d, MT-1200 | 13d | 0d |  |  |  | PET-C400 | civil | MEZZ | PET-Z 1 |
| PET-Z1-CC-360 |  | Galvanized steel gutters | 14d | 2012-01-31 | 2012-02-15 | PET-Z1-CC-350, MT-1210 | 14d | 0d |  |  |  |  |  |  | PET-Z 1 |
| PET-Z1-CC-280 |  | walk on ceiling installation ( @level 15) area-1 | 37d | 2012-02-01 | 2012-03-14 | DD120, PET-Z1-CC-225, PET-Z1-CC-220 | -0.12d | 0d | walkable calendar |  | 900,000 | PET-C430 | civil | MEZZ | PET-Z 1 |
| PET-Z1-CC-290 |  | walk on ceiling installation ( @level 17.2) area-2 | 37d | 2012-02-01 | 2012-03-14 | PET-Z1-CC-220, DD120, PET-Z1-CC-225 | -0.12d | 0d | walkable calendar |  | 900,000 | PET-C440 | civil | MEZZ | PET-Z 1 |
| PET-Z1-CC-300 |  | Concrete Screed | 14d | 2012-02-04 | 2012-02-19 | PET-Z1-CC-260 | 0d |  |  |  | 189,000 | PET-C420 | civil | GROUND | PET-Z 1 |
| PET-Z1-CC-310 |  | corrugated sheet (@level 17) area-1 | 10d | 2012-02-06 | 2012-02-16 | PET-Z1-CC-220 FS+15d, PET-Z1-CC-225 FS+15d, PET-Z1-CC-350, MT-1200 | 9d | 0d |  |  |  | PET-C460 | civil | MEZZ | PET-Z 1 |
| PET-Z1-CC-270 |  | RC casting for deck floors (area-2) | 7d | 2012-02-12 | 2012-02-19 | PET-Z1-CC-250, PET-Z1-AR-320 | 13d | 0d |  |  | 92,000 | PET-C450 | civil | MEZZ | PET-Z 1 |
| PET-Z1-CC-330 |  | Expansion joint | 7d | 2012-02-12 | 2012-02-19 | PET-Z1-CC-300 FF, PET-Z1-CC-300 SS | 7d | 6d |  |  |  |  | civil | GROUND | PET-Z 1 |
| PET-Z1-CC-340 |  | Stainless steel pane fixation | 7d | 2012-02-12 | 2012-02-19 | PET-Z1-CC-300 FF, PET-Z1-CC-300 SS | 7d | 6d |  |  |  |  | civil | GROUND | PET-Z 1 |
| PET-Z1-CC-320 |  | RC casting for deck floor (area-1) | 7d | 2012-02-18 | 2012-02-25 | PET-Z1-CC-310 | 9d | 0d |  |  | 92,930 | PET-C480 | civil | MEZZ | PET-Z 1 |

Notes:
- PET-Z1-CC-100: Expenses: (New Expense Item) 42000
- PET-Z1-CC-110: Expenses: (New Expense Item) 50000
- PET-Z1-CC-120: Expenses: (New Expense Item) 29070
- PET-Z1-CC-130: Expenses: (New Expense Item) 40000
- PET-Z1-CC-150: Expenses: (New Expense Item) 18300
- PET-Z1-CC-160: Expenses: (New Expense Item) 232800
- PET-Z1-CC-170: Expenses: (New Expense Item) 19300
- PET-Z1-CC-180: Expenses: (New Expense Item) 23000
- PET-Z1-CC-200: Expenses: (New Expense Item) 70000
- PET-Z1-CC-220: Expenses: (New Expense Item) 836035
- PET-Z1-CC-225: Expenses: (New Expense Item) 358300
- PET-Z1-CC-230: Expenses: (New Expense Item) 60000
- PET-Z1-CC-240: Expenses: (New Expense Item) 33745
- PET-Z1-CC-260: Expenses: (New Expense Item) 413850
- PET-Z1-CC-280: Expenses: (New Expense Item) 900000
- PET-Z1-CC-290: Expenses: (New Expense Item) 900000
- PET-Z1-CC-300: Expenses: (New Expense Item) 189000
- PET-Z1-CC-270: Expenses: (New Expense Item) 92000
- PET-Z1-CC-320: Expenses: (New Expense Item) 92930

| ID | WBS | Activity | Duration | Start | Finish | Predecessors | Planned start | Planned finish | Total float | Free float | Resources | Cost | user_text1 | TYPE OF WORK | FLOOR LEVEL | PET FILLING BUILDING |
| --- | --- | --- | --- | --- | --- | --- | --- | --- | --- | --- | --- | --- | --- | --- | --- | --- |
|  | 3 | **Arch works** |  | 2011-12-01 | 2012-03-17 |  |  |  |  |  |  |  |  |  |  |  |
| PET-Z1-AR-100 |  | Masonry | 30d | 2011-12-01 | 2012-01-04 | SD 250, PET-Z1-CC-170 SS+10d, PET-Z1-CC-170 FF+28d |  |  | 8d | 0d | Brickwork Labor [120 h]; BRICKS [1020 m2] | 144,920 | PET-A100 | arch | GROUND | PET-Z 1 |
| PET-Z1-AR-110 |  | Internal Cement Plaster | 25d | 2012-01-12 | 2012-02-09 | PET-Z1-AR-100, PET-Z1-CC-210 |  |  | 8d |  | plastering worker [120 h] | 33,000 | PET-A120 | arch | GROUND | PET-Z 1 |
| PET-Z1-AR-120 |  | Steel structure paintings | 30d | 2012-01-25 | 2012-02-28 | PET-Z1-CC-220 FS+5d, PET-Z1-CC-225 FS+5d, MT-1140 |  |  | 8d | 0d |  |  | PET-A180 | arch | GROUND | PET-Z 1 |
| PET-Z1-AR-130 |  | Erection of Roof Sandwich Panel(@level 19.5&20.40 | 17d | 2012-01-25 | 2012-02-13 | PET-Z1-CC-225 FS+5d, PET-Z1-CC-220 FS+5d |  |  | 5d | 0d | SANDWICH PANEL FOR ROOF 150MM THK [1700 m2] | 827,000 | PET-A200 | arch | GROUND | PET-Z 1 |
| PET-Z1-AR-320 |  | Corrugated sheet paintings(area2) | 10d | 2012-01-31 | 2012-02-11 | PET-Z1-CC-250 SS+5d, PET-Z1-CC-250 FF |  |  | 13d | 0d |  |  |  |  |  | PET-Z 1 |
| PET-Z1-AR-150 |  | Fair face conc. guard base(kerb) | 15d | 2012-02-09 | 2012-02-26 | PET-Z1-CC-330 FF, PET-Z1-CC-300 FF+6d, PET-Z1-CC-300 SS+5d, PET-Z1-CC-340 FF |  |  | 1d |  |  | 24,000 | PET-A210 | arch | GROUND | PET-Z 1 |
| PET-Z1-AR-310 |  | Corrugated sheet paintings(area1) | 10d | 2012-02-12 | 2012-02-22 | PET-Z1-CC-310 SS+5d, PET-Z1-CC-310 FF |  |  | 11d | 2d |  |  |  |  |  | PET-Z 1 |
| PET-Z1-AR-160 |  | External Cement Plaster | 10d | 2012-02-14 | 2012-02-25 | PET-Z1-AR-130, PET-Z1-AR-100, PET-Z1-CC-210 |  |  | 11d | 4d | plastering worker [20 h] | 9,000 | PET-A130 | arch | GROUND | PET-Z 1 |
| PET-Z1-AR-140 |  | Epoxy Paint (@level 15) area-2 | 10d | 2012-02-20 | 2012-03-01 | PET-Z1-CC-270 |  |  | 13d |  | EPOXY PAINTER [4 h] | 37,350 | PET-C470 | arch | MEZZ | PET-Z 1 |
| PET-Z1-AR-170 |  | Epoxy Paint | 10d | 2012-02-20 | 2012-03-01 | PET-Z1-AR-130, PET-Z1-CC-300, PET-Z1-AR-110 |  |  | 0d |  | EPOXY PAINTER [16 h] | 50,000 | PET-A240 | arch | GROUND | PET-Z 1 |
| PET-Z1-AR-270 |  | Erection of Steel ladder & steel handrail & painting | 10d | 2012-02-20 | 2012-03-01 | PET-Z1-CC-310 SS, PET-Z1-CC-250 SS, DD150 |  |  | 13d |  |  | 32,170 | PET-A310 | metal | GROUND | PET-Z 1 |
| PET-Z1-AR-340 |  | Folded steel sheets in pet corners | 7d | 2012-02-22 | 2012-02-29 | PET-Z1-CC-360 FS+5d |  |  | 14d |  |  |  |  |  |  | PET-Z 1 |
| PET-Z1-AR-180 |  | Epoxy Paint (@level 17.8) area-1 | 9d | 2012-02-26 | 2012-03-06 | PET-Z1-CC-320, PET-Z1-AR-310 |  |  | 9d |  | EPOXY PAINTER [20 h] | 28,000 | PET-C490 | arch | MEZZ | PET-Z 1 |
| PET-Z1-AR-190 |  | Sandwich Panel For Walls | 14d | 2012-02-28 | 2012-03-15 | PET-Z1-AR-150, DD100, PET-Z1-CC-290 FF, PET-Z1-CC-280 FF | 2012-02-28 | 2012-03-14 | 0d |  | SANDWICH PANEL FOR WALLS 120MM(FIRE RATED) [500 m2]; SANDWICH PANEL FOR WALLS 120MM(FIRE RATED) [400 m2]; SANDWICH PANEL FOR WALLS 120MM(FIRE RATED) [140 m2]; SANDWICH PANEL FOR WALLS 120MM THK [90 m2] | 480,000 | PET-A230 | arch | GROUND | PET-Z 1 |
| PET-Z1-AR-200 |  | Polyurethane Flooring | 15d | 2012-02-29 | 2012-03-17 | PET-Z1-CC-300, DD140, PET-Z1-CC-340 FF |  |  | 0d |  | POLYURETHANE [1800 m2] | 1,362,600 | PET-A260 | arch | GROUND | PET-Z 1 |
| PET-Z1-AR-210 |  | Guard bollard erection | 7d | 2012-02-29 | 2012-03-07 | DD130 FS+14d, DD170 |  |  | 4d |  |  | 54,250 | PET-A430 | arch | GROUND | PET-Z 1 |
| PET-Z1-AR-330 |  | Erection of Roof Sandwich Panel(@level 21.85&22.75) | 7d | 2012-02-29 | 2012-03-07 | PET-Z1-AR-120 |  |  | 8d |  | SANDWICH PANEL FOR ROOF 150MM THK [50 m2] |  |  |  |  | PET-Z 1 |
| PET-Z1-AR-220 |  | Acrylic paint for external plaster | 7d | 2012-03-01 | 2012-03-08 | PET-Z1-AR-160, PET-Z1-AR-170 SS+9d, PET-Z1-CC-360 |  |  | 7d |  | Painter [12 h] | 8,000 | PET-A340 | arch | GROUND | PET-Z 1 |
| PET-Z1-AR-230 |  | Dismantle Works (doors & windows) | 3d | 2012-03-03 | 2012-03-05 | PET-Z1-AR-190 SS+3d |  |  | 1d |  |  | 8,117 | PET-A270 | arch | GROUND | PET-Z 1 |
| PET-Z1-AR-240 |  | Steel Doors erection | 10d | 2012-03-04 | 2012-03-15 | DD130, PET-Z1-AR-230 SS, PET-Z1-AR-190 SS+2d, PET-Z1-AR-170 SS+5d, PET-Z1-AR-170 FF+11d, PET-Z1-AR-190 FF |  |  | 0d |  |  | 121,788 | PET-A280 | arch | GROUND | PET-Z 1 |
| PET-Z1-AR-250 |  | Louvers erection | 10d | 2012-03-04 | 2012-03-15 | PET-Z1-AR-190 SS, PET-Z1-AR-190 FF |  |  | 2d |  |  | 14,518 | PET-A290 | metal | GROUND | PET-Z 1 |
| PET-Z1-AR-260 |  | Windows erection | 10d | 2012-03-04 | 2012-03-15 | PET-Z1-AR-190 SS, PET-Z1-AR-190 FF, DD130 |  |  | 2d |  |  | 5,701 | PET-A300 | metal | GROUND | PET-Z 1 |
| PET-Z1-AR-300 |  | Roll up shutter doors erection | 10d | 2012-03-04 | 2012-03-14 | DD160 FS+7d |  |  | 2d |  |  | 218,147 |  |  |  | PET-Z 1 |
| PET-Z1-AR-350 |  | Stainless steel doors erection | 10d | 2012-03-04 | 2012-03-15 | DD130, PET-Z1-AR-170 SS+5d, PET-Z1-AR-170 FF+11d, PET-Z1-AR-190 SS+2d, PET-Z1-AR-190 FF, PET-Z1-AR-230 SS |  |  | 2d |  |  | 221,046 |  |  |  | PET-Z 1 |
| PET-Z1-AR-280 |  | Final touch up | 3d | 2012-03-12 | 2012-03-15 | PET-Z1-AR-240 SS+3d, PET-Z1-AR-240 FF |  |  | 0d |  |  |  | PET-A380 | arch | GROUND | PET-Z 1 |
| PET-Z1-AR-290 |  | Handing over & comissioning | 4d | 2012-03-13 | 2012-03-17 | PET-Z1-AR-210, PET-Z1-AR-280 FF+2d, PET-Z1-AR-280 SS, PET-Z1-AR-300 SS, PET-Z1-AR-300 FF |  |  | 0d |  |  |  | PET-A410 | arch | GROUND | PET-Z 1 |

Notes:
- PET-Z1-AR-100: Expenses: (New Expense Item) 144920
- PET-Z1-AR-110: Expenses: (New Expense Item) 33000
- PET-Z1-AR-130: Expenses: (New Expense Item) 827000
- PET-Z1-AR-150: Expenses: (New Expense Item) 24000
- PET-Z1-AR-160: Expenses: (New Expense Item) 9000
- PET-Z1-AR-140: Expenses: (New Expense Item) 37350
- PET-Z1-AR-170: Expenses: (New Expense Item) 50000
- PET-Z1-AR-270: Expenses: (New Expense Item) 32170
- PET-Z1-AR-180: Expenses: (New Expense Item) 28000
- PET-Z1-AR-190: Expenses: (New Expense Item) 480000
- PET-Z1-AR-200: Expenses: (New Expense Item) 1362600
- PET-Z1-AR-210: Expenses: (New Expense Item) 54250
- PET-Z1-AR-220: Expenses: (New Expense Item) 8000
- PET-Z1-AR-230: Expenses: (New Expense Item) 8117
- PET-Z1-AR-240: Expenses: (New Expense Item) 121788
- PET-Z1-AR-250: Expenses: (New Expense Item) 14518
- PET-Z1-AR-260: Expenses: (New Expense Item) 5701
- PET-Z1-AR-300: Expenses: (New Expense Item) 218147
- PET-Z1-AR-350: Expenses: (New Expense Item) 221046

## Activity codes

| Code | Value | Meaning |
| --- | --- | --- |
| FLOOR LEVEL | FOOTING | FOOTING LEVEL |
| FLOOR LEVEL | GROUND | GROUND LEVEL |
| FLOOR LEVEL | MEZZ | MEZZANINE LEVEL |
| FLOOR LEVEL | ROOF | ROOF LEVEL |
| PET FILLING BUILDING | PET-Z 1 | ZONE 1 |
| PET FILLING BUILDING | PET-Z 2 | ZONE 2 |
| TYPE OF WORK | arch | arch works |
| TYPE OF WORK | civil | civil works |
| TYPE OF WORK | metal | metal works |

## Issues

| Issue | Status | Raised |
| --- | --- | --- |
| (New Issue) | IS_Open | 2011-10-10 |
