# SHOOTING CLUB TOWER

Schedule from Primavera P6, 2012-01-01 to 2013-05-11, data date 2011-12-25, costs in EGP.

## Calendars

- 7-Day Workweek: Mon-Sun 08:00-12:00, 13:00-17:00.

## Resources

| Resource | Group | Rate |
| --- | --- | --- |
| CASH | material | 1 |

## Schedule

| ID | WBS | Activity | Type | Duration | Start | Finish | Predecessors | Total float | Resources | Cost |
| --- | --- | --- | --- | --- | --- | --- | --- | --- | --- | --- |
|  | 6 | **Milestones** |  |  | 2012-01-01 | 2013-05-11 |  |  |  |  |
| A1000 |  | Site handing over | milestone | 0d | 2012-01-01 | 2012-01-01 | A1010 | 0d |  |  |
| A1010 |  | Notice of commencement | milestone | 0d | 2012-01-01 | 2012-01-01 |  | 0d |  |  |
|  | 1 | **Phase 1** |  |  | 2012-01-14 | 2012-04-25 |  |  |  |  |
| A1050 |  | Mobilization | milestone | 0d | 2012-01-14 | 2012-01-14 | A1540 | 483d |  |  |
| A1060 |  | Excavation&shoring | milestone | 0d | 2012-03-06 | 2012-03-06 | A1170 | 431d |  |  |
| A1070 |  | Pile works(construction&testing) | milestone | 0d | 2012-04-25 | 2012-04-25 | A1190 | 381d |  |  |
|  | 2 | **Phase 2** |  |  | 2012-01-01 | 2013-05-11 |  |  |  |  |
| A1090 |  | conveying system | milestone | 0d | 2012-01-01 | 2012-01-01 |  | 497d |  |  |
| A1080 |  | Structure construction | milestone | 0d | 2013-02-16 | 2013-02-16 | A1510 | 84d |  |  |
| A1100 |  | MEP works | milestone | 0d | 2013-05-11 | 2013-05-11 | A1720, A1690, A1650, A1660, A1790, A1670, A1810, A1770, A1750, A1740, A1710, A1700 | 0d |  |  |
|  | 3 | **Phase 3** |  |  | 2013-04-16 | 2013-05-11 |  |  |  |  |
| A1110 |  | External cladding & facade | milestone | 0d | 2013-04-16 | 2013-04-16 | A1620 | 25d |  |  |
| A1120 |  | Finishes & external works | milestone | 0d | 2013-05-11 | 2013-05-11 | A1640, A1600, A1780, A1610 | 0d |  |  |
| A1130 |  | Project handing over | milestone | 0d | 2013-05-11 | 2013-05-11 | A1100, A1510, A1680, A1690 | 0d |  |  |
|  | 7 | **Mobilization&Demobilization** |  |  | 2012-01-01 | 2013-05-11 |  |  |  |  |
| A1540 |  | Mobilization |  | 14d | 2012-01-01 | 2012-01-14 | A1000 | 0d |  |  |
| A1550 |  | Demobilization |  | 3d | 2013-05-09 | 2013-05-11 | A1130 FF | 0d |  |  |
|  | 5 | **Foundation** |  |  | 2012-01-15 | 2012-06-13 |  |  |  |  |
| A1160 |  | Excavation support(Sheet piles) |  | 30d | 2012-01-15 | 2012-02-13 | A1540 | 0d | CASH [536664] | 536,664 |
| A1150 |  | Dewatering system installation |  | 3d | 2012-02-14 | 2012-02-16 | A1160 | 0d | CASH [159180] | 159,180 |
| A1170 |  | Excavation |  | 10d | 2012-02-26 | 2012-03-06 | A1150 FS+9d | 0d | CASH [61500] | 61,500 |
| A1180 |  | Boring concrete piles |  | 45d | 2012-03-07 | 2012-04-20 | A1170 | 0d | CASH [1452762] | 1,452,762 |
| A1190 |  | Tests for footing piles |  | 5d | 2012-04-21 | 2012-04-25 | A1180 | 0d | CASH [81864] | 81,864 |
| A1200 |  | Pile caps& ground beams |  | 14d | 2012-04-26 | 2012-05-09 | A1190 | 0d | CASH [688645] | 688,645 |
| A1210 |  | Backfilling |  | 5d | 2012-05-10 | 2012-05-14 | A1200 | 0d | CASH [68800] | 68,800 |
| A1220 |  | Raft foundation |  | 9d | 2012-05-15 | 2012-05-23 | A1210 | 0d | CASH [171360] | 171,360 |
| A1230 |  | Retaining walls&Ramps |  | 10d | 2012-05-24 | 2012-06-02 | A1220 | 0d | CASH [373432] | 373,432 |
| A1240 |  | Basement Columns |  | 7d | 2012-05-24 | 2012-05-30 | A1230 SS | 0d | CASH [45820] | 45,820 |
| A1250 |  | Basement slab |  | 14d | 2012-05-31 | 2012-06-13 | A1240 | 0d | CASH [141929] | 141,929 |

| ID | WBS | Activity | Duration | Start | Finish | Predecessors | Total float | Free float | Resources | Cost |
| --- | --- | --- | --- | --- | --- | --- | --- | --- | --- | --- |
|  | 4 | **Concrete works** |  | 2012-06-14 | 2013-02-16 |  |  |  |  |  |
| A1280 |  | Columns for ground floors | 7d | 2012-06-14 | 2012-06-20 | A1250 | 0d |  | CASH [132724] | 132,724 |
| A1290 |  | Ground floor slab | 14d | 2012-06-21 | 2012-07-04 | A1280 | 0d |  | CASH [199086] | 199,086 |
| A1300 |  | Columns for mezzanine floor | 7d | 2012-07-05 | 2012-07-11 | A1290 | 0d |  | CASH [132724] | 132,724 |
| A1310 |  | Mezzanine floor slab | 14d | 2012-07-12 | 2012-07-25 | A1300 | 0d |  | CASH [199086] | 199,086 |
| A1320 |  | First floor columns | 7d | 2012-07-26 | 2012-08-01 | A1310 | 84d | 0d | CASH [132724] | 132,724 |
| A1330 |  | First floor slab | 14d | 2012-08-02 | 2012-08-15 | A1320 | 84d | 0d | CASH [199086] | 199,086 |
| A1340 |  | Second floor columns | 7d | 2012-08-16 | 2012-08-22 | A1330 | 84d | 0d | CASH [132724] | 132,724 |
| A1350 |  | Second floor slab | 14d | 2012-08-23 | 2012-09-05 | A1340 | 84d | 0d | CASH [199086] | 199,086 |
| A1360 |  | Third floor columns | 7d | 2012-09-06 | 2012-09-12 | A1350 | 84d | 0d | CASH [132724] | 132,724 |
| A1370 |  | Third floor slab | 14d | 2012-09-13 | 2012-09-26 | A1360 | 84d | 0d | CASH [199086] | 199,086 |
| A1380 |  | Fourth floor columns | 7d | 2012-09-27 | 2012-10-03 | A1370 | 84d | 0d | CASH [132724] | 132,724 |
| A1390 |  | Fourth floor slab | 14d | 2012-10-04 | 2012-10-17 | A1380 | 84d | 0d | CASH [199086] | 199,086 |
| A1400 |  | Fifth floor columns | 7d | 2012-10-18 | 2012-10-24 | A1390 | 84d | 0d | CASH [132724] | 132,724 |
| A1410 |  | Fifth floor slab | 14d | 2012-10-25 | 2012-11-07 | A1400 | 84d | 0d | CASH |  |
| A1420 |  | Sixth floor columns | 7d | 2012-11-08 | 2012-11-14 | A1410 | 84d | 0d | CASH [132724] | 132,724 |
| A1430 |  | Sixth floor slab | 14d | 2012-11-15 | 2012-11-28 | A1420 | 84d | 0d | CASH [199086] | 199,086 |
| A1450 |  | Seventh floor columns | 7d | 2012-11-29 | 2012-12-05 | A1430 | 84d | 0d | CASH [132724] | 132,724 |
| A1440 |  | Seventh floor slab | 14d | 2012-12-06 | 2012-12-19 | A1450 | 84d | 0d | CASH [199086] | 199,086 |
| A1460 |  | Eighth floor columns | 7d | 2012-12-20 | 2012-12-26 | A1440 | 84d | 0d | CASH [132724] | 132,724 |
| A1470 |  | Eighth floor slab | 14d | 2012-12-27 | 2013-01-09 | A1460 | 84d | 0d | CASH [199086] | 199,086 |
| A1480 |  | Ninth floor columns | 7d | 2013-01-10 | 2013-01-16 | A1470 | 84d | 0d | CASH [132724] | 132,724 |
| A1490 |  | Ninth Floor slab | 14d | 2013-01-17 | 2013-01-30 | A1480 | 84d | 0d | CASH [199086] | 199,086 |
| A1500 |  | Roof floor columns | 7d | 2013-01-31 | 2013-02-06 | A1490 | 84d | 0d | CASH [132724] | 132,724 |
| A1510 |  | Roof floor slab | 10d | 2013-02-07 | 2013-02-16 | A1500 | 84d | 0d | CASH [199086] | 199,086 |

| ID | WBS | Activity | Duration | Start | Finish | Predecessors | Total float | Free float | Resources | Cost | mep |
| --- | --- | --- | --- | --- | --- | --- | --- | --- | --- | --- | --- |
|  | 3 | **Masonry works** |  | 2012-07-26 | 2013-03-02 |  |  |  |  |  |  |
| A1560 |  | Masonry works | 220d | 2012-07-26 | 2013-03-02 | A1310 | 0d |  | CASH [1431816] | 1,431,816 |  |
|  | 2 | **Finishing works** |  | 2012-10-24 | 2013-05-11 |  |  |  |  |  |  |
| A1570 |  | Internal plater | 150d | 2012-10-24 | 2013-03-22 | A1560 FF+20d | 0d |  | CASH [107300] | 107,300 |  |
| A1590 |  | Flooring works&wall cladding | 150d | 2012-11-23 | 2013-04-21 | A1570 SS+30d | 0d |  | CASH [706908] | 706,908 |  |
| A1630 |  | Painting works | 150d | 2012-12-13 | 2013-05-11 | A1590 SS+20d | 0d |  | CASH [207613] | 207,613 |  |
| A1580 |  | External plaster | 25d | 2013-03-03 | 2013-03-27 | A1560 | 25d | 0d | CASH [131989] | 131,989 |  |
| A1600 |  | Gebson boards erection | 30d | 2013-03-03 | 2013-04-01 | A1570 FS-20d | 40d |  | CASH [14592] | 14,592 |  |
| A1620 |  | External cladding & facade | 20d | 2013-03-28 | 2013-04-16 | A1580 | 25d | 0d | CASH [1071434] | 1,071,434 |  |
| A1680 |  | Roof insulation | 20d | 2013-03-28 | 2013-04-16 | A1580 | 25d |  | CASH [51836] | 51,836 |  |
| A1780 |  | External paintings | 20d | 2013-03-28 | 2013-04-16 | A1580 | 25d |  | CASH [589] | 589 |  |
| A1610 |  | Doors erection | 20d | 2013-04-12 | 2013-05-01 | A1590 FS-10d | 10d |  | CASH [1142892] | 1,142,892 |  |
| A1640 |  | Sanitary Fixtures installation | 20d | 2013-04-22 | 2013-05-11 | A1630 FF | 0d |  | CASH |  |  |
|  | 1 | **MEP WORKS** |  | 2012-11-23 | 2013-05-11 |  |  |  |  |  |  |
|  | 1 | **Mechanical works** |  | 2012-11-23 | 2013-05-05 |  |  |  |  |  |  |
|  | 1 | **HVAC** |  | 2012-11-23 | 2013-05-05 |  |  |  |  |  |  |
| A1730 |  | Duct works | 150d | 2012-11-23 | 2013-04-21 | A1570 SS+30d | 6d | 0d | CASH [200000] | 200,000 | mep |
| A1650 |  | Split units | 7d | 2013-04-22 | 2013-04-28 | A1730 | 13d |  | CASH [50000] | 50,000 | mep |
| A1660 |  | Air grilles | 14d | 2013-04-22 | 2013-05-05 | A1730 | 6d |  | CASH [7000] | 7,000 | mep |
| A1720 |  | Fans | 10d | 2013-04-22 | 2013-05-01 | A1730 | 10d |  | CASH [100000] | 100,000 | mep |
|  | 2 | **Plumbing** |  | 2012-11-23 | 2013-04-01 |  |  |  |  |  |  |
| A1790 |  | Water supply system | 120d | 2012-11-23 | 2013-03-22 | A1560 SS+120d | 50d |  | CASH [170000] | 170,000 | mep |
| A1670 |  | Drainage works | 10d | 2013-03-23 | 2013-04-01 | A1570 | 18d | 0d | CASH [170000] | 170,000 | mep |
|  | 3 | **Fire fighting** |  | 2013-04-07 | 2013-04-23 |  |  |  |  |  |  |
| A1800 |  | Piping system | 7d | 2013-04-07 | 2013-04-13 | A1670 FS+5d | 18d | 0d | CASH [340000] | 340,000 | mep |
| A1820 |  | Fire pump installation | 5d | 2013-04-14 | 2013-04-18 | A1800 | 18d | 0d | CASH [85000] | 85,000 | mep |
| A1810 |  | Fire hose cabinet installation | 5d | 2013-04-19 | 2013-04-23 | A1820 | 18d |  | CASH [85000] | 85,000 | mep |

| ID | WBS | Activity | Duration | Start | Finish | Predecessors | Total float | Resources | Cost | mep |
| --- | --- | --- | --- | --- | --- | --- | --- | --- | --- | --- |
|  | 2 | **Electrical works** |  | 2013-02-26 | 2013-05-11 |  |  |  |  |  |
| A1700 |  | Power circuits&socket outlets | 25d | 2013-02-26 | 2013-03-22 | A1570 FF | 50d | CASH [109909] | 109,909 | mep |
| A1710 |  | Telephone outlets | 20d | 2013-03-03 | 2013-03-22 | A1570 FF | 50d | CASH [109909] | 109,909 | mep |
| A1740 |  | Lighting outlets&switches | 20d | 2013-03-03 | 2013-03-22 | A1570 FF | 50d | CASH [109909] | 109,909 | mep |
| A1750 |  | Distribution boards | 15d | 2013-04-27 | 2013-05-11 | A1630 FF | 0d | CASH [109909] | 109,909 | mep |
| A1760 |  | Fire alarm system | 10d | 2013-05-02 | 2013-05-11 | A1630 FF | 0d | CASH [109909] | 109,909 | mep |
| A1770 |  | Telecomunication systems | 10d | 2013-05-02 | 2013-05-11 | A1760 SS | 0d | CASH [109909] | 109,909 | mep |
| A1690 |  | Electrical water heater installation | 7d | 2013-05-05 | 2013-05-11 | A1630 FF | 0d | CASH |  | mep |

## Activity codes

| Code | Value | Meaning |
| --- | --- | --- |
| mep | mep | MEP |
