# Convention & Exhibition Center Project :Roads & Utilities-CL 14

Schedule from Primavera P6, 2012-12-17 to 2014-01-15, data date 2013-04-23, A marks actual dates.

## Calendars

- OCEC All Items-5d/Week: Mon-Wed 07:00-17:00; Thu-Fri off; Sat-Sun 07:00-17:00. Exceptions (off unless hours are given): 2012-12-20, 2012-12-27, 2013-01-03, 2013-01-10, 2013-01-17, 2013-01-24, 2013-01-31, 2013-02-07, 2013-02-21, 2013-02-28, 2013-03-07, 2013-03-14, 2013-03-21, 2013-03-28, 2013-04-04, 2013-04-11, 2013-04-18, 2013-04-25, 2013-05-02, 2013-05-09, 2013-05-16, 2013-05-23, 2013-05-30, 2013-06-06, 2013-06-13, 2013-06-20, 2013-06-27, 2013-07-04, 2013-07-11, 2013-07-18, 2013-07-25, 2013-08-01, 2013-08-08, 2013-08-10 to 2013-08-11, 2013-08-15, 2013-08-22, 2013-08-29, 2013-09-05, 2013-09-12, 2013-09-19, 2013-09-26, 2013-10-03, 2013-10-10, 2013-10-17, 2013-10-24, 2013-10-31, 2013-11-07, 2013-11-14, 2013-11-19 to 2013-11-21, 2013-11-28, 2013-12-05, 2013-12-12, 2013-12-19, 2013-12-26, 2014-01-02, 2014-01-09.
- OCEC Procurment/Curing-7d/W: Mon-Sun 07:00-17:00.

## Resources

| Resource | Group | Unit |
| --- | --- | --- |
| Project manager | labor |  |
| Quantity surveyor | labor |  |
| Project engineer | labor |  |
| Draughtman | labor |  |
| Store keeper | labor |  |
| Planning engineer | labor |  |
| Supevisors | labor |  |
| Lab assitance | labor |  |
| Deputy project manager | labor |  |
| Construction manager | labor |  |
| Doc. controller | labor |  |
| Lab Technision | labor |  |
| HSE officers | labor |  |
| Site engineer | labor |  |
| Material engineer | labor |  |
| Foreman | labor |  |
| Carpenter | labor |  |
| General worker | labor |  |
| Crane mounted truck | equipment |  |
| Scafolder | labor |  |
| Operator | labor |  |
| Steel fitter | labor |  |
| Transit mixer | equipment |  |
| Concrete vibrator | equipment |  |
| Concrete pump | equipment |  |
| Driver | labor |  |
| Air Compressor | equipment |  |
| Mason | labor |  |
| Bar bending machine | equipment |  |
| Bar cutting machine | equipment |  |
| Surveyor | labor |  |
| Surveying Instruments | equipment |  |
| Canter | equipment |  |
| Excavator | equipment |  |
| Front end loader | equipment |  |
| Tipper | equipment |  |
| Water tanker | equipment |  |
| Plate compactor | equipment |  |
| Pedestrain roller | equipment |  |
| Back hoe loader | equipment |  |
| Grader | equipment |  |
| Tandem roller | equipment |  |
| Asphalt paver | equipment |  |
| Tyre roller | equipment |  |
| Mixer machine | equipment |  |
| Road marking machine | equipment |  |
| Vibratory roller | equipment |  |
| Painter | labor |  |
| Fitter | labor |  |
| HDPE Pipe | material | m |
| Pipe Jointer | labor |  |
| Compactor | equipment |  |
| UPVC Pipe | material | m |
| Ductile Iron Pipe | material | m |
| Telecomm Duct | material | m |
| Electrical Cables | material | m |
| Cable Jointer | labor |  |
| Crimping tool | equipment |  |
| Wheel Loader | equipment |  |
| Rod Worker | labor |  |
| Technician | labor |  |
| Tool kit | equipment |  |
| Traffic Signs | material | LS |
| Riprap | material | LS |
| Gabions | material | LS |
| Ditch Lining | material | LS |
| Coastal Protection | material | m |
| W-Beam Guardrail | material | LS |
| Concrete Barrier | material | m |
| Borrow Embankment | material | M3 |
| Granular Sub-Base | material | M3 |
| Aggregate Base Course | material | M3 |
| Prime Coat & BBC | material | M3 |
| Tack Coat & Wearing Course | material | M3 |
| Bull dozer | equipment |  |
| خرسانة مسلحة للأرضيات | material | م3 |
| Pipe Culvert | material | m |
| طوب مصمط | material |  |
| AC Pipe Ducts | material | m |
| Concrete Base for Feeder Pillar & High Mast | material | M3 |
| Feeder Pillar | material | LS |
| Ornamental Lighting Columns | material | LS |
| High Mast Assebly | material | LS |
| Precast Concrete Tile Paving | material | LS |
| Road Marking&Studs | material | LS |

## Schedule

| ID | WBS | Activity | Type | Duration | Start | Finish | Predecessors | Complete | Remaining | Planned start | Planned finish | Total float | Free float | Constraint | Resources |
| --- | --- | --- | --- | --- | --- | --- | --- | --- | --- | --- | --- | --- | --- | --- | --- |
|  | 1 | **Contarct Dates** |  |  | 2012-12-17 | 2014-01-15 |  |  |  |  |  |  |  |  |  |
| A1 |  | Contract Award Date | milestone | 0d | 2012-12-17 A | 2012-12-17 A |  | 100% |  |  |  |  |  |  |  |
| A2 |  | Contract Commencement Date |  | 1.12d | 2012-12-17 A | 2012-12-17 A | A1 | 100% |  |  |  |  |  |  |  |
| A3 |  | Mobilization |  | 27.5d | 2012-12-17 A | 2013-01-16 A | A2 | 100% |  |  |  |  |  |  |  |
| A4 |  | Preliminaries |  | 233.75d | 2013-01-16 A | 2014-01-14 | A3 | 40% | 233.75d | 2013-04-23 | 2014-01-14 | 1.12d |  |  | Project manager [1870 h]; Quantity surveyor [1870 h]; Project engineer [1870 h]; Draughtman [1870 h]; Store keeper [1870 h]; Planning engineer [1870 h]; Supevisors [1870 h]; Lab assitance [1870 h]; Deputy project manager [1870 h]; Construction manager [1870 h]; Doc. controller [1870 h]; Lab Technision [1870 h]; HSE officers [1870 h]; Site engineer [1870 h]; Material engineer [1870 h] |
| A15091 |  | Contract Completion Date | milestone | 0d | 2014-01-15 | 2014-01-15 | A9010 FF, A4, A8240 FF, OCEC14200 FF, OCEC6681 FF |  |  |  |  | 0d |  |  |  |
|  | 4 | **Technical Queries** |  |  | 2013-04-14 | 2013-05-15 |  |  |  |  |  |  |  |  |  |
| A15130 |  | Confirmation Regarding Drainage channel /inspection chamber Overburden / max height at Zone 10 (OCEC - 3) |  | 11.25d | 2013-04-14 A | 2013-04-28 | A3 | 56% | 5d | 2013-04-14 | 2013-04-24 | 134.25d | 44.38d |  |  |
| A15135 |  | Confirmation on MSE Wall construction at OCEC -7 |  | 11.25d | 2013-04-23 | 2013-05-05 | A3 |  |  |  |  | 1.12d | 0d |  |  |
| A15137 |  | Confirmation of location of substation and pumproom to be finalised |  | 11.25d | 2013-04-23 | 2013-05-05 | A3 |  |  |  |  | 61.12d | 40d |  |  |
| A15131 |  | Confirmation on architectural pattern details for pier columns, abutment & other exposed surface |  | 7.5d | 2013-04-27 | 2013-05-04 | A3 |  |  |  |  | 0d |  | start on or after 2013-04-27 |  |
| A15132 |  | Confirmation on IL, utilities crossings through rectangular drain at OCEC-6 |  | 11.25d | 2013-04-27 | 2013-05-07 | A3 |  |  |  |  | 91.12d | 0d | start on or after 2013-04-27 |  |
| A15133 |  | Confirmation on IL, utilities crossings through rectangular drain at OCEC-5 |  | 11.25d | 2013-05-01 | 2013-05-13 | A3 |  |  |  |  | 186.12d | 0d | start on or after 2013-05-01 |  |
| A15134 |  | Confirmation on Electrical cable running parallel to rectangular drain and intesecting some location at OCEC -4 |  | 11.25d | 2013-05-05 | 2013-05-15 | A3 |  |  |  |  | 213.62d |  | start on or after 2013-05-05 |  |
|  | 2 | **Bridge Works** |  |  | 2012-12-17 | 2014-01-15 |  |  |  |  |  |  |  |  |  |
|  | MS | **Method Statment Submittals & Approvals** |  |  | 2012-12-17 | 2013-01-19 |  |  |  |  |  |  |  |  |  |
| A5 |  | Prepare and Submit Method Statment for Bridge Works |  | 17.5d | 2012-12-17 A | 2013-01-05 A | A3 SS | 100% |  |  |  |  |  |  |  |
| A6 |  | Review and approval for Method Statment for Bridge Works |  | 17.5d | 2013-01-06 A | 2013-01-19 A | A5 | 100% |  | 2013-01-06 | 2013-01-23 |  |  |  |  |
|  | 6 | **Sub Contractors Submittals & Approvals** |  |  | 2013-02-02 | 2013-08-04 |  |  |  |  |  |  |  |  |  |
|  | 1 | **MSE Wall Design & Supervision** |  |  | 2013-05-06 | 2013-07-13 |  |  |  |  |  |  |  |  |  |
| A7 |  | Prepare and Submission of Soil Investigantion Subconractor for MSE wall |  | 26.25d | 2013-05-06 | 2013-06-03 | A15135 |  |  |  |  | 1.12d | 0d |  |  |
| A8 |  | Approval of Soil Investigantion Subconractor for MSE wall |  | 28.75d | 2013-06-04 | 2013-07-06 | A7 |  |  |  |  | 1.12d | 0d |  |  |
| A9 |  | Appointment of Soil Investigantion Subconractor for MSE wall |  | 5.62d | 2013-07-07 | 2013-07-13 | A8 |  |  |  |  | 1.12d | 0d |  |  |
|  | 2 | **Prestressing Works** |  |  | 2013-02-02 | 2013-08-04 |  |  |  |  |  |  |  |  |  |
| A10 |  | Prepare and Submission for Prestressing Subcontractor |  | 17.5d | 2013-02-02 A | 2013-02-19 A | A7 | 100% |  |  |  |  |  |  |  |
| A11 |  | Approval of Prestressing Subcontractor |  | 17.5d | 2013-06-04 | 2013-06-23 | A10 |  |  |  |  | 19.25d | 0d |  |  |
| A12 |  | Appointment of Prestressing Subcontractor |  | 37.5d | 2013-06-24 | 2013-08-04 | A11 |  |  |  |  | 19.25d | 5.25d |  |  |

| ID | WBS | Activity | Duration | Start | Finish | Predecessors | Complete | Remaining | Planned start | Planned finish | Total float | Free float | Calendar | Resources | user_text1 | Flag |
| --- | --- | --- | --- | --- | --- | --- | --- | --- | --- | --- | --- | --- | --- | --- | --- | --- |
|  | 3 | **Bridge Load Testing** |  | 2013-06-04 | 2013-07-29 |  |  |  |  |  |  |  |  |  |  |  |
| A13 |  | Prepare and Submission for Bridge Load Testing Subcontractor | 17.5d | 2013-06-04 | 2013-06-23 | A10 |  |  |  |  | 123.5d | 0d |  |  |  |  |
| A14 |  | Approval of Bridge Load Testing Subcontractor | 17.5d | 2013-06-24 | 2013-07-13 | A13 |  |  |  |  | 123.5d | 0d |  |  |  |  |
| A15 |  | Appointment of Bridge Load Testing Subcontractors | 15d | 2013-07-14 | 2013-07-29 | A14 |  |  |  |  | 123.5d | 0d |  |  |  |  |
|  | 7 | **Construction Works** |  | 2012-12-17 | 2012-12-23 |  |  |  |  |  |  |  |  |  |  |  |
| A16 |  | Survey Works | 3.75d | 2012-12-17 A | 2012-12-23 A | A6, A3 | 100% |  | 2012-12-17 | 2012-12-19 |  |  |  |  |  |  |
|  | 2 | **Pier Construction for Bridges** |  | 2012-12-17 | 2013-09-07 |  |  |  |  |  |  |  |  |  |  |  |
|  | 9 | **Raft Foundations for Pier 2 /WB & EB** |  | 2012-12-17 | 2013-04-23 |  |  |  |  |  |  |  |  |  |  |  |
| A15106 |  | Prepartion & Submission for Aggregate material | 10d | 2012-12-17 A | 2013-01-27 A | A3 | 100% |  | 2012-12-17 | 2012-12-26 |  |  |  |  | 43 |  |
| A15107 |  | Prepartion & Submission for Sand material | 10d | 2012-12-17 A | 2013-01-27 A | A3 | 100% |  | 2012-12-17 | 2012-12-26 |  |  |  |  | 44 |  |
| A29 |  | MAR for Aggregate | 27.5d | 2012-12-17 A | 2013-01-27 A | A15106 | 100% |  | 2012-12-17 | 2013-01-15 |  |  |  |  | 43 |  |
| A30 |  | MAR for Sand | 27.5d | 2012-12-17 A | 2013-01-27 A | A15107 | 100% |  | 2012-12-17 | 2013-01-15 |  |  |  |  | 44 |  |
| A15105 |  | Prepartion & Submission for Cement material | 10d | 2013-01-16 A | 2013-01-27 A | A3 | 100% |  | 2012-12-17 | 2012-12-26 |  |  |  |  | Jan2013 | UDF_G4 |
| A15108 |  | Prepartion & Submission for High yield Steel Bars (all diameters) | 10d | 2013-01-16 A | 2013-01-26 A | A3 | 100% |  | 2012-12-17 | 2012-12-26 |  |  |  |  | Jan2013 | UDF_G4 |
| A15109 |  | Prepartion & Submission for Concrete 30/20 | 10d | 2013-01-19 A | 2013-03-19 A | A3 | 100% |  | 2012-12-17 | 2012-12-26 |  |  |  |  | 39 |  |
| A15110 |  | Prepartion & Submission for Concrete 16/20 | 10d | 2013-01-19 A | 2013-03-19 A | A3 | 100% |  | 2012-12-17 | 2012-12-26 |  |  |  |  | 38 |  |
| A15111 |  | Prepartion & Submission for Concrete 40/20 MS - 7 | 10d | 2013-01-19 A | 2013-03-19 A | A3 | 100% |  | 2012-12-17 | 2012-12-26 |  |  |  |  | 40 |  |
| A15113 |  | Prepartion & Submission for Concrete 45/20 MS - 7 | 10d | 2013-01-19 A | 2013-03-19 A | A3 | 100% |  | 2012-12-17 | 2012-12-26 |  |  |  |  | 41 |  |
| A15114 |  | Prepartion & Submission for Concrete 50/20 MS - 7 | 10d | 2013-01-19 A | 2013-03-19 A | A3 | 100% |  | 2012-12-17 | 2012-12-26 |  |  |  |  | 42 |  |
| A20 |  | MAR for Concrete 30/20 | 27.5d | 2013-01-19 A | 2013-03-19 A | A15109 | 100% |  | 2012-12-17 | 2013-01-15 |  |  |  |  | 39 |  |
| A25 |  | MAR for Concrete 16/20 | 27.5d | 2013-01-19 A | 2013-03-19 A | A15110 | 100% |  | 2012-12-17 | 2013-01-15 |  |  |  |  | 38 |  |
| A26 |  | MAR for Concrete 40/20 MS - 7 | 27.5d | 2013-01-19 A | 2013-03-19 A | A15111 | 100% |  | 2012-12-17 | 2013-01-15 |  |  |  |  | 40 |  |
| A27 |  | MAR for Concrete 45/20 MS - 7 | 27.5d | 2013-01-19 A | 2013-03-19 A | A15113 | 100% |  | 2012-12-17 | 2013-01-15 |  |  |  |  | 41 |  |
| A28 |  | MAR for Concrete 50/20 MS - 7 | 27.5d | 2013-01-19 A | 2013-03-19 A | A15114 | 100% |  | 2012-12-17 | 2013-01-15 |  |  |  |  | 42 |  |
| A15115 |  | Prepartion & Submission for Water Proofing Membrane | 10d | 2013-01-23 A | 2013-02-05 A | A3 | 100% |  | 2012-12-31 | 2013-01-09 |  |  |  |  | Feb 2013 | UDF_G1 |
| A15112 |  | Prepartion & Submission for Bitumen Protection Board - 6 mm | 10d | 2013-01-26 A | 2013-02-05 A | A3 | 100% |  | 2013-04-23 | 2013-05-04 |  |  |  |  | Feb 2013 | UDF_G1 |
| A31 |  | MAR for High yield Steel Bars (all diameters) | 27.5d | 2013-01-26 A | 2013-02-26 A | A15108 | 100% |  | 2012-12-17 | 2013-01-15 |  |  |  |  | 45 |  |
| A21 |  | MAR for Cement | 27.5d | 2013-01-27 A | 2013-02-27 A | A15105 | 100% |  | 2012-12-17 | 2013-01-15 |  |  |  |  | 35 |  |
| A35 |  | Procurment for Concrete 30/20 | 2.5d | 2013-01-27 A | 2013-01-29 A | A20 | 100% |  | 2013-04-23 | 2013-04-24 |  |  | OCEC Procurment/Curing-7d/W |  |  | UDF_G3 |
| A36 |  | Procurment for Cement | 5d | 2013-01-27 A | 2013-01-29 A | A21 | 100% |  | 2013-04-23 | 2013-04-26 |  |  | OCEC Procurment/Curing-7d/W |  |  | UDF_G3 |
| A44 |  | Procurment for Aggregate | 2.5d | 2013-01-27 A | 2013-01-29 A | A29 | 100% |  | 2013-04-23 | 2013-04-24 |  |  | OCEC Procurment/Curing-7d/W |  |  | UDF_G3 |
| A45 |  | Procurment for Sand | 2.5d | 2013-01-27 A | 2013-01-29 A | A30 | 100% |  | 2013-04-23 | 2013-04-24 |  |  | OCEC Procurment/Curing-7d/W |  |  | UDF_G3 |
| A15116 |  | Prepartion & Submission for Micro Silica | 10d | 2013-01-28 A | 2013-03-11 A | A3 | 100% |  | 2013-04-23 | 2013-05-04 |  |  |  |  | 36 |  |
| A15117 |  | Prepartion & Submission for Admixture | 10d | 2013-01-28 A | 2013-03-11 A | A3 | 100% |  | 2013-04-23 | 2013-05-04 |  |  |  |  | 37 |  |
| A22 |  | MAR for Micro Silica | 27.5d | 2013-01-28 A | 2013-03-11 A | A15116 | 100% |  | 2013-04-23 | 2013-05-22 |  |  |  |  | 36 |  |
| A23 |  | MAR for Admixture | 27.5d | 2013-01-28 A | 2013-03-11 A | A15117 | 100% |  | 2013-04-23 | 2013-05-22 |  |  |  |  | 37 |  |
| A34 |  | Preparation & Submission of Shop Drawings | 10d | 2013-01-28 A | 2013-02-02 A | A10590 | 100% |  | 2013-05-05 | 2013-05-14 |  |  |  |  |  |  |
| A48 |  | MIR for Concrete 30/20 | 2.5d | 2013-01-29 A | 2013-02-02 A | A35 | 100% |  | 2013-04-23 | 2013-04-24 |  |  |  |  |  | UDF_G3 |
| A50 |  | MIR for Aggregate | 2.5d | 2013-01-29 A | 2013-02-02 A | A44 | 100% |  | 2013-04-23 | 2013-04-24 |  |  |  |  |  | UDF_G3 |
| A51 |  | MIR for Sand | 2.5d | 2013-01-29 A | 2013-02-02 A | A45 | 100% |  | 2013-04-23 | 2013-04-24 |  |  |  |  |  | UDF_G3 |
| A52 |  | Preparation & Submission of Bar Schedule Drawings | 10d | 2013-02-02 A | 2013-02-09 A | A34, A10570 | 100% |  | 2013-05-15 | 2013-05-26 |  |  |  |  |  |  |
| A53 |  | Approval of Shop Drawings | 17.5d | 2013-02-02 A | 2013-02-20 A | A34 | 100% |  | 2013-05-05 | 2013-05-22 |  |  |  |  |  |  |
| A32 |  | MAR for Water Proofing Membrane | 27.5d | 2013-02-05 A | 2013-03-03 A | A15115 | 100% |  | 2012-12-31 | 2013-01-29 |  |  |  |  | 46 |  |
| A33 |  | MAR for Bitumen Protection Board - 6 mm | 27.5d | 2013-02-05 A | 2013-04-23 | A15112 | 80% | 0d | 2013-04-23 | 2013-05-22 | 15.38d | 0d |  |  | 47 |  |
| A54 |  | MIR for Cement | 2.5d | 2013-02-05 A | 2013-02-09 A | A36 | 100% |  | 2013-04-23 | 2013-04-24 |  |  |  |  |  | UDF_G3 |
| A62 |  | Approval of Bar Schedule Drawings | 17.5d | 2013-02-09 A | 2013-02-27 A | A52 | 100% |  | 2013-05-15 | 2013-06-03 |  |  |  |  |  |  |
| A65 |  | Procurment for Bitumen Protection Board - 6 mm | 5d | 2013-02-16 A | 2013-02-20 A | A33 | 100% |  | 2013-06-04 | 2013-06-07 |  |  | OCEC Procurment/Curing-7d/W |  |  | UDF_G3 |
| A69 |  | Setting Out for Raft Foundations | 2.25d | 2013-02-16 A | 2013-02-19 A | A53 | 100% |  | 2013-05-05 | 2013-05-06 |  |  |  | General worker [36 h]; Surveyor [18 h]; Surveying Instruments [18 h] |  |  |
| A63 |  | Structural Excavation | 6.25d | 2013-02-19 A | 2013-02-27 A | A48 SS, A69 | 100% |  | 2013-05-06 | 2013-05-13 |  |  |  | Excavator [50 h]; Operator [120 h]; Foreman [50 h]; Driver [50 h]; Front end loader [50 h]; Tipper [50 h] |  | UDF_G2 |
| A66 |  | Foundation Beds Prepration | 4.5d | 2013-02-19 A | 2013-02-24 A | A63 | 100% |  | 2013-05-05 | 2013-05-08 |  |  |  | Carpenter [80 h]; General worker [80 h]; Foreman [40 h] |  | UDF_G2 |
| A15119 |  | Prepartion & Submission for Ready mix concrete | 10d | 2013-02-23 A | 2013-02-24 A | A3 | 100% |  | 2013-04-23 | 2013-05-04 |  |  |  |  | 64 |  |
| A47 |  | MAR for Ready mix concrete | 27.5d | 2013-02-23 A | 2013-02-24 A | A15119 | 100% |  | 2013-04-23 | 2013-05-22 |  |  |  |  | 64 |  |
| A68 |  | MIR for Bitumen Protection Board - 6 mm | 2.5d | 2013-02-24 A | 2013-02-26 A | A65 | 100% |  | 2013-06-04 | 2013-06-05 |  |  |  |  |  | UDF_G3 |
| A74 |  | Procurment for Ready mix concrete | 5d | 2013-02-24 A | 2013-02-26 A | A47 | 100% |  | 2013-04-23 | 2013-04-26 |  |  | OCEC Procurment/Curing-7d/W |  |  | UDF_G3 |
| A75 |  | MIR for Ready mix concrete | 2.5d | 2013-02-24 A | 2013-02-26 A | A74 | 100% |  | 2013-05-01 | 2013-05-04 |  |  |  |  |  | UDF_G3 |
| A71 |  | Reinforcement Cutting & Bending for Raft Foundations | 7.5d | 2013-02-27 A | 2013-03-09 A | A62, A61 | 100% |  | 2013-05-15 | 2013-05-22 |  |  |  | Steel fitter [540 h]; General worker [540 h]; Bar bending machine [60 h]; Bar cutting machine [60 h]; Foreman [60 h]; Operator [180 h] |  | UDF_G2 |
| A70 |  | Plate Load Testing & Submission of Reports | 7.88d | 2013-03-02 A | 2013-03-10 A | A66 | 100% |  | 2013-05-08 | 2013-05-18 |  |  |  |  |  | UDF_G2 |
| A73 |  | Placing of Blinding Concrete | 1.12d | 2013-03-05 A | 2013-03-06 A | A70, A50 SS, A51 SS, A54 SS, A55 SS, A56 SS | 100% |  | 2013-06-12 | 2013-06-12 |  |  |  | Transit mixer [16 h]; Mason [16 h]; General worker [20 h]; Driver [16 h]; Foreman [9 h] |  | UDF_G4 |
| A67 |  | MIR for Water Proofing Membrane | 2.5d | 2013-03-09 A | 2013-03-11 A | A64 | 100% |  | 2013-02-19 | 2013-02-20 |  |  |  |  |  | UDF_G3 |
| A76 |  | Application of Primer, Water Proofing Membrane | 3.38d | 2013-03-09 A | 2013-03-12 A | A73, A67 SS, A68 SS | 100% |  | 2013-06-12 | 2013-06-17 |  |  |  | General worker [120 h]; Foreman [27 h] |  | UDF_G2 |
| A61 |  | MIR for High yield Steel Bars (all diameters) | 2.5d | 2013-03-10 A | 2013-03-11 A | A46 | 100% |  | 2013-02-05 | 2013-02-06 |  |  |  |  |  | UDF_G3 |
| A77 |  | Concrete Screed | 1.12d | 2013-03-10 A | 2013-03-11 A | A76, A57, A58, A59, A60 | 100% |  | 2013-05-05 | 2013-05-05 |  |  |  | General worker [20 h]; Foreman [9 h]; Mason [20 h] |  | UDF_G2 |
| A37 |  | Procurment for Micro Silica | 5d | 2013-03-11 A | 2013-03-16 A | A22 | 100% |  | 2013-04-23 | 2013-04-26 |  |  | OCEC Procurment/Curing-7d/W |  |  | UDF_G3 |
| A38 |  | Procurment for Admixture | 5d | 2013-03-12 A | 2013-03-16 A | A23 | 100% |  | 2013-06-04 | 2013-06-07 |  |  | OCEC Procurment/Curing-7d/W |  |  | UDF_G3 |
| A78 |  | Reinforcement Fixing for Raft Foundations | 6.75d | 2013-03-13 A | 2013-03-20 A | A71, A77 | 100% |  | 2013-06-12 | 2013-06-19 |  |  |  | Steel fitter [300 h]; General worker [300 h]; Crane mounted truck [50 h]; Operator [50 h]; Foreman [54 h] |  | UDF_G2 |
| A55 |  | MIR for Micro Silica | 2.5d | 2013-03-16 A | 2013-03-18 A | A37 | 100% |  | 2013-04-23 | 2013-04-24 |  |  |  |  |  | UDF_G3 |
| A56 |  | MIR for Admixture | 2.5d | 2013-03-16 A | 2013-03-18 A | A38 | 100% |  | 2013-06-12 | 2013-06-15 |  |  |  |  |  | UDF_G3 |
| A40 |  | Procurment for Concrete 16/20 | 5d | 2013-03-19 A | 2013-03-23 A | A25 | 100% |  | 2013-04-23 | 2013-04-26 |  |  | OCEC Procurment/Curing-7d/W |  |  | UDF_G3 |
| A41 |  | Procurment for Concrete 40/20 MS - 7 | 5d | 2013-03-19 A | 2013-03-23 A | A26 | 100% |  | 2013-04-23 | 2013-04-26 |  |  | OCEC Procurment/Curing-7d/W |  |  | UDF_G3 |
| A42 |  | Procurment for Concrete 45/20 MS - 7 | 5d | 2013-03-19 A | 2013-03-23 A | A27 | 100% |  | 2013-04-23 | 2013-04-26 |  |  | OCEC Procurment/Curing-7d/W |  |  | UDF_G3 |

| ID | WBS | Activity | Duration | Start | Finish | Predecessors | Complete | Planned start | Planned finish | Total float | Free float | Calendar | Resources | Flag |
| --- | --- | --- | --- | --- | --- | --- | --- | --- | --- | --- | --- | --- | --- | --- |
| A43 |  | Procurment for Concrete 50/20 MS - 7 | 5d | 2013-03-19 A | 2013-03-23 A | A28 | 100% | 2013-04-23 | 2013-04-26 |  |  | OCEC Procurment/Curing-7d/W |  | UDF_G3 |
| A46 |  | Procurment for High yield Steel Bars (all diameters) | 5d | 2013-03-19 A | 2013-03-23 A | A31 | 100% | 2013-01-28 | 2013-01-31 |  |  | OCEC Procurment/Curing-7d/W |  | UDF_G3 |
| A64 |  | Procurment for Water Proofing Membrane | 5d | 2013-03-20 A | 2013-03-24 A | A32 | 100% | 2013-02-11 | 2013-02-14 |  |  | OCEC Procurment/Curing-7d/W |  | UDF_G3 |
| A79 |  | Formworks for Raft Foundations | 1.12d | 2013-03-20 A | 2013-03-23 A | A78 | 100% | 2013-05-15 | 2013-05-15 |  |  |  | Carpenter [60 h]; General worker [60 h]; Crane mounted truck [9 h]; Driver [9 h]; Foreman [9 h]; Operator [9 h] | UDF_G2 |
| A57 |  | MIR for Concrete 16/20 | 2.5d | 2013-03-23 A | 2013-03-25 A | A40 | 100% | 2013-04-23 | 2013-04-24 |  |  |  |  | UDF_G3 |
| A58 |  | MIR for Concrete 40/20 MS - 7 | 2.5d | 2013-03-23 A | 2013-03-25 A | A41 | 100% | 2013-04-23 | 2013-04-24 |  |  |  |  | UDF_G3 |
| A59 |  | MIR for Concrete 45/20 MS - 7 | 2.5d | 2013-03-23 A | 2013-03-25 A | A42 | 100% | 2013-04-23 | 2013-04-24 |  |  |  |  | UDF_G3 |
| A60 |  | MIR for Concrete 50/20 MS - 7 | 2.5d | 2013-03-23 A | 2013-03-25 A | A43 | 100% | 2013-04-23 | 2013-04-24 |  |  |  |  | UDF_G3 |
| A80 |  | Concreting for Raft Foundations | 1.12d | 2013-03-23 A | 2013-03-24 A | A79 | 100% | 2013-05-15 | 2013-05-15 |  |  |  | Driver [50 h]; General worker [40 h]; Concrete vibrator [40 h]; Concrete pump [16 h]; Air Compressor [8 h]; Transit mixer [45 h]; Foreman [9 h]; Operator [60 h]; Mason [20 h] | UDF_G2 |
| A81 |  | Removal of Formwork for Raft Foundations | 2.25d | 2013-03-24 A | 2013-03-26 A | A80 | 100% | 2013-05-15 | 2013-05-18 |  |  |  | General worker [60 h]; Carpenter [60 h]; Crane mounted truck [18 h]; Operator [18 h]; Foreman [18 h] |  |
| A72 |  | Completion of Raft Foundations for Pier 2 - WB & EB | 1d | 2013-03-26 A | 2013-03-27 A | A81 FF | 100% | 2013-05-15 | 2013-05-15 |  |  |  |  |  |
|  | 11 | **Pier Construction P 2 /WB - A** |  | 2013-04-23 | 2013-06-19 |  |  |  |  |  |  |  |  |  |
| A108 |  | Setting Out for Pier | 1.12d | 2013-04-23 | 2013-04-23 | A72 |  |  |  | 15.38d | 0d |  | General worker [18 h]; Surveying Instruments [9 h]; Surveyor [9 h] |  |
| A110 |  | Reinforcement Cutting & Bending for Pier - Lift 1 | 4.5d | 2013-04-23 | 2013-04-28 | A71 |  |  |  | 14.5d | 0d |  | Steel fitter [360 h]; General worker [180 h]; Bar cutting machine [40 h]; Bar bending machine [40 h] | UDF_G2 |
| A109 |  | Erection of Scaffolding for Pier - Lift 1 | 2.5d | 2013-04-23 | 2013-04-27 | A108 |  |  |  | 15.38d | 0.88d |  | General worker [44.44 h]; Crane mounted truck [17.78 h]; Foreman [20 h]; Operator [20 h]; Scafolder [44.44 h] | UDF_G2 |
| A112 |  | Reinforcement Cutting & Bending for Pier - Lift 2 | 4.5d | 2013-04-27 | 2013-04-30 | A110 SS+2.5d |  |  |  | 15d | 0d |  | Bar bending machine [40 h]; Bar cutting machine [40 h]; Steel fitter [320 h]; General worker [320 h]; Operator [80 h]; Foreman [36 h] |  |
| A111 |  | Reinforcement Fixing for Pier - Lift 1 | 2.25d | 2013-04-28 | 2013-04-30 | A109, A110 |  |  |  | 14.5d | 0d |  | General worker [100 h]; Steel fitter [100 h]; Crane mounted truck [18 h]; Operator [18 h]; Foreman [18 h] |  |
| A116 |  | Reinforcement Cutting & Bending for Pier - Lift 3 | 4.5d | 2013-04-29 | 2013-05-04 | A112 SS+2.5d |  |  |  | 15d | 0d |  | Bar bending machine [40 h]; Bar cutting machine [40 h]; Steel fitter [320 h]; General worker [320 h]; Foreman [36 h]; Operator [80 h] | UDF_G1 |
| A113 |  | Formwork for Pier - Lift 1 | 1.12d | 2013-04-30 | 2013-05-01 | A111 |  |  |  | 14.5d | 0d |  | Carpenter [30 h]; General worker [30 h]; Crane mounted truck [8 h]; Driver [8 h]; Foreman [9 h] | UDF_G2 |
| A114 |  | Concreting for Pier - Lift 1 | 1.12d | 2013-05-01 | 2013-05-04 | A111, A113 |  |  |  | 14.5d | 0d |  | Transit mixer [18 h]; Concrete vibrator [8 h]; Concrete pump [8 h]; Driver [18 h]; General worker [20 h]; Air Compressor [8 h]; Foreman [9 h]; Mason [20 h]; Operator [30 h] | UDF_G2 |
| A115 |  | Erection of Scaffolding for Pier - Lift 2 | 1.12d | 2013-05-04 | 2013-05-05 | A111, A114 |  |  |  | 14.5d | 0d |  | General worker [30 h]; Crane mounted truck [8 h]; Scafolder [30 h]; Operator [9 h]; Foreman [9 h] | UDF_G3 |
| A117 |  | Reinforcement Fixing for Pier - Lift 2 | 2.25d | 2013-05-05 | 2013-05-06 | A115, A111, A112 |  |  |  | 14.5d |  |  | General worker [100 h]; Steel fitter [100 h]; Crane mounted truck [20 h]; Operator [20 h]; Foreman [18 h] | UDF_G3 |
| A118 |  | Formwork for Pier - Lift 2 | 1.12d | 2013-05-22 | 2013-05-25 | A117, A15131 FS+16.88d |  |  |  | 0d |  |  | Carpenter [30 h]; General worker [30 h]; Crane mounted truck [8 h]; Foreman [9 h]; Operator [9 h] | UDF_G3 |
| A119 |  | Concreting for Pier - Lift 2 | 1.12d | 2013-05-25 | 2013-05-26 | A118 |  |  |  | 0d |  |  | Transit mixer [18 h]; Concrete vibrator [8 h]; Concrete pump [8 h]; General worker [20 h]; Air Compressor [8 h]; Foreman [9 h]; Mason [20 h]; Operator [30 h]; Driver [20 h] | UDF_G3 |
| A120 |  | Erection of Scaffolding for Pier - Lift 3 | 1.12d | 2013-05-26 | 2013-05-27 | A119 |  |  |  | 2.25d | 0d |  | General worker [40 h]; Crane mounted truck [8 h]; Scafolder [40 h]; Foreman [9 h]; Operator [9 h] | UDF_G1 |
| A121 |  | Reinforcement Fixing for Pier - Lift 3 | 1.12d | 2013-05-27 | 2013-05-28 | A116, A120, A119 |  |  |  | 2.25d | 0d |  | General worker [50 h]; Steel fitter [50 h]; Crane mounted truck [8 h]; Operator [8 h]; Foreman [9 h] | UDF_G1 |
| A122 |  | Formwork for Pier - Lift 3 | 1.12d | 2013-05-28 | 2013-05-28 | A121 |  |  |  | 2.25d | 0d |  | Carpenter [30 h]; General worker [30 h]; Crane mounted truck [8 h]; Driver [8 h]; Foreman [9 h]; Operator [9 h] |  |
| A123 |  | Concreting for Pier - Lift 3 | 1.12d | 2013-05-29 | 2013-05-29 | A122 |  |  |  | 2.25d | 0d |  | Transit mixer [9 h]; Concrete vibrator [8 h]; Concrete pump [8 h]; Driver [20 h]; General worker [20 h]; Air Compressor [8 h]; Mason [20 h]; Operator [30 h]; Foreman [9 h] | UDF_G1 |
| A124 |  | Removal of Formwork for Pier | 2.25d | 2013-05-29 | 2013-06-02 | A123 |  |  |  | 2.25d | 0d |  | Carpenter [60 h]; General worker [60 h]; Crane mounted truck [20 h]; Operator [20 h]; Foreman [18 h] |  |
| A125 |  | Dismantling of Complete Pier Scaffolding | 10d | 2013-06-02 | 2013-06-12 | A124 |  |  |  | 27.75d | 2.5d |  | General worker [355.56 h]; Scafolder [355.56 h]; Operator [80 h]; Foreman [80 h]; Crane mounted truck [80 h] |  |
| A126 |  | Application of Primer, Water Proofing Membrane & Protection Board | 2.5d | 2013-06-16 | 2013-06-18 | A125, A148 SS |  |  |  | 34d | 0d |  | General worker [60 h]; Foreman [30 h] | UDF_G1 |
| A127 |  | Application of Bitumen Mastic | 1d | 2013-06-18 | 2013-06-19 | A126 |  |  |  | 34d | 0d |  | General worker [18 h]; Foreman [8 h] | UDF_G1 |
| A128 |  | Concrete Screed for Balance Portion of PCC | 1d | 2013-06-18 | 2013-06-19 | A127 SS, A126 |  |  |  | 34d | 0d |  | General worker [16 h]; Foreman [8 h] | UDF_G1 |
| A129 |  | Completion of Pier Construction 2 - WB - A | 1d | 2013-06-18 | 2013-06-19 | A128 FF |  |  |  | 34d | 15d |  |  |  |

| ID | WBS | Activity | Duration | Start | Finish | Predecessors | Total float | Free float | Resources | Flag |
| --- | --- | --- | --- | --- | --- | --- | --- | --- | --- | --- |
|  | 10 | **Pier Construction P 2 /WB - B** |  | 2013-05-04 | 2013-06-19 |  |  |  |  |  |
| A131 |  | Reinforcement Cutting & Bending for Pier - Lift 1 | 4.5d | 2013-05-04 | 2013-05-08 | A116 | 15d | 0d | Steel fitter [320 h]; General worker [320 h]; Bar bending machine [40 h]; Bar cutting machine [40 h]; Operator [80 h]; Foreman [36 h] |  |
| A134 |  | Reinforcement Cutting & Bending for Pier - Lift 2 | 4.5d | 2013-05-06 | 2013-05-12 | A131 SS+2.5d | 15d | 0d | Bar bending machine [40 h]; Bar cutting machine [40 h]; Steel fitter [320 h]; General worker [320 h]; Operator [80 h]; Foreman [36 h] |  |
| A138 |  | Reinforcement Cutting & Bending for Pier - Lift 3 | 4.5d | 2013-05-08 | 2013-05-14 | A134 SS+2.5d | 15d | 0d | Bar bending machine [40 h]; Bar cutting machine [40 h]; Steel fitter [320 h]; General worker [320 h]; Operator [80 h]; Foreman [36 h] | UDF_G3 |
| A130 |  | Setting Out for Pier | 1.12d | 2013-05-25 | 2013-05-26 | A118 | 0d |  | General worker [10 h] |  |
| A132 |  | Erection of Scaffolding for Pier - Lift 1 | 1.12d | 2013-05-26 | 2013-05-27 | A130, A119 | 0d |  | Carpenter [10 h]; General worker [10 h]; Driver [8 h]; Crane mounted truck [8 h] | UDF_G2 |
| A133 |  | Reinforcement Fixing for Pier - Lift 1 | 2.25d | 2013-05-27 | 2013-05-28 | A132, A131 | 0d |  | General worker [100 h]; Steel fitter [100 h]; Crane mounted truck [18 h]; Operator [18 h]; Foreman [18 h] | UDF_G2 |
| A135 |  | Formwork for Pier - Lift 1 | 1.12d | 2013-05-29 | 2013-05-29 | A133 | 0d |  | Carpenter [30 h]; General worker [30 h]; Foreman [8 h]; Crane mounted truck [8 h]; Operator [9 h] | UDF_G2 |
| A136 |  | Concreting for Pier - Lift 1 | 1.12d | 2013-05-29 | 2013-06-01 | A133, A135 | 0d |  | Foreman [8 h]; Transit mixer [20 h]; Concrete vibrator [8 h]; Concrete pump [8 h]; Driver [20 h]; General worker [20 h]; Air Compressor [8 h]; Mason [20 h]; Operator [30 h] | UDF_G2 |
| A137 |  | Erection of Scaffolding for Pier - Lift 2 | 1.12d | 2013-06-01 | 2013-06-02 | A133, A136 | 0d |  | Foreman [8 h]; Carpenter [10 h]; General worker [30 h]; Crane mounted truck [8 h]; Scafolder [30 h]; Operator [9 h] | UDF_G1 |
| A139 |  | Reinforcement Fixing for Pier - Lift 2 | 2.25d | 2013-06-02 | 2013-06-04 | A137, A133, A134 | 0d |  | General worker [100 h]; Steel fitter [100 h]; Foreman [20 h]; Crane mounted truck [20 h]; Operator [20 h] | UDF_G1 |
| A140 |  | Formwork for Pier - Lift 2 | 1.12d | 2013-06-04 | 2013-06-05 | A139, A124 | 0d |  | Carpenter [30 h]; General worker [30 h]; Foreman [8 h]; Crane mounted truck [8 h]; Operator [9 h] | UDF_G1 |
| A141 |  | Concreting for Pier - Lift 2 | 1.12d | 2013-06-05 | 2013-06-08 | A140 | 0d |  | Foreman [8 h]; Transit mixer [20 h]; Concrete vibrator [8 h]; Concrete pump [8 h]; Driver [20 h]; General worker [20 h]; Air Compressor [8 h]; Mason [20 h]; Operator [30 h] | UDF_G1 |
| A142 |  | Erection of Scaffolding for Pier - Lift 3 | 1.25d | 2013-06-08 | 2013-06-09 | A141 | 2.12d | 0d | Foreman [10 h]; Carpenter [10 h]; General worker [40 h]; Crane mounted truck [10 h]; Scafolder [40 h]; Operator [10 h] | UDF_G3 |
| A143 |  | Reinforcement Fixing for Pier - Lift 3 | 1.12d | 2013-06-09 | 2013-06-10 | A138, A142, A141 | 2.12d | 0d | General worker [50 h]; Steel fitter [50 h]; Foreman [8 h]; Crane mounted truck [8 h]; Operator [8 h] | UDF_G3 |
| A144 |  | Formwork for Pier - Lift 3 | 1.12d | 2013-06-10 | 2013-06-11 | A143 | 2.12d | 0d | Carpenter [30 h]; General worker [30 h]; Foreman [8 h]; Crane mounted truck [8 h]; Operator [9 h] |  |
| A145 |  | Concreting for Pier - Lift 3 | 1.12d | 2013-06-11 | 2013-06-11 | A144 | 2.12d | 0d | Foreman [8 h]; Transit mixer [20 h]; Concrete vibrator [8 h]; Concrete pump [8 h]; Driver [20 h]; General worker [20 h]; Air Compressor [8 h]; Operator [30 h]; Mason [20 h] | UDF_G3 |
| A146 |  | Removal of Formwork for Pier | 2.25d | 2013-06-12 | 2013-06-15 | A145 | 2.12d | 0d | Carpenter [60 h]; General worker [60 h]; Foreman [20 h]; Crane mounted truck [20 h]; Operator [20 h] |  |
| A147 |  | Dismantling of Complete Pier Scaffolding | 1.12d | 2013-06-15 | 2013-06-16 | A146 | 33.88d | 0d | General worker [40 h]; Scafolder [40 h]; Foreman [9 h]; Operator [9 h]; Crane mounted truck [9 h] |  |
| A148 |  | Application of Primer, Water Proofing Membrane & Protection Board | 2.5d | 2013-06-16 | 2013-06-18 | A147 | 33.88d | 0d | General worker [60 h]; Foreman [20 h] | UDF_G2 |
| A149 |  | Application of Bitumen Mastic | 1.12d | 2013-06-18 | 2013-06-19 | A148 | 33.88d | 0d | General worker [20 h]; Foreman [9 h] | UDF_G2 |
| A150 |  | Concrete Screed for Balance Portion of PCC | 1.12d | 2013-06-18 | 2013-06-19 | A148, A149 SS | 33.88d | 0d | General worker [20 h]; Foreman [9 h] | UDF_G4 |
| A151 |  | Completion of Pier Construction 2 - WB - B | 1d | 2013-06-18 | 2013-06-19 | A150 FF | 33.88d | 14.88d |  |  |
|  | 3 | **Pier Construction P 2 /EB - A** |  | 2013-06-25 | 2013-09-07 |  |  |  |  |  |
| A240 |  | Reinforcement Cutting & Bending for Pier - Lift 1 | 4.5d | 2013-06-25 | 2013-07-01 | A223 | 15d | 0d | Bar bending machine [40 h]; Bar cutting machine [40 h]; Steel fitter [320 h]; General worker [320 h]; Operator [80 h]; Foreman [36 h] |  |
| A243 |  | Reinforcement Cutting & Bending for Pier - Lift 2 | 4.5d | 2013-06-29 | 2013-07-03 | A240 SS+2.5d | 15d | 0d | Bar bending machine [40 h]; Bar cutting machine [40 h]; Steel fitter [320 h]; General worker [320 h]; Operator [80 h]; Foreman [36 h] |  |
| A247 |  | Reinforcement Cutting & Bending for Pier - Lift 3 | 4.5d | 2013-07-01 | 2013-07-07 | A243 SS+2.5d | 15d | 0d | Bar bending machine [40 h]; Bar cutting machine [40 h]; Steel fitter [320 h]; General worker [320 h]; Operator [80 h] | UDF_G4 |
| A241 |  | Setting Out for Pier | 1.12d | 2013-07-27 | 2013-07-28 | A228 | 0d |  | General worker [20 h]; Surveyor [9 h]; Surveying Instruments [9 h] |  |
| A242 |  | Erection of Scaffolding for Pier - Lift 1 | 1.12d | 2013-07-28 | 2013-07-29 | A241, A229 | 0d |  | Foreman [8 h]; Carpenter [10 h]; General worker [20 h]; Crane mounted truck [8 h]; Scafolder [20 h]; Operator [9 h] | UDF_G1 |
| A244 |  | Reinforcement Fixing for Pier - Lift 1 | 2.25d | 2013-07-29 | 2013-07-30 | A242, A240 | 0d |  | General worker [100 h]; Steel fitter [100 h]; Foreman [18 h]; Crane mounted truck [18 h]; Operator [20 h] | UDF_G1 |
| A245 |  | Formwork for Pier - Lift 1 | 1.12d | 2013-07-31 | 2013-07-31 | A244 | 0d |  | Carpenter [30 h]; General worker [30 h]; Foreman [8 h]; Crane mounted truck [8 h]; Operator [9 h] | UDF_G1 |
| A246 |  | Concreting for Pier - Lift 1 | 1.12d | 2013-07-31 | 2013-08-03 | A244, A245 | 0d |  | Foreman [8 h]; Transit mixer [10 h]; Concrete vibrator [8 h]; Concrete pump [8 h]; Driver [20 h]; General worker [20 h]; Air Compressor [8 h]; Mason [20 h]; Operator [30 h] | UDF_G1 |
| A248 |  | Erection of Scaffolding for Pier - Lift 2 | 1.12d | 2013-08-03 | 2013-08-04 | A244, A246 | 0d |  | Foreman [8 h]; Carpenter [10 h]; General worker [30 h]; Crane mounted truck [8 h]; Scafolder [30 h]; Operator [9 h] | UDF_G2 |
| A249 |  | Reinforcement Fixing for Pier - Lift 2 | 2.25d | 2013-08-04 | 2013-08-06 | A248, A244, A240, A243 | 0d |  | General worker [100 h]; Steel fitter [100 h]; Foreman [20 h]; Crane mounted truck [20 h]; Operator [20 h] | UDF_G2 |
| A250 |  | Formwork for Pier - Lift 2 | 1.12d | 2013-08-06 | 2013-08-07 | A249, A234 | 0d |  | Carpenter [30 h]; General worker [30 h]; Foreman [8 h]; Crane mounted truck [8 h]; Driver [8 h] | UDF_G2 |
| A251 |  | Concreting for Pier - Lift 2 | 1.12d | 2013-08-07 | 2013-08-12 | A250 | 0d |  | Foreman [8 h]; Transit mixer [10 h]; Concrete vibrator [8 h]; Concrete pump [8 h]; General worker [20 h]; Air Compressor [8 h]; Mason [20 h]; Operator [30 h]; Driver [20 h] | UDF_G2 |
| A252 |  | Erection of Scaffolding for Pier - Lift 3 | 1.12d | 2013-08-12 | 2013-08-13 | A251 | 2.25d | 0d | Foreman [8 h]; Carpenter [9 h]; General worker [40 h]; Crane mounted truck [8 h]; Scafolder [40 h]; Operator [9 h] | UDF_G4 |
| A253 |  | Reinforcement Fixing for Pier - Lift 3 | 1.12d | 2013-08-13 | 2013-08-14 | A247, A252, A251 | 2.25d | 0d | General worker [50 h]; Steel fitter [50 h]; Foreman [8 h]; Crane mounted truck [8 h]; Operator [8 h] | UDF_G4 |
| A254 |  | Formwork for Pier - Lift 3 | 1.12d | 2013-08-14 | 2013-08-14 | A253 | 2.25d | 0d | Carpenter [30 h]; General worker [30 h]; Foreman [8 h]; Crane mounted truck [8 h]; Operator [9 h] |  |
| A255 |  | Concreting for Pier - Lift 3 | 1.12d | 2013-08-17 | 2013-08-17 | A254 | 2.25d | 0d | Foreman [8 h]; Transit mixer [20 h]; Concrete vibrator [8 h]; Concrete pump [8 h]; General worker [20 h]; Air Compressor [8 h]; Mason [20 h]; Driver [20 h]; Operator [30 h] | UDF_G4 |
| A256 |  | Removal of Formwork for Pier | 2.25d | 2013-08-17 | 2013-08-19 | A255 | 2.25d | 0d | Carpenter [60 h]; General worker [60 h]; Foreman [20 h]; Crane mounted truck [20 h]; Operator [20 h] |  |
| A257 |  | Dismantling of Complete Pier Scaffolding | 10d | 2013-08-19 | 2013-08-31 | A256 | 2.38d |  | General worker [355.56 h]; Scafolder [355.56 h]; Operator [80 h]; Foreman [80 h] |  |
| A258 |  | Application of Primer, Water Proofing Membrane & Protection Board | 2.5d | 2013-09-02 | 2013-09-04 | A257, A11390 SS | 0d |  | General worker [60 h]; Foreman [20 h] | UDF_G3 |
| A259 |  | Application of Bitumen Mastic | 1.12d | 2013-09-04 | 2013-09-07 | A258 | 0d |  | General worker [20 h]; Foreman [9 h] | UDF_G3 |
| A260 |  | Concrete Screed for Balance Portion of PCC | 1.12d | 2013-09-04 | 2013-09-07 | A259 SS, A258 | 0d |  | General worker [20 h]; Foreman [9 h] | UDF_G3 |
| A11200 |  | Completion of Pier Construction 2 - EB - A | 1d | 2013-09-04 | 2013-09-07 | A260 FF | 0d |  |  |  |

| ID | WBS | Activity | Duration | Start | Finish | Predecessors | Complete | Planned start | Planned finish | Total float | Free float | Resources | Flag |
| --- | --- | --- | --- | --- | --- | --- | --- | --- | --- | --- | --- | --- | --- |
|  | 4 | **Pier Construction P 2 /EB - B** |  | 2013-07-07 | 2013-09-07 |  |  |  |  |  |  |  |  |
| A11340 |  | Reinforcement Cutting & Bending for Pier - Lift 1 | 4.5d | 2013-07-07 | 2013-07-10 | A247 |  |  |  | 15d | 0d | Bar bending machine [40 h]; Bar cutting machine [40 h]; Steel fitter [320 h]; General worker [320 h]; Operator [80 h]; Foreman [36 h] |  |
| A11350 |  | Reinforcement Cutting & Bending for Pier - Lift 2 | 4.5d | 2013-07-09 | 2013-07-14 | A11340 SS+2.5d |  |  |  | 15d | 0d | Bar bending machine [40 h]; Bar cutting machine [40 h]; Steel fitter [320 h]; General worker [320 h]; Operator [80 h]; Foreman [36 h] | UDF_G2 |
| A11360 |  | Reinforcement Cutting & Bending for Pier - Lift 3 | 22.5d | 2013-07-13 | 2013-08-06 | A11350 SS+2.5d |  |  |  | 15d |  | Bar bending machine [200 h]; Bar cutting machine [200 h]; Steel fitter [1600 h]; General worker [1600 h]; Operator [400 h]; Foreman [180 h] | UDF_G4 |
| A11330 |  | Setting Out for Pier | 1.12d | 2013-08-07 | 2013-08-12 | A250 |  |  |  | 0d |  | General worker [20 h]; Surveying Instruments [9 h]; Surveyor [9 h] |  |
| A11230 |  | Erection of Scaffolding for Pier - Lift 1 | 1.12d | 2013-08-12 | 2013-08-13 | A11330, A251 |  |  |  | 0d |  | Foreman [8 h]; Carpenter [10 h]; General worker [20 h]; Crane mounted truck [8 h]; Scafolder [20 h]; Operator [9 h] | UDF_G1 |
| A11240 |  | Reinforcement Fixing for Pier - Lift 1 | 2.25d | 2013-08-13 | 2013-08-14 | A11230, A11340 |  |  |  | 0d |  | General worker [100 h]; Steel fitter [100 h]; Foreman [18 h]; Crane mounted truck [18 h]; Operator [20 h] | UDF_G1 |
| A11440 |  | Formwork for Pier - Lift 1 | 1.12d | 2013-08-17 | 2013-08-17 | A11240 |  |  |  | 0d |  | Carpenter [30 h]; General worker [30 h]; Foreman [8 h]; Crane mounted truck [8 h]; Operator [9 h] | UDF_G1 |
| A11430 |  | Concreting for Pier - Lift 1 | 1.12d | 2013-08-17 | 2013-08-18 | A11240, A11440 |  |  |  | 0d |  | Foreman [8 h]; Transit mixer [20 h]; Concrete vibrator [8 h]; Concrete pump [8 h]; Driver [20 h]; General worker [20 h]; Air Compressor [8 h]; Mason [20 h]; Operator [30 h] | UDF_G1 |
| A11250 |  | Erection of Scaffolding for Pier - Lift 2 | 1.12d | 2013-08-18 | 2013-08-19 | A11240, A11430 |  |  |  | 0d |  | Foreman [8 h]; General worker [30 h]; Driver [8 h]; Crane mounted truck [8 h]; Scafolder [30 h]; Operator [9 h] | UDF_G2 |
| A11260 |  | Reinforcement Fixing for Pier - Lift 2 | 2.25d | 2013-08-19 | 2013-08-21 | A11250, A11240, A11350 |  |  |  | 0d |  | General worker [100 h]; Steel fitter [100 h]; Foreman [20 h]; Crane mounted truck [20 h]; Operator [20 h] |  |
| A11270 |  | Formwork for Pier - Lift 2 | 1.12d | 2013-08-21 | 2013-08-24 | A11260, A256 |  |  |  | 0d |  | Carpenter [30 h]; General worker [30 h]; Foreman [8 h]; Crane mounted truck [8 h]; Operator [9 h] | UDF_G2 |
| A11280 |  | Concreting for Pier - Lift 2 | 1.12d | 2013-08-24 | 2013-08-25 | A11270 |  |  |  | 0d |  | Foreman [8 h]; Transit mixer [20 h]; Concrete vibrator [8 h]; Concrete pump [8 h]; Driver [20 h]; General worker [20 h]; Air Compressor [8 h]; Mason [20 h]; Operator [30 h] | UDF_G2 |
| A11290 |  | Erection of Scaffolding for Pier - Lift 3 | 1.12d | 2013-08-25 | 2013-08-26 | A11280 |  |  |  | 0d |  | Foreman [8 h]; Carpenter [9 h]; General worker [40 h]; Crane mounted truck [8 h]; Scafolder [40 h]; Operator [9 h] | UDF_G4 |
| A11300 |  | Reinforcement Fixing for Pier - Lift 3 | 1.12d | 2013-08-26 | 2013-08-27 | A11360, A11290, A11280 |  |  |  | 0d |  | General worker [50 h]; Steel fitter [50 h]; Foreman [8 h]; Crane mounted truck [8 h]; Operator [8 h] | UDF_G4 |
| A11310 |  | Formwork for Pier - Lift 3 | 1.12d | 2013-08-27 | 2013-08-27 | A11300 |  |  |  | 0d |  | Carpenter [30 h]; General worker [30 h]; Foreman [8 h]; Crane mounted truck [8 h]; Operator [9 h] |  |
| A11320 |  | Concreting for Pier - Lift 3 | 1.12d | 2013-08-28 | 2013-08-28 | A11310 |  |  |  | 0d |  | Foreman [8 h]; Transit mixer [20 h]; Concrete vibrator [8 h]; Concrete pump [8 h]; Driver [20 h]; General worker [20 h]; Air Compressor [8 h]; Mason [20 h]; Operator [30 h] | UDF_G4 |
| A11370 |  | Removal of Formwork for Pier | 2.25d | 2013-08-28 | 2013-09-01 | A11320 |  |  |  | 0d |  | Carpenter [60 h]; General worker [60 h]; Foreman [20 h]; Crane mounted truck [20 h]; Operator [20 h] |  |
| A11380 |  | Dismantling of Complete Pier Scaffolding | 1.12d | 2013-09-01 | 2013-09-02 | A11370 |  |  |  | 0d |  | General worker [40 h]; Scafolder [40 h]; Operator [9 h]; Foreman [9 h]; Crane mounted truck [9 h] |  |
| A11390 |  | Application of Primer, Water Proofing Membrane & Protection Board | 2.5d | 2013-09-02 | 2013-09-04 | A11380 |  |  |  | 0d |  | General worker [60 h]; Foreman [20 h] | UDF_G3 |
| A11400 |  | Application of Bitumen Mastic | 1.12d | 2013-09-04 | 2013-09-07 | A11390 |  |  |  | 0d |  | General worker [20 h]; Foreman [9 h] | UDF_G3 |
| A11410 |  | Concrete Screed for Balance Portion of PCC | 1.12d | 2013-09-04 | 2013-09-07 | A11400 SS, A11390 |  |  |  | 0d |  | General worker [20 h]; Foreman [9 h] | UDF_G3 |
| A11420 |  | Completion of Pier Construction 2 - EB - B | 1d | 2013-09-04 | 2013-09-07 | A11410 FF |  |  |  | 0d |  |  |  |
|  | 8 | **Raft Foundations for Pier 1/ WB & EB** |  | 2013-01-28 | 2013-05-04 |  |  |  |  |  |  |  |  |
| A82 |  | Preparation & Submission of Shop Drawings | 10d | 2013-01-28 A | 2013-02-09 A | A34 SS | 100% | 2013-05-05 | 2013-05-14 |  |  |  |  |
| A83 |  | Approval of Shop Drawings | 17.5d | 2013-02-09 A | 2013-02-23 A | A82 | 100% | 2013-05-15 | 2013-06-03 |  |  |  |  |
| A84 |  | Preparation & Submission of Bar Schedule Drawings | 10d | 2013-02-09 A | 2013-02-16 A | A82 | 100% | 2013-05-15 | 2013-05-26 |  |  |  |  |
| A86 |  | Setting Out for Raft Foundations | 2.25d | 2013-02-09 A | 2013-02-11 A | A83 | 100% | 2013-05-05 | 2013-05-06 |  |  | General worker [36 h]; Surveyor [18 h]; Surveying Instruments [18 h] |  |
| A88 |  | Structural Excavation | 5.62d | 2013-02-11 A | 2013-02-18 A | A86 | 100% | 2013-05-05 | 2013-05-11 |  |  | Excavator [63 h]; Operator [100 h]; Foreman [45 h]; Driver [100 h]; Front end loader [45 h]; Tipper [100 h] | UDF_G2 |
| A85 |  | Approval of Bar Schedule Drawings | 17.5d | 2013-02-16 A | 2013-02-27 A | A84 | 100% | 2013-05-27 | 2013-06-15 |  |  |  |  |
| A89 |  | Foundation Beds Prepration | 4.5d | 2013-02-24 A | 2013-02-27 A | A88, A66 | 100% | 2013-05-05 | 2013-05-08 |  |  | General worker [80 h]; Carpenter [80 h]; Foreman [36 h] | UDF_G2 |
| A87 |  | Reinforcement Cutting & Bending for Raft Foundations | 7.5d | 2013-02-27 A | 2013-03-09 A | A85 | 100% | 2013-05-05 | 2013-05-12 |  |  | Steel fitter [540 h]; General worker [540 h]; Bar bending machine [18 h]; Bar cutting machine [18 h]; Foreman [60 h]; Operator [180 h] | UDF_G2 |
| A90 |  | Plate Load Testing & Submission of Reports | 5d | 2013-02-27 A | 2013-03-05 A | A89 | 100% | 2013-05-05 | 2013-05-08 |  |  |  | UDF_G2 |
| A100 |  | Placing of Blinding Concrete | 1.12d | 2013-03-06 A | 2013-03-09 A | A88, A89, A73, A90 | 100% | 2013-05-05 | 2013-05-05 |  |  | Transit mixer [16 h]; Mason [16 h]; General worker [20 h]; Driver [16 h]; Foreman [9 h] | UDF_G2 |
| A101 |  | Application of Primer, Water Proofing Membrane | 3.38d | 2013-03-12 A | 2013-03-17 A | A100, A76 | 100% | 2013-04-23 | 2013-04-27 |  |  | General worker [120 h]; Foreman [27 h] | UDF_G2 |
| A102 |  | Concrete Screed | 1.12d | 2013-03-17 A | 2013-03-18 A | A101, A77 | 100% | 2013-04-23 | 2013-04-23 |  |  | Foreman [9 h]; General worker [20 h]; Mason [20 h] | UDF_G2 |
| A103 |  | Reinforcement Fixing for Raft Foundations | 5d | 2013-04-23 | 2013-04-28 | A87, A102 |  |  |  | 29.75d | 0d | Steel fitter [300 h]; General worker [300 h]; Crane mounted truck [40 h]; Operator [41.48 h]; Foreman [40 h] | UDF_G2 |
| A104 |  | Formworks for Raft Foundations | 1.12d | 2013-04-29 | 2013-04-29 | A103, A81 |  |  |  | 29.75d | 0d | Carpenter [120 h]; General worker [120 h]; Crane mounted truck [9 h]; Foreman [9 h]; Operator [9 h] | UDF_G2 |
| A105 |  | Concreting for Raft Foundations | 1.12d | 2013-04-29 | 2013-04-30 | A104 |  |  |  | 29.75d | 0d | Driver [45 h]; General worker [36 h]; Concrete vibrator [40 h]; Concrete pump [16 h]; Air Compressor [8 h]; Transit mixer [45 h]; Mason [20 h]; Operator [60 h]; Foreman [9 h] | UDF_G2 |
| A106 |  | Removal of Formwork for Raft Foundations | 2.25d | 2013-04-30 | 2013-05-04 | A105 |  |  |  | 29.75d | 0d | Crane mounted truck [18 h]; Carpenter [60 h]; General worker [60 h]; Operator [18 h]; Foreman [18 h] |  |
| A107 |  | Completion of Raft Foundations for Pier 1 - WB & EB | 1d | 2013-05-01 | 2013-05-04 | A106 FF |  |  |  | 29.75d |  |  |  |

| ID | WBS | Activity | Duration | Start | Finish | Predecessors | Total float | Free float | Resources | Flag |
| --- | --- | --- | --- | --- | --- | --- | --- | --- | --- | --- |
|  | 13 | **Pier Construction P 1 /WB - A** |  | 2013-05-14 | 2013-07-15 |  |  |  |  |  |
| A152 |  | Reinforcement Cutting & Bending for Pier - Lift 1 | 4.5d | 2013-05-14 | 2013-05-19 | A138 | 15d | 0d | Bar bending machine [40 h]; Bar cutting machine [40 h]; Steel fitter [320 h]; General worker [320 h]; Operator [80 h]; Foreman [36 h] | UDF_G1 |
| A153 |  | Reinforcement Cutting & Bending for Pier - Lift 2 | 4.5d | 2013-05-18 | 2013-05-21 | A152 SS+2.5d | 15d | 0d | Bar bending machine [40 h]; Bar cutting machine [40 h]; Steel fitter [320 h]; General worker [320 h]; Operator [80 h]; Foreman [36 h] | UDF_G2 |
| A154 |  | Reinforcement Cutting & Bending for Pier - Lift 3 | 4.5d | 2013-05-20 | 2013-05-25 | A153 SS+2.5d | 15d | 0d | Bar bending machine [40 h]; Bar cutting machine [40 h]; Steel fitter [320 h]; General worker [320 h]; Operator [80 h]; Foreman [36 h] | UDF_G3 |
| A155 |  | Setting Out for Pier | 1.12d | 2013-06-05 | 2013-06-08 | A140, A107 | 0d |  | General worker [18 h]; Surveyor [9 h]; Surveying Instruments [9 h] |  |
| A156 |  | Erection of Scaffolding for Pier - Lift 1 | 1.12d | 2013-06-08 | 2013-06-09 | A155, A141 | 0d |  | Foreman [8 h]; Carpenter [16 h]; General worker [16 h]; Driver [8 h]; Crane mounted truck [8 h]; Scafolder [20 h]; Operator [9 h] | UDF_G1 |
| A157 |  | Reinforcement Fixing for Pier - Lift 1 | 2.25d | 2013-06-09 | 2013-06-10 | A156, A152 | 0d |  | General worker [100 h]; Steel fitter [100 h]; Foreman [20 h]; Crane mounted truck [20 h]; Operator [20 h] | UDF_G1 |
| A158 |  | Formwork for Pier - Lift 1 | 1.12d | 2013-06-11 | 2013-06-11 | A157 | 0d |  | Carpenter [30 h]; General worker [30 h]; Foreman [8 h]; Crane mounted truck [8 h]; Driver [8 h]; Operator [9 h] | UDF_G1 |
| A159 |  | Concreting for Pier - Lift 1 | 1.12d | 2013-06-11 | 2013-06-12 | A157, A158 | 0d |  | Foreman [8 h]; Transit mixer [18 h]; Concrete vibrator [8 h]; Concrete pump [8 h]; Driver [18 h]; General worker [20 h]; Air Compressor [8 h]; Mason [20 h]; Operator [30 h] | UDF_G1 |
| A160 |  | Erection of Scaffolding for Pier - Lift 2 | 1.12d | 2013-06-12 | 2013-06-15 | A157, A159 | 0d |  | Foreman [8 h]; Carpenter [16 h]; General worker [30 h]; Crane mounted truck [8 h]; Scafolder [30 h]; Operator [9 h] | UDF_G2 |
| A161 |  | Reinforcement Fixing for Pier - Lift 2 | 2.25d | 2013-06-15 | 2013-06-17 | A160, A157, A153 | 0d |  | General worker [100 h]; Steel fitter [100 h]; Foreman [27 h]; Crane mounted truck [27 h]; Operator [27 h] | UDF_G2 |
| A162 |  | Formwork for Pier - Lift 2 | 1.12d | 2013-06-17 | 2013-06-18 | A161, A146 | 0d |  | Carpenter [30 h]; General worker [30 h]; Foreman [8 h]; Crane mounted truck [8 h] | UDF_G2 |
| A163 |  | Concreting for Pier - Lift 2 | 1.12d | 2013-06-18 | 2013-06-19 | A162 | 0d |  | Foreman [8 h]; Transit mixer [18 h]; Concrete vibrator [8 h]; Concrete pump [8 h]; General worker [20 h]; Air Compressor [8 h]; Mason [20 h]; Operator [30 h] | UDF_G2 |
| A164 |  | Erection of Scaffolding for Pier - Lift 3 | 1.12d | 2013-06-19 | 2013-06-22 | A163 | 2.25d | 0d | Foreman [8 h]; Carpenter [9 h]; General worker [40 h]; Crane mounted truck [8 h]; Scafolder [40 h]; Operator [9 h] | UDF_G3 |
| A165 |  | Reinforcement Fixing for Pier - Lift 3 | 1.12d | 2013-06-22 | 2013-06-23 | A154, A164, A163 | 2.25d | 0d | General worker [50 h]; Steel fitter [50 h]; Foreman [8 h]; Crane mounted truck [8 h]; Operator [8 h] | UDF_G3 |
| A166 |  | Formwork for Pier - Lift 3 | 1.12d | 2013-06-23 | 2013-06-23 | A165, A146 | 2.25d | 0d | Carpenter [30 h]; General worker [30 h]; Foreman [8 h]; Crane mounted truck [8 h]; Operator [9 h] |  |
| A167 |  | Concreting for Pier - Lift 3 | 1.12d | 2013-06-24 | 2013-06-24 | A166 | 2.25d | 0d | Foreman [8 h]; Transit mixer [20 h]; Concrete vibrator [8 h]; Concrete pump [8 h]; Driver [20 h]; General worker [20 h]; Air Compressor [8 h]; Mason [20 h]; Operator [30 h] | UDF_G3 |
| A168 |  | Removal of Formwork for Pier | 2.25d | 2013-06-24 | 2013-06-26 | A167 | 2.25d | 0d | Carpenter [60 h]; General worker [60 h]; Foreman [27 h]; Crane mounted truck [27 h]; Operator [27 h] |  |
| A169 |  | Dismantling of Complete Pier Scaffolding | 10d | 2013-06-26 | 2013-07-08 | A168 | 16.38d | 2.38d | Carpenter [355.56 h]; General worker [355.56 h]; Operator [80 h]; Foreman [80 h]; Crane mounted truck [80 h] |  |
| A170 |  | Application of Primer, Water Proofing Membrane & Protection Board | 2.5d | 2013-07-10 | 2013-07-14 | A169, A192 SS | 14d | 0d | General worker [60 h]; Foreman [20 h] | UDF_G4 |
| A171 |  | Application of Bitumen Mastic | 1.12d | 2013-07-14 | 2013-07-15 | A170 | 14d | 0d | General worker [18 h]; Foreman [9 h] | UDF_G4 |
| A172 |  | Concrete Screed for Balance Portion of PCC | 1.12d | 2013-07-14 | 2013-07-15 | A171 SS, A170 | 14d | 0d | General worker [18 h]; Foreman [9 h] | UDF_G4 |
| A173 |  | Completion of Pier Construction 1 - WB - A | 1d | 2013-07-14 | 2013-07-15 | A172 FF | 14d | 0d |  |  |
|  | 12 | **Pier Construction P 1 /WB - B** |  | 2013-05-25 | 2013-07-15 |  |  |  |  |  |
| A174 |  | Reinforcement Cutting & Bending for Pier - Lift 1 | 4.5d | 2013-05-25 | 2013-05-29 | A154 | 15d | 0d | Bar bending machine [18 h]; Bar cutting machine [18 h]; Steel fitter [320 h]; General worker [320 h]; Operator [80 h]; Foreman [36 h] |  |
| A175 |  | Reinforcement Cutting & Bending for Pier - Lift 2 | 4.5d | 2013-05-27 | 2013-06-02 | A174 SS+2.5d | 15d | 0d | Bar bending machine [18 h]; Bar cutting machine [18 h]; Steel fitter [320 h]; General worker [320 h]; Operator [80 h]; Foreman [36 h] |  |
| A176 |  | Reinforcement Cutting & Bending for Pier - Lift 3 | 4.5d | 2013-05-29 | 2013-06-04 | A175 SS+2.5d | 15d | 0d | Bar bending machine [18 h]; Bar cutting machine [18 h]; Steel fitter [320 h]; General worker [320 h]; Operator [80 h]; Foreman [36 h] | UDF_G4 |
| A177 |  | Setting Out for Pier | 1.12d | 2013-06-18 | 2013-06-19 | A162 | 0d |  | General worker [18 h]; Surveyor [9 h]; Surveying Instruments [9 h] |  |
| A178 |  | Erection of Scaffolding for Pier - Lift 1 | 1.12d | 2013-06-19 | 2013-06-22 | A177, A163 | 0d |  | Foreman [8 h]; Carpenter [16 h]; General worker [16 h]; Crane mounted truck [8 h]; Scafolder [20 h]; Operator [9 h] | UDF_G2 |
| A179 |  | Reinforcement Fixing for Pier - Lift 1 | 2.25d | 2013-06-22 | 2013-06-23 | A178, A174 | 0d |  | General worker [100 h]; Steel fitter [100 h]; Foreman [18 h]; Crane mounted truck [18 h]; Operator [18 h] | UDF_G2 |
| A180 |  | Formwork for Pier - Lift 1 | 1.12d | 2013-06-24 | 2013-06-24 | A179 | 0d |  | Carpenter [30 h]; General worker [30 h]; Foreman [8 h]; Crane mounted truck [8 h] | UDF_G2 |
| A181 |  | Concreting for Pier - Lift 1 | 1.12d | 2013-06-24 | 2013-06-25 | A179, A180 | 0d |  | Foreman [8 h]; Transit mixer [18 h]; Concrete vibrator [8 h]; Concrete pump [8 h]; Driver [18 h]; General worker [20 h]; Air Compressor [8 h]; Mason [20 h]; Operator [30 h] | UDF_G2 |
| A182 |  | Erection of Scaffolding for Pier - Lift 2 | 1.12d | 2013-06-25 | 2013-06-26 | A179, A181 | 0d |  | Foreman [8 h]; Carpenter [16 h]; General worker [30 h]; Crane mounted truck [8 h]; Scafolder [30 h]; Operator [9 h] | UDF_G3 |
| A183 |  | Reinforcement Fixing for Pier - Lift 2 | 2.25d | 2013-06-26 | 2013-06-30 | A182, A179, A175 | 0d |  | General worker [100 h]; Steel fitter [100 h]; Foreman [27 h]; Crane mounted truck [27 h]; Operator [27 h] | UDF_G3 |
| A184 |  | Formwork for Pier - Lift 2 | 1.12d | 2013-06-30 | 2013-07-01 | A183, A168 | 0d |  | Carpenter [30 h]; General worker [30 h]; Foreman [8 h]; Crane mounted truck [8 h]; Operator [9 h] | UDF_G3 |
| A185 |  | Concreting for Pier - Lift 2 | 1.12d | 2013-07-01 | 2013-07-02 | A184 | 0d |  | Foreman [8 h]; Transit mixer [18 h]; Concrete vibrator [8 h]; Concrete pump [8 h]; General worker [20 h]; Air Compressor [8 h]; Mason [20 h]; Operator [30 h]; Driver [20 h] | UDF_G3 |
| A186 |  | Erection of Scaffolding for Pier - Lift 3 | 1.12d | 2013-07-02 | 2013-07-03 | A185 | 2.25d | 0d | Foreman [8 h]; Carpenter [9 h]; General worker [40 h]; Crane mounted truck [8 h]; Scafolder [40 h]; Operator [9 h] | UDF_G4 |
| A187 |  | Reinforcement Fixing for Pier - Lift 3 | 1.12d | 2013-07-03 | 2013-07-06 | A176, A186, A185 | 2.25d | 0d | General worker [50 h]; Steel fitter [50 h]; Foreman [8 h]; Crane mounted truck [8 h]; Operator [8 h] | UDF_G4 |
| A188 |  | Formwork for Pier - Lift 3 | 1.12d | 2013-07-06 | 2013-07-06 | A187 | 2.25d | 0d | Carpenter [30 h]; General worker [30 h]; Foreman [8 h]; Crane mounted truck [8 h]; Operator [9 h] |  |
| A189 |  | Concreting for Pier - Lift 3 | 1.12d | 2013-07-07 | 2013-07-07 | A188 | 2.25d | 0d | Foreman [8 h]; Transit mixer [20 h]; Concrete vibrator [8 h]; Concrete pump [8 h]; Driver [20 h]; General worker [20 h]; Air Compressor [8 h]; Mason [20 h]; Operator [30 h] | UDF_G1 |
| A190 |  | Removal of Formwork for Pier | 2.25d | 2013-07-07 | 2013-07-09 | A189 | 2.25d | 0d | Carpenter [60 h]; General worker [60 h]; Foreman [27 h]; Crane mounted truck [27 h]; Operator [27 h] |  |
| A191 |  | Dismantling of Complete Pier Scaffolding | 1.12d | 2013-07-09 | 2013-07-10 | A190 | 14d | 0d | General worker [40 h]; Scafolder [40 h]; Operator [9 h]; Foreman [9 h]; Crane mounted truck [9 h] |  |
| A192 |  | Application of Primer, Water Proofing Membrane & Protection Board | 2.5d | 2013-07-10 | 2013-07-14 | A191 | 14d | 0d | General worker [60 h]; Foreman [20 h] | UDF_G1 |
| A193 |  | Application of Bitumen Mastic | 1.12d | 2013-07-14 | 2013-07-15 | A192 | 14d | 0d | General worker [18 h]; Foreman [9 h] | UDF_G1 |
| A194 |  | Concrete Screed for Balance Portion of PCC | 1.12d | 2013-07-14 | 2013-07-15 | A193 SS, A192 | 14d | 0d | General worker [18 h]; Foreman [9 h] | UDF_G1 |
| A195 |  | Completion of Pier Construction 1 - WB - B | 1d | 2013-07-14 | 2013-07-15 | A194 FF | 14d | 0d |  |  |

| ID | WBS | Activity | Duration | Start | Finish | Predecessors | Total float | Free float | Resources | Flag |
| --- | --- | --- | --- | --- | --- | --- | --- | --- | --- | --- |
|  | 1 | **Pier Construction P 1 /EB - A** |  | 2013-06-04 | 2013-08-12 |  |  |  |  |  |
| A196 |  | Reinforcement Cutting & Bending for Pier - Lift 1 | 4.5d | 2013-06-04 | 2013-06-09 | A176 | 15d | 0d | Bar bending machine [40 h]; Bar cutting machine [40 h]; Steel fitter [320 h]; General worker [320 h]; Operator [80 h]; Foreman [36 h] |  |
| A197 |  | Reinforcement Cutting & Bending for Pier - Lift 2 | 4.5d | 2013-06-08 | 2013-06-11 | A196 SS+2.5d | 15d | 0d | Bar bending machine [40 h]; Bar cutting machine [40 h]; Steel fitter [320 h]; General worker [320 h]; Operator [80 h]; Foreman [36 h] |  |
| A200 |  | Reinforcement Cutting & Bending for Pier - Lift 3 | 4.5d | 2013-06-10 | 2013-06-15 | A197 SS+2.5d | 15d | 0d | Bar bending machine [40 h]; Bar cutting machine [40 h]; Steel fitter [320 h]; General worker [320 h]; Operator [80 h]; Foreman [36 h] | UDF_G4 |
| A198 |  | Setting Out for Pier | 1.12d | 2013-07-01 | 2013-07-02 | A184 | 0d |  | General worker [18 h]; Supevisors [9 h]; Surveying Instruments [9 h] |  |
| A199 |  | Erection of Scaffolding for Pier - Lift 1 | 1.12d | 2013-07-02 | 2013-07-03 | A198, A185 | 0d |  | Foreman [8 h]; Carpenter [16 h]; General worker [16 h]; Crane mounted truck [8 h]; Scafolder [20 h]; Operator [9 h] | UDF_G1 |
| A201 |  | Reinforcement Fixing for Pier - Lift 1 | 2.25d | 2013-07-03 | 2013-07-06 | A199, A196 | 0d |  | General worker [36 h]; Steel fitter [90 h]; Foreman [18 h]; Crane mounted truck [18 h]; Operator [18 h] | UDF_G1 |
| A202 |  | Formwork for Pier - Lift 1 | 1.12d | 2013-07-07 | 2013-07-07 | A201 | 0d |  | Carpenter [30 h]; General worker [30 h]; Foreman [8 h]; Crane mounted truck [8 h]; Operator [9 h] | UDF_G1 |
| A203 |  | Concreting for Pier - Lift 1 | 1.12d | 2013-07-07 | 2013-07-08 | A201, A202 | 0d |  | Foreman [8 h]; Transit mixer [18 h]; Concrete vibrator [8 h]; Concrete pump [8 h]; Driver [18 h]; General worker [20 h]; Air Compressor [8 h]; Operator [30 h]; Mason [20 h] | UDF_G1 |
| A204 |  | Erection of Scaffolding for Pier - Lift 2 | 1.12d | 2013-07-08 | 2013-07-09 | A201, A203 | 0d |  | Foreman [8 h]; Carpenter [16 h]; General worker [30 h]; Driver [8 h]; Crane mounted truck [8 h]; Scafolder [30 h] | UDF_G2 |
| A205 |  | Reinforcement Fixing for Pier - Lift 2 | 2.25d | 2013-07-09 | 2013-07-13 | A204, A201, A197 | 0d |  | General worker [100 h]; Steel fitter [100 h]; Foreman [20 h]; Crane mounted truck [20 h]; Operator [20 h] | UDF_G2 |
| A206 |  | Formwork for Pier - Lift 2 | 1.12d | 2013-07-13 | 2013-07-14 | A205, A190 | 0d |  | Carpenter [30 h]; General worker [30 h]; Foreman [8 h]; Crane mounted truck [8 h]; Operator [9 h] | UDF_G2 |
| A207 |  | Concreting for Pier - Lift 2 | 1.12d | 2013-07-14 | 2013-07-15 | A206 | 0d |  | Foreman [8 h]; Transit mixer [18 h]; Concrete vibrator [8 h]; Concrete pump [8 h]; Driver [20 h]; General worker [20 h]; Air Compressor [8 h]; Mason [20 h]; Operator [30 h] | UDF_G2 |
| A208 |  | Erection of Scaffolding for Pier - Lift 3 | 1.12d | 2013-07-15 | 2013-07-16 | A207 | 2.25d | 0d | Foreman [8 h]; Carpenter [9 h]; General worker [40 h]; Crane mounted truck [8 h]; Scafolder [40 h]; Operator [9 h] | UDF_G4 |
| A209 |  | Reinforcement Fixing for Pier - Lift 3 | 1.12d | 2013-07-16 | 2013-07-17 | A200, A208, A207 | 2.25d | 0d | General worker [50 h]; Steel fitter [50 h]; Foreman [8 h]; Crane mounted truck [8 h]; Operator [8 h] | UDF_G4 |
| A210 |  | Formwork for Pier - Lift 3 | 1.12d | 2013-07-17 | 2013-07-17 | A209 | 2.25d | 0d | Carpenter [30 h]; General worker [30 h]; Foreman [8 h]; Crane mounted truck [8 h]; Operator [9 h] |  |
| A211 |  | Concreting for Pier - Lift 3 | 1.12d | 2013-07-20 | 2013-07-20 | A210 | 2.25d | 0d | Foreman [8 h]; Transit mixer [9 h]; Concrete vibrator [8 h]; Concrete pump [8 h]; Driver [20 h]; General worker [20 h]; Air Compressor [8 h]; Mason [20 h]; Operator [30 h] | UDF_G3 |
| A212 |  | Removal of Formwork for Pier | 2.25d | 2013-07-20 | 2013-07-22 | A211 | 2.25d | 0d | Carpenter [30 h]; General worker [30 h]; Foreman [20 h]; Crane mounted truck [20 h]; Operator [20 h] |  |
| A213 |  | Dismantling of Complete Pier Scaffolding | 10d | 2013-07-22 | 2013-08-03 | A212 | 17.38d | 2.38d | Carpenter [160 h]; General worker [355.56 h]; Scafolder [355.56 h]; Operator [80 h]; Crane mounted truck [80 h] |  |
| A214 |  | Application of Primer, Water Proofing Membrane & Protection Board | 2.5d | 2013-08-05 | 2013-08-07 | A213, A236 SS | 15d | 0d | General worker [60 h]; Foreman [20 h] | UDF_G3 |
| A215 |  | Application of Bitumen Mastic | 1.12d | 2013-08-07 | 2013-08-12 | A214 | 15d | 0d | General worker [18 h]; Foreman [9 h] | UDF_G3 |
| A216 |  | Concrete Screed for Balance Portion of PCC | 1.12d | 2013-08-07 | 2013-08-12 | A215 SS, A214 | 15d | 0d | General worker [18 h]; Foreman [9 h] | UDF_G3 |
| A217 |  | Completion of Pier Construction 1 - EB - A | 1d | 2013-08-07 | 2013-08-12 | A216 FF | 15d | 0d |  |  |
|  | 2 | **Pier Construction P 1 /EB - B** |  | 2013-06-16 | 2013-08-12 |  |  |  |  |  |
| A218 |  | Reinforcement Cutting & Bending for Pier - Lift 1 | 4.5d | 2013-06-16 | 2013-06-19 | A200 | 15d | 0d | Bar bending machine [18 h]; Bar cutting machine [18 h]; Steel fitter [320 h]; General worker [320 h]; Operator [80 h]; Foreman [36 h] |  |
| A219 |  | Reinforcement Cutting & Bending for Pier - Lift 2 | 4.5d | 2013-06-18 | 2013-06-23 | A218 SS+2.5d | 15d | 0d | Bar bending machine [18 h]; Bar cutting machine [18 h]; Steel fitter [320 h]; General worker [320 h]; Operator [80 h] |  |
| A223 |  | Reinforcement Cutting & Bending for Pier - Lift 3 | 4.5d | 2013-06-22 | 2013-06-25 | A219 SS+2.5d | 15d | 0d | Bar bending machine [18 h]; Bar cutting machine [18 h]; Steel fitter [320 h]; General worker [320 h]; Operator [80 h]; Foreman [36 h] | UDF_G3 |
| A220 |  | Setting Out for Pier | 1.12d | 2013-07-14 | 2013-07-15 | A206 | 0d |  | General worker [18 h]; Surveyor [9 h]; Surveying Instruments [9 h] |  |
| A221 |  | Erection of Scaffolding for Pier - Lift 1 | 1.12d | 2013-07-15 | 2013-07-16 | A220, A207 | 0d |  | Foreman [8 h]; Carpenter [16 h]; General worker [16 h]; Driver [8 h]; Crane mounted truck [8 h] | UDF_G1 |
| A222 |  | Reinforcement Fixing for Pier - Lift 1 | 2.25d | 2013-07-16 | 2013-07-17 | A221, A218 | 0d |  | General worker [100 h]; Steel fitter [100 h]; Foreman [18 h]; Crane mounted truck [18 h]; Operator [18 h] | UDF_G1 |
| A224 |  | Formwork for Pier - Lift 1 | 1.12d | 2013-07-20 | 2013-07-20 | A222 | 0d |  | Carpenter [30 h]; General worker [30 h]; Foreman [8 h]; Crane mounted truck [8 h]; Driver [8 h] | UDF_G1 |
| A225 |  | Concreting for Pier - Lift 1 | 1.12d | 2013-07-20 | 2013-07-21 | A222, A224 | 0d |  | Foreman [8 h]; Transit mixer [18 h]; Concrete vibrator [8 h]; Concrete pump [8 h]; Driver [18 h]; General worker [20 h]; Air Compressor [8 h]; Mason [20 h]; Operator [30 h] | UDF_G1 |
| A226 |  | Erection of Scaffolding for Pier - Lift 2 | 1.12d | 2013-07-21 | 2013-07-22 | A222, A225 | 0d |  | Foreman [8 h]; Carpenter [16 h]; General worker [30 h]; Crane mounted truck [8 h]; Scafolder [30 h] | UDF_G2 |
| A227 |  | Reinforcement Fixing for Pier - Lift 2 | 2.25d | 2013-07-22 | 2013-07-24 | A226, A222, A218 | 0d |  | General worker [100 h]; Steel fitter [100 h]; Foreman [27 h]; Crane mounted truck [27 h]; Operator [27 h] | UDF_G2 |
| A228 |  | Formwork for Pier - Lift 2 | 1.12d | 2013-07-24 | 2013-07-27 | A227, A212 | 0d |  | Carpenter [30 h]; General worker [30 h]; Foreman [8 h]; Crane mounted truck [8 h]; Operator [9 h] | UDF_G2 |
| A229 |  | Concreting for Pier - Lift 2 | 1.12d | 2013-07-27 | 2013-07-28 | A228 | 0d |  | Foreman [8 h]; Transit mixer [18 h]; Concrete vibrator [8 h]; Concrete pump [8 h]; Driver [18 h]; General worker [20 h]; Air Compressor [8 h]; Mason [20 h]; Operator [30 h] | UDF_G2 |
| A230 |  | Erection of Scaffolding for Pier - Lift 3 | 1.12d | 2013-07-28 | 2013-07-29 | A229 | 2.25d | 0d | Foreman [8 h]; Carpenter [9 h]; General worker [40 h]; Driver [8 h]; Crane mounted truck [8 h]; Scafolder [40 h] | UDF_G3 |
| A231 |  | Reinforcement Fixing for Pier - Lift 3 | 1.12d | 2013-07-29 | 2013-07-30 | A223, A230, A229, A219 | 2.25d | 0d | General worker [50 h]; Steel fitter [50 h]; Foreman [8 h]; Crane mounted truck [8 h]; Operator [8 h] | UDF_G3 |
| A232 |  | Formwork for Pier - Lift 3 | 1.12d | 2013-07-30 | 2013-07-30 | A231 | 2.25d | 0d | Carpenter [30 h]; General worker [30 h]; Foreman [8 h]; Crane mounted truck [8 h]; Operator [9 h] |  |
| A233 |  | Concreting for Pier - Lift 3 | 1.12d | 2013-07-31 | 2013-07-31 | A232 | 2.25d | 0d | Foreman [8 h]; Transit mixer [20 h]; Concrete vibrator [8 h]; Concrete pump [8 h]; General worker [20 h]; Air Compressor [8 h]; Mason [20 h]; Operator [30 h]; Driver [20 h] | UDF_G4 |
| A234 |  | Removal of Formwork for Pier | 2.25d | 2013-07-31 | 2013-08-04 | A233 | 2.25d | 0d | Carpenter [60 h]; General worker [60 h]; Foreman [20 h]; Crane mounted truck [20 h]; Operator [20 h] |  |
| A235 |  | Dismantling of Complete Pier Scaffolding | 1.12d | 2013-08-04 | 2013-08-05 | A234 | 15d | 0d | General worker [40 h]; Operator [9 h]; Foreman [9 h]; Crane mounted truck [9 h]; Scafolder [40 h] |  |
| A236 |  | Application of Primer, Water Proofing Membrane & Protection Board | 2.5d | 2013-08-05 | 2013-08-07 | A235 | 15d | 0d | General worker [40 h]; Foreman [20 h] | UDF_G4 |
| A237 |  | Application of Bitumen Mastic | 1.12d | 2013-08-07 | 2013-08-12 | A236 | 15d | 0d | General worker [18 h]; Foreman [9 h] | UDF_G4 |
| A238 |  | Concrete Screed for Balance Portion of PCC | 1.12d | 2013-08-07 | 2013-08-12 | A237 SS, A236 | 15d | 0d | General worker [18 h]; Foreman [9 h] | UDF_G4 |
| A239 |  | Completion of Pier Construction 1 - EB - B | 1d | 2013-08-07 | 2013-08-12 | A238 FF | 15d | 0d |  |  |

| ID | WBS | Activity | Duration | Start | Finish | Predecessors | Complete | Remaining | Planned start | Planned finish | Total float | Free float | Calendar | Resources | Flag |
| --- | --- | --- | --- | --- | --- | --- | --- | --- | --- | --- | --- | --- | --- | --- | --- |
|  | 14 | **Abutment Construction for Bridges** |  | 2012-12-23 | 2013-08-18 |  |  |  |  |  |  |  |  |  |  |
|  | 5 | **Raft Foundations for Abutment 2 /WB & EB** |  | 2012-12-23 | 2013-05-25 |  |  |  |  |  |  |  |  |  |  |
| A10590 |  | Preparation & Submission of Shop Drawings | 10d | 2012-12-23 A | 2013-01-05 A | A16 | 100% |  | 2013-04-23 | 2013-05-04 |  |  |  |  |  |
| A10570 |  | Preparation & Submission of Bar Schedule Drawings | 10d | 2013-01-05 A | 2013-01-15 A | A10590 | 100% |  | 2013-05-05 | 2013-05-14 |  |  |  |  |  |
| A10600 |  | Approval for Shop Drawings | 17.5d | 2013-01-05 A | 2013-01-19 A | A10590 | 100% |  | 2013-05-05 | 2013-05-22 |  |  |  |  |  |
| A10580 |  | Approval for Bar Schedule Drawings | 17.5d | 2013-01-15 A | 2013-01-29 A | A10570 | 100% |  | 2013-05-15 | 2013-06-03 |  |  |  |  |  |
| A10500 |  | Setting Out for Raft Foundations | 2.25d | 2013-01-19 A | 2013-01-26 A | A10600 | 100% |  | 2013-04-23 | 2013-04-24 |  |  |  | General worker [40 h]; Surveyor [18 h]; Surveying Instruments [18 h] |  |
| A10510 |  | Structural Excavation | 5.62d | 2013-01-26 A | 2013-02-02 A | A10500 | 100% |  | 2013-04-23 | 2013-04-29 |  |  |  | Excavator [100 h]; Operator [100 h]; Foreman [50 h]; Driver [45 h]; Front end loader [45 h]; Tipper [100 h] | UDF_G1 |
| A10620 |  | Reinforcement Cutting & Bending for Raft Foundations | 6.25d | 2013-01-29 A | 2013-05-04 | A10580 | 50% | 10d | 2013-04-23 | 2013-04-29 | 17.62d | 0d |  | Bar cutting machine [50 h]; Bar bending machine [50 h]; General worker [840 h]; Steel fitter [840 h]; Foreman [50 h]; Operator [280 h] | UDF_G1 |
| A10520 |  | Foundation Beds Preparation | 5.62d | 2013-02-02 A | 2013-04-23 | A10510 | 50% | 0d | 2013-04-23 | 2013-04-29 | 22.12d | 0d |  | General worker [100 h]; Carpenter [100 h]; Foreman [45 h] | UDF_G1 |
| A10670 |  | Plate Load Testing & Submission of Reports | 5.62d | 2013-02-09 A | 2013-04-23 | A10520 | 50% | 0d | 2013-04-23 | 2013-04-29 | 22.12d | 0d |  |  | UDF_G1 |
| A10530 |  | Placing of Blinding Concrete | 1.12d | 2013-02-16 A | 2013-04-23 | A10670 | 50% | 1.12d | 2013-04-23 | 2013-04-23 | 22.12d | 0d |  | Transit mixer [16 h]; Foreman [10 h]; Mason [16 h]; General worker [20 h]; Driver [16 h] | UDF_G1 |
| A10610 |  | Application of Water Proofing Membrane | 2.5d | 2013-03-02 A | 2013-04-28 | A10530 | 50% | 3.38d | 2013-04-23 | 2013-04-27 | 22.12d | 0d |  | General worker [120 h]; Foreman [30 h] | UDF_G1 |
| A10640 |  | Screed Concreting | 3.75d | 2013-03-09 A | 2013-04-29 | A10610 | 50% | 1d | 2013-04-28 | 2013-05-01 | 22.12d | 4.5d |  | Foreman [30 h]; General worker [75 h]; Mason [75 h] | UDF_G1 |
| A10540 |  | Reinforcement Fixing for Raft Foundations | 6.25d | 2013-03-11 A | 2013-05-13 | A10620, A10640 | 50% | 7.88d | 2013-05-05 | 2013-05-11 | 17.62d | 0d |  | Steel fitter [360 h]; General worker [360 h]; Crane mounted truck [60 h]; Operator [60 h]; Foreman [50 h] | UDF_G2 |
| A10550 |  | Formwork for Raft Foundations | 3.38d | 2013-03-20 A | 2013-05-15 | A10540 | 50% | 3.38d | 2013-05-13 | 2013-05-15 | 17.62d | 0d |  | Carpenter [180 h]; General worker [180 h]; Foreman [30 h]; Crane mounted truck [30 h]; Driver [30 h] | UDF_G2 |
| A10560 |  | Concreting for Raft Foundations | 1.12d | 2013-03-24 A | 2013-05-18 | A10550 | 50% | 1.12d | 2013-05-18 | 2013-05-18 | 17.62d | 0d |  | Foreman [8 h]; Driver [45 h]; General worker [36 h]; Transit mixer [45 h]; Concrete vibrator [40 h]; Concrete pump [16 h]; Air Compressor [8 h]; Operator [60 h]; Mason [20 h] | UDF_G2 |
| A10630 |  | Removal of Formwork for Raft Foundations | 3.75d | 2013-03-27 A | 2013-05-20 | A10560 | 50% | 2.25d | 2013-05-18 | 2013-05-21 | 20.62d | 2.88d |  | Crane mounted truck [30 h]; Carpenter [100 h]; Foreman [30 h]; General worker [100 h]; Operator [30 h] |  |
| A10650 |  | Curing for Raft Foundations | 7.5d | 2013-03-30 A | 2013-05-23 | A10560 | 50% | 5.62d | 2013-05-18 | 2013-05-24 | 24.75d | 2d | OCEC Procurment/Curing-7d/W | General worker [133.33 h] |  |
| A10660 |  | Completion of Raft Foundations for Abutment 2 WB & EB | 1d | 2013-04-06 A | 2013-05-25 | A10650 FF |  | 1d | 2013-05-22 | 2013-05-25 | 17.75d | 0d |  |  |  |
|  | 6 | **Raft Foundations for Abutment 1 /WB & EB** |  | 2013-02-02 | 2013-05-18 |  |  |  |  |  |  |  |  |  |  |
| A10180 |  | Preparation & Submission of Shop Drawings | 7.5d | 2013-02-02 A | 2013-02-12 A | A34 SS | 100% |  | 2013-04-23 | 2013-04-30 |  |  |  |  |  |
| A10160 |  | Preparation & Submission of Bar Schedule Drawings | 7.5d | 2013-02-12 A | 2013-02-20 A | A10180 | 100% |  | 2013-05-01 | 2013-05-08 |  |  |  |  |  |
| A10190 |  | Approval for Shop Drawings | 17.5d | 2013-02-12 A | 2013-02-26 A | A10180 | 100% |  | 2013-05-01 | 2013-05-20 |  |  |  |  |  |
| A10170 |  | Approval for Bar Schedule Drawings | 17.5d | 2013-02-20 A | 2013-03-06 A | A10160 | 100% |  | 2013-05-11 | 2013-05-28 |  |  |  |  |  |
| A10210 |  | Reinforcement Cutting & Bending for Raft Foundations | 10d | 2013-02-20 A | 2013-03-04 A | A10170 | 100% |  | 2013-04-23 | 2013-05-04 |  |  |  | Bar cutting machine [32 h]; Bar bending machine [32 h]; General worker [320 h]; Steel fitter [640 h] | UDF_G1 |
| A10090 |  | Setting Out for Raft Foundations | 2.25d | 2013-02-26 A | 2013-03-03 A | A10190 | 100% |  | 2013-04-23 | 2013-04-24 |  |  |  | General worker [32 h] |  |
| A10100 |  | Structural Excavation | 5.62d | 2013-02-26 A | 2013-03-05 A | A10090 | 100% |  | 2013-04-24 | 2013-05-01 |  |  |  | Excavator [63 h]; Operator [63 h]; Foreman [63 h] | UDF_G1 |
| A10110 |  | Foundation Beds Preparation | 5.62d | 2013-03-05 A | 2013-03-12 A | A10100 | 100% |  | 2013-04-23 | 2013-04-29 |  |  |  | General worker [90 h]; Carpenter [90 h] | UDF_G1 |
| A10260 |  | Plate Load Testing & Submission of Reports | 5d | 2013-03-12 A | 2013-03-18 A | A10110 | 100% |  | 2013-04-23 | 2013-04-28 |  |  |  |  | UDF_G1 |
| A10120 |  | Placing of Blinding Concrete | 1.12d | 2013-04-23 | 2013-04-23 | A10110, A10260 |  |  |  |  | 17.75d | 0d |  | Transit mixer [16 h]; Foreman [8 h]; Mason [16 h]; General worker [9 h]; Driver [16 h] | UDF_G1 |
| A10200 |  | Application of Water Proofing Membrane | 2.5d | 2013-04-23 | 2013-04-27 | A10120 |  |  |  |  | 17.75d | 0d |  | General worker [53.33 h] | UDF_G1 |
| A10230 |  | Screed Concreting | 1d | 2013-04-27 | 2013-04-28 | A10200 |  |  |  |  | 17.75d | 0d |  |  | UDF_G1 |
| A10130 |  | Reinforcement Fixing for Raft Foundations | 6.25d | 2013-04-28 | 2013-05-05 | A10210, A10230 |  |  |  |  | 17.75d | 0d |  | Steel fitter [285.71 h]; General worker [142.86 h]; Crane mounted truck [28.57 h]; Operator [28.57 h] | UDF_G1 |
| A10140 |  | Formwork for Raft Foundations | 2.25d | 2013-05-05 | 2013-05-07 | A10130 |  |  |  |  | 17.75d | 0d |  | Carpenter [108 h]; General worker [54 h]; Foreman [18 h]; Crane mounted truck [18 h]; Driver [18 h] | UDF_G1 |
| A10150 |  | Concreting for Raft Foundations | 1.12d | 2013-05-07 | 2013-05-08 | A10140 |  |  |  |  | 17.75d | 0d |  | Foreman [8 h]; Driver [45 h]; General worker [36 h]; Transit mixer [45 h]; Concrete vibrator [32 h]; Concrete pump [16 h]; Air Compressor [8 h] | UDF_G1 |
| A10240 |  | Curing for Raft Foundations | 5.62d | 2013-05-08 | 2013-05-14 | A10150 |  |  |  |  | 17.75d | 0d |  | General worker [100 h] |  |
| A10220 |  | Removal of Formwork for Raft Foundations | 2.25d | 2013-05-14 | 2013-05-18 | A10240 |  |  |  |  | 17.75d | 0d |  | Crane mounted truck [18 h]; Carpenter [54 h]; Foreman [18 h]; General worker [36 h]; Operator [18 h] |  |
| A10250 |  | Completion of Raft Foundations for Abutment 1 - WB & EB | 1d | 2013-05-15 | 2013-05-18 | A10220 FF |  |  |  |  | 17.75d | 0d |  |  |  |

| ID | WBS | Activity | Duration | Start | Finish | Predecessors | Total float | Free float | Resources | Flag |
| --- | --- | --- | --- | --- | --- | --- | --- | --- | --- | --- |
|  | 3 | **Abutment Construction ABT 2 /WB** |  | 2013-05-05 | 2013-07-07 |  |  |  |  |  |
| A14720 |  | Reinforcement Cutting & Bending for Abutment - Lift 1 | 6.25d | 2013-05-05 | 2013-05-11 | A10620 | 36d | 0d | Bar bending machine [50 h]; Bar cutting machine [50 h]; Steel fitter [420 h]; General worker [420 h]; Operator [280 h]; Foreman [50 h] | UDF_G2 |
| A14730 |  | Reinforcement Cutting & Bending for Abutment - Lift 2 | 6.25d | 2013-05-08 | 2013-05-14 | A14720 SS+3.75d | 45.5d | 0d | Bar bending machine [50 h]; Bar cutting machine [50 h]; Steel fitter [150 h]; General worker [150 h]; Operator [100 h]; Foreman [50 h] | UDF_G2 |
| A14750 |  | Reinforcement Cutting & Bending for Abutment - Breast Walls | 6.25d | 2013-05-13 | 2013-05-19 | A14730 SS+3.75d | 51.88d | 0d | Bar bending machine [50 h]; Bar cutting machine [50 h]; Steel fitter [60 h]; General worker [60 h]; Operator [60 h]; Foreman [50 h] | UDF_G2 |
| A14770 |  | Setting Out for Abutment | 1.12d | 2013-05-25 | 2013-05-25 | A10630, A10660 | 17.75d | 0d | General worker [18 h]; Surveyor [9 h]; Surveying Instruments [9 h] |  |
| A14610 |  | Erection of Scaffolding for Abutment - Lift 1 | 3.38d | 2013-05-25 | 2013-05-28 | A14770 | 17.75d | 0d | Foreman [30 h]; Carpenter [162 h]; General worker [180 h]; Crane mounted truck [30 h]; Scafolder [180 h]; Operator [27 h] | UDF_G2 |
| A14620 |  | Reinforcement Fixing for Abutment - Lift 1 | 5.62d | 2013-05-28 | 2013-06-04 | A14610, A14720 SS+3.75d | 17.75d | 0d | General worker [200 h]; Steel fitter [200 h]; Foreman [50 h]; Crane mounted truck [50 h]; Operator [50 h] | UDF_G1 |
| A14630 |  | Formwork for Abutment - Lift 1 | 3.38d | 2013-06-04 | 2013-06-08 | A14620 | 17.75d | 0d | Carpenter [150 h]; General worker [150 h]; Foreman [30 h]; Crane mounted truck [30 h]; Operator [27 h] | UDF_G1 |
| A14640 |  | Concreting for Abutment - Lift 1 | 1d | 2013-06-08 | 2013-06-09 | A14630 | 17.75d | 0d | Foreman [8 h]; Transit mixer [30 h]; Concrete vibrator [16 h]; Concrete pump [8 h]; Driver [30 h]; General worker [40 h]; Air Compressor [8 h]; Operator [40 h]; Mason [20 h] | UDF_G1 |
| A14650 |  | Removal of Formwork for Abutment - Lift 1 | 2.5d | 2013-06-10 | 2013-06-12 | A14640 FS+1d | 17.75d | 0d | Carpenter [40 h]; General worker [40 h]; Foreman [20 h]; Crane mounted truck [20 h]; Operator [20 h] |  |
| A14660 |  | Erection of Scaffolding for Abutment - Lift 2 | 2.25d | 2013-06-12 | 2013-06-16 | A14650 | 17.75d | 0d | Foreman [16 h]; General worker [120 h]; Crane mounted truck [16 h]; Scafolder [120 h]; Operator [18 h] | UDF_G4 |
| A14670 |  | Reinforcement Fixing for Abutment - Lift 2 | 2.25d | 2013-06-16 | 2013-06-17 | A14660, A14730 | 17.75d | 0d | General worker [80 h]; Steel fitter [80 h]; Foreman [18 h]; Crane mounted truck [18 h]; Operator [18 h] | UDF_G4 |
| A14680 |  | Formwork for Abutment - Lift 2 | 2.25d | 2013-06-18 | 2013-06-19 | A14670 | 17.75d | 0d | Carpenter [100 h]; General worker [100 h]; Foreman [18 h]; Crane mounted truck [18 h]; Operator [18 h] | UDF_G4 |
| A14690 |  | Concreting for Abutment - Lift 2 | 1d | 2013-06-19 | 2013-06-22 | A14680 | 17.75d | 0d | Foreman [8 h]; Transit mixer [30 h]; Concrete vibrator [16 h]; Concrete pump [8 h]; Driver [30 h]; General worker [40 h]; Air Compressor [8 h]; Operator [40 h]; Mason [20 h] | UDF_G4 |
| A14700 |  | Removal of Formwork for Abutment - Lift 2 | 2.75d | 2013-06-23 | 2013-06-25 | A14690 FS+1d | 17.75d | 0d | Carpenter [44 h]; General worker [44 h]; Foreman [22 h]; Crane mounted truck [22 h]; Operator [22 h] |  |
| A14740 |  | Erection of Scaffolding for Abutment - Breast Walls | 0.88d | 2013-06-25 | 2013-06-26 | A14700 | 17.75d | 0d | General worker [20 h]; Scafolder [20 h]; Operator [7 h]; Foreman [7 h]; Crane mounted truck [7 h] | UDF_G4 |
| A14760 |  | Reinforcement Fixing for Abutment - Breast Walls | 1.12d | 2013-06-26 | 2013-06-29 | A14750, A14740 | 17.75d | 0d | Foreman [9 h]; Steel fitter [20 h]; General worker [18 h]; Operator [10 h]; Crane mounted truck [9 h] | UDF_G4 |
| A14780 |  | Concreting for Breast Walls | 1.12d | 2013-06-29 | 2013-06-30 | A14760 | 17.75d | 0d | General worker [40 h]; Foreman [9 h]; Driver [30 h]; Transit mixer [30 h]; Concrete vibrator [20 h]; Concrete pump [9 h]; Air Compressor [9 h]; Operator [40 h]; Mason [20 h] | UDF_G4 |
| A14710 |  | Removal of Formwork for Abutment - Breast Wall | 2.25d | 2013-06-30 | 2013-07-01 | A14780 | 17.75d | 0d | General worker [40 h]; Carpenter [40 h]; Foreman [18 h] |  |
| A14790 |  | Dismantling of Complete Abutment Scaffolding | 1d | 2013-07-01 | 2013-07-02 | A14710 | 17.75d | 0d | General worker [20 h]; Scafolder [20 h]; Operator [8 h]; Foreman [8 h] |  |
| A14800 |  | Application of Primer, Water Proofing Membrane & Protection Board | 2.5d | 2013-07-02 | 2013-07-06 | A14790 | 19d | 0d | General worker [60 h]; Foreman [20 h] | UDF_G4 |
| A14810 |  | Application of Bitumen Mastic | 1d | 2013-07-06 | 2013-07-07 | A14800 | 19d | 0d | General worker [10 h]; Foreman [8 h] | UDF_G4 |
| A14820 |  | Concrete Screed for Balance Portion of PCC | 1d | 2013-07-06 | 2013-07-07 | A14810 SS, A14800 | 19d | 0d | General worker [20 h]; Foreman [8 h]; Mason [8 h] | UDF_G4 |
| A14830 |  | Completion of Abutment Construction ABT - 2 WB | 1d | 2013-07-06 | 2013-07-07 | A14820 FF | 19d | 0d |  |  |

| ID | WBS | Activity | Duration | Start | Finish | Predecessors | Total float | Free float | Resources | Flag |
| --- | --- | --- | --- | --- | --- | --- | --- | --- | --- | --- |
|  | 4 | **Abutment Construction ABT 1 /WB** |  | 2013-04-23 | 2013-07-01 |  |  |  |  |  |
| A10380 |  | Reinforcement Cutting & Bending for Abutment - Lift 1 | 6.25d | 2013-04-23 | 2013-04-29 | A10210 | 40.62d | 0d | Bar bending machine [6.67 h]; Bar cutting machine [6.67 h]; Steel fitter [66.67 h]; General worker [33.33 h] | UDF_G2 |
| A10390 |  | Reinforcement Cutting & Bending for Abutment - Lift 2 | 6.25d | 2013-04-28 | 2013-05-04 | A10380 SS+3.75d | 50.12d | 0d | Bar bending machine [10 h]; Bar cutting machine [10 h]; Steel fitter [100 h]; General worker [50 h] | UDF_G2 |
| A10410 |  | Reinforcement Cutting & Bending for Abutment - Breast Walls | 6.25d | 2013-05-01 | 2013-05-07 | A10390 SS+3.75d | 56.5d | 0d | Bar bending machine [10 h]; Bar cutting machine [10 h]; Steel fitter [40 h]; General worker [20 h] | UDF_G2 |
| A10430 |  | Setting Out for Abutment | 1.12d | 2013-05-18 | 2013-05-19 | A10240, A10250 | 17.75d | 0d | General worker [18 h] |  |
| A10270 |  | Erection of Scaffolding for Abutment - Lift 1 | 3.38d | 2013-05-19 | 2013-05-22 | A10430 | 17.75d | 0d | Foreman [16 h]; Carpenter [168 h]; General worker [96 h]; Driver [16 h]; Crane mounted truck [16 h] | UDF_G2 |
| A10280 |  | Reinforcement Fixing for Abutment - Lift 1 | 5.62d | 2013-05-22 | 2013-05-28 | A10270, A10380 SS+3.75d | 17.75d | 0d | General worker [90 h]; Steel fitter [225 h]; Foreman [24 h]; Crane mounted truck [24 h]; Operator [24 h] | UDF_G2 |
| A10290 |  | Formwork for Abutment - Lift 1 | 3.38d | 2013-05-28 | 2013-06-02 | A10280 | 17.75d | 0d | Carpenter [128 h]; General worker [64 h]; Foreman [16 h]; Crane mounted truck [16 h]; Driver [16 h] | UDF_G2 |
| A10300 |  | Concreting for Abutment - Lift 1 | 1d | 2013-06-02 | 2013-06-03 | A10290 | 17.75d | 0d | Foreman [8 h]; Transit mixer [24 h]; Concrete vibrator [16 h]; Concrete pump [8 h]; Driver [24 h]; General worker [24 h]; Air Compressor [8 h] | UDF_G2 |
| A10310 |  | Removal of Formwork for Abutment - Lift 1 | 2.5d | 2013-06-04 | 2013-06-08 | A10300 FS+1d | 17.75d | 0d | Carpenter [40 h]; General worker [32 h]; Driver [20 h]; Foreman [20 h]; Crane mounted truck [20 h] |  |
| A10320 |  | Erection of Scaffolding for Abutment - Lift 2 | 2.25d | 2013-06-08 | 2013-06-09 | A10310 | 17.75d | 0d | Foreman [16 h]; Carpenter [80 h]; General worker [48 h]; Driver [16 h]; Crane mounted truck [16 h] | UDF_G1 |
| A10330 |  | Reinforcement Fixing for Abutment - Lift 2 | 2.25d | 2013-06-09 | 2013-06-11 | A10320, A10390 | 17.75d | 0d | General worker [36 h]; Steel fitter [90 h]; Foreman [18 h]; Crane mounted truck [18 h]; Operator [18 h] | UDF_G1 |
| A10340 |  | Formwork for Abutment - Lift 2 | 2.25d | 2013-06-11 | 2013-06-15 | A10330 | 17.75d | 0d | Carpenter [90 h]; General worker [36 h]; Foreman [18 h]; Crane mounted truck [18 h]; Driver [18 h] | UDF_G1 |
| A10350 |  | Concreting for Abutment - Lift 2 | 1d | 2013-06-15 | 2013-06-16 | A10340 | 17.75d | 0d | Foreman [8 h]; Transit mixer [24 h]; Concrete vibrator [16 h]; Concrete pump [8 h]; Driver [24 h]; General worker [24 h]; Air Compressor [8 h] | UDF_G1 |
| A10360 |  | Removal of Formwork for Abutment - Lift 2 | 2.75d | 2013-06-17 | 2013-06-19 | A10350 FS+1d | 17.75d | 0d | Carpenter [44 h]; General worker [44 h]; Driver [22 h]; Foreman [22 h]; Crane mounted truck [22 h] |  |
| A10400 |  | Erection of Scaffolding for Abutment - Breast Walls | 0.88d | 2013-06-19 | 2013-06-19 | A10360 | 17.75d | 0d | General worker [14 h]; Carpenter [14 h]; Driver [7 h]; Canter [7 h] | UDF_G4 |
| A10420 |  | Reinforcement Fixing for Abutment - Breast Walls | 1.12d | 2013-06-22 | 2013-06-22 | A10410, A10400 | 17.75d | 0d | Foreman [9 h]; Steel fitter [36 h]; General worker [18 h]; Operator [9 h]; Crane mounted truck [9 h] | UDF_G4 |
| A10440 |  | Concreting for Breast Walls | 1.12d | 2013-06-22 | 2013-06-23 | A10420 | 17.75d | 0d | Air Compressor [9 h]; Concrete pump [9 h]; Concrete vibrator [9 h]; Foreman [9 h]; General worker [9 h]; Driver [18 h]; Transit mixer [18 h] | UDF_G4 |
| A10370 |  | Removal of Formwork for Abutment - Breast Wall | 2.25d | 2013-06-23 | 2013-06-25 | A10440 | 20d | 0d | General worker [36 h]; Carpenter [36 h] |  |
| A10450 |  | Dismantling of Complete Abutment Scaffolding | 1d | 2013-06-25 | 2013-06-26 | A10370 | 26.88d | 0d | Carpenter [16 h]; General worker [16 h] |  |
| A10460 |  | Application of Primer, Water Proofing Membrane & Protection Board | 2.5d | 2013-06-26 | 2013-06-30 | A10450 | 26.88d | 0d | General worker [40 h] | UDF_G4 |
| A10470 |  | Application of Bitumen Mastic | 1d | 2013-06-30 | 2013-07-01 | A10460 | 26.88d | 0d | General worker [16 h] | UDF_G4 |
| A10480 |  | Concrete Screed for Balance Portion of PCC | 1d | 2013-06-30 | 2013-07-01 | A10470 SS, A10460 | 26.88d | 0d | General worker [16 h] | UDF_G4 |
| A10490 |  | Completion of Abutment Construction ABT - 1 WB | 1d | 2013-06-30 | 2013-07-01 | A10480 FF | 26.88d | 12.88d |  |  |

| ID | WBS | Activity | Duration | Start | Finish | Predecessors | Total float | Free float | Resources | Flag |
| --- | --- | --- | --- | --- | --- | --- | --- | --- | --- | --- |
|  | 7 | **Abutment Construction ABT 2 /EB** |  | 2013-05-20 | 2013-08-18 |  |  |  |  |  |
| A14260 |  | Reinforcement Cutting & Bending for Abutment - Lift 1 | 6.25d | 2013-05-20 | 2013-05-26 | A14750 | 54.5d | 0d | Bar bending machine [6.67 h]; Bar cutting machine [6.67 h]; Steel fitter [33.33 h]; General worker [33.33 h] | UDF_G1 |
| A14270 |  | Reinforcement Cutting & Bending for Abutment - Lift 2 | 6.25d | 2013-05-25 | 2013-05-29 | A14260 SS+3.75d | 60.38d | 0d | Bar bending machine [10 h]; Bar cutting machine [10 h]; Steel fitter [100 h]; General worker [50 h] | UDF_G1 |
| A14290 |  | Reinforcement Cutting & Bending for Abutment - Breast Walls | 18.75d | 2013-05-28 | 2013-06-17 | A14270 SS+3.75d | 60.38d | 42.62d | Bar bending machine [30 h]; Bar cutting machine [30 h]; Steel fitter [120 h]; General worker [60 h] | UDF_G2 |
| A14310 |  | Setting Out for Abutment | 2.5d | 2013-06-30 | 2013-07-02 | A14780 | 18.5d | 0.75d | General worker [40 h] |  |
| A14150 |  | Erection of Scaffolding for Abutment - Lift 1 | 3.38d | 2013-07-02 | 2013-07-07 | A14310, A14790 | 17.75d | 0d | Foreman [16 h]; Carpenter [168 h]; General worker [96 h]; Driver [16 h]; Crane mounted truck [16 h] | UDF_G1 |
| A14160 |  | Reinforcement Fixing for Abutment - Lift 1 | 5.62d | 2013-07-07 | 2013-07-13 | A14150, A14260 | 17.75d | 0d | General worker [90 h]; Steel fitter [225 h]; Foreman [24 h]; Crane mounted truck [24 h]; Operator [24 h] | UDF_G2 |
| A14170 |  | Formwork for Abutment - Lift 1 | 3.38d | 2013-07-13 | 2013-07-16 | A14160 | 17.75d | 0d | Carpenter [128 h]; General worker [64 h]; Foreman [16 h]; Crane mounted truck [16 h]; Driver [16 h] | UDF_G2 |
| A14180 |  | Concreting for Abutment - Lift 1 | 1d | 2013-07-16 | 2013-07-17 | A14170 | 17.75d | 0d | Foreman [8 h]; Transit mixer [24 h]; Concrete vibrator [16 h]; Concrete pump [8 h]; Driver [24 h]; General worker [24 h]; Air Compressor [8 h] | UDF_G2 |
| A14190 |  | Removal of Formwork for Abutment - Lift 1 | 2.5d | 2013-07-20 | 2013-07-22 | A14180 FS+1d | 17.75d | 0d | Carpenter [40 h]; General worker [32 h]; Driver [20 h]; Foreman [20 h]; Crane mounted truck [20 h] |  |
| A14200 |  | Erection of Scaffolding for Abutment - Lift 2 | 2.25d | 2013-07-22 | 2013-07-23 | A14190 | 17.75d | 0d | Foreman [16 h]; Carpenter [80 h]; General worker [48 h]; Driver [16 h]; Crane mounted truck [16 h] | UDF_G4 |
| A14210 |  | Reinforcement Fixing for Abutment - Lift 2 | 2.25d | 2013-07-24 | 2013-07-27 | A14200, A14270 | 17.75d | 0d | General worker [36 h]; Steel fitter [90 h]; Foreman [18 h]; Crane mounted truck [18 h]; Operator [18 h] | UDF_G4 |
| A14220 |  | Formwork for Abutment - Lift 2 | 2.25d | 2013-07-27 | 2013-07-29 | A14210 | 17.75d | 0d | Carpenter [90 h]; General worker [36 h]; Foreman [18 h]; Crane mounted truck [18 h]; Driver [18 h] | UDF_G4 |
| A14230 |  | Concreting for Abutment - Lift 2 | 1d | 2013-07-29 | 2013-07-30 | A14220 | 17.75d | 0d | Foreman [8 h]; Transit mixer [24 h]; Concrete vibrator [16 h]; Concrete pump [8 h]; Driver [24 h]; General worker [24 h]; Air Compressor [8 h] | UDF_G4 |
| A14240 |  | Removal of Formwork for Abutment - Lift 2 | 2.75d | 2013-07-31 | 2013-08-04 | A14230 FS+1d | 17.75d | 0d | Carpenter [44 h]; General worker [44 h]; Driver [22 h]; Foreman [22 h]; Crane mounted truck [22 h] |  |
| A14280 |  | Erection of Scaffolding for Abutment - Breast Walls | 0.88d | 2013-08-04 | 2013-08-05 | A14240 | 17.75d | 0d | General worker [14 h]; Carpenter [14 h]; Driver [7 h]; Canter [7 h] | UDF_G4 |
| A14300 |  | Reinforcement Fixing for Abutment - Breast Walls | 1.12d | 2013-08-05 | 2013-08-05 | A14290, A14280 | 17.75d | 0d | Foreman [9 h]; Steel fitter [36 h]; General worker [18 h]; Operator [9 h]; Crane mounted truck [9 h] | UDF_G4 |
| A14320 |  | Concreting for Breast Walls | 1.12d | 2013-08-06 | 2013-08-06 | A14300 | 17.75d | 0d | Transit mixer [18 h]; Concrete pump [9 h]; Concrete vibrator [9 h]; Air Compressor [9 h]; General worker [9 h]; Driver [18 h]; Foreman [9 h] | UDF_G4 |
| A14250 |  | Removal of Formwork for Abutment - Breast Wall | 2.25d | 2013-08-06 | 2013-08-12 | A14320 | 17.75d | 0d | General worker [36 h]; Carpenter [36 h] |  |
| A14330 |  | Dismantling of Complete Abutment Scaffolding | 1d | 2013-08-12 | 2013-08-13 | A14250 | 17.75d | 0d | Carpenter [16 h]; General worker [16 h] |  |
| A14340 |  | Application of Primer, Water Proofing Membrane & Protection Board | 2.5d | 2013-08-13 | 2013-08-17 | A14330 | 17.75d | 0d | General worker [40 h] | UDF_G4 |
| A14350 |  | Application of Bitumen Mastic | 1d | 2013-08-17 | 2013-08-18 | A14340 | 17.75d | 0d | General worker [16 h] | UDF_G4 |
| A14360 |  | Concrete Screed for Balance Portion of PCC | 1d | 2013-08-17 | 2013-08-18 | A14350 SS, A14340 | 17.75d | 0d | General worker [16 h] | UDF_G4 |
| A14370 |  | Completion of Abutment Construction ABT - 2 EB | 1d | 2013-08-17 | 2013-08-18 | A14360 FF | 17.75d |  |  |  |

| ID | WBS | Activity | Duration | Start | Finish | Predecessors | Total float | Free float | Resources | Flag |
| --- | --- | --- | --- | --- | --- | --- | --- | --- | --- | --- |
|  | 8 | **Abutment Construction ABT 1 /EB** |  | 2013-05-08 | 2013-08-06 |  |  |  |  |  |
| A14490 |  | Reinforcement Cutting & Bending for Abutment - Lift 1 | 6.25d | 2013-05-08 | 2013-05-14 | A10410 | 62.88d | 0d | Bar bending machine [6.67 h]; Bar cutting machine [6.67 h]; Steel fitter [66.67 h]; General worker [33.33 h] | UDF_G1 |
| A14500 |  | Reinforcement Cutting & Bending for Abutment - Lift 2 | 6.25d | 2013-05-13 | 2013-05-19 | A14490 SS+3.75d | 62.88d | 0d | Bar bending machine [10 h]; Bar cutting machine [10 h]; Steel fitter [100 h]; General worker [50 h] | UDF_G1 |
| A14520 |  | Reinforcement Cutting & Bending for Abutment - Breast Walls | 18.75d | 2013-05-18 | 2013-06-05 | A14500 SS+3.75d | 62.88d | 45.12d | Bar bending machine [30 h]; Bar cutting machine [30 h]; Steel fitter [120 h]; General worker [60 h] | UDF_G1 |
| A14540 |  | Setting Out for Abutment | 1.12d | 2013-06-23 | 2013-06-24 | A10440 | 17.75d | 0d | General worker [18 h] |  |
| A14380 |  | Erection of Scaffolding for Abutment - Lift 1 | 3.38d | 2013-06-24 | 2013-06-29 | A14540, A125 | 17.75d | 0d | Foreman [16 h]; Carpenter [168 h]; General worker [96 h]; Driver [16 h]; Crane mounted truck [16 h] | UDF_G1 |
| A14390 |  | Reinforcement Fixing for Abutment - Lift 1 | 5.62d | 2013-06-29 | 2013-07-03 | A14380, A10370 | 17.75d | 0d | General worker [90 h]; Steel fitter [225 h]; Foreman [24 h]; Crane mounted truck [24 h]; Operator [24 h] | UDF_G2 |
| A14400 |  | Formwork for Abutment - Lift 1 | 3.38d | 2013-07-03 | 2013-07-08 | A14390 | 17.75d | 0d | Carpenter [128 h]; General worker [64 h]; Foreman [16 h]; Crane mounted truck [16 h]; Driver [16 h] | UDF_G2 |
| A14410 |  | Concreting for Abutment - Lift 1 | 1d | 2013-07-08 | 2013-07-09 | A14400 | 17.75d | 0d | Foreman [8 h]; Transit mixer [24 h]; Concrete vibrator [16 h]; Concrete pump [8 h]; Driver [24 h]; General worker [24 h]; Air Compressor [8 h] | UDF_G2 |
| A14420 |  | Removal of Formwork for Abutment - Lift 1 | 2.5d | 2013-07-10 | 2013-07-14 | A14410 FS+1d | 17.75d | 0d | Carpenter [16 h]; General worker [32 h]; Driver [8 h]; Foreman [8 h]; Crane mounted truck [8 h] |  |
| A14430 |  | Erection of Scaffolding for Abutment - Lift 2 | 2.25d | 2013-07-14 | 2013-07-15 | A14420 | 17.75d | 0d | Foreman [16 h]; Carpenter [80 h]; General worker [48 h]; Driver [16 h]; Crane mounted truck [16 h] | UDF_G2 |
| A14440 |  | Reinforcement Fixing for Abutment - Lift 2 | 2.25d | 2013-07-16 | 2013-07-17 | A14430, A14500 | 17.75d | 0d | General worker [36 h]; Steel fitter [90 h]; Foreman [18 h]; Crane mounted truck [18 h]; Operator [18 h] | UDF_G2 |
| A14450 |  | Formwork for Abutment - Lift 2 | 2.25d | 2013-07-17 | 2013-07-21 | A14440 | 17.75d | 0d | Carpenter [90 h]; General worker [36 h]; Foreman [18 h]; Crane mounted truck [18 h]; Driver [18 h] | UDF_G2 |
| A14460 |  | Concreting for Abutment - Lift 2 | 1d | 2013-07-21 | 2013-07-22 | A14450 | 17.75d | 0d | Foreman [8 h]; Transit mixer [24 h]; Concrete vibrator [16 h]; Concrete pump [8 h]; Driver [24 h]; General worker [24 h]; Air Compressor [8 h] | UDF_G2 |
| A14470 |  | Removal of Formwork for Abutment - Lift 2 | 2.75d | 2013-07-23 | 2013-07-27 | A14460 FS+1d | 17.75d | 0d | Carpenter [44 h]; General worker [44 h]; Driver [22 h]; Foreman [22 h]; Crane mounted truck [22 h] |  |
| A14510 |  | Erection of Scaffolding for Abutment - Breast Walls | 0.88d | 2013-07-27 | 2013-07-28 | A14470 | 17.75d | 0d | General worker [14 h]; Carpenter [14 h]; Driver [7 h]; Canter [7 h] | UDF_G2 |
| A14530 |  | Reinforcement Fixing for Abutment - Breast Walls | 1.12d | 2013-07-28 | 2013-07-28 | A14520, A14510 | 17.75d | 0d | General worker [18 h]; Steel fitter [36 h]; Operator [9 h]; Crane mounted truck [9 h]; Foreman [9 h] | UDF_G2 |
| A14550 |  | Concreting for Breast Walls | 1.12d | 2013-07-29 | 2013-07-29 | A14530 | 17.75d | 0d | Transit mixer [18 h]; Concrete pump [9 h]; Concrete vibrator [9 h]; Air Compressor [9 h]; General worker [9 h]; Driver [18 h]; Foreman [9 h] | UDF_G2 |
| A14480 |  | Removal of Formwork for Abutment - Breast Wall | 2.25d | 2013-07-29 | 2013-07-31 | A14550 | 17.75d | 0d | General worker [36 h]; Carpenter [36 h] |  |
| A14560 |  | Dismantling of Complete Abutment Scaffolding | 1d | 2013-07-31 | 2013-08-03 | A14480 | 17.75d | 0d | Carpenter [16 h]; General worker [16 h] |  |
| A14570 |  | Application of Primer, Water Proofing Membrane & Protection Board | 2.5d | 2013-08-03 | 2013-08-05 | A14560 | 17.75d | 0d | General worker [40 h] | UDF_G2 |
| A14580 |  | Application of Bitumen Mastic | 1d | 2013-08-05 | 2013-08-06 | A14570 | 17.75d | 0d | General worker [16 h] | UDF_G2 |
| A14590 |  | Concrete Screed for Balance Portion of PCC | 1d | 2013-08-05 | 2013-08-06 | A14580 SS, A14570 | 17.75d | 0d | General worker [16 h] | UDF_G2 |
| A14600 |  | Completion of Abutment Construction ABT - 1 EB | 1d | 2013-08-05 | 2013-08-06 | A14590 FF | 17.75d | 2.75d |  |  |

| ID | WBS | Activity | Duration | Start | Finish | Predecessors | Complete | Remaining | Planned start | Planned finish | Total float | Free float | Calendar | Resources | user_text1 | Flag |
| --- | --- | --- | --- | --- | --- | --- | --- | --- | --- | --- | --- | --- | --- | --- | --- | --- |
|  | 15 | **Box Girder Construction for Bridges** |  | 2013-01-16 | 2013-12-21 |  |  |  |  |  |  |  |  |  |  |  |
|  | 13 | **Box Girder - West Bound** |  | 2013-01-16 | 2013-11-25 |  |  |  |  |  |  |  |  |  |  |  |
| B3161 |  | Prepartion & Submission for Rubberized Bitumen emulsion | 10d | 2013-01-16 A | 2013-01-28 A | A3 | 100% |  | 2012-12-29 | 2013-01-07 |  |  |  |  | Jan2013 | UDF_G4 |
| B3160 |  | MAR for Rubberized Bitumen emulsion | 27.5d | 2013-01-29 A | 2013-03-05 A | B3161 | 100% |  | 2012-12-29 | 2013-01-27 |  |  |  |  | 49 |  |
| B3101 |  | Prepartion & Submission for Bearings | 10d | 2013-03-03 A | 2013-03-13 A | A3 | 100% |  | 2012-12-23 | 2013-01-01 |  |  |  |  | March 2013 | UDF_G3 |
| B1551 |  | Prepartion & Submission for Precast Concrete Tile (60 mm thick) | 10d | 2013-03-09 A | 2013-03-19 A | A3 | 100% |  | 2013-02-18 | 2013-02-27 |  |  |  |  | May 2013 |  |
| B1491 |  | Prepartion & Submission for Precast Curbs (Mountable and Non Mountable) | 10d | 2013-03-18 A | 2013-03-30 A | A3 | 100% |  | 2013-02-18 | 2013-02-27 |  |  |  |  | March 2013 | UDF_G3 |
| B1490 |  | MAR for Precast Curbs (Mountable and Non Mountable) | 27.5d | 2013-03-20 A | 2013-06-03 | B1491 | 50% | 37.5d | 2013-02-18 | 2013-03-19 | 136.38d | 0d |  |  | 17 |  |
| B1550 |  | MAR for Precast Concrete Tile (60 mm thick) | 27.5d | 2013-03-20 A | 2013-06-03 | B1551 | 80% | 37.5d | 2013-02-18 | 2013-03-19 | 147.5d | 0d |  |  | 19 |  |
| B3100 |  | MAR for Bearings | 27.5d | 2013-03-26 A | 2013-06-03 | B3101 | 80% | 37.5d | 2012-12-23 | 2013-01-21 | 27d | 0d |  |  | 57 | UDF_G3 |
| A12370 |  | Preparation & Submission of Scaffolding Design and Drawing for Approval | 3.75d | 2013-04-23 | 2013-04-27 | A12380 SS |  |  |  |  | 68d | 0d |  |  |  |  |
| A12380 |  | Preparation & Submission of Shop Drawing for Box Girder | 3.75d | 2013-04-23 | 2013-04-27 | A82 SS |  |  |  |  | 46.62d | 0d |  |  |  |  |
| B3132 |  | Prepartion & Submission for Epoxy Grout | 10d | 2013-04-23 | 2013-05-04 | A3 |  |  |  |  | 60.75d | 0d |  |  | March 2013 | UDF_G3 |
| B3170 |  | Procurment for Rubberized Bitumen emulsion | 3.75d | 2013-04-23 | 2013-04-25 | B3160 |  |  |  |  | 117.12d | 1.25d | OCEC Procurment/Curing-7d/W |  |  | UDF_G3 |
| B3191 |  | Prepartion & Submission for Bearing Pads | 10d | 2013-04-23 | 2013-05-04 | A3 |  |  |  |  | 163.75d | 0d |  |  | March 2013 | UDF_G3 |
| B3431 |  | Prepartion & Submission for Bridge Deck Water Proofing (iso-cyaniteamin system - 2 mm thick) | 10d | 2013-04-23 | 2013-05-04 | A3 |  |  |  |  | 118.75d | 0d |  |  | 59 |  |
| B3461 |  | Prepartion & Submission for Polyurethane base paint | 10d | 2013-04-23 | 2013-05-04 | A3 |  |  |  |  | 153.75d | 0d |  |  | 60 |  |
| B3150 |  | MIR for Rubberized Bitumen emulsion | 2.5d | 2013-04-27 | 2013-04-28 | B3170 |  |  |  |  | 83.38d | 64.38d |  |  |  | UDF_G3 |
| A12360 |  | Approval for Scaffolding Design and Drawing | 17.5d | 2013-04-28 | 2013-05-15 | A12370 |  |  |  |  | 68d | 49d |  |  |  |  |
| A12390 |  | Approval of Shop Drawing for Box Girder | 16.88d | 2013-04-28 | 2013-05-15 | A12380 |  |  |  |  | 76.38d | 54.62d |  |  |  |  |
| A12480 |  | Preparation & Submission of Bar Schedule Drawing | 5d | 2013-04-28 | 2013-05-01 | A12380 |  |  |  |  | 78.62d | 0d |  |  |  |  |
| A12490 |  | Approval of Bar Schedule Drawing | 16.88d | 2013-05-04 | 2013-05-21 | A12480 |  |  |  |  | 78.62d | 0d |  |  |  |  |
| B3130 |  | MAR for Epoxy Grout | 27.5d | 2013-05-05 | 2013-06-03 | B3132 |  |  |  |  | 60.75d | 0d |  |  | 58 |  |
| B3190 |  | MAR for Bearing Pads | 27.5d | 2013-05-05 | 2013-06-03 | B3191 |  |  |  |  | 163.75d | 0d |  |  | 3 | UDF_G3 |
| B3430 |  | MAR for Bridge Deck Water Proofing (iso-cyaniteamin system - 2 mm thick) | 27.5d | 2013-05-05 | 2013-06-03 | B3431 |  |  |  |  | 118.75d | 0d |  |  | 59 |  |
| B3460 |  | MAR for Polyurethane base paint | 27.5d | 2013-05-05 | 2013-06-03 | B3461 |  |  |  |  | 153.75d | 0d |  |  | 60 |  |
| A12290 |  | Reinforcement Cutting & Bending for Stage - 1 & 2 (Span-1, 2 & 3) | 7.5d | 2013-05-21 | 2013-05-29 | A12490 |  |  |  |  | 78.62d | 0d |  | Steel fitter [1440 h]; General worker [720 h]; Foreman [70.3 h]; Crane mounted truck [140.61 h]; Bar cutting machine [120 h]; Bar bending machine [120 h]; Operator [140.61 h] |  | UDF_G1 |
| A12430 |  | Reinforcement Cutting & Bending for Stage - 3 | 7.5d | 2013-05-26 | 2013-06-03 | A12290 SS+3.75d |  |  |  |  | 105.12d | 0d |  | Bar cutting machine [24.24 h]; Bar bending machine [24.24 h]; Crane mounted truck [12.12 h]; Steel fitter [290.91 h]; General worker [145.45 h] |  | UDF_G1 |
| A12750 |  | Reinforcement Cutting & Bending for Crash Barriers | 10d | 2013-05-29 | 2013-06-10 | A12430 SS+3.75d |  |  |  |  | 117.12d | 94.38d |  |  |  | UDF_G1 |
| B1500 |  | Procurment for Precast Curbs (Mountable and Non Mountable) | 10d | 2013-06-04 | 2013-06-15 | B1490 |  |  |  |  | 136.38d | 0d |  |  |  | UDF_G3 |
| B1560 |  | Procurment for Precast Concrete Tile (60 mm thick) | 10d | 2013-06-04 | 2013-06-11 | B1550 |  |  |  |  | 213.88d | 0d | OCEC Procurment/Curing-7d/W |  |  | UDF_G3 |
| B3110 |  | Procurment for Bearings | 50d | 2013-06-04 | 2013-07-13 | B3100 |  |  |  |  | 37d | 0d | OCEC Procurment/Curing-7d/W |  | no.1 | UDF_G3 |
| B3140 |  | Procurment for Epoxy Grout | 5d | 2013-06-04 | 2013-06-07 | B3130 |  |  |  |  | 88.25d | 0d | OCEC Procurment/Curing-7d/W |  |  | UDF_G3 |
| B3200 |  | Procurment for Bearing Pads | 10d | 2013-06-04 | 2013-06-11 | B3190 |  |  |  |  | 236.25d | 0d | OCEC Procurment/Curing-7d/W |  |  | UDF_G3 |
| B3440 |  | Procurment for Bridge Deck Water Proofing (iso-cyaniteamin system - 2 mm thick) | 10d | 2013-06-04 | 2013-06-11 | B3430 |  |  |  |  | 170.25d | 0d | OCEC Procurment/Curing-7d/W |  |  | UDF_G3 |
| B3470 |  | Procurment for Polyurethane base paint | 5d | 2013-06-04 | 2013-06-07 | B3460 |  |  |  |  | 222.62d | 0d | OCEC Procurment/Curing-7d/W |  |  | UDF_G3 |
| B3120 |  | MIR for Epoxy Grout | 2.5d | 2013-06-08 | 2013-06-09 | B3140 |  |  |  |  | 60.75d | 42.75d |  |  |  | UDF_G3 |
| B3450 |  | MIR for Polyurethane base paint | 2.5d | 2013-06-08 | 2013-06-09 | B3470 |  |  |  |  | 155.12d | 141.12d |  |  |  | UDF_G3 |
| B1540 |  | MIR for Precast Concrete Tile (60 mm thick) | 2.5d | 2013-06-12 | 2013-06-15 | B1560 |  |  |  |  | 146.38d | 132.38d |  |  |  | UDF_G3 |
| B3180 |  | MIR for Bearing Pads | 2.5d | 2013-06-12 | 2013-06-15 | B3200 |  |  |  |  | 163.75d | 149.75d |  |  |  | UDF_G3 |
| B3420 |  | MIR for Bridge Deck Water Proofing (iso-cyaniteamin system - 2 mm thick) | 2.5d | 2013-06-12 | 2013-06-15 | B3440 |  |  |  |  | 117.75d | 101.25d |  |  |  | UDF_G3 |
| B1290 |  | MIR for Precast Curbs (Mountable and Non Mountable) | 2.5d | 2013-06-16 | 2013-06-17 | B1500 |  |  |  |  | 136.38d | 113d |  |  |  | UDF_G3 |
| A12500 |  | Backfilling & Ground Preprationfor Abutment & Piers at Span - 3 | 3.38d | 2013-07-07 | 2013-07-10 | A129, A151, A14830, B3150 SS |  |  |  |  | 19d | 0d |  | Operator [90 h]; Driver [45 h]; Grader [45 h]; Water tanker [45 h]; Tandem roller [45 h] |  | UDF_G1 |
| A12350 |  | Erection of Scaffolding for Span - 3 | 3.75d | 2013-07-10 | 2013-07-15 | A12500, A12360 |  |  |  |  | 19d | 0d |  | Crane mounted truck [60 h]; Foreman [60 h]; Carpenter [600 h]; Operator [60 h]; General worker [300 h] |  | UDF_G1 |
| B3090 |  | MIR for Bearings | 2.5d | 2013-07-14 | 2013-07-15 | B3110 |  |  |  |  | 24.5d | 2.75d |  |  | as for no. 1 |  |
| A15061 |  | Inspection of Scaffolding for Span - 3 | 1.25d | 2013-07-15 | 2013-07-16 | A12350 |  |  |  |  | 19d | 0d |  | Crane mounted truck [108 h]; Foreman [108 h]; Carpenter [1080 h]; Operator [108 h]; General worker [540 h] |  |  |
| A12720 |  | Backfilling & Ground Prepration for Abutment & Piers at Span - 1 | 3.38d | 2013-07-15 | 2013-07-20 | A173, A195, A10490 |  |  |  |  | 14d | 0d |  |  |  | UDF_G2 |
| A12510 |  | Bearings Installation for Pier - 2 A,B & Abutment - 2 | 2.25d | 2013-07-16 | 2013-07-17 | A12390, B3090 SS, A15061 |  |  |  |  | 21.75d | 0d |  | General worker [36 h]; Crane mounted truck [18 h]; Driver [18 h] | here | UDF_G4 |
| A15030 |  | Inspection of Bearings for Pier - 2 A,B & Abutment - 2 | 1.25d | 2013-07-20 | 2013-07-20 | A12510 |  |  |  |  | 21.75d | 0d |  | General worker [36 h]; Crane mounted truck [18 h]; Driver [18 h] |  |  |
| A12400 |  | Erection of Scaffolding for Span - 1 | 3.75d | 2013-07-20 | 2013-07-23 | A12720, A15061 |  |  |  |  | 16.5d | 0d |  | Foreman [30 h]; Operator [30 h]; Carpenter [300 h]; General worker [150 h]; Crane mounted truck [30 h] |  | UDF_G2 |
| A12730 |  | Backfilling & Ground Prepration for Piers at Span - 2 | 7.5d | 2013-07-20 | 2013-07-28 | A12720 |  |  |  |  | 14d | 0d |  |  |  | UDF_G2 |
| A12520 |  | Formwork for Stage - 1 at Span - 3 | 3.75d | 2013-07-21 | 2013-07-23 | A15030 |  |  |  |  | 21.75d | 0d |  | General worker [180 h]; Carpenter [360 h]; Foreman [60 h]; Operator [60 h]; Crane mounted truck [60 h] |  | UDF_G2 |
| A15062 |  | Inspection of Scaffolding for Span - 1 | 1.25d | 2013-07-23 | 2013-07-24 | A12400 |  |  |  |  | 16.5d | 0d |  | Foreman [54 h]; Operator [54 h]; Carpenter [540 h]; General worker [270 h]; Crane mounted truck [54 h] |  |  |
| A12560 |  | Reinforcement Fixing for Stage - 1 & 2 at Span - 3 | 7.5d | 2013-07-24 | 2013-07-31 | A12520, A12290 SS |  |  |  |  | 21.75d | 7.5d |  | Crane mounted truck [192 h]; Operator [192 h]; Steel fitter [1152 h]; General worker [576 h] |  | UDF_G2 |
| A12530 |  | Bearings Installation for Pier - 1 A,B & Abutment - 1 | 2.25d | 2013-07-24 | 2013-07-27 | A10370, A190, A168, B3120 SS, A15062 |  |  |  |  | 18d | 0d |  | Driver [18 h]; General worker [36 h]; Crane mounted truck [18 h] |  | UDF_G4 |
| A15040 |  | Inspection of Bearings for for Pier - 1 A,B & Abutment - 1 | 1.25d | 2013-07-28 | 2013-07-28 | A12530 |  |  |  |  | 18d | 0d |  | General worker [36 h]; Crane mounted truck [18 h]; Driver [18 h] |  |  |
| A12410 |  | Erection of Scaffolding for Span - 2 | 3.75d | 2013-07-28 | 2013-07-31 | A12730, A15062 |  |  |  |  | 14d | 0d |  | Foreman [18 h]; Operator [18 h]; Carpenter [180 h]; General worker [90 h]; Crane mounted truck [18 h] |  | UDF_G2 |
| A12540 |  | Formwork for Stage - 1 at Span - 1 | 3.75d | 2013-07-29 | 2013-07-31 | A12520, A15040 |  |  |  |  | 18d | 0d |  | General worker [90 h]; Carpenter [180 h]; Foreman [30 h]; Operator [30 h]; Crane mounted truck [30 h] |  | UDF_G3 |
| A15063 |  | Inspection of Scaffolding for Span - 2 | 1.25d | 2013-07-31 | 2013-08-03 | A12410 |  |  |  |  | 14d | 0d |  | Foreman [54 h]; Operator [54 h]; Carpenter [540 h]; General worker [270 h]; Crane mounted truck [54 h] |  |  |
| A12550 |  | Reinforcement Fixing for Stage - 1 & 2 at Span - 1 | 3.75d | 2013-08-03 | 2013-08-05 | A12540, A12560 SS |  |  |  |  | 18d | 4d |  | Crane mounted truck [48 h]; Operator [48 h]; Steel fitter [288 h]; General worker [144 h] |  | UDF_G3 |
| A12280 |  | Formwork for Stage - 1 at Span - 2 | 3.75d | 2013-08-03 | 2013-08-06 | A15063 |  |  |  |  | 14d | 0d |  | General worker [50 h]; Carpenter [100 h]; Foreman [16.67 h]; Operator [16.67 h]; Crane mounted truck [16.67 h] |  | UDF_G3 |
| A12420 |  | Reinforcement Fixing for Stage - 1 & 2 at Span - 2 | 3.75d | 2013-08-06 | 2013-08-13 | A12280, A12550 SS |  |  |  |  | 14d | 0d |  | Crane mounted truck [34.29 h]; Operator [34.29 h]; Steel fitter [205.71 h]; General worker [102.86 h] |  | UDF_G3 |
| A12570 |  | Provision of Prestressing Ducts | 3.38d | 2013-08-13 | 2013-08-17 | A12420, A12550, A12560, A12 |  |  |  |  | 14d | 0d |  | General worker [108 h]; Foreman [27 h]; Operator [27 h]; Crane mounted truck [27 h] |  | UDF_G3 |
| A12300 |  | Concreting for Stage - 1 | 1.12d | 2013-08-17 | 2013-08-18 | A12570, A75 |  |  |  |  | 14d | 0d |  | General worker [72 h]; Driver [40 h]; Foreman [16 h]; Transit mixer [40 h]; Concrete vibrator [32 h]; Concrete pump [16 h]; Air Compressor [8 h] |  | UDF_G3 |
| A12310 |  | Inner Formwork for Stage - 2 | 7.5d | 2013-08-18 | 2013-08-26 | A12300 |  |  |  |  | 14d | 0d |  | Carpenter [164.57 h]; General worker [82.29 h]; Operator [41.14 h]; Foreman [20.57 h]; Crane mounted truck [41.14 h] |  | UDF_G3 |
| A12320 |  | Concreting for Stage - 2 | 1d | 2013-08-26 | 2013-08-27 | A12310 |  |  |  |  | 14d | 0d |  | General worker [64 h]; Driver [40 h]; Foreman [16 h]; Transit mixer [40 h]; Concrete vibrator [32 h]; Concrete pump [16 h]; Air Compressor [8 h] |  | UDF_G3 |
| A12330 |  | Removal of Internal Side Shutters | 5d | 2013-08-28 | 2013-09-03 | A12320 FS+1d |  |  |  |  | 14d | 0d |  | Crane mounted truck [42.11 h]; Foreman [42.11 h]; Operator [42.11 h]; Carpenter [168.42 h]; General worker [168.42 h] |  |  |
| A12450 |  | Inner Formwork for Stage - 3 | 7.5d | 2013-09-03 | 2013-09-11 | A12330 |  |  |  |  | 14d | 0d |  | General worker [240 h]; Carpenter [480 h]; Foreman [60 h]; Operator [60 h]; Crane mounted truck [60 h] |  | UDF_G3 |
| A12440 |  | Reinforcement Fixing for Stage - 3 | 5d | 2013-09-11 | 2013-09-17 | A12450, A12430 SS+3.75d |  |  |  |  | 14d | 0d |  | Crane mounted truck [40 h]; Operator [40 h]; Steel fitter [480 h]; General worker [240 h] |  | UDF_G3 |
| A12580 |  | Side/Edge Shutters for Deck Slab | 3.38d | 2013-09-17 | 2013-09-22 | A12440 |  |  |  |  | 14d | 0d |  | Crane mounted truck [36 h]; Carpenter [216 h]; Operator [36 h]; Foreman [36 h]; General worker [108 h] |  | UDF_G3 |

| ID | WBS | Activity | Duration | Start | Finish | Predecessors | Total float | Free float | Calendar | Resources | Flag | user_text1 |
| --- | --- | --- | --- | --- | --- | --- | --- | --- | --- | --- | --- | --- |
| A12460 |  | Concreting for Stage - 3 | 1.12d | 2013-09-22 | 2013-09-22 | A12580 | 14d | 0d |  | Air Compressor [9 h]; Concrete pump [18 h]; Concrete vibrator [36 h]; Transit mixer [45 h]; Foreman [18 h]; Driver [45 h]; General worker [72 h] | UDF_G3 |  |
| A12590 |  | Curing for Deck Slab | 17.5d | 2013-09-23 | 2013-10-06 | A12460 | 19d | 0d | OCEC Procurment/Curing-7d/W |  |  |  |
| A12610 |  | Removal of Side/Edge Shutters for Deck Slab | 7.5d | 2013-09-23 | 2013-09-30 | A12460 | 19d | 5d |  | Crane mounted truck [24 h]; Foreman [24 h]; Operator [24 h]; General worker [48 h]; Carpenter [72 h] |  |  |
| A12600 |  | Removal of Inner Formwork For Stage - 3 | 3.75d | 2013-10-07 | 2013-10-09 | A12610, A12590 | 14d | 0d |  | Crane mounted truck [20 h]; Foreman [20 h]; Operator [20 h]; General worker [40 h]; Carpenter [80 h] |  |  |
| A12620 |  | Reinforcement Fixing for Crash Barriers | 7.5d | 2013-10-07 | 2013-10-14 | A12590, A12750, A12610 | 14d | 0d |  | General worker [240 h]; Carpenter [180 h]; Mason [120 h]; Operator [60 h]; Foreman [60 h]; Crane mounted truck [60 h]; Concrete vibrator [120 h]; Transit mixer [120 h]; Driver [120 h] | UDF_G3 |  |
| A12700 |  | Water Proofing Membrane for Deck Slab | 5d | 2013-10-07 | 2013-10-12 | A12590, B3420 SS | 16.5d | 2.5d |  | Foreman [40 h]; General worker [40 h] | UDF_G3 |  |
| A12680 |  | Removal of Out Side Shutters | 3.75d | 2013-10-12 | 2013-10-14 | A12600 | 14d | 0d |  | Crane mounted truck [24 h]; Foreman [24 h]; Operator [24 h]; General worker [48 h]; Carpenter [96 h] |  |  |
| A12690 |  | Provision of Ducts Within Bridge Box | 3.75d | 2013-10-12 | 2013-10-14 | A12600 | 14d | 0d |  | Crane mounted truck [5.33 h]; Operator [5.33 h]; Foreman [5.33 h]; General worker [21.33 h] | UDF_G3 |  |
| A12340 |  | Post Tensioning Operation | 3.38d | 2013-10-15 | 2013-10-19 | A12590, A12460 FS+15.75d, A12690, A12600, A12680, A12620, A12700 | 14d | 0d |  |  |  |  |
| A12470 |  | Grouting for Post Tensioned Ducts | 3.38d | 2013-10-19 | 2013-10-22 | A12340 | 14d | 0d |  |  | UDF_G3 |  |
| A12670 |  | Provision of Access Doors | 12.5d | 2013-10-19 | 2013-11-02 | A12690, A12340 | 29.25d | 15.25d |  | Foreman [44.44 h]; General worker [44.44 h] | UDF_G3 |  |
| A12640 |  | Precast Concrete Curbs for Side Walk | 7.5d | 2013-10-22 | 2013-10-30 | A12700, A12470, B1290 SS | 23.38d | 9.38d |  | Mason [90 h]; General worker [180 h] | UDF_G3 |  |
| A12740 |  | Concreting for Crash Barriers by Using Prefabricated Molds | 16.88d | 2013-10-22 | 2013-11-10 | A12620, A12470 | 14d | 0d |  |  | UDF_G3 |  |
| A12650 |  | Precast Concrete Tile Paving for Side Walk | 7.5d | 2013-11-10 | 2013-11-18 | A12640, A12470, A12740, B1540 SS | 14d | 0d |  | Mason [90 h]; General worker [180 h] | UDF_G3 |  |
| A12660 |  | Painting Works for Bridge | 3.75d | 2013-11-13 | 2013-11-18 | A12680, A12650 FF, A12740, B3450 SS | 14d | 0d |  | Mason [126 h]; General worker [126 h] | UDF_G4 |  |
| A12630 |  | Dismantling of Complete Scaffolding | 3.75d | 2013-11-18 | 2013-11-25 | A12660, A12670 | 14d | 0d |  | Carpenter [90 h]; General worker [180 h]; Operator [30 h]; Foreman [30 h]; Crane mounted truck [30 h] |  |  |
| A12710 |  | Completion of Box Girder Bridge - West Bound | 1d | 2013-11-25 | 2013-11-25 | A12630 FF | 14d | 0d |  |  |  |  |
|  | 2 | **Box Girder - East Bound** |  | 2013-04-23 | 2013-12-21 |  |  |  |  |  |  |  |
| A13440 |  | Preparation & Submission of Shop Drawing for Box Girder | 5d | 2013-04-23 | 2013-04-28 | A12380 SS | 46.62d | 0d |  |  |  |  |
| A13450 |  | Approval of Shop Drawing for Box Girder | 16.88d | 2013-04-29 | 2013-05-18 | A13440 | 70d | 0d |  |  |  |  |
| A13540 |  | Preparation & Submission of Bar Schedule Drawing | 5d | 2013-04-29 | 2013-05-04 | A13440 | 108.5d | 0d |  |  |  |  |
| A13550 |  | Approval of Bar Schedule Drawing | 16.88d | 2013-05-05 | 2013-05-22 | A13540 | 108.5d | 0d |  |  |  |  |
| A13430 |  | Preparation & Submission of Scaffolding Design and Drawing for Approval | 5d | 2013-05-18 | 2013-05-22 | A13440, A13450 | 70d | 0d |  |  |  |  |
| A13570 |  | Bearings Installation for Pier - 1 A,B & Abutment - 1 | 2.25d | 2013-05-18 | 2013-05-20 | A13450 | 101.25d | 0d |  | General worker [36 h]; Driver [18 h]; Crane mounted truck [18 h] | UDF_G2 | here |
| A15050 |  | Inspection of Bearings for Pier - 1 A,B & Abutment - 1 | 1.25d | 2013-05-20 | 2013-05-21 | A13570 | 101.25d | 0d |  | General worker [36 h]; Crane mounted truck [18 h]; Driver [18 h] |  |  |
| A13580 |  | Formwork for Stage - 1 at Span - 3 | 6.25d | 2013-05-21 | 2013-05-28 | A15050 | 101.25d | 0d |  | General worker [300 h]; Carpenter [600 h]; Foreman [100 h]; Operator [100 h]; Crane mounted truck [100 h] | UDF_G3 |  |
| A13350 |  | Reinforcement Cutting & Bending for Stage - 1 & 2 (Span-1,2 & 3) | 7.5d | 2013-05-22 | 2013-06-01 | A13540, A13550 | 108.5d | 0d |  | Steel fitter [981.82 h]; General worker [490.91 h]; Foreman [40.91 h]; Crane mounted truck [81.82 h]; Bar cutting machine [70.3 h]; Bar bending machine [70.3 h]; Operator [81.82 h] | UDF_G1 |  |
| A13420 |  | Approval for Scaffolding Design and Drawing | 17.5d | 2013-05-22 | 2013-06-11 | A13430 | 70d | 55d |  |  |  |  |
| A13490 |  | Reinforcement Cutting & Bending for Stage - 3 | 7.5d | 2013-05-27 | 2013-06-04 | A13350 SS+3.75d | 127.88d | 0d |  | Crane mounted truck [12.12 h]; Operator [12.12 h]; Steel fitter [290.91 h]; General worker [145.45 h]; Bar bending machine [24.24 h]; Bar cutting machine [24.24 h] | UDF_G1 |  |
| A13620 |  | Reinforcement Fixing for Stage - 1 & 2 at Span - 1 | 8.75d | 2013-05-28 | 2013-06-08 | A13580, A13350 SS | 103.75d |  |  | Crane mounted truck [224 h]; Operator [224 h]; Steel fitter [1344 h]; General worker [672 h] | UDF_G4 |  |
| A13810 |  | Reinforcement Cutting & Bending for Crash Barriers & Street Light Foundations | 18.75d | 2013-06-01 | 2013-06-22 | A13490 SS+3.75d | 143.75d | 141.25d |  |  | UDF_G2 |  |
| A13560 |  | Backfilling & Ground Preprationfor Abutment & Piers at Span - 1 | 2.5d | 2013-08-12 | 2013-08-14 | A217, A239, A14600 | 15d | 0d |  | Tandem roller [26.67 h]; Water tanker [26.67 h]; Grader [26.67 h]; Driver [26.67 h]; Operator [53.33 h] | UDF_G3 |  |
| A13410 |  | Erection of Scaffolding for Span - 1 | 3.75d | 2013-08-14 | 2013-08-19 | A13560, A13420 | 15d | 0d |  | Crane mounted truck [600 h]; Canter [200 h]; Foreman [400 h]; Carpenter [2666.67 h]; Operator [533.33 h]; General worker [1400 h]; Driver [266.67 h] | UDF_G4 |  |
| A15064 |  | Inspection of Scaffolding for Span - 1 | 3.75d | 2013-08-19 | 2013-08-24 | A13410 | 15d |  |  | Crane mounted truck [3240 h]; Canter [1080 h]; Foreman [2160 h]; Carpenter [14400 h]; Operator [2880 h]; General worker [7560 h]; Driver [1440 h] |  |  |
| A13780 |  | Backfilling & Ground Preprationfor Abutment & Piers at Span - 3 | 2.5d | 2013-09-07 | 2013-09-09 | A11200, A11420, A14370 | 0d |  |  |  | UDF_G1 |  |
| A13460 |  | Erection of Scaffolding for Span - 3 | 3.75d | 2013-09-09 | 2013-09-14 | A13780, A15064 | 0d |  |  | Foreman [30 h]; Operator [30 h]; Carpenter [300 h]; General worker [150 h]; Crane mounted truck [30 h] | UDF_G1 |  |
| A13790 |  | Backfilling & Ground Preprationfor Abutment & Piers at Span - 2 | 3.75d | 2013-09-09 | 2013-09-14 | A13780 | 3.5d | 1.25d |  |  | UDF_G4 |  |
| A15066 |  | Inspection of Scaffolding for Span - 3 | 1.25d | 2013-09-14 | 2013-09-15 | A13460 | 0d |  |  | Foreman [54 h]; Operator [54 h]; Carpenter [540 h]; General worker [270 h]; Crane mounted truck [54 h] |  |  |
| A13470 |  | Erection of Scaffolding for Span - 2 | 3.75d | 2013-09-15 | 2013-09-18 | A13790, A15064, A15066 | 2.25d | 0d |  | Foreman [18 h]; Operator [18 h]; Carpenter [180 h]; General worker [90 h]; Crane mounted truck [18 h] | UDF_G4 |  |
| A13590 |  | Bearings Installation for Pier - 2 A,B & Abutment - 2 | 2.25d | 2013-09-15 | 2013-09-17 | A15066 | 0d |  |  | General worker [36 h]; Driver [18 h]; Crane mounted truck [18 h] | UDF_G2 |  |
| A15060 |  | Inspection of Bearings for Pier - 2 A,B & Abutment - 2 | 3.75d | 2013-09-17 | 2013-09-22 | A13590 | 0d |  |  | General worker [108 h]; Crane mounted truck [54 h]; Driver [54 h] |  |  |
| A15065 |  | Inspection of Scaffolding for Span - 2 | 3.75d | 2013-09-18 | 2013-09-23 | A13470 | 2.25d |  |  | Foreman [162 h]; Operator [162 h]; Carpenter [1620 h]; General worker [810 h]; Crane mounted truck [162 h] |  |  |
| A13600 |  | Formwork for Stage - 1 at Span - 1 | 3.75d | 2013-09-22 | 2013-09-25 | A13580, A15060 | 0d |  |  | General worker [30 h]; Carpenter [180 h]; Foreman [30 h]; Operator [90 h]; Crane mounted truck [30 h] | UDF_G4 |  |
| A13340 |  | Formwork for Stage - 1 at Span - 2 | 3.75d | 2013-09-25 | 2013-09-30 | A13600, A15065 | 0d |  |  | Carpenter [100 h]; Foreman [16.67 h]; General worker [50 h]; Operator [16.67 h]; Crane mounted truck [16.67 h] | UDF_G4 |  |
| A13610 |  | Reinforcement Fixing for Stage - 1 & 2 at Span - 3 | 6.25d | 2013-09-25 | 2013-10-02 | A13600, A13620 SS | 1.25d |  |  | Crane mounted truck [80 h]; Operator [80 h]; Steel fitter [480 h]; General worker [240 h] | UDF_G3 |  |
| A13480 |  | Reinforcement Fixing for Stage - 1 & 2 at Span - 2 | 3.75d | 2013-09-30 | 2013-10-05 | A13340, A13610 SS | 0d |  |  | Crane mounted truck [34.29 h]; Operator [34.29 h]; Steel fitter [205.71 h]; General worker [102.86 h] | UDF_G2 |  |
| A13630 |  | Provision of Prestressing Ducts | 3.38d | 2013-09-30 | 2013-10-05 | A13480 FF, A13610 FF, A13620 FF, A12 | 0d |  |  | Crane mounted truck [27 h]; Operator [27 h]; Foreman [27 h]; General worker [108 h] | UDF_G2 |  |
| A13360 |  | Concreting for Stage - 1 | 1.12d | 2013-10-05 | 2013-10-06 | A13630 | 0d |  |  | General worker [72 h]; Driver [45 h]; Foreman [16 h]; Transit mixer [45 h]; Concrete vibrator [32 h]; Concrete pump [16 h]; Air Compressor [8 h] | UDF_G2 |  |
| A13370 |  | Inner Formwork for Stage - 2 | 3.75d | 2013-10-06 | 2013-10-09 | A13360 | 0d |  |  | Carpenter [240 h]; General worker [120 h]; Operator [60 h]; Foreman [30 h]; Crane mounted truck [60 h] | UDF_G2 |  |
| A13380 |  | Concreting for Stage - 2 | 1d | 2013-10-09 | 2013-10-09 | A13370 | 0d |  |  | General worker [64 h]; Driver [40 h]; Foreman [16 h]; Transit mixer [40 h]; Concrete vibrator [32 h]; Concrete pump [16 h]; Air Compressor [8 h] | UDF_G2 |  |
| A13390 |  | Removal of Internal Side Shutters | 3.75d | 2013-10-12 | 2013-10-15 | A13380 FS+1d | 0d |  |  | Crane mounted truck [31.58 h]; Foreman [31.58 h]; Operator [31.58 h]; Driver [31.58 h]; Carpenter [126.32 h]; General worker [60 h] |  |  |
| A13510 |  | Inner Formwork for Stage - 3 | 3.75d | 2013-10-15 | 2013-10-20 | A13390 | 0d |  |  | General worker [120 h]; Carpenter [240 h]; Foreman [30 h]; Operator [60 h]; Crane mounted truck [60 h] | UDF_G2 |  |
| A13500 |  | Reinforcement Fixing for Stage - 3 | 3.75d | 2013-10-20 | 2013-10-23 | A13510, A13490 SS | 0d |  |  | Crane mounted truck [30 h]; Operator [30 h]; Steel fitter [360 h]; General worker [180 h] | UDF_G2 |  |
| A13640 |  | Side/Edge Shutters for Deck Slab | 2.25d | 2013-10-23 | 2013-10-27 | A13500 | 0d |  |  | Crane mounted truck [36 h]; Foreman [36 h]; Operator [36 h]; General worker [108 h]; Carpenter [216 h] | UDF_G2 |  |
| A13520 |  | Concreting for Stage - 3 | 1.12d | 2013-10-27 | 2013-10-28 | A13640 | 0d |  |  | General worker [72 h]; Driver [45 h]; Foreman [9 h]; Transit mixer [45 h]; Concrete vibrator [36 h]; Concrete pump [18 h]; Air Compressor [9 h] | UDF_G2 |  |
| A13650 |  | Curing for Deck Slab | 17.5d | 2013-10-28 | 2013-11-11 | A13520 | 0d |  | OCEC Procurment/Curing-7d/W |  |  |  |
| A13670 |  | Removal of Side/Edge Shutters for Deck Slab | 8.75d | 2013-10-28 | 2013-11-06 | A13520 | 6.25d | 3.75d |  | Crane mounted truck [28 h]; Foreman [28 h]; Operator [28 h]; General worker [56 h]; Carpenter [84 h] |  |  |
| A13660 |  | Removal of Inner Formwork For Stage - 3 | 3.75d | 2013-11-11 | 2013-11-16 | A13650 | 0d |  |  | Crane mounted truck [20 h]; Foreman [20 h]; Operator [20 h]; General worker [40 h]; Carpenter [80 h] |  |  |
| A13680 |  | Reinforcement Fixing for Crash Barriers & Street Light Foundations | 5d | 2013-11-11 | 2013-11-17 | A13650, A13810 SS+2.5d, A13670 | 2.5d |  |  | General worker [160 h]; Carpenter [120 h]; Mason [80 h]; Operator [40 h]; Foreman [40 h]; Crane mounted truck [40 h]; Concrete vibrator [80 h]; Transit mixer [80 h]; Driver [80 h] | UDF_G2 |  |
| A13760 |  | Water Proofing Membrane for Deck Slab | 5d | 2013-11-11 | 2013-11-17 | A13650 | 2.5d |  |  | Foreman [40 h]; General worker [40 h] | UDF_G2 |  |
| A13740 |  | Removal of Out Side Shutters | 3.75d | 2013-11-16 | 2013-11-23 | A13660 | 0d |  |  | Crane mounted truck [24 h]; Foreman [24 h]; Operator [24 h]; General worker [48 h]; Carpenter [96 h] |  |  |
| A13750 |  | Provision of Ducts Within Bridge Box | 3.75d | 2013-11-16 | 2013-11-23 | A13660 | 0d |  |  | Crane mounted truck [5.33 h]; Operator [5.33 h]; Foreman [5.33 h]; General worker [21.33 h] | UDF_G2 |  |
| A13400 |  | Post Tensioning Operation | 3.38d | 2013-11-23 | 2013-11-26 | A13650, A13660, A13520 FS+15.75d, A13740, A13680, A13750, A13760 | 0d |  |  |  |  |  |
| A13530 |  | Grouting for Post Tensioned Ducts | 3.38d | 2013-11-26 | 2013-11-30 | A13400 | 0d |  |  |  | UDF_G2 |  |
| A13730 |  | Provision of Access Doors | 3.75d | 2013-11-26 | 2013-12-01 | A13750, A13400 | 10.88d |  |  | Foreman [13.33 h]; General worker [13.33 h] | UDF_G2 |  |
| A13700 |  | Precast Concrete Curbs for Side Walk | 3.75d | 2013-11-30 | 2013-12-03 | A13760, A13530 | 7.5d |  |  | Mason [37.5 h]; General worker [75 h] | UDF_G2 |  |
| A13800 |  | Concreting for Crash Barriers & Street Light Foundations by Using Prefabricated Molds | 11.25d | 2013-11-30 | 2013-12-11 | A13530 | 0d |  |  |  | UDF_G2 |  |
| A13710 |  | Precast Concrete Tile Paving for Side Walk | 3.75d | 2013-12-11 | 2013-12-16 | A13700, A13530, A13800 | 0d |  |  | Mason [42.86 h]; General worker [85.71 h] | UDF_G2 |  |
| A13720 |  | Painting Works for Bridge | 3.75d | 2013-12-11 | 2013-12-16 | A13740, A13730, A13710 FF, A13800 | 0d |  |  | Mason [60 h]; General worker [60 h] | UDF_G3 |  |
| A13690 |  | Dismantling of Complete Scaffolding | 3.75d | 2013-12-16 | 2013-12-21 | A13720, A13730 | 0d |  |  | General worker [180 h]; Operator [30 h]; Foreman [30 h]; Crane mounted truck [30 h]; Carpenter [90 h] |  |  |

| ID | WBS | Activity | Type | Duration | Start | Finish | Predecessors | Total float | Free float | Resources | Flag |
| --- | --- | --- | --- | --- | --- | --- | --- | --- | --- | --- | --- |
| A13770 |  | Completion of Box Girder Bridge - East Bound | milestone | 0d | 2013-12-21 | 2013-12-21 | A13690 FF | 0d |  |  |  |
|  | 4 | **Approch Slab Construction for Bridges** |  |  | 2013-08-07 | 2014-01-04 |  |  |  |  |  |
| A14860 |  | Preparation & Submission of Shop Drawings for All Back Hanging Walls |  | 7.5d | 2013-08-07 | 2013-08-18 | A13440 FS+90d | 46.62d | 0d |  |  |
| A14900 |  | Preparation & Submission of Shop Drawings for All Approch Slabs |  | 7.5d | 2013-08-07 | 2013-08-18 | A14860 SS | 54.12d | 0d |  |  |
| A14870 |  | Preparation & Submission of Bar Schedule Drawings for All Back Hanging Walls |  | 7.5d | 2013-08-19 | 2013-08-26 | A14860 | 46.62d | 0d |  |  |
| A14880 |  | Approval of Shop Drawings for All Back Hanging Walls |  | 17.5d | 2013-08-19 | 2013-09-07 | A14860 | 82.62d | 68.62d |  |  |
| A14910 |  | Preparation & Submission of Bar Schedule Drawings for All Approch Slabs |  | 3.75d | 2013-08-19 | 2013-08-21 | A14900 | 54.12d | 0d |  |  |
| A14920 |  | Approval of Shop Drawings for All Approch Slabs |  | 17.5d | 2013-08-19 | 2013-09-07 | A14900 | 88.12d | 74.12d |  |  |
| A14930 |  | Approval of Bar Schedule Drawings for for All Approch Slabs |  | 17.5d | 2013-08-24 | 2013-09-10 | A14910 | 54.12d | 7.5d |  |  |
| A14890 |  | Approval of Bar Schedule Drawings for All Back Hanging Walls |  | 17.5d | 2013-08-27 | 2013-09-15 | A14870 | 46.62d | 0d |  |  |
| A14840 |  | Reinforcement Cutting & Bending for All Back Hanging Walls |  | 6.25d | 2013-09-16 | 2013-09-22 | A12750 SS, A14890 | 46.62d | 0d | Bar bending machine [150 h]; Bar cutting machine [150 h]; Steel fitter [600 h]; General worker [600 h]; Foreman [150 h]; Operator [300 h] | UDF_G1 |
| A14850 |  | Reinforecment Cutting & Bending for All Approch Slabs |  | 31.25d | 2013-09-21 | 2013-10-23 | A14840 SS+3.75d, A14930 | 46.62d | 32.62d | Bar bending machine [1250 h]; Bar cutting machine [1250 h]; Steel fitter [2500 h]; General worker [2500 h]; Foreman [1250 h]; Operator [2500 h] | UDF_G1 |
|  | 1 | **Approch Slabs - West Bound** |  |  | 2013-11-25 | 2013-12-08 |  |  |  |  |  |
| A12840 |  | Reinforcement Fixing for Back Hanging Walls at Abutment - 1 & 2 WB |  | 1d | 2013-11-25 | 2013-11-26 | A12470, A14840, A14880, A12710 | 14d | 0d | General worker [40 h]; Steel fitter [40 h]; Crane mounted truck [8 h]; Foreman [8 h] | UDF_G1 |
| A12850 |  | Formwork for Back Hanging Walls at Abutment - 1 & 2 WB |  | 1d | 2013-11-26 | 2013-11-27 | A12840 | 14d | 0d | Carpenter [16 h]; General worker [16 h]; Crane mounted truck [8 h]; Operator [8 h] | UDF_G1 |
| A12860 |  | Concreting for Back Hanging Walls at Abutment - 1 & 2 WB |  | 1d | 2013-11-27 | 2013-11-30 | A12850 | 14d | 0d | Transit mixer [8 h]; Concrete pump [8 h]; Concrete vibrator [8 h]; General worker [40 h]; Foreman [8 h]; Operator [30 h]; Driver [8 h]; Mason [40 h]; Air Compressor [8 h] | UDF_G1 |
| A12870 |  | Removal of Formwork for Back Hanging Walls at Abutment - 1 & 2 WB |  | 1.25d | 2013-11-30 | 2013-12-01 | A12860 | 14d | 0d | Carpenter [40 h]; General worker [40 h]; Crane mounted truck [20 h]; Foreman [20 h]; Operator [20 h] |  |
| A12930 |  | Granular Back Fill at Hanging Wall |  | 1.25d | 2013-12-01 | 2013-12-02 | A12870 | 14d | 0d | Driver [60 h]; Foreman [30 h]; Operator [120 h]; Pedestrain roller [60 h]; Water tanker [60 h]; Grader [60 h]; General worker [180 h] | UDF_G1 |
| A12880 |  | Blinding Concrete for Approch Slabs at WB |  | 1d | 2013-12-02 | 2013-12-03 | A12870, A14920, A12930 | 14d | 0d | Mason [20 h]; General worker [20 h]; Driver [8 h]; Transit mixer [8 h]; Foreman [8 h] | UDF_G1 |
| A12890 |  | Reinforcement Fixing for Approach Slabs |  | 1.12d | 2013-12-03 | 2013-12-03 | A12880, A14850 | 14d | 0d | General worker [40 h]; Steel fitter [36 h]; Crane mounted truck [9 h] | UDF_G1 |
| A12900 |  | Side Shutters for Approach Slabs |  | 1d | 2013-12-04 | 2013-12-04 | A12890 | 14d | 0d | Carpenter [16 h]; General worker [16 h]; Crane mounted truck [8 h]; Foreman [8 h]; Operator [8 h] | UDF_G1 |
| A12910 |  | Concreting for Approach Slabs |  | 1d | 2013-12-04 | 2013-12-07 | A12900, B3180 | 14d | 0d | Transit mixer [16 h]; Driver [16 h]; Concrete pump [8 h]; Concrete vibrator [8 h]; General worker [40 h]; Foreman [8 h]; Operator [30 h]; Mason [40 h]; Air Compressor [8 h] | UDF_G1 |
| A12920 |  | Removal of Approch Slab Side Shutters |  | 1.25d | 2013-12-07 | 2013-12-08 | A12910 | 14d | 0d | Carpenter [40 h]; General worker [40 h]; Crane mounted truck [10 h]; Foreman [10 h]; Operator [10 h] |  |
| A12940 |  | Completion of Approach Slab Construction - West Bound |  | 1d | 2013-12-07 | 2013-12-08 | A12920 FF | 14d | 12.88d |  |  |

| ID | WBS | Activity | Type | Duration | Start | Finish | Predecessors | Complete | Remaining | Planned start | Planned finish | Total float | Free float | Calendar | Resources | Flag | user_text1 |
| --- | --- | --- | --- | --- | --- | --- | --- | --- | --- | --- | --- | --- | --- | --- | --- | --- | --- |
|  | 2 | **Approch Slabs - East Bound** |  |  | 2013-12-21 | 2014-01-04 |  |  |  |  |  |  |  |  |  |  |  |
| A10900 |  | Reinforcement Fixing for Back Hanging Walls at Abutment - 1 & 2 EB |  | 1.12d | 2013-12-21 | 2013-12-22 | A13530, A14840 SS, A13770 |  |  |  |  | 0d |  |  | General worker [40 h]; Steel fitter [36 h]; Foreman [9 h]; Crane mounted truck [9 h] | UDF_G1 |  |
| A10910 |  | Formwork for Back Hanging Walls at Abutment - 1 & 2 EB |  | 1.12d | 2013-12-22 | 2013-12-23 | A10900, A12870 |  |  |  |  | 0d |  |  | Carpenter [18 h]; General worker [18 h]; Crane mounted truck [9 h]; Foreman [9 h]; Operator [9 h] | UDF_G1 |  |
| A10920 |  | Concreting for Back Hanging Walls at Abutment - 1 & 2 EB |  | 1.12d | 2013-12-23 | 2013-12-24 | A10910 |  |  |  |  | 0d |  |  | Transit mixer [9 h]; Driver [9 h]; Concrete pump [9 h]; Concrete vibrator [9 h]; General worker [40 h]; Foreman [9 h]; Operator [30 h]; Mason [40 h]; Air Compressor [9 h] | UDF_G1 |  |
| A10930 |  | Removal of Formwork for Back Hanging Walls at Abutment - 1 & 2 EB |  | 1.25d | 2013-12-24 | 2013-12-25 | A10920 |  |  |  |  | 0d |  |  | Carpenter [40 h]; General worker [40 h]; Crane mounted truck [20 h]; Foreman [20 h] |  |  |
| A10990 |  | Granular Back Fill at Hanging Wall |  | 1.25d | 2013-12-25 | 2013-12-28 | A10930 |  |  |  |  | 0d |  |  | Pedestrain roller [60 h]; Operator [120 h]; Foreman [16.67 h]; Grader [60 h]; Water tanker [60 h]; Driver [60 h]; General worker [180 h] | UDF_G1 |  |
| A10940 |  | Blinding Concrete for Approch Slabs at EB |  | 1.12d | 2013-12-28 | 2013-12-29 | A10930, A10990 |  |  |  |  | 0d |  |  | Mason [20 h]; General worker [20 h]; Driver [9 h]; Transit mixer [9 h]; Foreman [9 h] | UDF_G1 |  |
| A10950 |  | Reinforcement Fixing for Approach Slabs |  | 1.12d | 2013-12-29 | 2013-12-30 | A10940, A14850 SS |  |  |  |  | 0d |  |  | General worker [40 h]; Steel fitter [36 h] | UDF_G1 |  |
| A10960 |  | Side Shutters for Approach Slabs |  | 1.12d | 2013-12-30 | 2013-12-31 | A10950 |  |  |  |  | 0d |  |  | Carpenter [18 h]; General worker [18 h]; Crane mounted truck [9 h]; Foreman [9 h]; Operator [9 h] | UDF_G1 |  |
| A10970 |  | Concreting for Approach Slabs |  | 1.12d | 2013-12-31 | 2014-01-01 | A10960 |  |  |  |  | 0d |  |  | Transit mixer [18 h]; Driver [18 h]; Concrete pump [9 h]; Concrete vibrator [9 h]; General worker [40 h]; Foreman [9 h]; Operator [30 h]; Mason [40 h]; Air Compressor [9 h] | UDF_G1 |  |
| A10980 |  | Removal of Approch Slab Side Shutters |  | 1.25d | 2014-01-01 | 2014-01-04 | A10970 |  |  |  |  | 0d |  |  | Carpenter [40 h]; General worker [40 h]; Crane mounted truck [20 h]; Operator [20 h]; Foreman [20 h] |  |  |
| A11000 |  | Completion of Approach Slab Construction - East Bound |  | 1d | 2014-01-01 | 2014-01-04 | A10980 FF |  |  |  |  | 0d |  |  |  |  |  |
|  | 3 | **Construction of MSE Wall** |  |  | 2013-03-13 | 2013-12-22 |  |  |  |  |  |  |  |  |  |  |  |
| B2051 |  | Prepartion & Submission of MSE wall materials & Accessories for approval |  | 10d | 2013-03-13 A | 2013-03-25 A | A3 | 100% |  | 2013-04-23 | 2013-05-04 |  |  |  |  | UDF_G3 | March 2013 |
| B2050 |  | Approval of MSE wall materials & Accessories for approval |  | 27.5d | 2013-03-25 A | 2013-04-24 | B2051 | 80% | 2.5d | 2013-04-23 | 2013-05-22 | 16.62d | 0d |  |  |  | 2 |
| B2053 |  | Deployment of MSE Wall materials supplier & design subcontractor |  | 11.25d | 2013-04-27 | 2013-05-07 | B2050 |  |  |  |  | 16.62d | 0d |  |  |  |  |
| B2060 |  | Procurment MSE wall materials & Accessories |  | 157.5d | 2013-05-08 | 2013-09-10 | B2050, B2053 |  |  |  |  | 24.12d | 23d | OCEC Procurment/Curing-7d/W |  |  |  |
| B2052 |  | Soil Investigation |  | 27d | 2013-07-13 | 2013-08-14 | A9 |  |  |  |  | 1.12d | 0d |  |  |  |  |
| A14040 |  | Prepare & Submission of MSE Wall Design & Drawings |  | 5d | 2013-08-14 | 2013-08-20 | A9 SS, B2052, B2053 |  |  |  |  | 1.12d | 0d |  |  |  |  |
| B1961 |  | Prepartion & Submission for Backfill Material for Approval |  | 10d | 2013-08-14 | 2013-08-26 | A3, B2052 |  |  |  |  | 91d | 0d |  |  | UDF_G4 | April 2013 |
| A14050 |  | Approval of MSE Wall Design & Drawings |  | 17.5d | 2013-08-20 | 2013-09-09 | A14040 |  |  |  |  | 1.12d | 0d |  |  |  |  |
| B1960 |  | Approval of Backfill Material for MSE Wall |  | 27.5d | 2013-08-26 | 2013-09-25 | B1961 |  |  |  |  | 91d | 0d |  |  |  | 3 |
| A14070 |  | Precasting of MSE Wall Pannels |  | 67.5d | 2013-09-09 | 2013-11-26 | A14050 |  |  |  |  | 13.38d | 12.25d |  | Bar bending machine [540 h]; Bar cutting machine [540 h]; Water tanker [540 h]; Carpenter [2160 h]; Steel fitter [2160 h]; General worker [2160 h]; Concrete vibrator [1080 h]; Driver [540 h]; Operator [2160 h]; Mason [2160 h] | UDF_G1 |  |
| A14100 |  | Setting Out for MSE Wall Foundations |  | 4.5d | 2013-09-09 | 2013-09-14 | A14050 |  |  |  |  | 1.12d | 0d |  | General worker [80 h]; Surveyor [36 h]; Surveying Instruments [36 h] |  |  |
| A14110 |  | Structural Excavation for MSE Wall Foundation |  | 5d | 2013-09-14 | 2013-09-18 | A14100 |  |  |  |  | 1.12d | 0d |  | Operator [180 h]; Back hoe loader [40 h]; Foreman [40 h]; Excavator [40 h] | UDF_G1 |  |
| A14080 |  | Bed Prepration for MSE Wall Foundations |  | 11.25d | 2013-09-18 | 2013-10-01 | A14110 |  |  |  |  | 1.12d | 0d |  | Plate compactor [90 h]; General worker [315 h]; Foreman [90 h] | UDF_G1 |  |
| A14120 |  | Construction of MSE Wall Foundations |  | 10d | 2013-09-24 | 2013-10-06 | A14080 SS+5d, A14830 FF, A14370 FF, A14600 FF, A10490 FF |  |  |  |  | 1.12d | 0d |  | General worker [840 h]; Steel fitter [280 h]; Carpenter [280 h]; Operator [840 h]; Driver [420 h]; Transit mixer [280 h]; Bar bending machine [80 h]; Bar cutting machine [80 h]; Concrete vibrator [280 h]; Mason [280 h]; Foreman [80 h]; Air Compressor [80 h] | UDF_G1 |  |
| B1970 |  | Procurment of Backfill Material for MSE Wall |  | 10d | 2013-09-25 | 2013-10-03 | B1960 |  |  |  |  | 131d |  | OCEC Procurment/Curing-7d/W |  | UDF_G3 |  |
| A14090 |  | Construction of MSE Wall |  | 61.88d | 2013-09-29 | 2013-12-09 | A14070 SS, A14120 SS+3.38d, B2060, A14070 FF |  |  |  |  | 1.12d | 0d |  | Crane mounted truck [495 h]; Pedestrain roller [495 h]; Front end loader [495 h]; Water tanker [495 h]; Foreman [495 h]; Operator [1683 h]; Driver [1683 h]; General worker [2244 h]; Canter [1122 h]; Concrete vibrator [495 h]; Mason [2244 h] | UDF_G1 |  |
| A14130 |  | Standard Coping & Parapet Construction for MSE Wall |  | 11.25d | 2013-12-09 | 2013-12-22 | A14090 |  |  |  |  | 1.12d | 0d |  | Steel fitter [146.25 h]; General worker [438.75 h]; Carpenter [146.25 h]; Driver [90 h]; Foreman [90 h]; Crane mounted truck [90 h]; Concrete vibrator [146.25 h]; Operator [253.12 h]; Mason [146.25 h] | UDF_G1 |  |
| A14140 |  | Completion of MSE Wall Constructions | milestone | 0d | 2013-12-22 | 2013-12-22 | A14130 FF |  |  |  |  | 1.12d | 0d |  |  |  |  |

| ID | WBS | Activity | Type | Duration | Start | Finish | Predecessors | Complete | Remaining | Planned start | Planned finish | Total float | Free float | Calendar | Resources | user_text1 | Flag |
| --- | --- | --- | --- | --- | --- | --- | --- | --- | --- | --- | --- | --- | --- | --- | --- | --- | --- |
|  | 5 | **Finishing Works for Bridges** |  |  | 2013-01-28 | 2014-01-11 |  |  |  |  |  |  |  |  |  |  |  |
|  | 6 | **Finishing Works for Bridge - West Bound** |  |  | 2013-01-28 | 2014-01-08 |  |  |  |  |  |  |  |  |  |  |  |
| A15118 |  | Prepartion & Submission for Bridge Railing |  | 10d | 2013-01-28 A | 2013-03-11 A | A3 | 100% |  | 2013-04-23 | 2013-05-04 |  |  |  |  | 63 |  |
| A24 |  | MAR for Bridge Railing |  | 27.5d | 2013-01-28 A | 2013-03-11 A | A15118 | 100% |  | 2013-04-23 | 2013-05-22 |  |  |  |  | 63 | UDF_G1 |
| A39 |  | Procurment for Bridge Railing |  | 10d | 2013-03-12 A | 2013-03-16 A | A24 | 100% |  | 2013-04-23 | 2013-04-30 |  |  | OCEC Procurment/Curing-7d/W |  |  | UDF_G3 |
| A49 |  | MIR for Bridge Railing |  | 2.5d | 2013-03-13 A | 2013-03-17 A | A39 | 100% |  | 2013-04-27 | 2013-04-28 |  |  |  |  |  | UDF_G3 |
| B3402 |  | Prepartion & Submission for Sliding Doors |  | 10d | 2013-03-13 A | 2013-06-03 | A3 | 80% | 37.5d | 2013-02-19 | 2013-03-03 | 119.75d | 0d |  |  | 69 |  |
| B1521 |  | Prepartion & Submission for Curb Paint |  | 10d | 2013-04-23 | 2013-05-04 | A3 |  |  |  |  | 176d | 0d |  |  | 18 |  |
| B3251 |  | Prepartion & Submission for End Anchorage |  | 10d | 2013-04-23 | 2013-05-04 | A3 |  |  |  |  | 166d | 0d |  |  | 52 |  |
| B3281 |  | Prepartion & Submission for Trump Cone & Wedge |  | 10d | 2013-04-23 | 2013-05-04 | A3 |  |  |  |  | 166d | 0d |  |  | 53 |  |
| B3311 |  | Prepartion & Submission for Grout Admixture |  | 10d | 2013-04-23 | 2013-05-04 | A3 |  |  |  |  | 166d | 0d |  |  | 56 |  |
| B3341 |  | Prepartion & Submission for HTS Wire for Pre-Stressing |  | 10d | 2013-04-23 | 2013-05-04 | A3 |  |  |  |  | 166d | 0d |  |  | April 2013 | UDF_G4 |
| B1520 |  | MAR for Curb Paint |  | 27.5d | 2013-05-05 | 2013-06-03 | B1521 |  |  |  |  | 176d | 0d |  |  | 18 | UDF_G1 |
| B3250 |  | MAR for End Anchorage |  | 27.5d | 2013-05-05 | 2013-06-03 | B3251 |  |  |  |  | 166d | 0d |  |  | 52 | UDF_G1 |
| B3280 |  | MAR for Trump Cone & Wedge |  | 27.5d | 2013-05-05 | 2013-06-03 | B3281 |  |  |  |  | 166d | 0d |  |  | 53 | UDF_G1 |
| B3310 |  | MAR for Grout Admixture |  | 27.5d | 2013-05-05 | 2013-06-03 | B3311 |  |  |  |  | 166d | 0d |  |  | 56 | UDF_G1 |
| B3340 |  | MAR for HTS Wire for Pre-Stressing |  | 27.5d | 2013-05-05 | 2013-06-03 | B3341 |  |  |  |  | 166d | 0d |  |  | 51 |  |
| B1530 |  | Procurment for Curb Paint |  | 10d | 2013-06-04 | 2013-06-11 | B1520 |  |  |  |  | 253.5d | 0d | OCEC Procurment/Curing-7d/W |  |  | UDF_G3 |
| B3260 |  | Procurment for End Anchorage |  | 17.5d | 2013-06-04 | 2013-06-17 | B3250 |  |  |  |  | 238.5d | 0d | OCEC Procurment/Curing-7d/W |  |  | UDF_G3 |
| B3290 |  | Procurment for Trump Cone & Wedge |  | 17.5d | 2013-06-04 | 2013-06-17 | B3280 |  |  |  |  | 238.5d | 0d | OCEC Procurment/Curing-7d/W |  |  | UDF_G3 |
| B3320 |  | Procurment for Grout Admixture |  | 17.5d | 2013-06-04 | 2013-06-17 | B3310 |  |  |  |  | 238.5d | 0d | OCEC Procurment/Curing-7d/W |  |  |  |
| B3350 |  | Procurment for HTS Wire for Pre-Stressing |  | 17.5d | 2013-06-04 | 2013-06-17 | B3340 |  |  |  |  | 238.5d | 0d | OCEC Procurment/Curing-7d/W |  |  | UDF_G3 |
| B3401 |  | MAR for Sliding Doors |  | 27.5d | 2013-06-04 | 2013-07-03 | B3402 |  |  |  |  | 119.75d | 0d |  |  | 69 |  |
| B1510 |  | MIR for Curb Paint |  | 2.5d | 2013-06-12 | 2013-06-15 | B1530 |  |  |  |  | 176d | 169.88d |  |  |  | UDF_G3 |
| B3240 |  | MIR for End Anchorage |  | 2.5d | 2013-06-18 | 2013-06-19 | B3260 |  |  |  |  | 166d | 164.88d |  |  |  | UDF_G3 |
| B3270 |  | MIR for Trump Cone & Wedge |  | 2.5d | 2013-06-18 | 2013-06-19 | B3290 |  |  |  |  | 166d | 164.88d |  |  |  | UDF_G3 |
| B3300 |  | MIR for Grout Admixture |  | 2.5d | 2013-06-18 | 2013-06-19 | B3320 |  |  |  |  | 166d | 164.88d |  |  |  | UDF_G1 |
| B3330 |  | MIR for HTS Wire for Pre-Stressing |  | 2.5d | 2013-06-18 | 2013-06-19 | B3350 |  |  |  |  | 166d | 164.88d |  |  |  | UDF_G3 |
| B3411 |  | Procurment for Sliding Doors |  | 62.5d | 2013-07-04 | 2013-08-22 | B3401 |  |  |  |  | 172.25d | 1.25d | OCEC Procurment/Curing-7d/W |  |  | UDF_G3 |
| A12780 |  | Preparation & Submission of Bridge Load Testing Methodology |  | 5d | 2013-07-14 | 2013-07-17 | A14 SS, A15 SS |  |  |  |  | 123.5d | 0d |  |  |  |  |
| A12790 |  | Approval of Bridge Load Testing Methodology |  | 17.5d | 2013-07-20 | 2013-08-06 | A12780 |  |  |  |  | 123.5d | 122.38d |  |  |  |  |
| B3361 |  | MIR for Sliding Doors |  | 2.5d | 2013-08-24 | 2013-08-25 | B3411 |  |  |  |  | 121d | 119.88d |  |  |  | UDF_G3 |
| A12770 |  | Subgrade, Sub Base & Aggregate Base Course |  | 2.5d | 2013-12-22 | 2013-12-24 | A12940, A12920, A14130, A14140 |  |  |  |  | 1.12d | 0d |  | Operator [60 h]; Driver [60 h]; Vibratory roller [23.7 h]; Grader [23.7 h]; Water tanker [23.7 h]; Tipper [23.7 h]; General worker [120 h] |  | UDF_G1 |
| A12760 |  | Asphalt Works |  | 2.5d | 2013-12-24 | 2013-12-28 | A12770 |  |  |  |  | 1.12d | 0d |  | Tipper [10.67 h]; Asphalt paver [10.67 h]; Tyre roller [40 h]; Operator [120 h]; Driver [10.67 h]; Tandem roller [10.67 h]; Air Compressor [10.67 h]; General worker [120 h] |  | UDF_G1 |
| A12800 |  | Conducting Bridge Load Test |  | 3.38d | 2013-12-28 | 2013-12-31 | A12790, A12760, B3240, B3270, B3300, B3330 |  |  |  |  | 1.12d | 0d |  |  |  | UDF_G1 |
| A12830 |  | Curb Painting |  | 6.25d | 2013-12-28 | 2014-01-04 | A12760, A12650, B1510 |  |  |  |  | 6.12d | 5d |  | Foreman [50 h]; Painter [200 h]; General worker [200 h]; Operator [50 h]; Air Compressor [50 h] |  | UDF_G1 |
| A8090 |  | Road Marking & Signs |  | 6.25d | 2013-12-28 | 2014-01-04 | A12760 |  |  |  |  | 6.12d | 5d |  | Crane mounted truck [12.5 h]; Mixer machine [12.5 h]; Foreman [12.5 h]; Operator [50 h]; Driver [12.5 h]; General worker [66.67 h]; Road marking machine [12.5 h]; Air Compressor [12.5 h] |  | UDF_G1 |
| A12810 |  | Prepration and Submission of Bridge Load Test Results by Subcontractor |  | 7.88d | 2013-12-31 | 2014-01-08 | A12800 |  |  |  |  | 1.12d | 0d |  |  |  |  |
| A12820 |  | Completion of Finishing Works for Bridge - West Bound | milestone | 0d | 2014-01-08 | 2014-01-08 | A12790 FF, A12780 FF, A8090 FF, A12830 FF, A12810 FF, B3361 |  |  |  |  | 1.12d |  |  |  |  |  |

| ID | WBS | Activity | Type | Duration | Start | Finish | Predecessors | Complete | Remaining | Planned start | Planned finish | Total float | Free float | Resources | Flag |
| --- | --- | --- | --- | --- | --- | --- | --- | --- | --- | --- | --- | --- | --- | --- | --- |
|  | 1 | **Finishing Works for Bridge - East Bound** |  |  | 2013-12-11 | 2014-01-11 |  |  |  |  |  |  |  |  |  |
| A15000 |  | Installation of Street Lights |  | 25d | 2013-12-11 | 2014-01-08 | A13800 |  |  |  |  | 1.12d |  | Mixer machine [400 h]; Carpenter [1200 h]; General worker [1200 h]; Operator [400 h]; Foreman [400 h]; Crane mounted truck [400 h] | UDF_G1 |
| A14990 |  | Subgrade, Sub Base & Aggregate Base Course |  | 2.25d | 2014-01-04 | 2014-01-05 | A11000 |  |  |  |  | 0d |  | Operator [36 h]; Driver [36 h]; Vibratory roller [18 h]; Grader [18 h]; Water tanker [18 h]; Tipper [18 h]; General worker [120 h] | UDF_G1 |
| A14980 |  | Asphalt Works |  | 2.5d | 2014-01-06 | 2014-01-07 | A14990, A10980 |  |  |  |  | 0d |  | Tipper [16 h]; Asphalt paver [16 h]; Tyre roller [54 h]; Operator [81 h]; Driver [16 h]; Tandem roller [16 h]; Air Compressor [16 h]; General worker [160 h] | UDF_G1 |
| A15020 |  | Curb Painting |  | 2.25d | 2014-01-08 | 2014-01-11 | A14980, A13710 |  |  |  |  | 0d |  | Foreman [18 h]; General worker [72 h]; Painter [72 h]; Operator [18 h]; Air Compressor [18 h] | UDF_G1 |
| A8270 |  | Road Marking & Signs |  | 2.25d | 2014-01-08 | 2014-01-11 | A14980 |  |  |  |  | 0d |  | Crane mounted truck [18 h]; Mixer machine [18 h]; Foreman [18 h]; Operator [72 h]; Driver [18 h]; General worker [180 h]; Road marking machine [18 h]; Air Compressor [18 h] | UDF_G1 |
| A15010 |  | Completion of Finishing Works for Bridge - East Bound | milestone | 0d | 2014-01-11 | 2014-01-11 | A8270 FF, A15000 FF, A15020 FF, A49 FF |  |  |  |  | 0d |  |  |  |
|  | 8 | **Completion of Bridge Works** |  |  | 2014-01-11 | 2014-01-15 |  |  |  |  |  |  |  |  |  |
| A8238 |  | Removal of Diversion at X |  | 5.12d | 2014-01-11 | 2014-01-15 | A8239 SS |  |  |  |  | 0d |  | Excavator [32.8 h]; Front end loader [32.8 h]; Tipper [32.8 h]; Operator [65.6 h]; Driver [32.8 h] |  |
| A8239 |  | Cleaning & Houskeeping Works |  | 5.12d | 2014-01-11 | 2014-01-15 | A8240 |  |  |  |  | 0d |  | General worker [2804.4 h]; Foreman [701.1 h]; Canter [701.1 h]; Crane mounted truck [701.1 h]; Driver [1402.2 h] |  |
| A8240 |  | Completion of West Bound & East Bound Bridges | milestone | 0d | 2014-01-11 | 2014-01-11 | A15010 FF, A12820 FF, A14140 FF |  |  |  |  | 0d |  |  |  |
|  | 3 | **Internal Road Works** |  |  | 2013-01-13 | 2014-01-15 |  |  |  |  |  |  |  |  |  |
|  | Ph1 | **Phase no. 1 - Internal Road no. 3** |  |  | 2013-01-13 | 2014-01-15 |  |  |  |  |  |  |  |  |  |
|  | R3 | **Internal Roads no. 3** |  |  | 2013-01-13 | 2013-10-09 |  |  |  |  |  |  |  |  |  |
| OCEC10181 |  | Survey works |  | 3.75d | 2013-01-16 A | 2013-01-21 A | A3 | 100% |  |  |  |  |  |  |  |
|  | TS | **Technical Submittals** |  |  | 2013-01-16 | 2013-05-12 |  |  |  |  |  |  |  |  |  |
|  | PS | **Shopdrawings** |  |  | 2013-01-16 | 2013-05-12 |  |  |  |  |  |  |  |  |  |
|  | EI | **Prepare and Submit** |  |  | 2013-01-16 | 2013-02-03 |  |  |  |  |  |  |  |  |  |
| OCEC9974 |  | Shopdrawings Layout and Cross Sections for Roads no. 3 |  | 15d | 2013-01-16 A | 2013-02-03 A | OCEC10181 SS | 100% |  |  |  |  |  |  |  |
|  | EI1 | **Engineer's Review and instructions to proceed** |  |  | 2013-02-03 | 2013-05-12 |  |  |  |  |  |  |  |  |  |
| OCEC10311 |  | Shopdrawings Layout and Cross Sections for Roads no. 3 |  | 17.5d | 2013-02-03 A | 2013-05-12 | OCEC9974 | 50% | 17.5d | 2013-02-03 | 2013-02-23 | 139.88d | 0d |  |  |
|  | 3 | **Road Crossings (Zone no. 6); 2 Crossings** |  |  | 2013-01-16 | 2013-06-15 |  |  |  |  |  |  |  |  |  |
| A15079 |  | Prepare and Submit Method Statment for Excavation, Bedding, Pipe Laying and Backfilling |  | 17.5d | 2013-01-16 A | 2013-02-05 A | OCEC10181 SS | 100% |  |  |  |  |  |  |  |
| A15080 |  | Review and approval for Method Statment for Excavation, Bedding, Pipe Laying and Backfilling |  | 17.5d | 2013-02-05 A | 2013-05-12 | A15079 | 80% | 17.5d | 2013-02-05 | 2013-02-25 | 187.38d | 0d |  |  |
| OCEC10851 |  | Setting out and route survey |  | 5d | 2013-04-23 | 2013-04-28 | OCEC10311 SS+8.75d, OCEC10181 |  |  |  |  | 139.88d | 12.5d | Surveyor [40 h]; General worker [40 h]; Surveying Instruments [40 h] | UDF_G1 |
| OCEC10411 |  | Trench excavation |  | 7.5d | 2013-05-13 | 2013-05-20 | OCEC10851, A15080 |  |  |  |  | 187.38d | 0d | General worker [240 h]; Excavator [60 h]; Back hoe loader [60 h]; Operator [120 h]; Foreman [60 h] | UDF_G1 |
| OCEC10421 |  | Preparation of bed |  | 5d | 2013-05-21 | 2013-05-26 | OCEC10411 |  |  |  |  | 187.38d | 0d | General worker [200 h]; Back hoe loader [40 h]; Operator [40 h]; Foreman [40 h] | UDF_G1 |
| OCEC10432 |  | Construction of utilites crossing (Duct) |  | 7.5d | 2013-05-27 | 2013-06-03 | OCEC10421 |  |  |  |  | 187.38d | 0d | General worker [360 h]; Driver [60 h]; Operator [60 h]; Canter [60 h]; Fitter [120 h]; Cable Jointer [120 h]; Foreman [60 h]; Crane mounted truck [60 h] | UDF_G1 |
| OCEC10441 |  | Backfilling and compaction |  | 5d | 2013-06-04 | 2013-06-09 | OCEC10432 |  |  |  |  | 187.38d | 0d | Driver [40 h]; Operator [80 h]; General worker [200 h]; Foreman [40 h]; Back hoe loader [40 h]; Water tanker [40 h]; Pedestrain roller [40 h] | UDF_G1 |
| OCEC10433 |  | Inspection and Testing |  | 5d | 2013-06-10 | 2013-06-15 | OCEC10432, OCEC10441 |  |  |  |  | 187.38d | 102.5d | Foreman [40 h]; General worker [40 h] | UDF_G1 |

| ID | WBS | Activity | Duration | Start | Finish | Predecessors | Complete | Remaining | Planned start | Planned finish | Total float | Free float | Calendar | Resources | user_text1 | Flag |
| --- | --- | --- | --- | --- | --- | --- | --- | --- | --- | --- | --- | --- | --- | --- | --- | --- |
|  | DM | **Drainage Works and Manholes** |  | 2013-01-28 | 2013-10-05 |  |  |  |  |  |  |  |  |  |  |  |
| B3371 |  | MAR for Storm Sewer HDPE (400 mm Diameter) | 27.5d | 2013-01-28 A | 2013-02-27 A | B3372 | 100% |  | 2013-02-11 | 2013-03-13 |  |  |  |  | 32 |  |
| B2832 |  | Prepartion & Submission for Gulley Grate and Frame | 10d | 2013-02-10 A | 2013-02-20 A | A3 | 100% |  | 2013-02-19 | 2013-03-03 |  |  |  |  | Feb 2013 | UDF_G1 |
| OCEC10791 |  | Setting out and route survey | 5d | 2013-02-12 A | 2013-02-18 A | B2911, B3391, OCEC10851 SS | 100% |  | 2013-05-26 | 2013-06-01 |  |  |  | Surveyor [40 h]; General worker [40 h]; Surveying Instruments [40 h] |  | UDF_G1 |
| OCEC10801 |  | Trench excavation | 15d | 2013-02-19 A | 2013-07-09 | OCEC10791, A15130 FS+5.62d | 40% | 15d | 2013-06-01 | 2013-06-17 | 89.88d | 0d |  | Operator [600 h]; General worker [600 h]; Foreman [120 h]; Back hoe loader [600 h] |  | UDF_G1 |
| B2831 |  | MAR for Gulley Grate and Frame | 27.5d | 2013-02-20 A | 2013-04-23 | B2832 | 80% | 0d | 2013-02-19 | 2013-03-23 | 112.5d | 0d |  |  | 34 | UDF_G1 |
| B3372 |  | Prepartion & Submission for Storm Sewer HDPE (400 mm Diameter) | 10d | 2013-02-26 A | 2013-03-10 A | A3 | 100% |  | 2013-02-11 | 2013-02-23 |  |  |  |  | March 2013 | UDF_G3 |
| B3381 |  | Procurment for Storm Sewer HDPE (400 mm Diameter) | 75d | 2013-02-27 A | 2013-03-21 A | B3371 | 100% |  | 2013-02-21 | 2013-04-21 |  |  | OCEC Procurment/Curing-7d/W |  |  | UDF_G3 |
| OCEC10811 |  | Bedding, Compaction and Levelling | 7.5d | 2013-03-02 A | 2013-07-01 | OCEC10801 SS+7.5d | 30% | 7.5d | 2013-06-09 | 2013-06-17 | 102.38d | 0d |  | Operator [480 h]; General worker [480 h]; Foreman [60 h]; Plate compactor [480 h] |  | UDF_G1 |
| B2921 |  | MAR for Reinforced Precast Concrete Pipe (1000 mm) | 27.5d | 2013-03-13 A | 2013-04-13 A | B2922 | 100% |  | 2013-02-03 | 2013-03-05 |  |  |  |  | 30 |  |
| B2922 |  | Prepartion & Submission for Reinforced Precast Concrete Pipe (1000 mm) | 10d | 2013-03-13 A | 2013-04-13 A | A3 | 100% |  | 2013-02-03 | 2013-02-13 |  |  |  |  | 30 |  |
| B3391 |  | MIR for Storm Sewer AC (400 mm Diameter) | 2.5d | 2013-03-21 A | 2013-03-21 A | B3381 | 100% |  | 2013-04-17 | 2013-04-20 |  |  |  |  |  | UDF_G3 |
| A15073 |  | Prepare and Submit Method Statment for Culvert Laying | 17.5d | 2013-04-23 | 2013-05-12 | A15079 SS |  |  |  |  | 98.62d | 0d |  |  |  |  |
| B2802 |  | Prepartion & Submission for HDPE manholes | 10d | 2013-04-23 | 2013-05-04 | A3 |  |  |  |  | 88.62d | 0d |  |  | 80 |  |
| B2841 |  | Procurment for Gulley Grate and Frame | 75d | 2013-04-23 | 2013-06-21 | B2831 |  |  |  |  | 162.38d | 0d | OCEC Procurment/Curing-7d/W |  |  | UDF_G3 |
| B2931 |  | Procurment for Reinforced Precast Concrete Pipe (1000 mm) | 75d | 2013-04-23 | 2013-06-21 | B2921 |  |  |  |  | 98.62d | 0d | OCEC Procurment/Curing-7d/W |  |  | UDF_G3 |
| A15075 |  | Prepare and Submit Method Statment for Catch Pits | 17.5d | 2013-04-28 | 2013-05-15 | A15073 SS+3.75d |  |  |  |  | 98.62d | 0d |  |  |  |  |
| B2801 |  | MAR for HDPE manholes | 27.5d | 2013-05-05 | 2013-06-03 | B2802 |  |  |  |  | 88.62d | 0d |  |  | 80 | UDF_G1 |
| A15074 |  | Review and approval for Method Statment for Culvert Laying | 17.5d | 2013-05-13 | 2013-06-01 | A15073 |  |  |  |  | 122.38d | 20d |  |  |  |  |
| A15076 |  | Review and approval for Method Statment for Catch Pits | 17.5d | 2013-05-18 | 2013-06-04 | A15075 |  |  |  |  | 131.12d | 28.75d |  |  |  |  |
| B2811 |  | Procurment for HDPE manholes | 56.25d | 2013-06-04 | 2013-07-18 | B2801 |  |  |  |  | 128.62d | 1.25d | OCEC Procurment/Curing-7d/W |  |  | UDF_G3 |
| B2821 |  | MIR for Gulley Grate and Frame | 2.5d | 2013-06-22 | 2013-06-23 | B2841 |  |  |  |  | 114.88d | 25d |  |  |  | UDF_G3 |
| B2911 |  | MIR for Reinforced Precast Concrete Pipe (1000 mm) | 2.5d | 2013-06-22 | 2013-06-23 | B2931 |  |  |  |  | 68.62d | 0d |  |  |  | UDF_G3 |
| OCEC18251 |  | Pipe Culvert Construction | 12.5d | 2013-06-24 | 2013-07-07 | A15074, OCEC10811 SS+3.75d |  |  |  |  | 102.38d | 0d |  | Mason [400 h]; General worker [800 h]; Foreman [100 h]; Pipe Culvert [30.21 m] |  | UDF_G1 |
| OCEC10841 |  | Construction of Catch Pits and hook up | 31.25d | 2013-07-08 | 2013-08-13 | OCEC18251, A15076 |  |  |  |  | 102.38d | 12.5d |  | Mason [1500 h]; General worker [3000 h]; Foreman [250 h]; خرسانة مسلحة للأرضيات [70 م3] |  |  |
| B2791 |  | MIR for HDPE manholes | 2.5d | 2013-07-20 | 2013-07-21 | B2811 |  |  |  |  | 89.88d | 0d |  |  |  | UDF_G3 |
| OCEC18261 |  | Installation of Grated Channels | 31.25d | 2013-07-22 | 2013-08-27 | B2821, B2791, OCEC10841 SS |  |  |  |  | 89.88d | 0d |  | General worker [1500 h]; Foreman [250 h]; Back hoe loader [250 h]; Operator [250 h]; طوب مصمط [1260.83] |  | UDF_G3 |
| OCEC18241 |  | Construction of Grate Opennings | 7.5d | 2013-08-28 | 2013-09-04 | OCEC18261 |  |  |  |  | 89.88d | 0d |  | Mason [300 h]; General worker [600 h]; Foreman [60 h] |  | UDF_G1 |
| OCEC10821 |  | Pipe lowering | 10d | 2013-09-02 | 2013-09-11 | OCEC10811 SS+3.75d, OCEC18241 SS+3.75d |  |  |  |  | 89.88d | 0d |  | General worker [800 h]; Fitter [800 h]; Operator [80 h]; Driver [80 h]; Foreman [80 h]; Crane mounted truck [80 h]; Canter [80 h] |  | UDF_G1 |
| OCEC10831 |  | Pipe joining | 10d | 2013-09-08 | 2013-09-17 | OCEC10821 SS+5d |  |  |  |  | 89.88d | 0d |  | General worker [400 h]; Fitter [400 h]; Foreman [80 h]; Back hoe loader [80 h]; Operator [80 h] |  | UDF_G1 |
| OCEC10891 |  | Backfilling and Compaction | 10d | 2013-09-18 | 2013-09-29 | OCEC18261, OCEC10831, OCEC10841 |  |  |  |  | 89.88d | 0d |  | Driver [80 h]; Foreman [80 h]; Operator [480 h]; General worker [480 h]; Back hoe loader [240 h]; Water tanker [80 h]; Pedestrain roller [240 h] |  |  |
| OCEC10861 |  | Inspection and Testing | 5d | 2013-09-30 | 2013-10-05 | OCEC10891 |  |  |  |  | 89.88d | 5d |  | General worker [40 h]; Foreman [40 h] |  |  |

| ID | WBS | Activity | Duration | Start | Finish | Predecessors | Complete | Planned start | Planned finish | Total float | Free float | Calendar | Resources | user_text1 | Flag |
| --- | --- | --- | --- | --- | --- | --- | --- | --- | --- | --- | --- | --- | --- | --- | --- |
|  | EI | **Electrical Installation** |  | 2013-04-23 | 2013-10-09 |  |  |  |  |  |  |  |  |  |  |
| B2862 |  | Prepartion & Submission for Duct Pipe | 10d | 2013-04-23 | 2013-05-04 | A3 |  |  |  | 162.38d | 0d |  |  | 55 |  |
| B2861 |  | MAR for Duct Pipe | 27.5d | 2013-05-05 | 2013-06-03 | B2862 |  |  |  | 162.38d | 0d |  |  | 55 | UDF_G1 |
| A15069 |  | Prepare and Submit Method Statment for Excavation, Bedding, Cable Laying and Backfilling | 17.5d | 2013-05-06 | 2013-05-25 | A15075 SS+7.5d |  |  |  | 98.62d | 0d |  |  |  |  |
| A15070 |  | Review and approval for Method Statment for Excavation, Bedding, Cable Laying and Backfilling | 17.5d | 2013-05-26 | 2013-06-12 | A15069 |  |  |  | 98.62d | 13.75d |  |  |  |  |
| B2871 |  | Procurment for Duct Pipe | 25d | 2013-06-04 | 2013-06-23 | B2861 |  |  |  | 234.88d | 0d | OCEC Procurment/Curing-7d/W |  |  | UDF_G3 |
| B2851 |  | MIR for Duct Pipe | 2.5d | 2013-06-24 | 2013-06-25 | B2871 |  |  |  | 162.38d | 72.5d |  |  |  |  |
| OCEC13061 |  | Setting out and route survey | 5d | 2013-06-24 | 2013-06-29 | OCEC10791 SS |  |  |  | 84.88d | 0d |  | Surveyor [40 h]; General worker [40 h]; Surveying Instruments [40 h] |  |  |
| OCEC10961 |  | Trench excavation for low voltage cable | 15d | 2013-06-30 | 2013-07-15 | OCEC13061, A15070, OCEC10801 FF |  |  |  | 84.88d | 0d |  | Operator [360 h]; General worker [360 h]; Back hoe loader [360 h] |  |  |
| OCEC10971 |  | Bed preparation | 15d | 2013-07-08 | 2013-07-23 | OCEC10961 SS+7.5d |  |  |  | 84.88d | 0d |  | Operator [360 h]; General worker [360 h]; Foreman [120 h]; Plate compactor [360 h] |  |  |
| OCEC11011 |  | Install AC pipe ducts | 15d | 2013-07-16 | 2013-07-31 | OCEC10971 SS+7.5d |  |  |  | 84.88d | 0d |  | Canter [240 h]; General worker [360 h]; Mason [240 h]; Operator [120 h]; Plate compactor [120 h]; AC Pipe Ducts [106.13 m] |  |  |
| OCEC10981 |  | Low Voltage Cable laying | 15d | 2013-08-03 | 2013-08-20 | OCEC11011 |  |  |  | 84.88d | 0d |  | General worker [240 h]; Driver [120 h]; Operator [120 h]; Crane mounted truck [120 h]; Canter [120 h] |  |  |
| OCEC18231 |  | Cable termination | 12.5d | 2013-08-21 | 2013-09-03 | OCEC10981 |  |  |  | 84.88d | 0d |  | Cable Jointer [100 h]; Foreman [100 h]; General worker [200 h]; Crimping tool [100 h]; Tool kit [100 h] |  |  |
| OCEC18271 |  | Inspection and Testing | 7.5d | 2013-09-04 | 2013-09-11 | OCEC18231 |  |  |  | 84.88d | 0d |  | General worker [60 h]; Foreman [60 h] |  |  |
| OCEC10991 |  | Backfilling and compaction | 12.5d | 2013-09-14 | 2013-09-25 | OCEC18271 |  |  |  | 84.88d | 0d |  | Driver [100 h]; Operator [200 h]; General worker [300 h]; Back hoe loader [100 h]; Water tanker [100 h]; Pedestrain roller [200 h] |  |  |
| OCEC11001 |  | Marker post and marker plates fixing | 12.5d | 2013-09-28 | 2013-10-09 | OCEC10991, B2851 |  |  |  | 84.88d | 0d |  | General worker [200 h]; Mason [100 h] |  |  |
|  | ERW | **Earth Works** |  | 2013-02-06 | 2013-08-13 |  |  |  |  |  |  |  |  |  |  |
| A15081 |  | Prepare and Submit Method Statment for Embankment Filling Works | 17.5d | 2013-02-06 A | 2013-02-26 A | A15069 SS+7.5d | 100% |  |  |  |  |  |  |  |  |
| A15083 |  | Prepare and Submit Method Statment for Sub-grade Works | 17.5d | 2013-02-11 A | 2013-03-03 A | A15081 SS+3.75d | 100% |  |  |  |  |  |  |  |  |
| A15085 |  | Prepare and Submit Method Statment for Granular Sub-Base Works | 17.5d | 2013-02-16 A | 2013-03-06 A | A15083 SS+3.75d | 100% |  |  |  |  |  |  |  |  |
| A15084 |  | Review and approval for Method Statment for Sub-grade Works | 17.5d | 2013-03-03 A | 2013-03-23 A | A15083 | 100% |  |  |  |  |  |  |  |  |
| A15086 |  | Review and approval for Method Statment for Granular Sub-Base Works | 17.5d | 2013-03-06 A | 2013-03-26 A | A15085 | 100% |  |  |  |  |  |  |  |  |
| A15087 |  | Prepare and Submit Method Statment for Aggregate Base Course Works | 17.5d | 2013-03-11 A | 2013-03-30 A | A15085 SS+3.75d | 100% | 2013-02-19 | 2013-03-11 |  |  |  |  |  |  |
| A15088 |  | Review and approval for Method Statment for Aggregate Base Course Works | 17.5d | 2013-03-11 A | 2013-03-31 A | A15087 | 100% |  |  |  |  |  |  |  |  |
| B1602 |  | Prepartion & Submission for Subgrade Material | 10d | 2013-04-23 | 2013-05-04 | A3 |  |  |  | 154.12d | 0d |  |  | 1 |  |
| B1632 |  | Prepartion & Submission for Bituminous Base Course | 10d | 2013-04-23 | 2013-05-04 | A3 |  |  |  | 175.38d | 0d |  |  | 14 |  |
| B1662 |  | Prepartion & Submission for Bituminous Wearing Course | 10d | 2013-04-23 | 2013-05-04 | A3 |  |  |  | 177.38d | 0d |  |  | 16 |  |
| B1692 |  | Prepartion & Submission for Prime Coat - MC - 70 | 10d | 2013-04-23 | 2013-05-04 | A3 |  |  |  | 175.38d | 0d |  |  | May 2013 |  |
| B1722 |  | Prepartion & Submission for Tack Coat - SS - 1 H | 10d | 2013-04-23 | 2013-05-04 | A3 |  |  |  | 100d | 0d |  |  | May 2013 |  |
| B1752 |  | Prepartion & Submission for Bitumen 60-70 | 10d | 2013-04-23 | 2013-05-04 | A3 |  |  |  | 177.88d | 0d |  |  | 9 |  |
| B1782 |  | Prepartion & Submission for 25 mm aggregate for Asphalt | 10d | 2013-04-23 | 2013-05-04 | A3 |  |  |  | 177.88d | 0d |  |  | 10 |  |
| B1812 |  | Prepartion & Submission for 20 mm aggregate for Asphalt | 10d | 2013-04-23 | 2013-05-04 | A3 |  |  |  | 177.88d | 0d |  |  | 11 |  |
| B1842 |  | Prepartion & Submission for 10 mm aggregate for Asphalt | 10d | 2013-04-23 | 2013-05-04 | A3 |  |  |  | 166.25d | 0d |  |  | 12 |  |
| B1872 |  | Prepartion & Submission for Crushed Sand | 10d | 2013-04-23 | 2013-05-04 | A3 |  |  |  | 182.88d | 0d |  |  | 13 |  |
| B1902 |  | Prepartion & Submission for Aggregate Base Course Class - A | 10d | 2013-04-23 | 2013-05-04 | A3 |  |  |  | 162.88d | 0d |  |  | May 2013 |  |
| B1932 |  | Prepartion & Submission for Sub-Base Material Class B | 10d | 2013-04-23 | 2013-05-04 | A3 |  |  |  | 160d | 0d |  |  | May 2013 |  |
| OCEC9541 |  | Removal of Structures and Obstructions | 15d | 2013-04-23 | 2013-05-08 | OCEC10181 SS |  |  |  | 137.38d | 35d |  |  |  |  |
| B1601 |  | MAR for Subgrade Material | 37.5d | 2013-05-05 | 2013-06-15 | B1602 |  |  |  | 154.12d | 17.5d |  |  | 1 | UDF_G1 |
| B1631 |  | MAR for Bituminous Base Course | 27.5d | 2013-05-05 | 2013-06-03 | B1632 |  |  |  | 175.38d | 0d |  |  | 14 | UDF_G1 |
| B1661 |  | MAR for Bituminous Wearing Course | 27.5d | 2013-05-05 | 2013-06-03 | B1662 |  |  |  | 177.38d | 0d |  |  | 16 | UDF_G1 |
| B1691 |  | MAR for Prime Coat - MC - 70 | 27.5d | 2013-05-05 | 2013-06-03 | B1692 |  |  |  | 175.38d | 0d |  |  | 8 |  |
| B1721 |  | MAR for Tack Coat - SS - 1 H | 27.5d | 2013-05-05 | 2013-06-03 | B1722 |  |  |  | 100d | 0d |  |  | 15 | UDF_G1 |
| B1751 |  | MAR for Bitumen 60-70 | 27.5d | 2013-05-05 | 2013-06-03 | B1752 |  |  |  | 177.88d | 0d |  |  | 9 | UDF_G1 |
| B1781 |  | MAR for 25 mm aggregate for Asphalt | 27.5d | 2013-05-05 | 2013-06-03 | B1782 |  |  |  | 177.88d | 0d |  |  | 10 | UDF_G1 |
| B1811 |  | MAR for 20 mm aggregate for Asphalt | 27.5d | 2013-05-05 | 2013-06-03 | B1812 |  |  |  | 177.88d | 0d |  |  | 11 | UDF_G1 |
| B1841 |  | MAR for 10 mm aggregate for Asphalt | 27.5d | 2013-05-05 | 2013-06-03 | B1842 |  |  |  | 166.25d | 0d |  |  | 12 | UDF_G1 |
| B1871 |  | MAR for Crushed Sand | 27.5d | 2013-05-05 | 2013-06-03 | B1872 |  |  |  | 182.88d | 0d |  |  | 13 | UDF_G1 |
| B1901 |  | MAR for Aggregate Base Course Class - A | 27.5d | 2013-05-05 | 2013-06-03 | B1902 |  |  |  | 162.88d | 0d |  |  | 7 | UDF_G1 |
| B1931 |  | MAR for Sub-Base Material Class B | 27.5d | 2013-05-05 | 2013-06-03 | B1932 |  |  |  | 160d | 0d |  |  | 6 |  |
| A15082 |  | Review and approval for Method Statment for Embankment Filling Works | 17.5d | 2013-05-14 | 2013-06-02 | A15081 |  |  |  | 165.38d | 28.75d |  |  |  |  |
| A15089 |  | Prepare and Submit Method Statment for Bitumenious Base & Wearing Course Works | 17.5d | 2013-05-14 | 2013-06-02 | A15087 SS+3.75d |  |  |  | 107.38d | 0d |  |  |  |  |
| A15090 |  | Review and approval for Method Statment for Bitumenious Base & Wearing Course Works | 17.5d | 2013-06-03 | 2013-06-22 | A15089 |  |  |  | 171.62d | 35d |  |  |  |  |
| B1641 |  | Procurment for Bituminous Base Course | 15d | 2013-06-04 | 2013-06-15 | B1631 |  |  |  | 252.88d | 0d | OCEC Procurment/Curing-7d/W |  |  | UDF_G3 |
| B1671 |  | Procurment for Bituminous Wearing Course | 15d | 2013-06-04 | 2013-06-15 | B1661 |  |  |  | 254.88d | 0d | OCEC Procurment/Curing-7d/W |  |  |  |
| B1701 |  | Procurment for Prime Coat - MC - 70 | 15d | 2013-06-04 | 2013-06-15 | B1691 |  |  |  | 252.88d | 0d | OCEC Procurment/Curing-7d/W |  |  |  |
| B1731 |  | Procurment for Tack Coat - SS - 1 H | 15d | 2013-06-04 | 2013-06-15 | B1721 |  |  |  | 144.88d | 0d | OCEC Procurment/Curing-7d/W |  |  | UDF_G3 |
| B1761 |  | Procurment for Bitumen 60-70 | 12.5d | 2013-06-04 | 2013-06-13 | B1751 |  |  |  | 255.38d | 1.25d | OCEC Procurment/Curing-7d/W |  |  | UDF_G3 |
| B1791 |  | Procurment for 25 mm aggregate for Asphalt | 12.5d | 2013-06-04 | 2013-06-13 | B1781 |  |  |  | 255.38d | 1.25d | OCEC Procurment/Curing-7d/W |  |  | UDF_G3 |
| B1821 |  | Procurment for 20 mm aggregate for Asphalt | 12.5d | 2013-06-04 | 2013-06-13 | B1811 |  |  |  | 255.38d | 1.25d | OCEC Procurment/Curing-7d/W |  |  | UDF_G3 |
| B1851 |  | Procurment for 10 mm aggregate for Asphalt | 12.5d | 2013-06-04 | 2013-06-13 | B1841 |  |  |  | 240.38d | 1.25d | OCEC Procurment/Curing-7d/W |  |  |  |
| B1881 |  | Procurment for Crushed Sand | 5d | 2013-06-04 | 2013-06-07 | B1871 |  |  |  | 262.88d | 0d | OCEC Procurment/Curing-7d/W |  |  | UDF_G3 |
| B1911 |  | Procurment for Aggregate Base Course Class - A | 26.25d | 2013-06-04 | 2013-06-24 | B1901 |  |  |  | 235.38d | 0d | OCEC Procurment/Curing-7d/W |  |  | UDF_G3 |
| B1941 |  | Procurment for Sub-Base Material Class B | 12.5d | 2013-06-04 | 2013-06-13 | B1931 |  |  |  | 231.62d | 1.25d | OCEC Procurment/Curing-7d/W |  |  | UDF_G3 |
| B1861 |  | MIR for Crushed Sand | 2.5d | 2013-06-08 | 2013-06-09 | B1881 |  |  |  | 182.88d | 46.25d |  |  |  | UDF_G3 |
| B1741 |  | MIR for Bitumen 60-70 | 2.5d | 2013-06-15 | 2013-06-16 | B1761 |  |  |  | 176.62d | 40d |  |  |  | UDF_G3 |
| B1771 |  | MIR for 25 mm aggregate for Asphalt | 2.5d | 2013-06-15 | 2013-06-16 | B1791 |  |  |  | 176.62d | 40d |  |  |  | UDF_G3 |
| B1801 |  | MIR for 20 mm aggregate for Asphalt | 2.5d | 2013-06-15 | 2013-06-16 | B1821 |  |  |  | 176.62d | 40d |  |  |  | UDF_G3 |
| B1831 |  | MIR for 10 mm aggregate for Asphalt | 2.5d | 2013-06-15 | 2013-06-16 | B1851 |  |  |  | 166.62d | 40d |  |  |  |  |
| B1921 |  | MIR for Sub-Base Material Class B | 2.5d | 2013-06-15 | 2013-06-16 | B1941 |  |  |  | 160.38d | 23.75d |  |  |  | UDF_G3 |
| B1621 |  | MIR for Bituminous Base Course | 2.5d | 2013-06-16 | 2013-06-17 | B1641 |  |  |  | 175.38d | 38.75d |  |  |  | UDF_G3 |

| ID | WBS | Activity | Duration | Start | Finish | Predecessors | Total float | Free float | Resources | Flag |
| --- | --- | --- | --- | --- | --- | --- | --- | --- | --- | --- |
| B1651 |  | MIR for Bituminous Wearing Course | 2.5d | 2013-06-16 | 2013-06-17 | B1671 | 177.38d | 40.75d |  |  |
| B1681 |  | MIR for Prime Coat - MC - 70 | 2.5d | 2013-06-16 | 2013-06-17 | B1701 | 175.38d | 38.75d |  | UDF_G3 |
| B1711 |  | MIR for Tack Coat - SS - 1 H | 2.5d | 2013-06-16 | 2013-06-17 | B1731 | 102.38d | 0d |  | UDF_G3 |
| OCEC9611 |  | Clearing and grubbing | 5d | 2013-06-18 | 2013-06-23 | OCEC9541, B1711 | 102.38d | 0d | Foreman [40 h]; Driver [40 h]; Operator [120 h]; General worker [120 h]; Excavator [40 h]; Front end loader [40 h]; Grader [40 h]; Tipper [40 h] |  |
| OCEC9621 |  | Setting out and route survey | 5d | 2013-06-24 | 2013-06-29 | OCEC9611, OCEC13061 SS | 102.38d | 0d | Surveyor [40 h]; Surveying Instruments [40 h]; General worker [40 h] |  |
| B1891 |  | MIR for Aggregate Base Course Class - A | 2.5d | 2013-06-25 | 2013-06-26 | B1911 | 162.88d | 26.25d |  | UDF_G3 |
| OCEC9661 |  | Unclassified excavation and removal | 10d | 2013-06-30 | 2013-07-09 | OCEC9621 | 136.62d | 0d | Driver [240 h]; General worker [480 h]; Operator [240 h]; Foreman [80 h]; Bull dozer [80 h]; Excavator [80 h]; Front end loader [80 h]; Tipper [160 h]; Water tanker [80 h] |  |
| OCEC9551 |  | Embankment filling and sub grade preparation | 15d | 2013-07-06 | 2013-07-21 | OCEC9661 SS+5d, A15084, A15082, B1601 | 136.62d | 0d | Driver [1320 h]; Foreman [120 h]; Operator [960 h]; General worker [960 h]; Front end loader [240 h]; Grader [360 h]; Tipper [960 h]; Vibratory roller [360 h]; Water tanker [360 h]; Borrow Embankment [20912.7 M3] | UDF_G3 |
| OCEC9561 |  | Granular sub base course Class B - 150 mm thick | 7.5d | 2013-07-14 | 2013-07-21 | OCEC9551 SS+7.5d, A15086, B1921 | 136.62d | 0d | Foreman [60 h]; Driver [360 h]; Operator [300 h]; General worker [300 h]; Front end loader [60 h]; Grader [120 h]; Tipper [240 h]; Vibratory roller [120 h]; Water tanker [120 h]; Granular Sub-Base [3034 M3] | UDF_G3 |
| OCEC10911 |  | Precast Concrete Curb | 5d | 2013-07-22 | 2013-07-27 | OCEC9561 | 136.62d | 0d | Mason [400 h]; General worker [800 h]; Foreman [40 h] |  |
| OCEC9571 |  | Aggregate base course Class A - 100 mm and 150 mm thick | 3.75d | 2013-07-28 | 2013-07-30 | A15088, B1891, OCEC10911 | 136.62d | 0d | Foreman [30 h]; Driver [120 h]; General worker [240 h]; Operator [120 h]; Grader [60 h]; Tipper [120 h]; Vibratory roller [60 h]; Water tanker [60 h]; Aggregate Base Course [1817 M3] | UDF_G3 |
| OCEC9581 |  | Bituminous prime coat and bituminous base course Class A - 50 mm thick | 2d | 2013-07-31 | 2013-08-03 | OCEC9571, A15090, B1621, B1861, B1741, B1771, B1801, B1831, B1681 | 136.62d | 0d | Foreman [16 h]; Driver [40 h]; General worker [40 h]; Operator [200 h]; Asphalt paver [40 h]; Tandem roller [80 h]; Tipper [40 h]; Tyre roller [80 h]; Prime Coat & BBC [1817 M3] | UDF_G3 |
| OCEC9591 |  | Bituminous take coat and bituminous wearing course Class A - 50 mm thick | 7.5d | 2013-08-03 | 2013-08-13 | OCEC9581, B1651 | 136.62d | 51.75d | Foreman [60 h]; Driver [150 h]; General worker [150 h]; Operator [900 h]; Air Compressor [60 h]; Asphalt paver [150 h]; Tandem roller [300 h]; Tipper [150 h]; Tyre roller [300 h]; Tack Coat & Wearing Course [6813.75 M3] | UDF_G3 |
|  | RL1 | **Road Lighting** |  | 2013-05-19 | 2013-09-29 |  |  |  |  |  |
| A15071 |  | Prepare and Submit Method Statment for Road Lighting Works | 15d | 2013-05-19 | 2013-06-03 | A15089 SS+3.75d | 107.38d | 0d |  |  |
| A15072 |  | Review and approval for Method Statment for Road Lighting Works | 17.5d | 2013-06-04 | 2013-06-23 | A15071 | 107.38d | 12.5d |  |  |
| OCEC18331 |  | Setting out and route survey | 5d | 2013-06-24 | 2013-06-29 | OCEC9621 SS | 102.38d | 0d | Surveyor [40 h]; General worker [40 h]; Surveying Instruments [40 h] |  |
| OCEC18341 |  | Excavation Works | 5d | 2013-07-08 | 2013-07-13 | OCEC18331, A15072, OCEC10961 SS+7.5d | 94.88d | 0d | Operator [120 h]; General worker [120 h]; Foreman [40 h]; Back hoe loader [120 h] |  |
| OCEC11021 |  | Concrete base for Feeder Pillar and High mast | 15d | 2013-07-14 | 2013-07-29 | OCEC18341 | 94.88d | 0d | General worker [1440 h]; Mason [720 h]; Foreman [120 h]; Concrete Base for Feeder Pillar & High Mast [43.73 M3] |  |
| OCEC11031 |  | Installation of Feed Pillar | 10d | 2013-07-20 | 2013-07-29 | OCEC11021 SS+5d | 96.12d | 0d | General worker [160 h]; Operator [80 h]; Foreman [80 h]; Crane mounted truck [80 h]; Canter [80 h]; Feeder Pillar [1.19 LS] |  |
| OCEC11051 |  | Installation of High mast assembly | 12.5d | 2013-07-21 | 2013-08-03 | OCEC11021 SS+6.25d | 94.88d | 0d | General worker [200 h]; Operator [100 h]; Foreman [100 h]; Driver [100 h]; Crane mounted truck [100 h]; Canter [100 h]; High Mast Assebly [1.59 LS] |  |
| OCEC11041 |  | Installation of Ornamental Lighting Columns | 8.75d | 2013-07-23 | 2013-07-31 | OCEC11031 SS+3.75d | 96.12d | 1.25d | General worker [700 h]; Operator [70 h]; Foreman [70 h]; Crane mounted truck [70 h]; Canter [70 h]; Ornamental Lighting Columns [48.23 LS] |  |
| OCEC11061 |  | Earthing for Feeder Pillar and the end of Street lighting circuit | 12.5d | 2013-08-04 | 2013-08-19 | OCEC11031, OCEC11051, OCEC11041 | 94.88d | 0d | Foreman [100 h]; General worker [200 h] |  |
| OCEC18351 |  | Inspection and Testing | 5d | 2013-08-20 | 2013-08-25 | OCEC11061 | 94.88d | 0d | Foreman [40 h]; General worker [80 h] |  |
| OCEC11071 |  | Power supply connections and Tests | 31.25d | 2013-08-26 | 2013-09-29 | OCEC11041, OCEC18351 | 94.88d | 10d | Foreman [250 h]; General worker [2500 h] |  |

| ID | WBS | Activity | Duration | Start | Finish | Predecessors | Complete | Remaining | Planned start | Planned finish | Total float | Free float | Calendar | Resources | user_text1 | Flag |
| --- | --- | --- | --- | --- | --- | --- | --- | --- | --- | --- | --- | --- | --- | --- | --- | --- |
|  | SP | **Finishing Road Works** |  | 2013-01-13 | 2013-08-18 |  |  |  |  |  |  |  |  |  |  |  |
| B3042 |  | Prepartion & Submission for Poly Sulphate Sealant | 10d | 2013-01-13 A | 2013-01-23 A | A3 | 100% |  | 2013-04-23 | 2013-05-05 |  |  |  |  | Jan2013 | UDF_G4 |
| B3041 |  | MAR for Poly Sulphate Sealant | 27.5d | 2013-02-10 A | 2013-03-10 A | B3042 | 100% |  | 2013-04-23 | 2013-05-25 |  |  |  |  | 48 |  |
| B3072 |  | Prepartion & Submission for Joint Filler Strips | 10d | 2013-03-23 A | 2013-04-01 A | A3 | 100% |  | 2013-05-01 | 2013-05-13 |  |  |  |  | April 2013 | UDF_G4 |
| B3071 |  | MAR for Joint Filler Strips | 27.5d | 2013-04-01 A | 2013-06-03 | B3072 | 80% | 37.5d | 2013-05-01 | 2013-06-02 | 147.5d | 0d |  |  | 50 | UDF_G1 |
| B2682 |  | Prepartion & Submission for Road Marking Material (Thermo Plastic) | 10d | 2013-04-23 | 2013-05-04 | A3 |  |  |  |  | 153.62d | 0d |  |  | 25 |  |
| B2712 |  | Prepartion & Submission for Reflecting Road Stud | 10d | 2013-04-23 | 2013-05-04 | A3 |  |  |  |  | 153.62d | 0d |  |  | 26 |  |
| B2742 |  | Prepartion & Submission for Highway Signs | 10d | 2013-04-23 | 2013-05-04 | A3 |  |  |  |  | 149.88d | 0d |  |  | 27 |  |
| B2772 |  | Prepartion & Submission for Sign Post | 10d | 2013-04-23 | 2013-05-04 | A3 |  |  |  |  | 149.88d | 0d |  |  | 28 |  |
| B2892 |  | MAR for Foundation Boult | 27.5d | 2013-04-23 | 2013-05-22 | A3 |  |  |  |  | 132.38d | 0d |  |  |  | UDF_G3 |
| B2952 |  | Prepartion & Submission for Riprap Stone | 10d | 2013-04-23 | 2013-05-04 | A3 |  |  |  |  | 144.88d | 0d |  |  | 22 |  |
| B2982 |  | Prepartion & Submission for Mortar - Hydrated Lime Base | 10d | 2013-04-23 | 2013-05-04 | A3 |  |  |  |  | 144.88d | 0d |  |  | 23 |  |
| B3012 |  | Prepartion & Submission for Filter Membrane | 10d | 2013-04-23 | 2013-05-04 | A3 |  |  |  |  | 144.88d | 0d |  |  | 24 |  |
| B3051 |  | Procurment for Poly Sulphate Sealant | 15d | 2013-04-23 | 2013-05-04 | B3041 |  |  |  |  | 263.62d | 0d | OCEC Procurment/Curing-7d/W |  |  | UDF_G3 |
| B3222 |  | Prepartion & Submission for Bedded Sand | 10d | 2013-04-23 | 2013-05-04 | A3 |  |  |  |  | 153.75d | 0d |  |  | 20 |  |
| B3692 |  | Prepartion & Submission for Ductile Iron Manhole Cover | 10d | 2013-04-23 | 2013-04-30 | A3 |  |  |  |  | 236.12d | 0d | OCEC Procurment/Curing-7d/W |  | 95 |  |
| B3691 |  | MAR for Ductile Iron Manhole Cover | 27.5d | 2013-05-01 | 2013-05-22 | B3692 |  |  |  |  | 236.12d | 0d | OCEC Procurment/Curing-7d/W |  | 95 | UDF_G1 |
| B2681 |  | MAR for Road Marking Material (Thermo Plastic) | 27.5d | 2013-05-05 | 2013-06-03 | B2682 |  |  |  |  | 153.62d | 0d |  |  | 25 | UDF_G1 |
| B2711 |  | MAR for Reflecting Road Stud | 27.5d | 2013-05-05 | 2013-06-03 | B2712 |  |  |  |  | 153.62d | 0d |  |  | 26 | UDF_G1 |
| B2741 |  | MAR for Highway Signs | 27.5d | 2013-05-05 | 2013-06-03 | B2742 |  |  |  |  | 149.88d | 0d |  |  | 27 |  |
| B2771 |  | MAR for Sign Post | 27.5d | 2013-05-05 | 2013-06-03 | B2772 |  |  |  |  | 149.88d | 0d |  |  | 28 | UDF_G1 |
| B2951 |  | MAR for Riprap Stone | 27.5d | 2013-05-05 | 2013-06-03 | B2952 |  |  |  |  | 144.88d | 0d |  |  | 22 | UDF_G1 |
| B2981 |  | MAR for Mortar - Hydrated Lime Base | 27.5d | 2013-05-05 | 2013-06-03 | B2982 |  |  |  |  | 144.88d | 0d |  |  | 23 | UDF_G1 |
| B3011 |  | MAR for Filter Membrane | 27.5d | 2013-05-05 | 2013-06-03 | B3012 |  |  |  |  | 144.88d | 0d |  |  | 24 | UDF_G1 |
| B3031 |  | MIR for Poly Sulphate Sealant | 2.5d | 2013-05-05 | 2013-05-06 | B3051 |  |  |  |  | 183.62d | 46.25d |  |  |  | UDF_G3 |
| B3221 |  | MAR for Bedded Sand | 27.5d | 2013-05-05 | 2013-06-03 | B3222 |  |  |  |  | 153.75d | 0d |  |  | 20 | UDF_G1 |
| A15077 |  | Prepare and Submit Method Statment for Road Finishing Works | 15d | 2013-05-22 | 2013-06-08 | A15071 SS+3.75d |  |  |  |  | 137.38d | 0d |  |  |  |  |
| B2631 |  | Procurment for Ductile Iron Manhole Cover | 15d | 2013-05-23 | 2013-06-03 | B3691 |  |  |  |  | 236.12d | 0d | OCEC Procurment/Curing-7d/W |  |  |  |
| B2891 |  | MAR for Foundation Boult | 27.5d | 2013-05-25 | 2013-06-23 | B2892 |  |  |  |  | 132.38d | 0d |  |  | 29 | UDF_G1 |
| B2611 |  | MIR for Ductile Iron Manhole Cover | 2.5d | 2013-06-04 | 2013-06-05 | B2631 |  |  |  |  | 163.62d | 26.25d |  |  |  |  |
| B2691 |  | Procurment for Road Marking Material (Thermo Plastic) | 15d | 2013-06-04 | 2013-06-15 | B2681 |  |  |  |  | 221.12d | 0d | OCEC Procurment/Curing-7d/W |  |  |  |
| B2721 |  | Procurment for Reflecting Road Stud | 15d | 2013-06-04 | 2013-06-15 | B2711 |  |  |  |  | 221.12d | 0d | OCEC Procurment/Curing-7d/W |  |  | UDF_G3 |
| B2751 |  | Procurment for Highway Signs | 18.75d | 2013-06-04 | 2013-06-18 | B2741 |  |  |  |  | 217.38d | 0d | OCEC Procurment/Curing-7d/W |  |  |  |
| B2781 |  | Procurment for Sign Post | 18.75d | 2013-06-04 | 2013-06-18 | B2771 |  |  |  |  | 217.38d | 0d | OCEC Procurment/Curing-7d/W |  |  | UDF_G3 |
| B2961 |  | Procurment for Riprap Stone | 18.75d | 2013-06-04 | 2013-06-18 | B2951 |  |  |  |  | 207.38d | 0d | OCEC Procurment/Curing-7d/W |  |  | UDF_G3 |
| B2991 |  | Procurment for Mortar - Hydrated Lime Base | 18.75d | 2013-06-04 | 2013-06-18 | B2981 |  |  |  |  | 207.38d | 0d | OCEC Procurment/Curing-7d/W |  |  | UDF_G3 |
| B3021 |  | Procurment for Filter Membrane | 18.75d | 2013-06-04 | 2013-06-18 | B3011 |  |  |  |  | 207.38d | 0d | OCEC Procurment/Curing-7d/W |  |  | UDF_G3 |
| B3081 |  | Procurment for Joint Filler Strips | 15d | 2013-06-04 | 2013-06-15 | B3071 |  |  |  |  | 211.12d | 0d | OCEC Procurment/Curing-7d/W |  |  |  |
| B3231 |  | Procurment for Bedded Sand | 12.5d | 2013-06-04 | 2013-06-13 | B3221 |  |  |  |  | 223.62d | 1.25d | OCEC Procurment/Curing-7d/W |  |  |  |
| A15078 |  | Review and approval for Method Statment for Road Finishing Works | 17.5d | 2013-06-09 | 2013-06-26 | A15077 |  |  |  |  | 137.38d | 0d |  |  |  |  |
| B3211 |  | MIR for Bedded Sand | 2.5d | 2013-06-15 | 2013-06-16 | B3231 |  |  |  |  | 154.88d | 10d |  |  |  |  |
| B2671 |  | MIR for Road Marking Material (Thermo Plastic) | 2.5d | 2013-06-16 | 2013-06-17 | B2691 |  |  |  |  | 153.62d | 21.25d |  |  |  |  |
| B2701 |  | MIR for Reflecting Road Stud | 2.5d | 2013-06-16 | 2013-06-17 | B2721 |  |  |  |  | 153.62d | 21.25d |  |  |  |  |
| B3061 |  | MIR for Joint Filler Strips | 2.5d | 2013-06-16 | 2013-06-17 | B3081 |  |  |  |  | 146.12d | 8.75d |  |  |  |  |
| B2731 |  | MIR for Highway Signs | 2.5d | 2013-06-19 | 2013-06-22 | B2751 |  |  |  |  | 149.88d | 17.5d |  |  |  |  |
| B2761 |  | MIR for Sign Post | 2.5d | 2013-06-19 | 2013-06-22 | B2781 |  |  |  |  | 149.88d | 17.5d |  |  |  |  |
| B2941 |  | MIR for Riprap Stone | 2.5d | 2013-06-19 | 2013-06-22 | B2961 |  |  |  |  | 142.38d | 5d |  |  |  |  |
| B2971 |  | MIR for Mortar - Hydrated Lime Base | 2.5d | 2013-06-19 | 2013-06-22 | B2991 |  |  |  |  | 142.38d | 5d |  |  |  |  |
| B3001 |  | MIR for Filter Membrane | 2.5d | 2013-06-19 | 2013-06-22 | B3021 |  |  |  |  | 142.38d | 5d |  |  |  | UDF_G3 |
| B2901 |  | Procurment for Foundation Boult | 18.75d | 2013-06-24 | 2013-07-08 | B2891 |  |  |  |  | 192.38d | 0d | OCEC Procurment/Curing-7d/W |  |  | UDF_G3 |
| OCEC10901 |  | Precast Concrete tile Paving 60 mm thick | 7.5d | 2013-06-29 | 2013-07-06 | A15078 |  |  |  |  | 137.38d | 0d |  | Foreman [60 h]; Mason [600 h]; Operator [60 h]; General worker [1200 h]; Plate compactor [60 h] |  |  |
| OCEC11081 |  | Riprap Works | 7.5d | 2013-06-29 | 2013-07-06 | OCEC10901 SS, B3031, B3061, B2941, B2971, B3001 |  |  |  |  | 137.38d | 0d |  | Foreman [60 h]; Driver [60 h]; Operator [180 h]; General worker [600 h]; Mason [300 h]; Excavator [60 h]; Front end loader [60 h]; Grader [60 h]; Tipper [60 h]; Riprap [920.61 LS] |  |  |
| OCEC18281 |  | Gabions Works | 7.5d | 2013-06-29 | 2013-07-06 | OCEC11081 SS |  |  |  |  | 137.38d | 0d |  | Foreman [60 h]; Driver [60 h]; Operator [180 h]; General worker [600 h]; Mason [300 h]; Excavator [60 h]; Front end loader [60 h]; Grader [60 h]; Tipper [60 h]; Gabions [2781 LS] |  |  |
| OCEC18291 |  | Ditch Lining Works | 7.5d | 2013-06-29 | 2013-07-06 | OCEC18281 SS |  |  |  |  | 137.38d | 0d |  | Foreman [60 h]; Mason [300 h]; General worker [600 h]; Ditch Lining [2247.2 LS] |  |  |
| OCEC18311 |  | Interlok Tiles | 31.25d | 2013-06-29 | 2013-07-31 | OCEC10901 SS, A15078, B3211 |  |  |  |  | 144.88d | 60d |  | Foreman [250 h]; General worker [2500 h]; Mason [1250 h] |  |  |
| OCEC18301 |  | Coastal Protection Works | 31.25d | 2013-07-07 | 2013-08-12 | OCEC11081, OCEC18281, OCEC18291, B2611 |  |  |  |  | 137.38d | 52.5d |  | Foreman [250 h]; Driver [250 h]; Operator [750 h]; General worker [2500 h]; Mason [1250 h]; Excavator [250 h]; Front end loader [250 h]; Grader [250 h]; Tipper [250 h]; Coastal Protection [15555.5 m] |  |  |
| B2881 |  | MIR for Foundation Boult | 2.5d | 2013-07-09 | 2013-07-10 | B2901 |  |  |  |  | 132.38d | 0d |  |  |  |  |
| OCEC10921 |  | Traffic Signs | 7.5d | 2013-07-13 | 2013-07-20 | OCEC10901 SS, B2731, B2881, B2761 |  |  |  |  | 132.38d | 0d |  | Foreman [60 h]; General worker [600 h]; Operator [60 h]; Driver [60 h]; Crane mounted truck [60 h]; Canter [60 h]; Traffic Signs [100.17 LS] |  |  |
| OCEC18321 |  | Road Marking and Studs | 31.25d | 2013-07-13 | 2013-08-18 | B2671, B2701, OCEC10921 SS |  |  |  |  | 132.38d | 47.5d |  | Foreman [250 h]; General worker [2500 h]; Painter [1250 h] |  |  |

| ID | WBS | Activity | Duration | Start | Finish | Predecessors | Complete | Remaining | Planned start | Planned finish | Total float | Free float | Calendar | Resources | user_text1 | Flag |
| --- | --- | --- | --- | --- | --- | --- | --- | --- | --- | --- | --- | --- | --- | --- | --- | --- |
|  | 1 | **Safty Barriers and Fences** |  | 2013-03-20 | 2013-07-27 |  |  |  |  |  |  |  |  |  |  |  |
| B2592 |  | Prepartion & Submission for Fencing Material | 10d | 2013-03-20 A | 2013-04-01 A | A3 | 100% |  | 2013-04-23 | 2013-05-04 |  |  |  |  | April 2013 | UDF_G4 |
| B2591 |  | MAR for Fencing Material | 27.5d | 2013-04-01 A | 2013-05-22 | B2592 | 80% | 27.5d | 2013-05-05 | 2013-06-03 | 159.88d | 0d |  |  | 61 |  |
| B2532 |  | Prepartion & Submission for W-Beam Safty Barriers | 10d | 2013-04-23 | 2013-05-04 | A3 |  |  |  |  | 161.12d | 0d |  |  | 21 |  |
| B2562 |  | Prepartion & Submission for Gate for Fences | 10d | 2013-04-23 | 2013-05-04 | A3 |  |  |  |  | 149.88d | 0d |  |  | 62 |  |
| B2531 |  | MAR for W-Beam Safty Barriers | 27.5d | 2013-05-05 | 2013-06-03 | B2532 |  |  |  |  | 161.12d | 0d |  |  | 21 | UDF_G1 |
| B2561 |  | MAR for Gate for Fences | 27.5d | 2013-05-05 | 2013-06-03 | B2562 |  |  |  |  | 149.88d | 0d |  |  | 62 |  |
| B2601 |  | Procurment for Fencing Material | 18.75d | 2013-05-23 | 2013-06-06 | B2591 |  |  |  |  | 232.38d | 1.25d | OCEC Procurment/Curing-7d/W |  |  | UDF_G3 |
| A15067 |  | Prepare and Submit Method Statment for Barriers and Fences | 15d | 2013-05-27 | 2013-06-11 | A15077 SS+3.75d |  |  |  |  | 152.38d | 0d |  |  |  |  |
| B2541 |  | Procurment for W-Beam Safty Barriers | 18.75d | 2013-06-04 | 2013-06-18 | B2531 |  |  |  |  | 233.62d | 0d | OCEC Procurment/Curing-7d/W |  |  | UDF_G3 |
| B2571 |  | Procurment for Gate for Fences | 18.75d | 2013-06-04 | 2013-06-18 | B2561 |  |  |  |  | 217.38d | 0d | OCEC Procurment/Curing-7d/W |  |  | UDF_G3 |
| B2581 |  | MIR for Fencing Material | 2.5d | 2013-06-08 | 2013-06-09 | B2601 |  |  |  |  | 161.12d | 11.25d |  |  |  | UDF_G3 |
| A15068 |  | Review and approval for Method Statment for Barriers and Fences | 17.5d | 2013-06-12 | 2013-07-01 | A15067 |  |  |  |  | 152.38d | 0d |  |  |  |  |
| B2521 |  | MIR for W-Beam Safty Barriers | 2.5d | 2013-06-19 | 2013-06-22 | B2541 |  |  |  |  | 161.12d | 5d |  |  |  | UDF_G3 |
| B2551 |  | MIR for Gate for Fences | 2.5d | 2013-06-19 | 2013-06-22 | B2571 |  |  |  |  | 149.88d | 0d |  |  |  | UDF_G3 |
| OCEC18371 |  | Chain Link Fence to Master Plan Boundary | 31.25d | 2013-06-23 | 2013-07-27 | OCEC18361 FF, B2581, B2551 |  |  |  |  | 149.88d | 65d |  |  |  |  |
| OCEC19661 |  | Setting out and Survey Works | 3.75d | 2013-06-24 | 2013-06-26 | OCEC18331 SS |  |  |  |  | 156.12d | 3.75d |  | Surveyor [30 h]; Surveying Instruments [30 h]; General worker [30 h] |  |  |
| OCEC10931 |  | Install W-Beam Guardrail transition Section and terminal end | 12.5d | 2013-07-02 | 2013-07-15 | OCEC19661, A15068, B2521 |  |  |  |  | 152.38d | 0d |  | Foreman [100 h]; General worker [1000 h]; Fitter [500 h]; Operator [100 h]; Driver [100 h]; Crane mounted truck [100 h]; Canter [100 h]; W-Beam Guardrail [1163.35 LS] |  |  |
| OCEC18361 |  | Concrete Barrier Works | 7.5d | 2013-07-16 | 2013-07-23 | OCEC10931 |  |  |  |  | 152.38d | 2.5d |  | Foreman [60 h]; Mason [300 h]; Operator [60 h]; General worker [600 h]; Driver [60 h]; Crane mounted truck [60 h]; Canter [60 h]; Concrete Barrier [352.66 m] |  |  |
|  | CM1 | **Completion of Works in Road no. 3** |  | 2013-10-09 | 2013-10-09 |  |  |  |  |  |  |  |  |  |  |  |
| OCEC10451 |  | Completion of Works in Road no. 3 | 1d | 2013-10-09 | 2013-10-09 | OCEC11001 FF, OCEC11071 FF, OCEC18301 FF, OCEC18311 FF, OCEC18321 FF, OCEC18371 FF, OCEC9591 FF, OCEC10433 FF, OCEC10861 FF |  |  |  |  | 84.88d | 83.75d |  |  |  |  |
|  | R5 | **OCEC Internal Roads no. 5** |  | 2013-01-16 | 2013-10-08 |  |  |  |  |  |  |  |  |  |  |  |
| OCEC10471 |  | Survey works and setting out | 5d | 2013-01-16 A | 2013-01-22 A | OCEC10181 SS | 100% |  |  |  |  |  |  |  |  |  |
|  | TS | **Technical Submittals** |  | 2013-01-16 | 2013-05-12 |  |  |  |  |  |  |  |  |  |  |  |
|  | PS | **Shopdrawings** |  | 2013-01-16 | 2013-05-12 |  |  |  |  |  |  |  |  |  |  |  |
|  | EI | **Prepare and Submit** |  | 2013-01-16 | 2013-01-30 |  |  |  |  |  |  |  |  |  |  |  |
| OCEC10761 |  | Shopdrawings Layout and Cross Sections for Roads no. 5 | 12.5d | 2013-01-16 A | 2013-01-30 A | OCEC10471 SS | 100% |  |  |  |  |  |  |  |  |  |

| ID | WBS | Activity | Duration | Start | Finish | Predecessors | Complete | Remaining | Planned start | Planned finish | Total float | Free float | Resources |
| --- | --- | --- | --- | --- | --- | --- | --- | --- | --- | --- | --- | --- | --- |
|  | EI1 | **Engineer's Review and instructions to proceed** |  | 2013-01-30 | 2013-05-12 |  |  |  |  |  |  |  |  |
| OCEC10771 |  | Shopdrawings Layout and Cross Sections for Roads no. 5 | 17.5d | 2013-01-30 A | 2013-05-12 | OCEC10761 | 50% | 17.5d | 2013-01-30 | 2013-02-19 | 123.62d | 0d |  |
|  | 3 | **Road Crossings (Zone no. 2); 3 Crossings** |  | 2013-04-23 | 2013-06-16 |  |  |  |  |  |  |  |  |
| OCEC11701 |  | Setting out and route survey | 5d | 2013-04-23 | 2013-04-28 | OCEC10771 SS+8.75d, OCEC10471 |  |  |  |  | 123.62d | 13.75d | Surveyor [40 h]; Surveying Instruments [40 h]; General worker [40 h] |
| OCEC10781 |  | Trench excavation | 7.5d | 2013-05-14 | 2013-05-21 | OCEC11701, A15133 |  |  |  |  | 186.12d | 0d | Excavator [60 h]; Operator [120 h]; General worker [240 h]; Back hoe loader [60 h] |
| OCEC11331 |  | Preparation of bed | 5d | 2013-05-22 | 2013-05-27 | OCEC10781 |  |  |  |  | 186.12d | 0d | General worker [200 h]; Operator [40 h]; Back hoe loader [40 h] |
| OCEC11342 |  | Construction of utilites crossing (Duct) | 7.5d | 2013-05-28 | 2013-06-04 | OCEC11331 |  |  |  |  | 186.12d | 0d | General worker [360 h]; Driver [60 h]; Operator [60 h]; Canter [60 h]; Crane mounted truck [60 h]; Foreman [60 h]; Cable Jointer [120 h]; Fitter [120 h] |
| OCEC11351 |  | Backfilling and compaction | 5d | 2013-06-05 | 2013-06-10 | OCEC11342 |  |  |  |  | 186.12d | 0d | Pedestrain roller [40 h]; Operator [80 h]; Water tanker [40 h]; Driver [40 h]; General worker [200 h]; Back hoe loader [40 h]; Foreman [40 h] |
| OCEC11343 |  | Inspection and Testing | 5d | 2013-06-11 | 2013-06-16 | OCEC11342, OCEC11351 |  |  |  |  | 186.12d | 100d | General worker [40 h]; Foreman [40 h] |
|  | DM | **Drainage Works and Manholes** |  | 2013-02-17 | 2013-09-24 |  |  |  |  |  |  |  |  |
| OCEC11361 |  | Setting out and route survey | 5d | 2013-02-17 A | 2013-02-23 A | OCEC11701 SS, B2911, B3391 | 100% |  | 2013-05-26 | 2013-06-01 |  |  | Surveyor [40 h]; Surveying Instruments [40 h]; General worker [40 h] |
| OCEC11371 |  | Trench excavation | 15d | 2013-02-23 A | 2013-07-09 | OCEC11361 | 40% | 15d | 2013-06-01 | 2013-06-17 | 72.38d | 0d | General worker [120 h]; Back hoe loader [120 h]; Operator [120 h]; Foreman [120 h] |
| OCEC11381 |  | Bedding, Compaction and Levelling | 7.5d | 2013-06-24 | 2013-07-01 | OCEC11371 SS+7.5d |  |  |  |  | 98.62d | 0d | General worker [120 h]; Plate compactor [60 h]; Operator [120 h]; Foreman [60 h] |
| OCEC18541 |  | Pipe Culvert Construction | 12.5d | 2013-06-29 | 2013-07-10 | OCEC11381 SS+3.75d |  |  |  |  | 98.62d | 0d | General worker [200 h]; Pipe Culvert [7.41 m]; Mason [100 h]; Foreman [100 h] |
| OCEC11421 |  | Construction of Catch Pits and hook up | 31.25d | 2013-07-13 | 2013-08-18 | OCEC18541 |  |  |  |  | 98.62d | 0d | Mason [500 h]; General worker [1000 h]; خرسانة مسلحة للأرضيات [16.67 م3]; Foreman [250 h] |
| OCEC18551 |  | Installation of Grated Channels | 31.25d | 2013-07-13 | 2013-08-18 | OCEC11421 SS |  |  |  |  | 98.62d | 0d | طوب مصمط [309.17]; General worker [750 h]; Foreman [250 h] |
| OCEC18531 |  | Construction of Grate Opennings | 7.5d | 2013-08-19 | 2013-08-26 | OCEC18551 |  |  |  |  | 98.62d | 0d | General worker [240 h]; Mason [120 h]; Foreman [60 h] |
| OCEC11391 |  | Pipe lowering | 10d | 2013-08-24 | 2013-09-02 | OCEC11381 SS+3.75d, OCEC18531 SS+3.75d |  |  |  |  | 98.62d | 0d | Canter [80 h]; General worker [320 h]; Driver [80 h]; Crane mounted truck [80 h]; Foreman [80 h]; Operator [80 h]; Fitter [160 h] |
| OCEC11401 |  | Pipe joining | 10d | 2013-08-28 | 2013-09-08 | OCEC11391 SS+5d |  |  |  |  | 98.62d | 0d | General worker [240 h]; Back hoe loader [80 h]; Fitter [160 h]; Foreman [80 h] |
| OCEC11411 |  | Backfilling and Compaction | 10d | 2013-09-09 | 2013-09-18 | OCEC11421, OCEC11401, OCEC18551 |  |  |  |  | 98.62d | 0d | Back hoe loader [80 h]; Pedestrain roller [80 h]; Water tanker [80 h]; Operator [160 h]; Driver [80 h]; General worker [240 h]; Foreman [80 h] |
| OCEC11431 |  | Inspection and Testing | 5d | 2013-09-21 | 2013-09-24 | OCEC11411 |  |  |  |  | 98.62d | 12.5d | General worker [40 h]; Foreman [40 h] |
|  | EI | **Electrical Installation** |  | 2013-06-24 | 2013-10-08 |  |  |  |  |  |  |  |  |
| OCEC13081 |  | Setting out and route survey | 3.75d | 2013-06-24 | 2013-06-26 | OCEC11361 SS |  |  |  |  | 68.62d | 0d | General worker [30 h]; Surveyor [30 h]; Surveying Instruments [30 h] |
| OCEC11511 |  | Trench excavation for low voltage cable | 15d | 2013-06-29 | 2013-07-14 | OCEC13081, OCEC11371 FF |  |  |  |  | 68.62d | 0d | General worker [120 h]; Back hoe loader [120 h]; Operator [120 h] |
| OCEC11521 |  | Bed preparation | 15d | 2013-07-07 | 2013-07-22 | OCEC11511 SS+7.5d |  |  |  |  | 68.62d | 0d | General worker [120 h]; Plate compactor [120 h]; Operator [120 h] |
| OCEC11561 |  | Install AC pipe ducts | 15d | 2013-07-15 | 2013-07-30 | OCEC11521 SS+7.5d |  |  |  |  | 68.62d | 0d | Carpenter [120 h]; General worker [360 h]; Plate compactor [120 h]; Mason [120 h]; AC Pipe Ducts [26.05 m]; Operator [120 h] |
| OCEC11531 |  | Low Voltage Cable laying | 15d | 2013-07-31 | 2013-08-19 | OCEC11561 |  |  |  |  | 86.12d | 0d | Canter [120 h]; General worker [120 h]; Crane mounted truck [120 h]; Driver [120 h]; Operator [120 h] |
| OCEC18561 |  | Cable termination | 12.5d | 2013-08-20 | 2013-09-02 | OCEC11531 |  |  |  |  | 86.12d | 0d | General worker [200 h]; Crimping tool [100 h]; Tool kit [100 h]; Cable Jointer [100 h]; Foreman [100 h] |
| OCEC18571 |  | Inspection and Testing | 7.5d | 2013-09-03 | 2013-09-10 | OCEC18561 |  |  |  |  | 86.12d | 0d | General worker [60 h]; Foreman [60 h] |
| OCEC11541 |  | Backfilling and compaction | 12.5d | 2013-09-11 | 2013-09-24 | OCEC18571 |  |  |  |  | 86.12d | 0d | Back hoe loader [100 h]; Pedestrain roller [100 h]; Water tanker [100 h]; Operator [200 h]; Driver [100 h]; General worker [300 h] |
| OCEC11551 |  | Marker post and marker plates fixing | 12.5d | 2013-09-25 | 2013-10-08 | OCEC11541, B2851 |  |  |  |  | 86.12d | 0d | General worker [200 h]; Mason [100 h] |

| ID | WBS | Activity | Duration | Start | Finish | Predecessors | Total float | Free float | Resources |
| --- | --- | --- | --- | --- | --- | --- | --- | --- | --- |
|  | ERW | **Earth Works** |  | 2013-04-23 | 2013-08-25 |  |  |  |  |
| OCEC11441 |  | Removal of Structures and Obstructions | 17.5d | 2013-04-23 | 2013-05-12 | OCEC10471 SS | 134.88d | 32.5d |  |
| OCEC11691 |  | Clearing and grubbing | 5d | 2013-06-18 | 2013-06-23 | OCEC11441, B1711 | 102.38d | 0d | Front end loader [40 h]; Tipper [40 h]; Excavator [40 h]; Grader [40 h]; Operator [120 h]; Driver [40 h]; General worker [120 h]; Foreman [40 h] |
| OCEC11711 |  | Setting out and route survey | 5d | 2013-06-24 | 2013-06-29 | OCEC11691, OCEC13081 SS | 102.38d | 0d | Surveyor [40 h]; Surveying Instruments [40 h]; General worker [40 h] |
| OCEC11501 |  | Unclassified excavation and removal | 10d | 2013-06-30 | 2013-07-09 | OCEC11711 | 126.62d | 0d | Excavator [80 h]; Bull dozer [80 h]; Front end loader [80 h]; Tipper [160 h]; Water tanker [80 h]; Driver [240 h]; Operator [240 h]; General worker [480 h]; Foreman [80 h] |
| OCEC11451 |  | Embankment filling and sub grade preparation | 15d | 2013-07-06 | 2013-07-21 | OCEC11501 SS+5d | 126.62d | 0d | Operator [360 h]; Water tanker [120 h]; Grader [120 h]; Tipper [240 h]; Front end loader [120 h]; Vibratory roller [120 h]; Driver [360 h]; Borrow Embankment [10259.1 M3]; General worker [960 h]; Foreman [120 h] |
| OCEC11461 |  | Granular sub base course Class B - 150 mm thick | 7.5d | 2013-07-14 | 2013-07-21 | OCEC11451 SS+7.5d | 126.62d | 0d | Driver [180 h]; Operator [180 h]; General worker [300 h]; Vibratory roller [60 h]; Grader [60 h]; Front end loader [60 h]; Tipper [120 h]; Water tanker [60 h]; Granular Sub-Base [745 M3]; Foreman [60 h] |
| OCEC11641 |  | Precast Concrete Curb | 5d | 2013-07-22 | 2013-07-27 | OCEC11461 | 126.62d | 0d | Mason [400 h]; General worker [800 h]; Foreman [40 h] |
| OCEC11471 |  | Aggregate base course Class A - 100 mm and 150 mm thick | 3.75d | 2013-07-28 | 2013-07-30 | OCEC11641 | 126.62d | 0d | Water tanker [30 h]; Tipper [60 h]; Grader [30 h]; Vibratory roller [30 h]; Driver [90 h]; General worker [150 h]; Aggregate Base Course [445.8 M3]; Operator [60 h]; Foreman [30 h] |
| OCEC11481 |  | Bituminous prime coat and bituminous base course Class A - 50 mm thick | 2d | 2013-07-31 | 2013-08-03 | OCEC11471, B1831 | 126.62d | 0d | Asphalt paver [20 h]; Tipper [20 h]; Tyre roller [20 h]; Operator [60 h]; Driver [20 h]; General worker [40 h]; Tandem roller [20 h]; Prime Coat & BBC [445.8 M3]; Foreman [16 h] |
| OCEC11491 |  | Bituminous take coat and bituminous wearing course Class A - 50 mm thick | 17.5d | 2013-08-03 | 2013-08-25 | OCEC11481 | 126.62d | 40.5d | Asphalt paver [175 h]; Tipper [175 h]; Tyre roller [175 h]; Operator [700 h]; Driver [175 h]; General worker [350 h]; Air Compressor [175 h]; Tandem roller [175 h]; Tack Coat & Wearing Course [3900.75 M3] |
|  | RL1 | **Road Lighting** |  | 2013-06-24 | 2013-09-28 |  |  |  |  |
| OCEC18631 |  | Setting out and route survey | 5d | 2013-06-24 | 2013-06-29 | OCEC11711 SS | 102.38d | 0d | General worker [40 h]; Surveyor [40 h]; Surveying Instruments [40 h] |
| OCEC18641 |  | Excavation Works | 5d | 2013-07-07 | 2013-07-10 | OCEC18631, OCEC11511 SS+7.5d | 96.12d | 0d | General worker [40 h]; Back hoe loader [40 h]; Operator [40 h]; Foreman [40 h] |
| OCEC11571 |  | Concrete base for Feeder Pillar and High mast | 15d | 2013-07-13 | 2013-07-28 | OCEC18641 | 96.12d | 0d | General worker [240 h]; Concrete Base for Feeder Pillar & High Mast [10.72 M3]; Mason [120 h]; Foreman [120 h] |
| OCEC11581 |  | Installation of Feed Pillar | 10d | 2013-07-17 | 2013-07-28 | OCEC11571 SS+5d | 97.38d | 0d | General worker [160 h]; Operator [80 h]; Feeder Pillar [0.29 LS]; Crane mounted truck [80 h]; Canter [80 h]; Driver [80 h]; Foreman [80 h] |
| OCEC11601 |  | Installation of High mast assembly | 12.5d | 2013-07-20 | 2013-07-31 | OCEC11571 SS+6.25d | 96.12d | 0d | General worker [200 h]; Operator [100 h]; High Mast Assebly [0.39 LS]; Driver [100 h]; Crane mounted truck [100 h]; Canter [100 h]; Foreman [100 h] |
| OCEC11591 |  | Installation of Ornamental Lighting Columns | 8.75d | 2013-07-22 | 2013-07-30 | OCEC11581 SS+3.75d | 97.38d | 1.25d | General worker [700 h]; Operator [70 h]; Ornamental Lighting Columns [11.83 LS]; Driver [70 h]; Crane mounted truck [70 h]; Canter [70 h] |
| OCEC11611 |  | Earthing for Feeder Pillar and the end of Street lighting circuit | 12.5d | 2013-08-03 | 2013-08-18 | OCEC11581, OCEC11601, OCEC11591 | 96.12d | 0d | General worker [200 h]; Foreman [100 h] |
| OCEC18651 |  | Inspection and Testing | 5d | 2013-08-19 | 2013-08-24 | OCEC11611 | 96.12d | 0d | General worker [80 h]; Foreman [40 h] |
| OCEC11621 |  | Power supply connections and Tests | 31.25d | 2013-08-25 | 2013-09-28 | OCEC11591, OCEC18651 | 96.12d | 10d | General worker [2000 h]; Foreman [250 h] |
|  | SP | **Finishing Road Works** |  | 2013-06-29 | 2013-08-12 |  |  |  |  |
| OCEC11631 |  | Precast Concrete tile Paving 60 mm thick | 7.5d | 2013-06-29 | 2013-07-06 | OCEC10901 SS | 137.38d | 0d | Operator [60 h]; Precast Concrete Tile Paving [1114.72 LS]; Mason [600 h]; General worker [1200 h]; Plate compactor [60 h]; Foreman [60 h] |
| OCEC11671 |  | Riprap Works | 7.5d | 2013-06-29 | 2013-07-06 | OCEC11631 SS, B3001 | 137.38d | 0d | Front end loader [60 h]; Tipper [60 h]; Excavator [60 h]; Grader [60 h]; Operator [180 h]; Driver [60 h]; Riprap [225 LS]; General worker [600 h]; Mason [300 h]; Foreman [60 h] |
| OCEC18581 |  | Gabions Works | 7.5d | 2013-06-29 | 2013-07-06 | OCEC11671 SS | 137.38d | 0d | Front end loader [60 h]; Tipper [60 h]; Excavator [60 h]; Grader [60 h]; Operator [180 h]; Driver [60 h]; Gabions [682 LS]; General worker [600 h]; Mason [300 h]; Foreman [60 h] |
| OCEC18591 |  | Ditch Lining Works | 7.5d | 2013-06-29 | 2013-07-06 | OCEC18581 SS | 137.38d | 0d | Ditch Lining [551 LS]; General worker [600 h]; Mason [300 h]; Foreman [60 h] |
| OCEC18611 |  | Interlok Tiles | 17.5d | 2013-06-29 | 2013-07-16 | OCEC11631 SS | 158.62d | 72.5d | Mason [700 h]; General worker [1400 h]; Foreman [140 h] |
| OCEC18601 |  | Coastal Protection Works | 31.25d | 2013-07-07 | 2013-08-12 | OCEC11671, OCEC18591, B2611, OCEC18581 | 137.38d | 51.25d | Front end loader [250 h]; Tipper [250 h]; Excavator [250 h]; Grader [250 h]; Operator [750 h]; Driver [250 h]; Coastal Protection [3815.5 m]; General worker [2500 h]; Mason [1250 h]; Foreman [250 h] |
| OCEC11651 |  | Traffic Signs | 12.5d | 2013-07-13 | 2013-07-24 | OCEC11631 SS, B2881 | 146.12d | 0d | Operator [100 h]; Driver [100 h]; Traffic Signs [41 LS]; General worker [1000 h]; Crane mounted truck [100 h]; Canter [100 h]; Foreman [100 h] |
| OCEC18621 |  | Road Marking and Studs | 17.5d | 2013-07-13 | 2013-07-30 | OCEC11651 SS, B2701 | 146.12d | 60d | Road Marking&Studs [1633.33 LS]; General worker [1400 h]; Foreman [140 h]; Painter [700 h] |

| ID | WBS | Activity | Duration | Start | Finish | Predecessors | Complete | Remaining | Planned start | Planned finish | Total float | Free float | Resources |
| --- | --- | --- | --- | --- | --- | --- | --- | --- | --- | --- | --- | --- | --- |
|  | 1 | **Safty Barriers and Fences** |  | 2013-06-23 | 2013-07-27 |  |  |  |  |  |  |  |  |
| OCEC18671 |  | Chain Link Fence to Master Plan Boundary | 31.25d | 2013-06-23 | 2013-07-27 | OCEC18661 FF, B2551, B2581 |  |  |  |  | 149.88d | 63.75d |  |
| OCEC19681 |  | Setting out and Survey Works | 3.75d | 2013-06-24 | 2013-06-26 | OCEC18631 SS |  |  |  |  | 156.12d | 0d | General worker [30 h]; Surveyor [30 h]; Surveying Instruments [30 h] |
| OCEC11661 |  | Install W-Beam Guardrail transition Section and terminal end | 12.5d | 2013-06-29 | 2013-07-10 | OCEC19681, B2521 |  |  |  |  | 156.12d | 0d | Operator [100 h]; Driver [100 h]; W-Beam Guardrail [285.35 LS]; General worker [1000 h]; Crane mounted truck [100 h]; Canter [100 h]; Fitter [500 h]; Foreman [100 h] |
| OCEC18661 |  | Concrete Barrier Works | 7.5d | 2013-07-13 | 2013-07-20 | OCEC11661 |  |  |  |  | 156.12d | 6.25d | Operator [60 h]; Driver [60 h]; Concrete Barrier [86.4 m]; Mason [300 h]; General worker [600 h]; Crane mounted truck [60 h]; Canter [60 h]; Foreman [60 h] |
|  | CM1 | **Completion of Works in Road no. 5** |  | 2013-10-08 | 2013-10-08 |  |  |  |  |  |  |  |  |
| OCEC11681 |  | Completion of Works in Road no. 5 | 1d | 2013-10-08 | 2013-10-08 | OCEC11551 FF, OCEC11621 FF, OCEC18601 FF, OCEC18611 FF, OCEC18621 FF, OCEC18671 FF, OCEC11491 FF, OCEC11343 FF, OCEC11431 FF |  |  |  |  | 86.12d | 85d |  |
|  | R6 | **OCEC Internal Roads no. 6** |  | 2013-01-16 | 2013-10-09 |  |  |  |  |  |  |  |  |
| OCEC10461 |  | Survey works and setting out | 3.75d | 2013-01-16 A | 2013-01-21 A | OCEC10471 SS | 100% |  |  |  |  |  |  |
|  | TS | **Technical Submittals** |  | 2013-01-16 | 2013-05-12 |  |  |  |  |  |  |  |  |
|  | PS | **Shopdrawings** |  | 2013-01-16 | 2013-05-12 |  |  |  |  |  |  |  |  |
|  | EI | **Prepare and Submit** |  | 2013-01-16 | 2013-02-03 |  |  |  |  |  |  |  |  |
| OCEC10871 |  | Shopdrawings Layout and Cross Sections for Roads no. 6 | 15d | 2013-01-16 A | 2013-02-03 A | OCEC10461 SS | 100% |  |  |  |  |  |  |
|  | EI1 | **Engineer's Review and instructions to proceed** |  | 2013-02-03 | 2013-05-12 |  |  |  |  |  |  |  |  |
| OCEC10881 |  | Shopdrawings Layout and Cross Sections for Roads no. 6 | 17.5d | 2013-02-03 A | 2013-05-12 | OCEC10871 | 50% | 17.5d | 2013-02-03 | 2013-02-23 | 99.88d | 0d |  |
|  | 3 | **Road Crossings (Zone no. 5); 7 Crossings** |  | 2013-04-23 | 2013-06-16 |  |  |  |  |  |  |  |  |
| OCEC20101 |  | Setting out and route survey | 5d | 2013-04-23 | 2013-04-28 | OCEC10881 SS+8.75d, OCEC10461 |  |  |  |  | 99.88d | 8.75d | Surveying Instruments [40 h]; Surveyor [40 h]; General worker [40 h] |
| OCEC11091 |  | Trench excavation | 7.5d | 2013-05-08 | 2013-05-15 | OCEC20101, A15132 |  |  |  |  | 91.12d | 0d | General worker [240 h]; Foreman [60 h]; Operator [120 h]; Excavator [60 h]; Back hoe loader [60 h] |
| OCEC13071 |  | Preparation of bed | 5d | 2013-05-18 | 2013-05-21 | OCEC11091 |  |  |  |  | 91.12d | 0d | General worker [200 h]; Foreman [40 h]; Back hoe loader [40 h]; Operator [40 h] |
| OCEC18192 |  | Construction of utilites crossing (Duct) | 7.5d | 2013-05-22 | 2013-05-29 | OCEC13071 |  |  |  |  | 91.12d | 0d | Operator [60 h]; General worker [360 h]; Foreman [60 h]; Fitter [120 h]; Driver [60 h]; Cable Jointer [120 h]; Crane mounted truck [60 h]; Canter [60 h] |
| OCEC18193 |  | Inspection and Testing | 5d | 2013-06-01 | 2013-06-04 | OCEC18192 |  |  |  |  | 196.12d | 111.25d | Foreman [40 h]; General worker [40 h] |
| OCEC18201 |  | Backfilling and compaction | 15d | 2013-06-01 | 2013-06-16 | OCEC18192 |  |  |  |  | 91.12d | 6.25d | Driver [120 h]; Operator [240 h]; General worker [600 h]; Foreman [120 h]; Back hoe loader [120 h]; Water tanker [120 h]; Pedestrain roller [120 h] |
|  | DM | **Drainage Works and Manholes** |  | 2013-02-12 | 2013-09-24 |  |  |  |  |  |  |  |  |
| OCEC18381 |  | Setting out and route survey | 5d | 2013-02-12 A | 2013-02-18 A | OCEC18201, B2911, B3391, OCEC20101 SS | 100% |  | 2013-05-26 | 2013-06-01 |  |  | Surveying Instruments [40 h]; Surveyor [40 h]; General worker [40 h] |
| OCEC18391 |  | Trench excavation | 15d | 2013-02-19 A | 2013-07-09 | OCEC18381 | 40% | 15d | 2013-06-01 | 2013-06-17 | 89.88d | 0d | General worker [360 h]; Foreman [120 h]; Operator [360 h]; Back hoe loader [360 h] |
| OCEC18401 |  | Bedding, Compaction and Levelling | 7.5d | 2013-06-24 | 2013-07-01 | OCEC18391 SS+5d |  |  |  |  | 98.62d | 0d | Operator [240 h]; General worker [240 h]; Foreman [60 h]; Plate compactor [240 h] |
| OCEC20071 |  | Pipe Culvert Construction | 12.5d | 2013-06-29 | 2013-07-10 | OCEC18401 SS+3.75d |  |  |  |  | 98.62d | 0d | Foreman [100 h]; General worker [400 h]; Mason [200 h]; Pipe Culvert [15.39 m] |
| OCEC18441 |  | Construction of Catch Pits and hook up | 31.25d | 2013-07-13 | 2013-08-18 | OCEC20071 |  |  |  |  | 98.62d | 0d | Mason [750 h]; General worker [1500 h]; Foreman [250 h]; خرسانة مسلحة للأرضيات [35 م3] |
| OCEC20081 |  | Installation of Grated Channels | 31.25d | 2013-07-13 | 2013-08-18 | OCEC18441 SS |  |  |  |  | 98.62d | 0d | Foreman [250 h]; General worker [1000 h]; طوب مصمط [642.5] |
| OCEC20061 |  | Construction of Grate Opennings | 7.5d | 2013-08-19 | 2013-08-26 | OCEC20081 |  |  |  |  | 98.62d | 0d | Mason [180 h]; General worker [360 h]; Foreman [60 h] |
| OCEC18411 |  | Pipe lowering | 10d | 2013-08-24 | 2013-09-02 | OCEC18401 SS+3.75d, OCEC20061 SS+3.75d |  |  |  |  | 98.62d | 0d | General worker [400 h]; Foreman [80 h]; Fitter [400 h]; Operator [80 h]; Driver [80 h]; Crane mounted truck [80 h]; Canter [80 h] |
| OCEC18421 |  | Pipe joining | 10d | 2013-08-28 | 2013-09-08 | OCEC18411 SS+5d |  |  |  |  | 98.62d | 0d | Back hoe loader [80 h]; Foreman [80 h]; Fitter [400 h]; General worker [400 h] |
| OCEC18431 |  | Backfilling and Compaction | 10d | 2013-09-09 | 2013-09-18 | OCEC18441, OCEC18421, OCEC20081 |  |  |  |  | 98.62d | 0d | Driver [80 h]; Operator [320 h]; General worker [400 h]; Foreman [80 h]; Back hoe loader [160 h]; Water tanker [80 h]; Pedestrain roller [160 h] |
| OCEC18451 |  | Inspection and Testing | 5d | 2013-09-21 | 2013-09-24 | OCEC18431 |  |  |  |  | 98.62d | 13.75d | General worker [40 h]; Foreman [40 h] |

| ID | WBS | Activity | Duration | Start | Finish | Predecessors | Total float | Free float | Resources |
| --- | --- | --- | --- | --- | --- | --- | --- | --- | --- |
|  | EI | **Electrical Installation** |  | 2013-06-24 | 2013-10-05 |  |  |  |  |
| OCEC19931 |  | Setting out and route survey | 5d | 2013-06-24 | 2013-06-29 | OCEC18381 SS | 84.88d | 0d | Surveyor [40 h]; Surveying Instruments [40 h]; General worker [40 h] |
| OCEC19671 |  | Trench excavation for low voltage cable | 15d | 2013-06-30 | 2013-07-15 | OCEC19931, OCEC18391 FF | 84.88d | 0d | General worker [240 h]; Operator [240 h]; Back hoe loader [240 h] |
| OCEC19871 |  | Bed preparation | 15d | 2013-07-08 | 2013-07-23 | OCEC19671 SS+7.5d | 84.88d | 0d | Operator [240 h]; General worker [240 h]; Plate compactor [240 h] |
| OCEC19921 |  | Install AC pipe ducts | 15d | 2013-07-16 | 2013-07-31 | OCEC19871 SS+7.5d | 84.88d | 0d | Carpenter [120 h]; General worker [360 h]; Mason [120 h]; Operator [120 h]; Plate compactor [120 h]; AC Pipe Ducts [54.06 m] |
| OCEC19891 |  | Low Voltage Cable laying | 15d | 2013-08-03 | 2013-08-20 | OCEC19921 | 84.88d | 0d | General worker [240 h]; Driver [120 h]; Operator [120 h]; Crane mounted truck [120 h]; Canter [120 h] |
| OCEC20111 |  | Cable termination | 12.5d | 2013-08-21 | 2013-09-03 | OCEC19891 | 84.88d | 0d | Cable Jointer [100 h]; Foreman [100 h]; General worker [200 h]; Crimping tool [100 h]; Tool kit [100 h] |
| OCEC20121 |  | Inspection and Testing | 7.5d | 2013-09-04 | 2013-09-11 | OCEC20111 | 84.88d | 0d | Foreman [60 h]; General worker [60 h] |
| OCEC19901 |  | Backfilling and compaction | 5d | 2013-09-14 | 2013-09-17 | OCEC20121 | 84.88d | 0d | Driver [40 h]; Operator [120 h]; General worker [120 h]; Back hoe loader [40 h]; Water tanker [40 h]; Pedestrain roller [40 h] |
| OCEC19911 |  | Marker post and marker plates fixing | 15d | 2013-09-18 | 2013-10-05 | OCEC19901, B2851 | 89.88d | 5d | Mason [120 h]; General worker [240 h] |
|  | ERW | **Earth Works** |  | 2013-09-18 | 2013-10-09 |  |  |  |  |
| OCEC18461 |  | Removal of Structures and Obstructions | 1.25d | 2013-09-18 | 2013-09-18 | OCEC10461 SS, OCEC19901 | 84.88d | 0d |  |
| OCEC20091 |  | Clearing and grubbing | 1.25d | 2013-09-21 | 2013-09-21 | OCEC18461, B1711 SS | 84.88d | 0d | Foreman [10 h]; Driver [10 h]; Operator [30 h]; General worker [30 h]; Excavator [10 h]; Front end loader [10 h]; Grader [10 h]; Tipper [10 h] |
| OCEC20131 |  | Setting out and route survey | 1.25d | 2013-09-22 | 2013-09-22 | OCEC20091, OCEC19931 SS | 84.88d | 0d | Surveying Instruments [10 h]; Surveyor [10 h]; General worker [10 h] |
| OCEC18521 |  | Unclassified excavation and removal | 2.5d | 2013-09-23 | 2013-09-24 | OCEC20131 | 84.88d | 0d | Driver [60 h]; General worker [120 h]; Operator [60 h]; Foreman [20 h]; Excavator [20 h]; Bull dozer [20 h]; Front end loader [20 h]; Tipper [40 h]; Water tanker [20 h] |
| OCEC18471 |  | Embankment filling and sub grade preparation | 2.5d | 2013-09-25 | 2013-09-28 | OCEC18521 | 84.88d | 0d | Borrow Embankment [10653.7 M3]; Driver [220 h]; Foreman [20 h]; Operator [160 h]; General worker [160 h]; Front end loader [160 h]; Grader [60 h]; Tipper [160 h]; Vibratory roller [60 h]; Water tanker [60 h] |
| OCEC18481 |  | Granular sub base course Class B - 150 mm thick | 2.5d | 2013-09-28 | 2013-09-29 | OCEC18471 SS+1.25d | 84.88d | 0d | Driver [220 h]; Foreman [20 h]; General worker [160 h]; Operator [160 h]; Front end loader [160 h]; Grader [60 h]; Tipper [160 h]; Vibratory roller [60 h]; Water tanker [60 h]; Granular Sub-Base [925.86 M3] |
| OCEC20011 |  | Precast Concrete Curb | 2.5d | 2013-09-30 | 2013-10-01 | OCEC18481 | 84.88d | 0d | Mason [200 h]; General worker [400 h]; Foreman [20 h] |
| OCEC18491 |  | Aggregate base course Class A - 100 mm and 150 mm thick | 2.5d | 2013-10-02 | 2013-10-05 | OCEC20011 | 84.88d | 0d | Driver [60 h]; Foreman [20 h]; General worker [100 h]; Operator [40 h]; Grader [20 h]; Tipper [40 h]; Vibratory roller [20 h]; Water tanker [20 h]; Aggregate Base Course [925.86 M3] |
| OCEC18501 |  | Bituminous prime coat and bituminous base course Class A - 50 mm thick | 2.5d | 2013-10-06 | 2013-10-07 | OCEC18491, B1831 | 84.88d | 0d | Foreman [20 h]; Driver [20 h]; General worker [50 h]; Operator [125 h]; Asphalt paver [20 h]; Tandem roller [50 h]; Tipper [20 h]; Tyre roller [50 h]; Prime Coat & BBC [1157.32 M3] |
| OCEC18511 |  | Bituminous take coat and bituminous wearing course Class A - 50 mm thick | 2.5d | 2013-10-08 | 2013-10-09 | OCEC18501 | 84.88d | 0d | Foreman [20 h]; Driver [20 h]; General worker [50 h]; Operator [150 h]; Air Compressor [20 h]; Asphalt paver [20 h]; Tandem roller [50 h]; Tipper [20 h]; Tyre roller [50 h]; Tack Coat & Wearing Course [1157.32 M3] |
|  | RL1 | **Road Lighting** |  | 2013-09-23 | 2013-10-08 |  |  |  |  |
| OCEC20191 |  | Setting out and route survey | 5d | 2013-09-23 | 2013-09-28 | OCEC20131 SS+1.25d | 86.12d | 0d | Surveyor [40 h]; Surveying Instruments [40 h]; General worker [40 h] |
| OCEC20201 |  | Excavation Works | 2.5d | 2013-09-29 | 2013-09-30 | OCEC20191, OCEC19671 SS+7.5d | 86.12d | 0d | General worker [60 h]; Foreman [20 h]; Operator [20 h]; Back hoe loader [20 h] |
| OCEC19941 |  | Concrete base for Feeder Pillar and High mast | 3.75d | 2013-10-01 | 2013-10-05 | OCEC20201 | 86.12d | 0d | General worker [180 h]; Foreman [30 h]; Mason [90 h]; Concrete Base for Feeder Pillar & High Mast [66.83 M3] |
| OCEC19951 |  | Installation of Feed Pillar | 3.75d | 2013-10-02 | 2013-10-06 | OCEC19941 SS+1.25d | 86.12d | 0d | General worker [60 h]; Foreman [30 h]; Operator [30 h]; Crane mounted truck [30 h]; Canter [30 h]; Feeder Pillar [0.91 LS] |
| OCEC19971 |  | Installation of High mast assembly | 3.75d | 2013-10-02 | 2013-10-06 | OCEC19941 SS+1.25d | 87.38d | 1.25d | General worker [60 h]; Foreman [30 h]; Operator [30 h]; Driver [30 h]; Crane mounted truck [30 h]; Canter [30 h]; High Mast Assebly [1.22 LS] |
| OCEC19961 |  | Installation of Ornamental Lighting Columns | 3.75d | 2013-10-05 | 2013-10-07 | OCEC19951 SS+1.25d | 86.12d | 0d | Foreman [30 h]; General worker [150 h]; Driver [30 h]; Operator [30 h]; Crane mounted truck [30 h]; Canter [30 h]; Ornamental Lighting Columns [31.59 LS] |
| OCEC19981 |  | Earthing for Feeder Pillar and the end of Street lighting circuit | 2.5d | 2013-10-06 | 2013-10-07 | OCEC19951 SS+1.25d, OCEC19971 SS+1.25d, OCEC19961 SS+1.25d | 86.12d | 0d | Foreman [20 h]; General worker [40 h] |
| OCEC19991 |  | Power supply connections and Tests | 2.5d | 2013-10-07 | 2013-10-08 | OCEC19961 SS+1.25d, OCEC20211 FF | 86.12d | 1.25d | Foreman [20 h]; General worker [20 h] |
| OCEC20211 |  | Inspection and Testing | 2.5d | 2013-10-07 | 2013-10-08 | OCEC19981 SS+1.25d | 86.12d | 0d | Foreman [20 h]; General worker [40 h] |

| ID | WBS | Activity | Duration | Start | Finish | Predecessors | Complete | Remaining | Planned start | Planned finish | Total float | Free float | Resources |
| --- | --- | --- | --- | --- | --- | --- | --- | --- | --- | --- | --- | --- | --- |
|  | SP | **Finishing Road Works** |  | 2013-06-29 | 2013-08-12 |  |  |  |  |  |  |  |  |
| OCEC20001 |  | Precast Concrete tile Paving 60 mm thick | 7.5d | 2013-06-29 | 2013-07-06 | OCEC11631 SS |  |  |  |  | 137.38d | 0d | Foreman [60 h]; Mason [600 h]; Operator [60 h]; General worker [1200 h]; Plate compactor [60 h] |
| OCEC20041 |  | Riprap Works | 7.5d | 2013-06-29 | 2013-07-06 | OCEC20001 SS, B3001 |  |  |  |  | 137.38d | 0d | Foreman [60 h]; Driver [60 h]; Operator [180 h]; General worker [600 h]; Mason [300 h]; Excavator [60 h]; Front end loader [60 h]; Grader [60 h]; Tipper [60 h]; Riprap [1406.97 LS] |
| OCEC20141 |  | Gabions Works | 7.5d | 2013-06-29 | 2013-07-06 | OCEC20041 SS |  |  |  |  | 137.38d | 0d | Foreman [60 h]; Driver [60 h]; Operator [180 h]; General worker [600 h]; Mason [300 h]; Excavator [60 h]; Front end loader [60 h]; Grader [60 h]; Tipper [60 h]; Gabions [4251.69 LS] |
| OCEC20151 |  | Ditch Lining Works | 7.5d | 2013-06-29 | 2013-07-06 | OCEC20141 SS |  |  |  |  | 137.38d | 0d | Mason [300 h]; General worker [600 h]; Foreman [60 h]; Operator [180 h]; Driver [60 h]; Excavator [60 h]; Front end loader [60 h]; Grader [60 h]; Tipper [60 h]; Ditch Lining [3434.4 LS] |
| OCEC20171 |  | Interlok Tiles | 17.5d | 2013-06-29 | 2013-07-16 | OCEC20001 SS |  |  |  |  | 158.62d | 73.75d | Foreman [140 h]; Mason [700 h]; General worker [1400 h] |
| OCEC20161 |  | Coastal Protection Works | 31.25d | 2013-07-07 | 2013-08-12 | OCEC20041, OCEC20141, OCEC20151, B2611 |  |  |  |  | 137.38d | 52.5d | General worker [2500 h]; Foreman [250 h]; Operator [250 h]; Driver [250 h]; Crane mounted truck [250 h]; Canter [250 h]; Coastal Protection [23762.5 m] |
| OCEC20021 |  | Traffic Signs | 7.5d | 2013-07-13 | 2013-07-20 | OCEC20001 SS, B2881 |  |  |  |  | 146.12d | 0d | Foreman [60 h]; General worker [600 h]; Painter [300 h]; Traffic Signs [255 LS] |
| OCEC20181 |  | Road Marking and Studs | 17.5d | 2013-07-13 | 2013-07-30 | OCEC20021 SS, B2701 |  |  |  |  | 146.12d | 61.25d | Foreman [140 h]; Driver [140 h]; Operator [420 h]; General worker [1400 h]; Mason [700 h]; Excavator [140 h]; Front end loader [140 h]; Grader [140 h]; Tipper [140 h] |
|  | 1 | **Safty Barriers and Fences** |  | 2013-09-23 | 2013-10-02 |  |  |  |  |  |  |  |  |
| OCEC20231 |  | Chain Link Fence to Master Plan Boundary | 10d | 2013-09-23 | 2013-10-02 | OCEC20221 FF, B2551, B2581 |  |  |  |  | 91.12d | 6.25d |  |
| OCEC20241 |  | Setting out and Survey Works | 3.75d | 2013-09-23 | 2013-09-25 | OCEC20191 SS |  |  |  |  | 91.12d | 0d | Surveyor [30 h]; Surveying Instruments [30 h]; General worker [30 h] |
| OCEC20031 |  | Install W-Beam Guardrail transition Section and terminal end | 3.75d | 2013-09-28 | 2013-09-30 | OCEC20241, B2521 |  |  |  |  | 91.12d | 0d | Foreman [30 h]; General worker [300 h]; Fitter [150 h]; Driver [30 h]; Operator [30 h]; Crane mounted truck [30 h]; Canter [30 h]; W-Beam Guardrail [888.98 LS] |
| OCEC20221 |  | Concrete Barrier Works | 5d | 2013-09-29 | 2013-10-02 | OCEC20031 SS+1.25d |  |  |  |  | 91.12d | 0d | Foreman [40 h]; Mason [200 h]; Operator [40 h]; General worker [400 h]; Driver [40 h]; Crane mounted truck [40 h]; Canter [40 h]; Concrete Barrier [600 m] |
|  | CM1 | **Completion of Works in Road no. 6** |  | 2013-10-09 | 2013-10-09 |  |  |  |  |  |  |  |  |
| OCEC20051 |  | Completion of Works in Road no. 6 | 1d | 2013-10-09 | 2013-10-09 | OCEC19911 FF, OCEC19991 FF, OCEC20161 FF, OCEC20171 FF, OCEC20181 FF, OCEC20231 FF, OCEC18511 FF, OCEC18193 FF, OCEC18451 FF |  |  |  |  | 84.88d | 83.75d |  |
|  | R7 | **OCEC Internal Roads no. 7** |  | 2013-01-16 | 2014-01-15 |  |  |  |  |  |  |  |  |
| OCEC10581 |  | Survey works and setting out | 7d | 2013-01-16 A | 2013-01-26 A | OCEC10461 SS | 100% |  |  |  |  |  |  |
|  | TS | **Technical Submittals** |  | 2013-01-16 | 2013-04-23 |  |  |  |  |  |  |  |  |
|  | PS | **Shopdrawings** |  | 2013-01-16 | 2013-04-23 |  |  |  |  |  |  |  |  |
|  | EI | **Prepare and Submit** |  | 2013-01-16 | 2013-02-06 |  |  |  |  |  |  |  |  |
| OCEC11721 |  | Shopdrawings Layout and Cross Sections for Roads no. 7 | 18.75d | 2013-01-16 A | 2013-02-06 A | OCEC10581 SS | 100% |  |  |  |  |  |  |
|  | EI1 | **Engineer's Review and instructions to proceed** |  | 2013-02-06 | 2013-04-23 |  |  |  |  |  |  |  |  |
| OCEC11731 |  | Shopdrawings Layout and Cross Sections for Roads no. 7 | 17.5d | 2013-02-06 A | 2013-04-23 | OCEC11721 | 70% | 0d | 2013-02-06 | 2013-02-26 | 102.38d | 0d |  |

| ID | WBS | Activity | Duration | Start | Finish | Predecessors | Complete | Remaining | Planned start | Planned finish | Total float | Free float | Resources |
| --- | --- | --- | --- | --- | --- | --- | --- | --- | --- | --- | --- | --- | --- |
|  | 3 | **Road Crossings (Zone no. 10 & 11); 5 Crossings** |  | 2013-04-23 | 2013-06-05 |  |  |  |  |  |  |  |  |
| OCEC12121 |  | Setting out and route survey | 5d | 2013-04-23 | 2013-04-28 | OCEC11731 SS+8.75d, OCEC10581 |  |  |  |  | 102.38d | 0d | Surveyor [40 h]; Surveying Instruments [40 h]; General worker [40 h] |
| OCEC11741 |  | Trench excavation | 7.5d | 2013-04-29 | 2013-05-06 | OCEC12121 |  |  |  |  | 102.38d | 0d | Excavator [60 h]; Operator [120 h]; General worker [240 h]; Back hoe loader [60 h]; Foreman [60 h] |
| OCEC11751 |  | Preparation of bed | 5d | 2013-05-07 | 2013-05-12 | OCEC11741 |  |  |  |  | 102.38d | 0d | General worker [200 h]; Back hoe loader [40 h]; Operator [40 h]; Foreman [40 h] |
| OCEC11762 |  | Construction of utilites crossing (Duct) | 7.5d | 2013-05-13 | 2013-05-20 | OCEC11751 |  |  |  |  | 102.38d | 0d | General worker [360 h]; Driver [60 h]; Operator [60 h]; Canter [60 h]; Crane mounted truck [60 h]; Foreman [60 h]; Cable Jointer [120 h]; Fitter [120 h] |
| OCEC11771 |  | Backfilling and compaction | 10d | 2013-05-21 | 2013-06-01 | OCEC11762 |  |  |  |  | 102.38d | 0d | Pedestrain roller [80 h]; Operator [160 h]; Water tanker [80 h]; Driver [80 h]; General worker [400 h]; Back hoe loader [80 h]; Foreman [80 h] |
| OCEC11763 |  | Inspection and Testing | 5d | 2013-06-02 | 2013-06-05 | OCEC11762, OCEC11771 |  |  |  |  | 121.12d | 0d | General worker [40 h]; Foreman [40 h] |
|  | DM | **Drainage Works and Manholes** |  | 2013-02-17 | 2013-10-08 |  |  |  |  |  |  |  |  |
| OCEC11781 |  | Setting out and route survey | 5d | 2013-02-17 A | 2013-02-20 A | OCEC11771, OCEC12121 SS, B2911, B3391 | 100% |  | 2013-05-26 | 2013-06-01 |  |  | Surveyor [40 h]; Surveying Instruments [40 h]; General worker [40 h] |
| OCEC11791 |  | Trench excavation | 15d | 2013-02-23 A | 2013-07-09 | OCEC11781 | 50% | 15d | 2013-06-01 | 2013-06-17 | 86.12d | 0d | General worker [120 h]; Back hoe loader [120 h]; Operator [120 h]; Foreman [120 h] |
| OCEC11801 |  | Bedding, Compaction and Levelling | 7.5d | 2013-07-08 | 2013-07-15 | OCEC11791 FF+5d |  |  |  |  | 86.12d | 0d | General worker [60 h]; Plate compactor [60 h]; Operator [60 h]; Foreman [60 h] |
| OCEC18691 |  | Pipe Culvert Construction | 12.5d | 2013-07-13 | 2013-07-24 | OCEC11801 SS+3.75d |  |  |  |  | 86.12d | 0d | General worker [100 h]; Pipe Culvert [3.98 m]; Mason [100 h]; Foreman [100 h] |
| OCEC11841 |  | Construction of Catch Pits and hook up | 31.25d | 2013-07-27 | 2013-09-01 | OCEC18691 |  |  |  |  | 86.12d | 0d | Mason [500 h]; General worker [1000 h]; خرسانة مسلحة للأرضيات [9.17 م3]; Foreman [250 h] |
| OCEC18701 |  | Installation of Grated Channels | 31.25d | 2013-07-27 | 2013-09-01 | OCEC11841 SS |  |  |  |  | 86.12d | 0d | طوب مصمط [166.67]; General worker [500 h]; Foreman [250 h] |
| OCEC18681 |  | Construction of Grate Opennings | 7.5d | 2013-09-02 | 2013-09-09 | OCEC18701 |  |  |  |  | 86.12d | 0d | General worker [240 h]; Mason [120 h]; Foreman [60 h] |
| OCEC11811 |  | Pipe lowering | 10d | 2013-09-07 | 2013-09-16 | OCEC11801 SS+3.75d, OCEC18681 SS+3.75d |  |  |  |  | 86.12d | 0d | Canter [80 h]; General worker [240 h]; Driver [80 h]; Crane mounted truck [80 h]; Foreman [80 h]; Operator [80 h]; Fitter [80 h] |
| OCEC11821 |  | Pipe joining | 10d | 2013-09-11 | 2013-09-22 | OCEC11811 SS+5d |  |  |  |  | 86.12d | 0d | General worker [160 h]; Back hoe loader [80 h]; Fitter [80 h]; Foreman [80 h] |
| OCEC11831 |  | Backfilling and Compaction | 10d | 2013-09-23 | 2013-10-02 | OCEC11841, OCEC11821, OCEC18701 |  |  |  |  | 86.12d | 0d | Back hoe loader [80 h]; Pedestrain roller [80 h]; Water tanker [80 h]; Operator [160 h]; Driver [80 h]; General worker [240 h] |
| OCEC11851 |  | Inspection and Testing | 5d | 2013-10-05 | 2013-10-08 | OCEC11831 |  |  |  |  | 86.12d | 85d | General worker [40 h]; Foreman [40 h] |
|  | EI | **Electrical Installation** |  | 2013-06-24 | 2013-10-28 |  |  |  |  |  |  |  |  |
| OCEC13091 |  | Setting out and route survey | 5d | 2013-06-24 | 2013-06-29 | OCEC11781 SS |  |  |  |  | 82.38d | 0d | General worker [40 h]; Surveyor [40 h]; Surveying Instruments [40 h] |
| OCEC11931 |  | Trench excavation for low voltage cable | 15d | 2013-06-30 | 2013-07-15 | OCEC13091, OCEC11791 FF |  |  |  |  | 82.38d | 0d | General worker [120 h]; Back hoe loader [120 h]; Operator [120 h] |
| OCEC11941 |  | Bed preparation | 20d | 2013-07-08 | 2013-07-29 | OCEC11931 SS+7.5d |  |  |  |  | 82.38d | 13.75d | General worker [160 h]; Plate compactor [160 h]; Operator [160 h] |
| OCEC11981 |  | Install AC pipe ducts | 15d | 2013-07-31 | 2013-08-19 | OCEC11941 SS+7.5d, OCEC11561 |  |  |  |  | 68.62d | 0d | Carpenter [120 h]; General worker [360 h]; Plate compactor [120 h]; Mason [120 h]; AC Pipe Ducts [14 m] |
| OCEC11951 |  | Low Voltage Cable laying | 15d | 2013-08-20 | 2013-09-04 | OCEC11981 |  |  |  |  | 68.62d | 0d | Canter [120 h]; General worker [120 h]; Crane mounted truck [120 h]; Driver [120 h]; Operator [120 h] |
| OCEC18711 |  | Cable termination | 12.5d | 2013-09-07 | 2013-09-18 | OCEC11951 |  |  |  |  | 68.62d | 0d | General worker [200 h]; Crimping tool [100 h]; Tool kit [100 h]; Foreman [100 h]; Cable Jointer [100 h] |
| OCEC18721 |  | Inspection and Testing | 7.5d | 2013-09-21 | 2013-09-28 | OCEC18711 |  |  |  |  | 68.62d | 0d | General worker [60 h]; Foreman [60 h] |
| OCEC11961 |  | Backfilling and compaction | 12.5d | 2013-09-29 | 2013-10-12 | OCEC18721 |  |  |  |  | 68.62d | 0d | Back hoe loader [100 h]; Pedestrain roller [100 h]; Water tanker [100 h]; Operator [200 h]; Driver [100 h]; General worker [300 h] |
| OCEC11971 |  | Marker post and marker plates fixing | 15d | 2013-10-13 | 2013-10-28 | OCEC11961, B2851 |  |  |  |  | 68.62d | 67.5d | General worker [240 h]; Mason [120 h] |

| ID | WBS | Activity | Type | Duration | Start | Finish | Predecessors | Total float | Free float | Calendar | Resources | user_text1 | Flag |
| --- | --- | --- | --- | --- | --- | --- | --- | --- | --- | --- | --- | --- | --- |
|  | ERW | **Earth Works** |  |  | 2013-06-08 | 2013-08-19 |  |  |  |  |  |  |  |
| OCEC11861 |  | Removal of Structures and Obstructions |  | 15d | 2013-06-08 | 2013-06-23 | OCEC10581 SS, OCEC11763 | 121.12d | 0d |  |  |  |  |
| OCEC12111 |  | Clearing and grubbing |  | 5d | 2013-06-24 | 2013-06-29 | OCEC11861, B1711 | 121.12d | 0d |  | Front end loader [40 h]; Tipper [40 h]; Excavator [40 h]; Grader [40 h]; Operator [120 h]; Driver [40 h]; General worker [120 h]; Foreman [40 h] |  |  |
| OCEC12131 |  | Setting out and route survey |  | 5d | 2013-06-30 | 2013-07-03 | OCEC12111, OCEC13091 SS | 121.12d | 0d |  | Surveyor [40 h]; Surveying Instruments [40 h]; General worker [40 h] |  |  |
| OCEC11921 |  | Unclassified excavation and removal |  | 10d | 2013-07-06 | 2013-07-15 | OCEC12131 | 131.12d | 0d |  | Excavator [80 h]; Bull dozer [80 h]; Front end loader [80 h]; Tipper [160 h]; Water tanker [80 h]; Driver [240 h]; Operator [240 h]; General worker [480 h] |  |  |
| OCEC11871 |  | Embankment filling and sub grade preparation |  | 15d | 2013-07-14 | 2013-07-29 | OCEC11921 SS+7.5d | 131.12d | 0d |  | Operator [360 h]; Water tanker [120 h]; Grader [120 h]; Tipper [240 h]; Front end loader [120 h]; Vibratory roller [120 h]; Driver [360 h]; Borrow Embankment [2762.03 M3]; General worker [960 h]; Foreman [120 h] |  |  |
| OCEC11881 |  | Granular sub base course Class B - 150 mm thick |  | 7.5d | 2013-07-17 | 2013-07-24 | OCEC11871 SS+3.75d | 131.12d | 0d |  | Driver [180 h]; Operator [180 h]; General worker [300 h]; Vibratory roller [60 h]; Grader [60 h]; Front end loader [60 h]; Tipper [120 h]; Water tanker [60 h]; Granular Sub-Base [400.78 M3]; Foreman [60 h] |  |  |
| OCEC12061 |  | Precast Concrete Curb |  | 5d | 2013-07-27 | 2013-07-30 | OCEC11881 | 131.12d | 0d |  | Mason [400 h]; General worker [800 h]; Foreman [40 h] |  |  |
| OCEC11891 |  | Aggregate base course Class A - 100 mm and 150 mm thick |  | 3.75d | 2013-07-31 | 2013-08-04 | OCEC12061 | 131.12d | 0d |  | Water tanker [30 h]; Tipper [60 h]; Grader [30 h]; Vibratory roller [30 h]; Driver [90 h]; General worker [150 h]; Aggregate Base Course [240.1 M3]; Foreman [30 h]; Operator [60 h] |  |  |
| OCEC11901 |  | Bituminous prime coat and bituminous base course Class A - 50 mm thick |  | 5.62d | 2013-08-04 | 2013-08-12 | OCEC11891 SS+2.5d, B1831 | 131.12d | 0d |  | Asphalt paver [56.25 h]; Tipper [56.25 h]; Tyre roller [56.25 h]; Operator [168.75 h]; Driver [56.25 h]; General worker [112.5 h]; Tandem roller [56.25 h]; Prime Coat & BBC [675.28 M3]; Foreman [45 h] |  |  |
| OCEC11911 |  | Bituminous take coat and bituminous wearing course Class A - 50 mm thick |  | 11.25d | 2013-08-05 | 2013-08-19 | OCEC11901 SS+1.25d | 131.12d | 130d |  | Asphalt paver [112.5 h]; Tipper [112.5 h]; Tyre roller [112.5 h]; Operator [450 h]; Driver [112.5 h]; General worker [225 h]; Air Compressor [112.5 h]; Tandem roller [112.5 h]; Tack Coat & Wearing Course [1350.56 M3]; Foreman [90 h] |  |  |
|  | RL1 | **Road Lighting** |  |  | 2013-06-30 | 2013-09-02 |  |  |  |  |  |  |  |
| OCEC18781 |  | Setting out and route survey |  | 5d | 2013-06-30 | 2013-07-03 | OCEC12131 SS | 121.12d | 0d |  | General worker [40 h]; Surveyor [40 h]; Surveying Instruments [40 h] |  |  |
| OCEC18791 |  | Excavation Works |  | 5d | 2013-07-08 | 2013-07-13 | OCEC18781, OCEC11931 SS+7.5d | 118.62d | 0d |  | General worker [40 h]; Back hoe loader [40 h]; Operator [40 h]; Foreman [40 h] |  |  |
| OCEC11991 |  | Concrete base for Feeder Pillar and High mast |  | 15d | 2013-07-14 | 2013-07-29 | OCEC18791 | 118.62d | 0d |  | General worker [240 h]; Concrete Base for Feeder Pillar & High Mast [5.78 M3]; Mason [120 h]; Foreman [120 h] |  |  |
| OCEC12001 |  | Installation of Feed Pillar |  | 10d | 2013-07-20 | 2013-07-29 | OCEC11991 SS+5d | 121.12d | 0d |  | General worker [160 h]; Operator [80 h]; Feeder Pillar [0.16 LS]; Crane mounted truck [80 h]; Canter [80 h]; Foreman [80 h] |  |  |
| OCEC12021 |  | Installation of High mast assembly |  | 12.5d | 2013-07-21 | 2013-08-03 | OCEC11991 SS+6.25d | 118.62d | 0d |  | General worker [200 h]; Operator [100 h]; High Mast Assebly [0.21 LS]; Driver [100 h]; Crane mounted truck [100 h]; Canter [100 h]; Foreman [100 h] |  |  |
| OCEC12011 |  | Installation of Ornamental Lighting Columns |  | 7.5d | 2013-07-23 | 2013-07-30 | OCEC12001 SS+3.75d | 121.12d | 2.5d |  | General worker [600 h]; Operator [60 h]; Ornamental Lighting Columns [5.46 LS]; Crane mounted truck [60 h]; Canter [60 h]; Foreman [60 h] |  |  |
| OCEC12031 |  | Earthing for Feeder Pillar and the end of Street lighting circuit |  | 12.5d | 2013-08-04 | 2013-08-19 | OCEC12001, OCEC12021, OCEC12011 | 118.62d | 0d |  | General worker [200 h]; Foreman [100 h] |  |  |
| OCEC18801 |  | Inspection and Testing |  | 5d | 2013-08-20 | 2013-08-25 | OCEC12031 | 118.62d | 0d |  | General worker [80 h]; Foreman [40 h] |  |  |
| OCEC12041 |  | Power supply connections and Tests |  | 7.5d | 2013-08-26 | 2013-09-02 | OCEC12011, OCEC18801 | 118.62d | 117.5d |  | General worker [360 h]; Foreman [60 h] |  |  |
|  | 2 | **Construction of MSE Wall** |  |  | 2013-05-06 | 2014-01-14 |  |  |  |  |  |  |  |
| B2054 |  | Prepartion & Submission of MSE wall materials & Accessories for approval |  | 28.75d | 2013-05-06 | 2013-06-05 | A15135 | 9.12d | 0d |  |  | March 2013 | UDF_G3 |
| B2055 |  | Approval of MSE wall materials & Accessories for approval |  | 27.5d | 2013-06-08 | 2013-07-07 | B2054 | 9.12d | 0d |  |  | 2 |  |
| B2056 |  | Deployment of MSE Wall materials supplier & design subcontractor |  | 11.25d | 2013-07-08 | 2013-07-20 | B2055 | 9.12d | 0d |  |  |  |  |
| B2057 |  | Soil Investigation |  | 27d | 2013-07-13 | 2013-08-14 | A15135, A9 | 1.12d | 0d |  |  |  |  |
| B2061 |  | Procurment MSE wall materials & Accessories |  | 77.5d | 2013-07-21 | 2013-09-20 | B2055, B2056 | 11.62d | 10.5d | OCEC Procurment/Curing-7d/W |  |  |  |
| A15120 |  | Prepare & Submission of MSE Wall Design & Drawings |  | 5d | 2013-08-14 | 2013-08-20 | B2057, B2056 | 1.12d | 0d |  |  |  |  |
| B1962 |  | Prepartion & Submission for Backfill Material for Approval |  | 10d | 2013-08-14 | 2013-08-26 | B2057 | 91d | 0d |  |  | April 2013 | UDF_G4 |
| A15121 |  | Approval of MSE Wall Design & Drawings |  | 17.5d | 2013-08-20 | 2013-09-09 | A15120 | 1.12d | 0d |  |  |  |  |
| B1963 |  | Approval of Backfill Material for MSE Wall |  | 27.5d | 2013-08-26 | 2013-09-25 | B1962 | 91d | 0d |  |  | 3 |  |
| A15122 |  | Precasting of MSE Wall Pannels |  | 67.5d | 2013-09-09 | 2013-11-26 | A15121 | 19d | 17.88d |  | Bar bending machine [540 h]; Bar cutting machine [540 h]; Water tanker [540 h]; Carpenter [2160 h]; Steel fitter [2160 h]; General worker [2160 h]; Concrete vibrator [1080 h]; Driver [540 h]; Operator [2160 h]; Mason [2160 h] |  | UDF_G1 |
| A15123 |  | Setting Out for MSE Wall Foundations |  | 4.5d | 2013-09-09 | 2013-09-14 | A15121 | 1.12d | 0d |  | General worker [80 h]; Surveyor [36 h]; Surveying Instruments [36 h] |  |  |
| A15124 |  | Structural Excavation for MSE Wall Foundation |  | 5d | 2013-09-14 | 2013-09-18 | A15123 | 1.12d | 0d |  | Operator [180 h]; Back hoe loader [40 h]; Foreman [40 h]; Excavator [40 h] |  | UDF_G1 |
| A15125 |  | Bed Prepration for MSE Wall Foundations |  | 11.25d | 2013-09-18 | 2013-10-01 | A15124 | 1.12d | 0d |  | Plate compactor [90 h]; General worker [315 h]; Foreman [90 h] |  | UDF_G1 |
| A15126 |  | Construction of MSE Wall Foundations |  | 10d | 2013-09-24 | 2013-10-06 | A15125 SS+5d | 1.12d | 0d |  | General worker [840 h]; Steel fitter [280 h]; Carpenter [280 h]; Operator [840 h]; Driver [420 h]; Transit mixer [280 h]; Bar bending machine [80 h]; Bar cutting machine [80 h]; Concrete vibrator [280 h]; Mason [280 h]; Foreman [80 h]; Air Compressor [80 h] |  | UDF_G1 |
| B1971 |  | Procurment of Backfill Material for MSE Wall |  | 10d | 2013-09-25 | 2013-10-03 | B1963 | 131d |  | OCEC Procurment/Curing-7d/W |  |  | UDF_G3 |
| A15127 |  | Construction of MSE Wall |  | 67.5d | 2013-09-29 | 2013-12-16 | A15122 SS, A15126 SS+3.38d, B2061, A15122 FF | 1.12d | 0d |  | Crane mounted truck [540 h]; Pedestrain roller [540 h]; Front end loader [540 h]; Water tanker [540 h]; Foreman [540 h]; Operator [1836 h]; Driver [1836 h]; General worker [2448 h]; Canter [1224 h]; Concrete vibrator [540 h]; Mason [2448 h] |  | UDF_G1 |
| A15128 |  | Standard Coping & Parapet Construction for MSE Wall |  | 11.25d | 2013-12-16 | 2013-12-29 | A15127 | 1.12d | 0d |  | Steel fitter [146.25 h]; General worker [438.75 h]; Carpenter [146.25 h]; Driver [90 h]; Foreman [90 h]; Crane mounted truck [90 h]; Concrete vibrator [146.25 h]; Operator [253.12 h]; Mason [146.25 h] |  | UDF_G1 |
| A15129 |  | Completion of MSE Wall Constructions | milestone | 0d | 2013-12-29 | 2013-12-29 | A15128 FF | 1.12d | 0d |  |  |  |  |
| A15136 |  | Drainage Works, Earthworks, Aphalt, Road Lighting & Finishing Works |  | 15.75d | 2013-12-29 | 2014-01-14 | A15129 | 1.12d | 0d |  |  |  |  |

| ID | WBS | Activity | Type | Duration | Start | Finish | Predecessors | Total float | Free float | Resources |
| --- | --- | --- | --- | --- | --- | --- | --- | --- | --- | --- |
|  | SP | **Finishing Road Works** |  |  | 2013-06-29 | 2013-07-28 |  |  |  |  |
| OCEC12051 |  | Precast Concrete tile Paving 60 mm thick |  | 7.5d | 2013-06-29 | 2013-07-06 | OCEC20001 SS | 158.62d | 0d | Precast Concrete Tile Paving [600.23 LS]; Mason [600 h]; General worker [1200 h]; Plate compactor [60 h]; Foreman [60 h]; Operator [60 h] |
| OCEC18761 |  | Interlok Tiles |  | 15d | 2013-06-29 | 2013-07-14 | OCEC12051 SS | 161.12d | 160d | Mason [600 h]; General worker [1200 h]; Foreman [120 h] |
| OCEC12091 |  | Riprap Works |  | 7.5d | 2013-07-01 | 2013-07-08 | OCEC12051 SS+2.5d, B3001 | 158.62d | 0d | Front end loader [60 h]; Tipper [60 h]; Excavator [60 h]; Grader [60 h]; Operator [180 h]; Driver [60 h]; Mason [300 h]; General worker [600 h]; Foreman [60 h] |
| OCEC18731 |  | Gabions Works |  | 7.5d | 2013-07-01 | 2013-07-08 | OCEC12091 SS | 158.62d | 0d | Front end loader [60 h]; Tipper [60 h]; Excavator [60 h]; Grader [60 h]; Operator [180 h]; Driver [60 h]; General worker [600 h]; Mason [300 h]; Foreman [60 h] |
| OCEC18741 |  | Ditch Lining Works |  | 7.5d | 2013-07-01 | 2013-07-08 | OCEC18731 SS | 158.62d | 0d | Mason [300 h]; General worker [600 h]; Foreman [60 h] |
| OCEC18751 |  | Coastal Protection Works |  | 7.5d | 2013-07-09 | 2013-07-16 | OCEC12091, OCEC18731, OCEC18741, B2611 | 158.62d | 157.5d | Front end loader [60 h]; Tipper [60 h]; Excavator [60 h]; Grader [60 h]; Operator [180 h]; Driver [60 h]; Coastal Protection [493.08 m]; General worker [600 h]; Mason [300 h]; Foreman [60 h] |
| OCEC12071 |  | Traffic Signs |  | 7.5d | 2013-07-13 | 2013-07-20 | OCEC12051 SS, B2881 | 148.62d | 0d | Operator [60 h]; Driver [60 h]; General worker [600 h]; Crane mounted truck [60 h]; Canter [60 h]; Foreman [60 h] |
| OCEC18771 |  | Road Marking and Studs |  | 15d | 2013-07-13 | 2013-07-28 | OCEC12071 SS, B2701 | 148.62d | 147.5d | General worker [1200 h]; Mason [120 h]; Foreman [120 h] |
|  | 1 | **Safty Barriers and Fences** |  |  | 2013-06-23 | 2013-07-27 |  |  |  |  |
| OCEC18821 |  | Chain Link Fence to Master Plan Boundary |  | 31.25d | 2013-06-23 | 2013-07-27 | OCEC18811 FF, B2551, B2581 | 149.88d | 148.75d |  |
| OCEC19691 |  | Setting out and Survey Works |  | 3.75d | 2013-06-30 | 2013-07-02 | OCEC18781 SS | 151.12d | 0d | General worker [30 h]; Surveyor [30 h]; Surveying Instruments [30 h] |
| OCEC12081 |  | Install W-Beam Guardrail transition Section and terminal end |  | 12.5d | 2013-07-03 | 2013-07-16 | OCEC19691, B2521 | 151.12d | 0d | Operator [100 h]; Driver [100 h]; W-Beam Guardrail [2305.13 LS]; General worker [1000 h]; Crane mounted truck [100 h]; Canter [100 h]; Foreman [100 h]; Fitter [500 h] |
| OCEC18811 |  | Concrete Barrier Works |  | 7.5d | 2013-07-17 | 2013-07-24 | OCEC12081 | 151.12d | 1.25d | Operator [60 h]; Concrete Barrier [46.58 m]; Mason [300 h]; General worker [600 h]; Crane mounted truck [60 h]; Canter [60 h]; Driver [60 h]; Foreman [60 h] |
|  | CM1 | **Completion of Works in Road no. 7** |  |  | 2014-01-15 | 2014-01-15 |  |  |  |  |
| OCEC12101 |  | Completion of Works in Road no. 7 | milestone | 0d | 2014-01-15 | 2014-01-15 | OCEC11971 FF, OCEC12041, OCEC18751 FF, OCEC18761 FF, OCEC18771 FF, OCEC18821 FF, OCEC11911 FF, OCEC11763 FF, OCEC11851 FF, A15136 | 1.12d | 0d |  |
|  | CM | **Completion of Road Works Phase 1** |  |  | 2014-01-14 | 2014-01-15 |  |  |  |  |
| OCEC9761 |  | Completion of Road Works Phase 1 |  | 1d | 2014-01-14 | 2014-01-15 | OCEC10451 FF, OCEC11681 FF, OCEC12101 FF, OCEC20051 FF | 1.12d | 0d |  |
|  | 2 | **Completion of Road Works** |  |  | 2014-01-15 | 2014-01-15 |  |  |  |  |
| OCEC6681 |  | Completion of road Works | milestone | 0d | 2014-01-15 | 2014-01-15 | OCEC9761 FF | 1.12d |  |  |
|  | 6 | **Utilities Works** |  |  | 2012-12-17 | 2014-01-05 |  |  |  |  |
|  | STAP | **NOC and Approvals** |  |  | 2013-04-23 | 2013-08-28 |  |  |  |  |
| OCEC5870 |  | Ministry of Water (PAEW) - Water and Irrigation Distribution system |  | 112.5d | 2013-04-23 | 2013-08-28 | A2 SS | 122.38d | 0d | Project engineer [480 h] |
| OCEC5871 |  | HAYA - Sewage system |  | 112.5d | 2013-04-23 | 2013-08-28 | A2 | 122.38d | 0d | Project engineer [480 h] |
| OCEC5872 |  | MEDC - Total Electrical distribution system |  | 62.5d | 2013-04-23 | 2013-07-01 | A2 | 9.88d | 0d | Project engineer [266.67 h] |
| OCEC5873 |  | Omantel/Nawras |  | 112.5d | 2013-04-23 | 2013-08-28 | A2 | 122.38d | 0d | Project engineer [480 h] |
| OCEC5874 |  | Others (ROP, MOD) |  | 112.5d | 2013-04-23 | 2013-08-28 | A2 | 122.38d | 112.5d | Project engineer [480 h] |
| OCEC5875 |  | Municipality |  | 112.5d | 2013-04-23 | 2013-08-28 | A2 | 122.38d | 112.5d | Project engineer [480 h] |

| ID | WBS | Activity | Duration | Start | Finish | Predecessors | Complete | Remaining | Planned start | Planned finish | Total float | Free float | Resources | user_text1 |
| --- | --- | --- | --- | --- | --- | --- | --- | --- | --- | --- | --- | --- | --- | --- |
|  | SW | **Survey Works** |  | 2012-12-17 | 2013-01-05 |  |  |  |  |  |  |  |  |  |
| A9300 |  | Prepare and Submit Method Statment for Survey Works | 7.5d | 2012-12-17 A | 2012-12-24 A | OCEC4010 SS | 100% |  |  |  |  |  |  |  |
| A9310 |  | Review and approval for Method Statment for Survey Works | 17.5d | 2012-12-17 A | 2013-01-05 A | A9300 SS | 100% |  |  |  |  |  |  |  |
| OCEC4000 |  | Recieve of drawings and Documents | 6d | 2012-12-17 A | 2012-12-23 A | A3 SS | 100% |  |  |  |  |  | Project manager [48 h] |  |
| OCEC4010 |  | Establishment of control point | 2d | 2012-12-17 A | 2012-12-18 A | OCEC4000 SS | 100% |  |  |  |  |  | Surveyor [16 h] |  |
| OCEC13840 |  | Preliminary survey works for Zones no. 9, 4, 2 and 1 | 6.25d | 2012-12-18 A | 2012-12-25 A | OCEC4020 SS | 100% |  |  |  |  |  | Surveyor [20 h] | 9+4+2+1 |
| OCEC4020 |  | Preliminary survey works for Zones no. 11, 10 and 8 | 6.25d | 2012-12-18 A | 2012-12-25 A | OCEC4010 SS+2d, A9310 SS | 100% |  |  |  |  |  | Surveyor [50 h] | 11+10+8 |
| OCEC9640 |  | Preliminary survey works for Zones no. 15, 14 and 13 | 6.25d | 2012-12-18 A | 2012-12-25 A | OCEC4020 SS | 100% |  |  |  |  |  | Surveyor [50 h] | 15+14+13 |
| OCEC9670 |  | Preliminary survey works for Zones no. 7, 6 and 5 | 6.25d | 2012-12-18 A | 2012-12-25 A | OCEC9640 SS | 100% |  |  |  |  |  | Surveyor [50 h] | 7+6+5 |
|  | TS | **Shopdrawings** |  | 2012-12-25 | 2013-06-26 |  |  |  |  |  |  |  |  |  |
|  | 1 | **Prepare and Submit** |  | 2012-12-25 | 2013-05-29 |  |  |  |  |  |  |  |  |  |
| OCEC4610 |  | Shopdrawings for Zones no. 11, 10 and 8 | 7.5d | 2012-12-25 A | 2013-05-29 | OCEC4020 | 80% | 33.75d | 2012-12-25 | 2013-01-02 | 176.12d | 0d | Draughtman [160 h] | 11+10+8 |
| OCEC9680 |  | Shopdrawings for Zones no. 15, 14 and 13 | 7.5d | 2012-12-25 A | 2013-05-29 | OCEC9640 | 80% | 33.75d | 2012-12-25 | 2013-01-02 | 183.62d | 0d | Draughtman [160 h] | 15+14+13 |
| OCEC9690 |  | Shopdrawings for Zones no. 7, 6 and 5 | 7.5d | 2012-12-25 A | 2013-05-29 | OCEC9670 | 80% | 33.75d | 2012-12-25 | 2013-01-02 | 21.12d | 0d | Draughtman [160 h] | 7+6+5 |
| OCEC9700 |  | Shopdrawings for Zones no. 9, 4, 2 and 1 | 7.5d | 2012-12-25 A | 2013-04-29 | OCEC13840 | 80% | 6.25d | 2012-12-25 | 2013-01-02 | 183.62d | 0d | Draughtman [160 h] | 9+4+2+1 |
|  | 2 | **Engineer's Review and instructions to proceed** |  | 2013-02-02 | 2013-06-26 |  |  |  |  |  |  |  |  |  |
| OCEC5840 |  | Engineering Review and approval Shopdrawings for Zones no. 11, 10 and 8 | 17.5d | 2013-02-02 A | 2013-06-26 | OCEC4610 | 80% | 25d | 2013-01-02 | 2013-01-22 | 176.12d |  | Draughtman [168 h] | 11+10+8 |
| OCEC9730 |  | Engineering Review and approval Shopdrawings for Zones no. 15, 14 and 13 | 17.5d | 2013-02-02 A | 2013-06-18 | OCEC9700 | 80% | 45d | 2013-01-02 | 2013-01-22 | 183.62d |  | Draughtman [240 h] | 15+14+13 |
| OCEC9740 |  | Engineering Review and approval Shopdrawings for Zones no. 7, 6 and 5 | 17.5d | 2013-02-02 A | 2013-06-18 | OCEC9680 | 80% | 17.5d | 2013-01-02 | 2013-01-22 | 183.62d |  | Draughtman [240 h] | 7+6+5 |
| OCEC9750 |  | Engineering Review and approval Shopdrawings for Zones no. 9, 4, 2 and 1 | 17.5d | 2013-02-02 A | 2013-06-18 | OCEC9690 | 80% | 17.5d | 2013-01-02 | 2013-01-22 | 21.12d | 0d | Draughtman [240 h] | 9+4+2+1 |
|  | UC | **Construction Works** |  | 2013-02-10 | 2014-01-05 |  |  |  |  |  |  |  |  |  |
| A9880 |  | Prepare and Submit Method Statment for Hydrostatic Pressure Test (all Pipes) | 31.25d | 2013-02-10 A | 2013-03-24 A | A3 SS | 100% |  | 2012-12-17 | 2013-01-20 |  |  |  |  |
| A9900 |  | Prepare and Submit Method Statment for Desinfection of Pipelines | 31.25d | 2013-02-10 A | 2013-04-20 A | A9880 SS+8.75d | 100% |  | 2012-12-26 | 2013-01-29 |  |  |  |  |
| A9890 |  | Review and approval for Method Statment for Hydrostatic Pressure Test (all Pipes) | 17.5d | 2013-03-24 A | 2013-05-12 | A9880 | 80% | 17.5d | 2013-01-21 | 2013-02-09 | 217.38d |  |  |  |
| A9910 |  | Review and approval for Method Statment for Desinfection of Pipelines | 17.5d | 2013-04-20 A | 2013-05-12 | A9900 | 50% | 17.5d | 2013-01-30 | 2013-02-18 | 217.38d |  |  |  |

| ID | WBS | Activity | Duration | Start | Finish | Predecessors | Total float | Free float | Resources |
| --- | --- | --- | --- | --- | --- | --- | --- | --- | --- |
|  | BIT | **Balance Works after the Un-Contractual Completion Milestone Date in 31st May 2013** |  | 2013-06-19 | 2014-01-05 |  |  |  |  |
|  | CL | **Electrical and Telecommunication Works** |  | 2013-06-19 | 2013-08-28 |  |  |  |  |
|  | Z9 | **Zone no. 9** |  | 2013-06-19 | 2013-08-12 |  |  |  |  |
|  | 1 | **Electrical Services** |  | 2013-06-19 | 2013-08-12 |  |  |  |  |
| OCEC10370 |  | Setting out and route survey | 3d | 2013-06-19 | 2013-06-23 | OCEC19730 SS, OCEC9750 | 138.12d | 0d | Surveyor [20 h]; General worker [20 h]; Surveying Instruments [20 h] |
| OCEC9928 |  | HSE Requirments | 2.5d | 2013-06-19 | 2013-06-23 | OCEC10370 FF | 138.12d | 0d | General worker [40 h] |
| OCEC10380 |  | Trench excavation, 275 m | 10d | 2013-06-23 | 2013-07-03 | OCEC10370, OCEC9928 | 138.12d | 0d | General worker [320 h]; Excavator [80 h]; Back hoe loader [80 h]; Operator [160 h] |
| OCEC9957 |  | Inspection | 1.25d | 2013-07-02 | 2013-07-03 | OCEC10380 FF | 138.12d | 0d |  |
| OCEC10390 |  | Bed preparation | 2.5d | 2013-07-03 | 2013-07-07 | OCEC10380, OCEC9957 | 138.12d | 0d | General worker [60 h]; Operator [20 h]; Back hoe loader [20 h] |
| OCEC9958 |  | Inspection | 1.25d | 2013-07-06 | 2013-07-07 | OCEC10390 FF | 138.12d | 0d |  |
| OCEC10400 |  | Cable laying, 850 m | 7.5d | 2013-07-07 | 2013-07-15 | OCEC10390, OCEC9958 | 138.12d | 0d | Crane mounted truck [60 h]; Foreman; General worker [240 h]; Operator [60 h]; Electrical Cables [637.5 m]; Canter [60 h] |
| OCEC13990 |  | Cable termination/Joining, (no.=4) | 7.5d | 2013-07-15 | 2013-07-23 | OCEC10400 | 138.12d | 0d | General worker [120 h]; Foreman [60 h]; Cable Jointer [60 h]; Crimping tool [60 h] |
| OCEC14000 |  | Inspection and Testing | 5d | 2013-07-23 | 2013-07-29 | OCEC13990 | 138.12d | 0d | Foreman [40 h]; General worker [40 h] |
| OCEC10510 |  | Backfilling and compaction | 2.5d | 2013-07-29 | 2013-07-31 | OCEC14000 | 138.12d | 0d | Operator [20 h]; Back hoe loader [20 h]; General worker [100 h] |
| OCEC10520 |  | Marker post and marker plates fixing | 7.5d | 2013-07-31 | 2013-08-12 | OCEC10510 | 138.12d | 0d | General worker [120 h]; Mason [60 h] |
| OCEC9959 |  | Inspection | 1.25d | 2013-08-07 | 2013-08-12 | OCEC10520 FF | 138.12d | 15.75d |  |
|  | 2 | **Telecommunication System** |  | 2013-06-19 | 2013-08-12 |  |  |  |  |
| OCEC10704 |  | HSE Requirments | 3d | 2013-06-19 | 2013-06-23 | OCEC14280 FF | 138.12d | 0d | General worker [40 h] |
| OCEC14280 |  | Setting out and route survey | 3d | 2013-06-19 | 2013-06-23 | OCEC19730 SS, OCEC9750 | 138.12d | 0d | Surveyor [20 h]; Surveying Instruments [20 h]; General worker [20 h] |
| OCEC14290 |  | Trench excavation, 252 m | 10d | 2013-06-23 | 2013-07-03 | OCEC14280, OCEC10704 | 138.12d | 0d | General worker [320 h]; Operator [160 h]; Excavator [80 h]; Back hoe loader [80 h] |
| OCEC12344 |  | Inspection | 1.25d | 2013-07-02 | 2013-07-03 | OCEC14290 FF | 138.12d | 0d |  |
| OCEC14300 |  | Bed preparation | 2.5d | 2013-07-03 | 2013-07-07 | OCEC14290, OCEC12344 | 138.12d | 0d | General worker [60 h]; Operator [20 h]; Back hoe loader [20 h] |
| OCEC12345 |  | Inspection | 1.25d | 2013-07-06 | 2013-07-07 | OCEC14300 FF | 138.12d | 0d |  |
| OCEC14310 |  | Duct laying, 3024 m | 7.5d | 2013-07-07 | 2013-07-15 | OCEC14300, OCEC12345 | 138.12d | 0d | Foreman [120 h]; General worker [1080 h]; Operator [120 h]; Crane mounted truck [60 h]; Canter [60 h]; Telecomm Duct [1134 m] |
| OCEC12346 |  | Inspection | 1.25d | 2013-07-14 | 2013-07-15 | OCEC14310 FF | 138.12d | 0d |  |
| OCEC14340 |  | Construction of Manholes, (no.=5) | 7.5d | 2013-07-15 | 2013-07-23 | OCEC14310, OCEC12346 | 138.12d | 0d | Mason [120 h]; General worker [240 h] |
| OCEC14350 |  | Inspection and Testing | 5d | 2013-07-23 | 2013-07-29 | OCEC14340 | 138.12d | 0d | Foreman [40 h]; General worker [40 h] |
| OCEC14320 |  | Backfilling and compaction | 2.5d | 2013-07-29 | 2013-07-31 | OCEC14350, OCEC10510 FF | 138.12d | 0d | General worker [100 h]; Operator [20 h]; Back hoe loader [20 h] |
| OCEC14330 |  | Marker post and Marker Plates fixing | 7.5d | 2013-07-31 | 2013-08-12 | OCEC14320 | 138.12d | 0d | General worker [120 h]; Mason [60 h] |
| OCEC12347 |  | Inspection | 1.25d | 2013-08-07 | 2013-08-12 | OCEC14330 FF | 138.12d | 15.75d |  |

| ID | WBS | Activity | Duration | Start | Finish | Predecessors | Total float | Free float | Resources |
| --- | --- | --- | --- | --- | --- | --- | --- | --- | --- |
|  | CM | **Completion of Balance Cable Line Works** |  | 2013-08-28 | 2013-08-28 |  |  |  |  |
| OCEC13640 |  | Completion of Balance Cable Lines Works after the Un-Contractual Milestone Completion Date in 31st May 2013 | 1.25d | 2013-08-28 | 2013-08-28 | OCEC5872 FF, OCEC5873 FF, OCEC9959 FF, OCEC12347 FF | 122.38d | 112.5d |  |
|  | MW | **Mechanical Works** |  | 2013-06-19 | 2013-08-28 |  |  |  |  |
|  | Z9 | **Zone no. 9** |  | 2013-06-19 | 2013-08-13 |  |  |  |  |
|  | 6 | **Sewage System** |  | 2013-06-19 | 2013-08-13 |  |  |  |  |
| OCEC17330 |  | Setting out and route survey | 3.75d | 2013-06-19 | 2013-06-23 | OCEC19730 SS, OCEC9750 | 136.62d | 0d | Surveyor [30 h]; General worker [30 h]; Surveying Instruments [30 h] |
| OCEC13781 |  | HSE Requirments | 2.5d | 2013-06-22 | 2013-06-23 | OCEC17330 FF | 136.62d | 0d | General worker [40 h] |
| OCEC17340 |  | Trench excavation, 262 m | 10d | 2013-06-24 | 2013-07-03 | OCEC17330, OCEC13781 | 136.62d | 0d | General worker [320 h]; Operator [160 h]; Excavator [80 h]; Back hoe loader [80 h] |
| OCEC13674 |  | Inspection | 1.25d | 2013-07-03 | 2013-07-03 | OCEC17340 FF | 136.62d | 0d |  |
| OCEC17350 |  | Bedding and leveling | 5d | 2013-07-06 | 2013-07-09 | OCEC17340, OCEC13674 | 136.62d | 0d | Back hoe loader [40 h]; General worker [200 h]; Operator [40 h] |
| OCEC13675 |  | Inspection | 1.25d | 2013-07-09 | 2013-07-09 | OCEC17350 FF | 136.62d | 0d |  |
| OCEC17360 |  | Pipe lowering, 262 m | 6.25d | 2013-07-10 | 2013-07-16 | OCEC17350, OCEC13675 | 136.62d | 0d | Crane mounted truck [50 h]; Fitter [300 h]; General worker [300 h]; Operator [100 h]; HDPE Pipe [131 m]; UPVC Pipe [131 m] |
| OCEC17370 |  | Pipe joining & Alignment | 6.25d | 2013-07-17 | 2013-07-23 | OCEC17360 | 136.62d | 0d | General worker [250 h]; Fitter [250 h]; Operator [50 h]; Back hoe loader [50 h] |
| OCEC13676 |  | Inspection | 1.25d | 2013-07-23 | 2013-07-23 | OCEC17370 FF | 137.88d | 0d |  |
| OCEC17380 |  | Pipe surrounding | 6.25d | 2013-07-24 | 2013-07-30 | OCEC17370 | 136.62d | 0d | General worker [250 h]; Mason [250 h] |
| OCEC17410 |  | Construction of manholes and hook up, (no.=4) | 8.75d | 2013-07-24 | 2013-08-03 | OCEC17370, OCEC13676 | 137.88d | 1.25d | Mason [210 h]; Fitter [210 h]; General worker [210 h] |
| OCEC17390 |  | System testing | 3.75d | 2013-07-31 | 2013-08-04 | OCEC17380 | 136.62d | 0d | General worker [60 h]; Foreman [30 h] |
| OCEC17420 |  | Marker post and Marker Plates Fixing, (no.=13) | 2d | 2013-08-05 | 2013-08-06 | OCEC17410, OCEC17390 | 136.62d | 0d | General worker [40 h]; Mason [16 h]; Operator [16 h]; Back hoe loader [16 h] |
| OCEC17400 |  | Backfilling & Compaction | 3.75d | 2013-08-06 | 2013-08-13 | OCEC17390, OCEC17420, OCEC10510 FF | 136.62d | 0d | General worker [150 h]; Operator [90 h]; Back hoe loader [30 h]; Compactor [30 h]; Water tanker [30 h] |
| OCEC17430 |  | Inspection | 1d | 2013-08-12 | 2013-08-13 | OCEC17420 FF, OCEC17400 FF | 136.62d | 14.25d | General worker [8 h]; Foreman [8 h] |
|  | 2 | **Potable Water and Fire Water Supply Installations** |  | 2013-06-19 | 2013-08-12 |  |  |  |  |
| OCEC13625 |  | HSE Requirments | 3d | 2013-06-19 | 2013-06-23 | OCEC19730 FF | 137.62d | 0d | General worker [40 h] |
| OCEC19730 |  | Setting out and route survey | 3d | 2013-06-19 | 2013-06-23 | OCEC9750 | 136.62d | 0d | Surveying Instruments [20 h]; Surveyor [20 h]; General worker [20 h] |
| OCEC19740 |  | Trench excavation, 245 m | 10d | 2013-06-23 | 2013-07-03 | OCEC19730, OCEC13625 | 137.62d | 0d | Back hoe loader [80 h]; Excavator [80 h]; General worker [288 h]; Operator [192 h] |
| OCEC13648 |  | Inspection | 1.25d | 2013-07-02 | 2013-07-03 | OCEC19740 FF | 137.62d | 0d |  |
| OCEC19750 |  | Bedding and leveling | 3.75d | 2013-07-03 | 2013-07-08 | OCEC19740, OCEC13648 | 137.62d | 0d | General worker [200 h]; Operator [30 h]; Back hoe loader [30 h] |
| OCEC13649 |  | Inspection | 1.25d | 2013-07-07 | 2013-07-08 | OCEC19750 FF | 137.62d | 0d |  |
| OCEC19760 |  | Pipe lowering, 245 m | 3.75d | 2013-07-08 | 2013-07-13 | OCEC19750, OCEC13649 | 137.62d | 0d | Fitter [225 h]; General worker [225 h]; Operator [75 h]; Crane mounted truck [30 h]; Ductile Iron Pipe [91.88 m] |
| OCEC19770 |  | Pipe joining | 3.75d | 2013-07-13 | 2013-07-16 | OCEC19760 | 137.62d | 0d | General worker [195 h]; Back hoe loader [30 h]; Operator [30 h]; Pipe Jointer [195 h] |
| OCEC13651 |  | Inspection | 1.25d | 2013-07-15 | 2013-07-16 | OCEC19770 FF | 137.62d | 0d |  |
| OCEC19780 |  | Pipe surrounding | 3.75d | 2013-07-16 | 2013-07-21 | OCEC19770, OCEC13651 | 137.62d | 0d | General worker [187.5 h]; Mason [187.5 h] |
| OCEC19830 |  | Hydrant Fixing, (no.=2) | 5d | 2013-07-21 | 2013-07-27 | OCEC19780 | 137.62d | 0d | Fitter [100 h]; General worker [200 h]; Mason [100 h]; Pipe Jointer [100 h] |
| OCEC13652 |  | Inspection | 1.25d | 2013-07-24 | 2013-07-27 | OCEC19830 FF | 142.62d | 5d |  |
| OCEC19840 |  | Construction of Chambers and Hook-up, (no.=3) | 5d | 2013-07-27 | 2013-07-31 | OCEC19830, OCEC13652 FF | 137.62d | 0d | Mason [40 h]; General worker [100 h]; Fitter [100 h] |
| OCEC19790 |  | Pressure testing | 2.5d | 2013-07-31 | 2013-08-04 | OCEC19840 | 137.62d | 0d | Foreman [20 h]; General worker [48 h] |
| OCEC19800 |  | Backfilling & Compaction | 2.5d | 2013-08-04 | 2013-08-06 | OCEC19790, OCEC19840, OCEC10510 FF | 137.62d | 0d | Water tanker [20 h]; Operator [80 h]; General worker [106.67 h]; Back hoe loader [20 h]; Compactor [20 h] |
| OCEC19810 |  | Marker post and Marker Plates Fixing, (no.=9) | 2d | 2013-08-06 | 2013-08-07 | OCEC19800 | 137.62d | 0d | Back hoe loader [20 h]; General worker [40 h]; Operator [20 h]; Mason [20 h] |
| OCEC19820 |  | Inspection | 1d | 2013-08-12 | 2013-08-12 | OCEC19810 | 137.62d | 15.25d | General worker [8 h]; Foreman [8 h] |

| ID | WBS | Activity | Duration | Start | Finish | Predecessors | Total float | Free float | Resources |
| --- | --- | --- | --- | --- | --- | --- | --- | --- | --- |
|  | 5 | **Irregation System** |  | 2013-06-19 | 2013-08-13 |  |  |  |  |
| OCEC16290 |  | Setting out and route survey | 3.75d | 2013-06-19 | 2013-06-23 | OCEC19730 SS, OCEC9750 | 136.62d | 0d | General worker [30 h]; Surveyor [30 h]; Surveying Instruments [30 h] |
| OCEC15035 |  | HSE Requirments | 3d | 2013-06-19 | 2013-06-23 | OCEC16290 FF | 136.62d | 0d | General worker [40 h] |
| OCEC16300 |  | Trench excavation, 262 m | 10d | 2013-06-24 | 2013-07-03 | OCEC16290, OCEC15035 | 136.62d | 0d | General worker [320 h]; Operator [160 h]; Excavator [80 h]; Back hoe loader [80 h] |
| OCEC13726 |  | Inspection | 1.25d | 2013-07-03 | 2013-07-03 | OCEC16300 FF | 136.62d | 0d |  |
| OCEC16310 |  | Bedding and leveling | 3.75d | 2013-07-06 | 2013-07-08 | OCEC16300, OCEC13726 | 136.62d | 0d | General worker [150 h]; Operator [30 h]; Back hoe loader [30 h] |
| OCEC13727 |  | Inspection | 1.25d | 2013-07-08 | 2013-07-08 | OCEC16310 FF | 136.62d | 0d |  |
| OCEC16320 |  | Pipe lowering, 262 m | 5d | 2013-07-09 | 2013-07-14 | OCEC16310, OCEC13727 | 136.62d | 0d | Fitter [240 h]; General worker [240 h]; Operator [80 h]; Crane mounted truck [40 h]; Canter [40 h]; HDPE Pipe [104.8 m] |
| OCEC16730 |  | Pipe joining | 5d | 2013-07-15 | 2013-07-20 | OCEC16320 | 136.62d | 0d | Back hoe loader [40 h]; General worker [200 h]; Pipe Jointer [200 h]; Operator [40 h] |
| OCEC13728 |  | Inspection | 1.25d | 2013-07-21 | 2013-07-21 | OCEC16730 | 139.12d | 0d |  |
| OCEC18000 |  | Construction of Chambers and Hook-up | 7.5d | 2013-07-21 | 2013-07-28 | OCEC16730 | 136.62d | 0d | Mason [60 h]; General worker [120 h]; Fitter [120 h] |
| OCEC16740 |  | Pipe surrounding | 5d | 2013-07-22 | 2013-07-27 | OCEC16730, OCEC13728 | 139.12d | 2.5d | General worker [200 h]; Mason [200 h]; Fitter [40 h] |
| OCEC13729 |  | Inspection | 1.25d | 2013-07-29 | 2013-07-29 | OCEC18000 | 136.62d | 0d |  |
| OCEC17960 |  | Pressure testing | 3.75d | 2013-07-30 | 2013-08-03 | OCEC16740, OCEC13729 | 136.62d | 0d | Foreman [30 h]; General worker [60 h] |
| OCEC17970 |  | Backfilling & Compaction | 3.75d | 2013-08-04 | 2013-08-06 | OCEC17960, OCEC18000, OCEC10510 FF | 136.62d | 0d | Compactor [30 h]; Back hoe loader [30 h]; Water tanker [30 h]; Operator [90 h]; General worker [120 h] |
| OCEC17980 |  | Marker post and Marker Plates Fixing, (no.=8) | 2d | 2013-08-07 | 2013-08-12 | OCEC17970 | 136.62d | 0d | General worker [40 h]; Mason [20 h]; Back hoe loader [20 h]; Operator [16 h] |
| OCEC17990 |  | Inspection | 1d | 2013-08-12 | 2013-08-13 | OCEC17980 FF+1.25d | 136.62d | 14.25d | Foreman [8 h]; General worker [8 h] |
|  | 2 | **Completion of Balance Mechanical Works after the Un-Contractual Milestone Date in 31st May 2013** |  | 2013-08-28 | 2013-08-28 |  |  |  |  |
| OCEC14210 |  | Completion of Balance Sewage System Works after the Un-Contractual Milestone Completion Date in 31st May 2013 | 1d | 2013-08-28 | 2013-08-28 | OCEC5871 FF, OCEC17430 FF | 122.38d | 112.5d |  |
| OCEC14220 |  | Completion of Balance Chilled Water System Works after the Un-Contractual Milestone Completion Date in 31st May 2013 | 1d | 2013-08-28 | 2013-08-28 | OCEC5870 FF | 122.38d | 112.5d |  |
| OCEC14230 |  | Completion of Balance Potable Water&Fire Water Works after the Un-Contractual Milestone Completion Date in 31st May 2013 | 1d | 2013-08-28 | 2013-08-28 | OCEC5870 FF, OCEC19820 FF | 122.38d | 112.5d |  |
| OCEC14240 |  | Completion of Balance Irrigation System Works after the Un-Contractual Milestone Completion Date in 31st May 2013 | 1d | 2013-08-28 | 2013-08-28 | OCEC5870 FF, OCEC17990 FF | 122.38d | 112.5d |  |
|  | SUB | **Pump Rooms and Substation Works (As per BOQ)** |  | 2013-06-19 | 2014-01-05 |  |  |  |  |
|  | 4 | **Zone No. 1** |  | 2013-06-19 | 2014-01-05 |  |  |  |  |
|  | 3 | **Pump Room** |  | 2013-06-19 | 2013-12-23 |  |  |  |  |
|  | 3 | **Civil Works** |  | 2013-06-19 | 2013-09-23 |  |  |  |  |
| OCEC6570 |  | Setting out and Excavation | 7.5d | 2013-06-19 | 2013-06-26 | OCEC9750, A15137 | 21.12d | 0d | Surveyor [60 h]; Wheel Loader [120 h]; General worker [300 h]; Operator [240 h]; Surveying Instruments [60 h]; Excavator [120 h]; Back hoe loader [60 h] |
| OCEC14470 |  | Substructure Works | 18.75d | 2013-06-29 | 2013-07-17 | OCEC6570 | 21.12d | 0d | Mason [900 h]; Carpenter [900 h]; Rod Worker [2250 h]; General worker [4500 h]; Operator [150 h]; Concrete pump [150 h]; Concrete vibrator [150 h]; Bar bending machine [150 h]; Bar cutting machine [150 h] |
| OCEC16830 |  | Superstructure Works | 26.25d | 2013-07-20 | 2013-08-19 | OCEC14470 | 21.12d | 0d | Mason [210 h]; Carpenter [1260 h]; Rod Worker [3150 h]; General worker [6300 h]; Operator [210 h]; Concrete pump [210 h]; Concrete vibrator [210 h]; Bar bending machine [210 h]; Bar cutting machine [210 h]; Steel fitter [1260 h] |
| OCEC6600 |  | Finishing Works | 18.75d | 2013-08-20 | 2013-09-09 | OCEC16830 | 21.12d | 0d | Painter [600 h]; General worker [1260 h]; Mason [600 h] |
| OCEC6610 |  | Mechanical and Electrical Services | 12.5d | 2013-09-10 | 2013-09-23 | OCEC6600 | 21.12d | 0d | General worker [200 h]; Fitter [200 h]; Technician [200 h] |

| ID | WBS | Activity | Type | Duration | Start | Finish | Predecessors | Total float | Free float | Resources |
| --- | --- | --- | --- | --- | --- | --- | --- | --- | --- | --- |
|  | 2 | **Equipment Installation** |  |  | 2013-09-29 | 2013-12-23 |  |  |  |  |
| OCEC18150 |  | Equipment installation and instrumentation |  | 18.75d | 2013-09-29 | 2013-10-19 | OCEC6610 FS+3.75d | 21.12d | 0d | General worker [450 h]; Technician [450 h]; Operator [300 h]; Fitter [450 h]; Crane mounted truck [150 h]; Canter [150 h] |
| OCEC7090 |  | Cable laying and Cable termination joining |  | 18.75d | 2013-10-22 | 2013-11-11 | OCEC18150 FS+2.5d | 21.12d | 0d | Cable Jointer [150 h]; General worker [300 h]; Tool kit [150 h]; Crimping tool [150 h] |
| OCEC7100 |  | Earthing of equipment |  | 15d | 2013-11-18 | 2013-12-07 | OCEC7090 FS+5d | 21.12d | 0d |  |
| OCEC7110 |  | Inspection and testing |  | 12.5d | 2013-12-10 | 2013-12-23 | OCEC7100 FS+2.5d | 21.12d | 11.25d | Foreman [100 h]; General worker [100 h]; Technician [100 h] |
|  | SB1 | **Substation Building** |  |  | 2013-07-02 | 2014-01-05 |  |  |  |  |
|  | 3 | **Civil Works** |  |  | 2013-07-02 | 2013-10-06 |  |  |  |  |
| OCEC6720 |  | Setting out and Excavation |  | 7.5d | 2013-07-02 | 2013-07-09 | OCEC9750, OCEC6570 SS, OCEC5872, A15137 | 9.88d | 0d | Surveyor [60 h]; Wheel Loader [120 h]; General worker [300 h]; Operator [240 h]; Surveying Instruments [60 h]; Excavator [60 h]; Back hoe loader [60 h] |
| OCEC16890 |  | Substructure Works |  | 18.75d | 2013-07-10 | 2013-07-30 | OCEC6720 | 9.88d | 0d | Mason [750 h]; Carpenter [450 h]; Rod Worker [1200 h]; General worker [3750 h]; Operator [150 h]; Painter [150 h]; Concrete pump [150 h]; Concrete vibrator [150 h]; Bar bending machine [150 h]; Bar cutting machine [150 h] |
| OCEC16900 |  | Superstructure Works |  | 26.25d | 2013-07-31 | 2013-09-01 | OCEC16890 | 9.88d | 0d | Mason [1050 h]; Carpenter [630 h]; Rod Worker [1050 h]; General worker [2730 h]; Operator [210 h]; Painter [210 h]; Concrete pump [210 h]; Concrete vibrator [210 h]; Bar bending machine [210 h]; Bar cutting machine [210 h]; Steel fitter [210 h] |
| OCEC6730 |  | Finishing Works |  | 18.75d | 2013-09-02 | 2013-09-22 | OCEC16900 | 9.88d | 0d | Painter [150 h]; General worker [900 h]; Mason [300 h] |
| OCEC6740 |  | Mechanical and Electrical Services |  | 12.5d | 2013-09-23 | 2013-10-06 | OCEC6730 | 9.88d | 0d |  |
|  | 2 | **Equipment Installation** |  |  | 2013-10-12 | 2014-01-05 |  |  |  |  |
| OCEC18160 |  | Equipment installation and instrumentation |  | 18.75d | 2013-10-12 | 2013-10-30 | OCEC6740 FS+3.75d | 9.88d | 0d | General worker [300 h]; Technician [300 h]; Crane mounted truck [150 h]; Canter [150 h] |
| OCEC7120 |  | Cable laying and Cable termination joining |  | 18.75d | 2013-11-04 | 2013-11-26 | OCEC18160 FS+2.5d | 9.88d | 0d | Cable Jointer [150 h]; General worker [150 h]; Crimping tool [150 h] |
| OCEC7130 |  | Earthing of equipment |  | 15d | 2013-12-03 | 2013-12-18 | OCEC7120 FS+5d | 9.88d | 0d | General worker [120 h]; Technician [120 h] |
| OCEC7140 |  | Inspection and testing |  | 12.5d | 2013-12-23 | 2014-01-05 | OCEC7130 FS+2.5d | 9.88d | 0d | Foreman [100 h]; General worker [100 h]; Technician [100 h] |
|  | 2 | **Completion of Pump Rooms and Substation Works** |  |  | 2014-01-05 | 2014-01-05 |  |  |  |  |
| OCEC16870 |  | Completion of Pump Rooms and Substation Works |  | 1d | 2014-01-05 | 2014-01-05 | OCEC7140 FF, OCEC7110 FF | 9.88d | 0d |  |
|  | 5 | **Testing Commissioning** |  |  | 2013-12-16 | 2014-01-05 |  |  |  |  |
| OCEC4430 |  | Final testing and Commissioning |  | 18.75d | 2013-12-16 | 2014-01-05 | OCEC16870 FF | 9.88d | 0d | Project engineer [192 h]; General worker [768 h] |
|  | 6 | **Completion of Utilities Works** |  |  | 2014-01-05 | 2014-01-05 |  |  |  |  |
| OCEC14200 |  | Completion of Utilites Works | milestone | 0d | 2014-01-05 | 2014-01-05 | OCEC4430 FF, OCEC14210 FF, OCEC14220 FF, OCEC14230 FF, OCEC14240 FF, OCEC13640 FF, OCEC5874 FF, OCEC5875 FF | 9.88d |  |  |
|  | 5 | **Completion & Handing Over of Project** |  |  | 2013-07-06 | 2014-01-15 |  |  |  |  |
| A9010 |  | Final Inspections, Measurements, As Built Drawings, Handing Over. |  | 168.75d | 2013-07-06 | 2014-01-15 | OCEC14200 FF, OCEC6681 FF, A8238 FF | 0d |  |  |
