# EXPRESS WAY - PACKAGE - A

Schedule from Primavera P6, 2013-07-16 to 2016-08-28, data date 2013-07-02, costs in OMR.
Submitted as clause 14
Must finish by 2016-08-29

## Calendars

- BEW 5 Day SIL: Mon-Thu 07:00-12:00, 13:00-17:00; Fri-Sat off; Sun 07:00-12:00, 13:00-17:00. Exceptions (off unless hours are given): 2013-07-23, 2013-08-07 to 2013-08-08, 2013-08-11 08:00-16:00, 2013-09-18 00:00-00:30, 07:00-12:00, 13:00-17:00, 2013-10-15 07:00-17:00, 2013-10-16 to 2013-10-17, 2013-10-22 08:00-17:00, 2013-11-05, 2013-11-18, 2014-01-01, 2014-01-13, 2014-05-25, 2014-07-23, 2014-07-28 to 2014-07-31, 2014-10-05 to 2014-10-06, 2014-10-07 08:00-16:00, 2014-11-18, 2015-01-01, 2015-05-17 to 2015-05-20, 2015-05-26, 2015-07-23, 2015-10-14, 2015-11-18, 2015-12-23, 2016-05-03, 2016-07-05 to 2016-07-07, 2016-07-10.
- BEW 7 Day SIL: Mon-Sun 07:00-12:00, 13:00-17:00. Exceptions (off unless hours are given): 2013-07-16 08:00-17:00, 2013-09-01 07:00-12:00, 13:00-17:00.

## Resources

| Resource | Group | Unit | Rate |
| --- | --- | --- | --- |
| Signboards | material | Number |  |
| Mason | labor |  |  |
| Carpenter | labor |  |  |
| Helper | labor |  |  |
| Steel Fitter | labor |  |  |
| Mobilization and demobilization | material | Lump Sum |  |
| Piling Rig | equipment |  |  |
| Crane | equipment |  |  |
| Low Bed Trailor | equipment |  |  |
| Hydra Crane | equipment |  |  |
| Load Testing Initial | material | Number |  |
| Piling - Cast in place Pier | material | LM |  |
| Piling - Cast in place, Abutment | material | LM |  |
| Setting up at each 750mm diameter pile location | material | Number |  |
| Load Testing working piles | material | Number |  |
| Integrity Test | material | Number |  |
| Unreinforced Concrete 16/20 | material | M3 |  |
| RCC Class 45/20 MS7 in Bridge abutment IC OP | material | M3 |  |
| Steel Grade 500 for IC, WB, OP | material | Tonne |  |
| Boom Placers | equipment |  |  |
| Stagging Materials (in M3) | equipment |  |  |
| Spherical Bearing | material | Number |  |
| Interchange Fishbelly Shutter | equipment |  |  |
| Post-tensioned Concrete, 50/20 MS7 Box Girders | material | M3 |  |
| Metal Access door for box girder bridges | material | Number |  |
| Prestressing Cables - 0.6" | material | Tonne |  |
| Unclassified structural excavation (depth 0m to 2.0m) | material | M3 |  |
| Excavator (Bucket & Breaker) | equipment |  |  |
| Concrete 40/20 MS7 in Retaining Wall | material | M3 |  |
| MSREWs | material | Sqm |  |
| Standard Coping for MSERWs | material | LM |  |
| Tipper (18 M3) | equipment |  |  |
| Water Tanker (10K Gal) | equipment |  |  |
| Motor Grader | equipment |  |  |
| Vibratory Roller | equipment |  |  |
| Borrow excavation to embankment | material | M3 |  |
| Storm Sewer, HDPE Pipe | material | LM |  |
| Storm Sewer, HDPE Pipe | material | LM |  |
| Storm Sewer, HDPE Pipe | material | LM |  |
| Storm Sewer, RC Pipe | material | LM |  |
| Storm Sewer, RC Pipe | material | LM |  |
| DI Grating | material | Number |  |
| Cerb Inlet | material | Number |  |
| Granular Sub-Base Course (Class B) | material | M3 |  |
| Finishing Paver (Vogalle) | equipment |  |  |
| Tandem Roller | equipment |  |  |
| Crushed Aggregate Base Course (Class A) | material | M3 |  |
| Concrete Barrier Parapet on MSERWs | material | LM |  |
| Concrete Barrier for Bridge | material | LM |  |
| Bituminous Sprayer | equipment |  |  |
| Pnematic Tyre Rollar | equipment |  |  |
| Air Compressor 200 CFT | equipment |  |  |
| Water Tanker (5K Gal) | equipment |  |  |
| Tractor Broomer | equipment |  |  |
| Bituminous Prime Coat | material | Kilogram |  |
| Bituminous Tack Coat | material | Kilogram | 0.28 |
| Bituminous Base Course | material | M3 |  |
| Skid Wheel Loader (Bob Cat) | equipment |  |  |
| Bituminous Wearing Course | material | M3 |  |
| Strip Seal Type Expansion Joint | material | LM |  |
| Dozer (D275A) with Ripper | equipment |  |  |
| Unclassified Excavation | material | M3 |  |
| Water Proofing Paint in Culverts | material | Sqm |  |
| Steel for Retaining wall and Box culverts | material | Tonne |  |
| RCC 37.5/20 MS7 Box Culvert | material | M3 |  |
| Unclassified structural excavation (depth >2.0m to <4.0m) | material | M3 |  |
| Removal of reinforced concrete (for box culverts) | material | M3 |  |
| Catch Pit (1000mm x 1000mm) with DI grating and frame | material | Number |  |
| Heavy Beam 350 x 67 Vertical Post | material | LM |  |
| Outer Diameter 88.9 - 4.05mm Thick Horizontal MS Pipe | material | LM |  |
| Removalof bituminous pavement | material | M3 |  |
| Removal of interlocking tiles in sidewalks and median | material | Sqm |  |
| Removal of Concrete Curbs | material | LM |  |
| Clearing and Grubbing | material | Sqm | 0.17 |
| Tree removal less than 300 dia | material | Number |  |
| Tree removal more than 300 dia | material | Number |  |
| Removal of mass concrete (200mm thick) | material | M3 |  |
| Removal of pipe culvert (900mm diameter) | material | LM |  |
| Removal of steel safety barrier | material | LM |  |
| Removal of concrete barrier | material | LM |  |
| Removal of sign boards (single post) | material | Number |  |
| Removal of Mortared Riprap | material | M3 |  |
| Removal of Existing Fence | material | LM |  |
| Removal of Masonry Wall | material | LM |  |
| Removal of Street light Pole | material | Number |  |
| Removal of Flag Pole | material | Number |  |
| Wheel Loader (Komatsu) | equipment |  |  |
| Sub grade preparation in cut | material | Sqm |  |
| Surface milling (up to 50mm thick) | material | Sqm |  |
| IRI for Asphalt pavement | material | LM | 0.34 |
| Skilled Labour | labor |  |  |
| Power Supply connection to the feeder pillar | material | Number |  |
| Spare Parts (5%) as per the approved list | material | Lump Sum |  |
| Sub station with 1Nr RMU 1Nr 500 KVA Transformer and 800 A feeder pillar | material | Number |  |
| Sub tation with 1Nr RMU 1Nr 1000 KVA Transformer and 1600 A feeder pillar | material | Number |  |
| 11kV pole mounted transformer sub station, 100KVA 1 Way | material | Number |  |
| 11kV pole mounted transformer sub station, 100KVA with 2 way LV | material | Number |  |
| 11kV pole mounted transformer sub station, 200KVA with 2 way LV | material | Number |  |
| 11kV pole mounted transformer sub station, 200KVA with 1 way LV | material | Number |  |
| 11kV pole mounted transformer sub station, 315KVA with 1 way LV | material | Number |  |
| Under bridge surface mounted lighting | material | Number |  |
| Concrete Foundation for 25m high | material | Number |  |
| steel lighting column (Mid hinged Type) 25m high mast with 4 x 600 Watt HPSV | material | Number |  |
| steel lighting column (Mid-hinged Type) 14m high pole/column with 1 x 400 Watt HPSV | material | Number |  |
| steel lighting column (Mid hinged Type) 14m high pole/column with 2 x 400 Watt HPSV | material | Number |  |
| Overhead Sign Lighting System for Gantry complete (Area 44-50 sq m) | material | Number |  |
| Overhead Sign Lighting System for Cantilever (Area 19-24 sq m) | material | Number |  |
| Overhead Sign Lighting System for Cantilever (Area 14-17 sq m) | material | Number |  |
| Nominal Conductor Area 25mm2 | material | LM |  |
| Nominal Conductor Area 95mm2 | material | LM |  |
| Nominal Conductor Area 120mm2 | material | LM |  |
| Nominal Conductor Area 240mm2 | material | LM |  |
| Termination on 25mm2 cabling | material | Number |  |
| Termination on 95mm2 cabling | material | Number |  |
| Termination on 240mm2 cabling | material | Number |  |
| Twin rod earthing installation at street lighting feeder pillars | material | Number |  |
| Single rod earthing installation at the end of street lighting circuits | material | Number |  |
| Concrete Foundation for columns 14m high pole | material | Number |  |
| Column / high mast testing | material | Lump Sum |  |
| Termination on 120mm2 cabling | material | Number |  |
| overhead 11 KV electrical conductors (3 conductors together) for Street Lighting | material | LM |  |
| underground proposed 11KV Electrical cable for Street Lighting | material | LM |  |
| Supply and install Mini Feeder Pillars, 400 A, 4way | material | Number |  |
| Street Lighting Feeder Pillars, 100 A | material | Number |  |
| 2Way 100 mm Upvc duct for street lighting | material | LM |  |
| 2Way 150 mm Upvc duct for 11kv cables for street lighting | material | LM |  |
| 4Way 100 mm Upvc duct for street lighting | material | LM |  |
| 4Way 150 mm Upvc duct for street lighting | material | LM |  |
| Building for 11kv substations with equipment foundations | material | Number |  |
| Pre-cast concrete foundation for mini feeder pillars | material | Number |  |
| Pre-cast concrete foundation for street lighting feeder pillars | material | Number |  |
| Trench for low voltage cable for one cable | material | LM |  |
| Trench for low voltage cable for two cable | material | LM |  |
| Trench for low voltage cable for three cable | material | LM |  |
| underground proposed pilot cable, (12 fiber FOC) for R.O.P. | material | LM |  |
| 2way 150mm dia uPVC duct for proposed Omantel / Nawras / MOD | material | LM |  |
| 4way 100mm dia uPVC duct for Telephone Line | material |  |  |
| Power Screen 600 TPH | equipment |  |  |
| Dozer (D155A) with Ripper | equipment |  |  |
| Asphalt Plant (200 TPH) (Amman) | equipment |  |  |
| Primer Mixer Unit | equipment |  |  |
| Concrete Batching Plant (60 M3/H) | equipment |  |  |
| Concrete Batching Plant (120 M3/H) | equipment |  |  |
| Ice Maker | equipment |  |  |
| Sand Washing Unit (60 m3/H) | equipment |  |  |
| Generator (500 KVA) | equipment |  |  |
| Transcit Mixer (10 M3) | equipment |  |  |
| Transcit Mixer (6 M3) | equipment |  |  |
| CABC Plant (200 TPH) | equipment |  |  |
| Crushing Plant (300 TPH) | equipment |  |  |
| Soil Investigation | material | Lump Sum |  |
| Confirmatory boreholes | material | Number |  |
| Maintenance type-1 | material | Month |  |
| Maintenance type-2 | material | Month |  |
| Surveying equipments | material | Month |  |
| Maintenance of Surveying equipments | material | Month |  |
| Office Type 2 | material | Month |  |
| Office Type-1 (CRE + RE + QS + AA) | material | Month |  |
| Accommodation type-1 (CRE & RE) | material | Month |  |
| Accommodation type-2 (QS) | material | Month |  |
| Accommodation type-2 (CE, ME, PE, UE&MOTC) | material | Month |  |
| Accommodation type-3 (SO, SI, MI, SI, LT, LS, AA&DC) | material | Month |  |
| Accommodation type-4 | material | Month |  |
| Maintenance of Accommodation type-1 | material | Month |  |
| Maintenance of Accommodation type-2 | material | Month |  |
| Maintenance of Accommodation type-2 | material | Month |  |
| Maintenance of Accommodation type-3 | material | Month |  |
| Maintenance of Accommodation type-4 | material | Month |  |
| Site Laboratory | material | Month |  |
| Maintenance of Site Laboratory | material | Month |  |
| Maintenance and Protection of Traffic | material | Month |  |
| Provision of 5 sets of photographs | material | Month |  |
| Video recordings | material | Month |  |
| As-built drawings | material | Lump Sum |  |
| Commemorative plaque | material | Number |  |
| Opening ceremony | material | Number |  |
| Unclassified structural excavation (depth - 4.0m) | material | M3 |  |
| Concrete 45/20 MS7 in Pile Caps & Footings (IC OP) | material | M3 |  |
| Concrete 45/20 MS7 in Pier Columns & Caps (IC OP) | material | M3 |  |
| GRP Cladding | material | Sqm |  |
| Precast Concrete Pipe Culvert (dia 1000mm) | material | LM |  |
| Concrete Class 40/20 MS7 in Approach Slab | material | M3 |  |
| Spherical Bearing | material | Number |  |
| Strip Seal Type Expansion joint -60mm | material | LM |  |
| Unclassified structural excavation (under water) | material | M3 |  |
| CRANE 80 T | equipment |  |  |
| RCC Class 50/20 MS7 in Deck Slab | material | M3 |  |
| Waterproofing for Bridge Decks | material | Sqm |  |
| Spherical Bearing | material | Number |  |
| Concrete Class 40/20 MS7 in Precast Fascia Panel | material | M3 |  |
| RCC Class 45/20 MS7 in Bridge abutment WB | material | M3 |  |
| RCC Class 45/20 MS7 in open foundation (WB) | material | M3 |  |
| Concrete 45/20 MS7 in Pile Caps & Footings (WB) | material | M3 |  |
| Concrete 45/20 MS7 in Pier Columns & Pier Caps (WB) | material | M3 |  |
| I Girder Side Shuttering | equipment |  |  |
| Post-tensioned Concrete, Class 50/20 MS7 I Girder | material | M3 |  |
| Waterproofing Membrane | material | Sqm |  |
| Water Proofing Paint for Retaining Wall and Bridges | material | Sqm |  |
| Permeable back filling (Geotextile Membrane) | material | Sqm |  |
| 200 mm Dia. uPVC perforated pipe wrapped in Geotextile | material | LM |  |
| Granular backfill | material | M3 |  |
| Drainage pipe, 100mm uPVC in structure | material | LM |  |
| Earth Filling for Dykes | material | M3 |  |
| Abrasion resistant paint | material | Sqm |  |
| Bridge Loading Test - Testing by Static Load | material | Number |  |
| Bridge Loading Test - Testing by Moving Load | material | Number |  |
| Fabric wire mesh reinforcement of any size | material | M3 |  |
| Leveling and Grading for Wadi Training Works | material | M3 |  |
| Strip Seal Type Expansion Joint | material | LM |  |
| Isolation Joint at end of approach slab | material | LM |  |
| protect underground 33kv electrical cables | material | LM |  |
| disconnect and remove existing 33KV overhead electrical | material | LM |  |
| underground proposed 33KV Electrical cable | material | LM |  |
| disconnect and remove existing 11KV overhead electrical | material | LM |  |
| underground proposed 11KV Electrical cable | material | LM |  |
| 1way 100mm dia Upvc Split protect existing Omantel / Nawras / MOD cables | material | LM |  |
| Unclassified Excavation under water | material | M3 |  |
| Interlocking blocks 60mm thick for side walks and median | material | Sqm |  |
| Precast Non-Mountable Concrete Curb | material | LM |  |
| Precast flush curb | material | LM |  |
| Precast concrete edge curb | material | LM |  |
| Precast semi-battered curb | material | LM |  |
| Cast in situ Concrete curb stone | material | LM |  |
| Maintenance of Contractor's site facilities | material | Month |  |
| Project Director | labor |  |  |
| Dy Project Director | labor |  |  |
| Road Engineer | labor |  |  |
| Structural Engineer | labor |  |  |
| Planning Engineer | labor |  |  |
| Other Engineers (QA/HSE/QS etc) | labor |  |  |
| Supevisors | labor |  |  |
| Supprt Staff | labor |  |  |
| Formen | labor |  |  |
| Drivers | labor |  |  |
| RCC 30/20 MS7 for drains | material | M3 |  |
| Grouted Stone Ditch lining (200/300mm thick) | material | Sqm |  |
| Reinforced Concrete Chute | material | LM |  |
| Concrete Ditch Lining | material | Sqm |  |
| Mortared Stone Riprap Slope Protection | material | M3 |  |
| Geotextile Fabric Filter | material | Sqm |  |
| Loose Stone Riprap Dyke | material | M3 |  |
| Mortared Stone Riprap Dyke | material | M3 |  |
| Gabion lining | material | M3 |  |
| Wire Mesh Netting for slope protection | material | Sqm |  |
| Rock bolts 32mm dia. (at Heights < 15m) | material | LM |  |
| Rock Anchors 32mm dia.(at Heights > 15m) | material | LM |  |
| Concrete lining 20/20 Grade | material | M3 |  |
| Guiniting | material | Sqm |  |
| Painting | material | Sqm |  |
| Shortcrete | material | Sqm |  |
| W-Beam Guardrail | material | LM |  |
| W-Beam Guardrail Terminal section | material | Number |  |
| Precast Concrete barrier, Single face | material | LM |  |
| Concrete barrier, transition section | material | LM |  |
| End anchorage for approach | material | Number |  |
| End anchorage for approach - Guard | material | Number |  |
| Guardrail connection with Concrete barrier | material | Number |  |
| Heavy Duty Concrete barrier | material | LM |  |
| Impact attenuator, Quad Beam type | material | Number |  |
| Chain-Link fence (2.10m height | material | LM |  |
| Chain-Link gate, double frame, 2.10m height | material | Sqm |  |
| Chain-Link gate, single frame, | material | Sqm |  |
| Right of Way Concrete Marker Post | material | Number |  |
| Reflecting Road Studs (Double face, Red color) | material | Number |  |
| Reflecting Road Studs (Single face, White color) | material | Number |  |
| Provide removable bollards | material | Number |  |
| Highway Sign, T 750 | material | Number |  |
| Highway Sign T 900 | material | Number |  |
| Highway Sign T 1200 | material | Number |  |
| Highway Sign T 1500 | material | Number |  |
| Highway sign, Circular (Diameter 750mm) | material | Number |  |
| Highway sign, Circular (Diameter 900mm) | material | Number |  |
| Highway sign, Circular (Diameter 1200mm) | material | Number |  |
| Chevron Signs, rectangular [2100 mm x 600 mm] | material | Sqm |  |
| Highway Signs, rectangular [750x1400] | material | Sqm |  |
| Supplementary plate, rectangular [1200 mm x 700 mm] | material | Sqm |  |
| Supplementary plate, rectangular [1500 mm x 700 mm] | material | Sqm |  |
| Rectangular or Polygonal Sign Face (Area 1-2 sq m) | material | Sqm |  |
| Rectangular or Polygonal Sign Face (Area 2-4 sq m) | material | Sqm |  |
| Rectangular Sign Face (Area 4-6 sq m) | material | Sqm |  |
| Rectangular Sign Face (Area 9-11 sq m) | material | Sqm |  |
| Rectangular Sign Face (Area 14-17 sq m) | material | Sqm |  |
| Rectangular Sign Face (Area 19-24 sq m) | material | Sqm |  |
| Rectangular Sign Face (Area 44-50 sq m) | material | Sqm |  |
| Octagonal Road signs (Height 900mm) | material | Sqm |  |
| Sign post support assembly G.I pipe 100mm Di | material | Number |  |
| Multi-post Sign Support Assembly, Type PI posts | material | Number |  |
| Multi-post Sign Support Assembly, Type PII posts | material | Number |  |
| Multi-post Sign Support Assembly, Type PIII posts, | material | Number |  |
| Multi-post Sign Support Assembly, Type PIV posts | material | Number |  |
| Multi-post Sign Support Assembly, Type PV | material | Number |  |
| Overhead Gantry Type C1 | material | Number |  |
| Traffic Lines, Type L1/2(120) White | material | Sqm |  |
| Traffic Lines, Type L1/3(120) White | material | Sqm |  |
| Traffic Lines, Type L2A(120) White | material | Sqm |  |
| Traffic Lines, Type L2/1(120) White | material | Sqm |  |
| Traffic Lines, Type L2/2(120) White | material | Sqm |  |
| Traffic Lines, Type L4/1(150) Yellow | material | Sqm |  |
| Traffic Lines, Type L4/2(120) Yellow | material | Sqm |  |
| Traffic Lines, Type L5/1(150) White | material | Sqm |  |
| Traffic Lines, Type L5/2(120) White | material | Sqm |  |
| (Mechanical application) | material | Sqm |  |
| Traffic Lines, Type L8(200) White | material | Sqm |  |
| Special Marking , Pedestrian Crossing | material | Sqm |  |
| Special Marking , Chevrons Marking S9 | material | Sqm |  |
| Special Marking , Lane Selection Arrow White (S3/1) | material | Sqm |  |
| Special Marking , Lane Selection Arrow White (S4/1) | material | Sqm |  |
| Special Marking , Lane Selection Arrow White (S5/1) | material | Sqm |  |
| Special Marking , Lane Selection Arrow White (S7/1) | material | Sqm |  |
| Special Marking , Lane Selection Arrow White (S8/1) | material | Sqm |  |
| Curb painting | material | Sqm |  |
| Supply and erect new flag poles | material | Number |  |
| Concrete Foundation for Speed Control Camera | material | Number |  |
| Breakaway multi-post sign post | material | Number |  |
| Overhead Gantry Type C2 | material | Number |  |
| Chevron Signs, rectangular [380 mm x 600 mm] | material | Sqm |  |
| Highway Signs, rectangular [600x800] | material | Sqm |  |
| 4way 150mm dia uPVC duct for 11kv electrical cables | material | LM |  |
| 2way 200mm dia uPVC duct for electrical cables | material | LM |  |
| 2way 100mm dia uPVC duct for LV cables | material | LM |  |
| 2way 200mm dia uPVC duct for 33kv electrical cables | material | LM |  |
| ay 300mm dia uPVC duct for Irrigation Line | material | LM |  |
| 2way 100mm dia uPVC duct for Street Lighting cables | material | LM |  |

## Schedule

| ID | WBS | Activity | Type | Duration | Start | Finish | Predecessors | Total float | Free float | Calendar | MSP Activity ID | EAM Contact Person | DIFF |
| --- | --- | --- | --- | --- | --- | --- | --- | --- | --- | --- | --- | --- | --- |
|  | 01 | **Milestones** |  |  | 2013-07-16 | 2016-08-28 |  |  |  |  |  |  |  |
| BEW/GEN/MS/0010 |  | Issue of Work Comencement Order | milestone | 0d | 2013-07-16 | 2013-07-16 |  | 0d |  | BEW 7 Day SIL | 3 | 1 days | 0 |
| BEW/GEN/MS/0020 |  | Handing Over of the Site | milestone | 0d | 2016-08-28 | 2016-08-28 | BEW/CL/GEN/1010 | 0d |  | BEW 7 Day SIL |  |  | 0 |
|  | 02 | **Mobilization** |  |  | 2013-07-16 | 2013-08-29 |  |  |  |  |  |  |  |
|  | 3 | **Statutory Submissions** |  |  | 2013-07-16 | 2013-07-29 |  |  |  |  |  |  |  |
| BEW/MO/SS/1000 |  | Submission of Method of Statements |  | 14d | 2013-07-16 | 2013-07-29 | BEW/GEN/MS/0010 | 57d | 0d | BEW 7 Day SIL | 4716 | 28 days | 0 |
| BEW/MO/SS/1010 |  | Submission of Quality Plan |  | 14d | 2013-07-16 | 2013-07-29 | BEW/GEN/MS/0010 | 57d | 0d | BEW 7 Day SIL | 4715 | 28 days | 0 |
| BEW/MO/SS/1020 |  | Submission of Clause 14 Programme |  | 14d | 2013-07-16 | 2013-07-29 | BEW/GEN/MS/0010 | 57d | 0d | BEW 7 Day SIL | 4714 | 28 days | 0 |
| BEW/MO/SS/1030 |  | Submission of Safety Plan |  | 14d | 2013-07-16 | 2013-07-29 | BEW/GEN/MS/0010 | 57d | 0d | BEW 7 Day SIL | 4713 | 28 days | 0 |
|  | 4 | **No Objection Certificates (NOC)** |  |  | 2013-07-16 | 2013-08-24 |  |  |  |  |  |  |  |
| BEW/MO/NC/1000 |  | Notice of Intent to all Statutory Authorities |  | 5d | 2013-07-16 | 2013-07-20 | BEW/GEN/MS/0010 | 0d |  | BEW 7 Day SIL | 5 | 7 days | 0 |
| BEW/MO/NC/1010 |  | NOC for Batching Plant Location |  | 21d | 2013-07-21 | 2013-08-10 | BEW/MO/NC/1000 | 134d | 21d | BEW 7 Day SIL | 4710 | 30 days | 0 |
| BEW/MO/NC/1020 |  | NOC for crusher Location |  | 21d | 2013-07-21 | 2013-08-10 | BEW/MO/NC/1000 | 45d | 0.11d | BEW 7 Day SIL | 4709 | 30 days | 0 |
| BEW/MO/NC/1030 |  | NOC for Contractors Camp |  | 7d | 2013-07-21 | 2013-07-27 | BEW/MO/NC/1000 | 0d |  | BEW 7 Day SIL | 4708 | 30 days | 0 |
| BEW/MO/NC/1040 |  | NOC for Asphalt Plant Location |  | 21d | 2013-07-21 | 2013-08-10 | BEW/MO/NC/1000 | 98.89d | 19d | BEW 7 Day SIL | 4707 | 30 days | 0 |
| BEW/MO/NC/1050 |  | Obtaining NOC from Omantel |  | 21d | 2013-07-21 | 2013-08-10 | BEW/MO/NC/1000 | 555.78d | 0d | BEW 7 Day SIL |  |  | 0 |
| BEW/MO/NC/1060 |  | Obtaining NOC from ROP |  | 21d | 2013-07-21 | 2013-08-10 | BEW/MO/NC/1000 | 555.78d | 0d | BEW 7 Day SIL |  |  | 0 |
| BEW/MO/NC/1070 |  | Obtaining NOC from Ministry of Commerce |  | 21d | 2013-07-21 | 2013-08-10 | BEW/MO/NC/1000 | 555.78d | 0d | BEW 7 Day SIL |  |  | 0 |
| BEW/MO/NC/1080 |  | Obtaining NOC from Oman Refinery |  | 21d | 2013-07-21 | 2013-08-10 | BEW/MO/NC/1000 | 555.78d | 0d | BEW 7 Day SIL |  |  | 0 |
| BEW/MO/NC/1090 |  | Obtaining NOC from PDO |  | 21d | 2013-07-21 | 2013-08-10 | BEW/MO/NC/1000 | 555.78d | 0d | BEW 7 Day SIL |  |  | 0 |
| BEW/MO/NC/1100 |  | Obtaining NOC from Ministy of Defence |  | 21d | 2013-07-21 | 2013-08-10 | BEW/MO/NC/1000 | 555.78d | 0d | BEW 7 Day SIL |  |  | 0 |
| BEW/MO/NC/1110 |  | Obtaining NOC from Ministry of Heritage |  | 21d | 2013-07-21 | 2013-08-10 | BEW/MO/NC/1000 | 555.78d | 0d | BEW 7 Day SIL |  |  | 0 |
| BEW/MO/NC/1120 |  | Obtaining NOC from PAEW |  | 21d | 2013-07-21 | 2013-08-10 | BEW/MO/NC/1000 | 555.78d | 0d | BEW 7 Day SIL |  |  | 0 |
| BEW/MO/NC/1130 |  | Obtaining NOC from Ministry Agriculture |  | 21d | 2013-07-21 | 2013-08-10 | BEW/MO/NC/1000 | 555.78d | 0d | BEW 7 Day SIL |  |  | 0 |
| BEW/MO/NC/1140 |  | Obtaining NOC from Nawras |  | 21d | 2013-07-21 | 2013-08-10 | BEW/MO/NC/1000 | 555.78d | 0d | BEW 7 Day SIL |  |  | 0 |
| BEW/MO/NC/1150 |  | Obtaining NOC from Majan |  | 21d | 2013-07-21 | 2013-08-10 | BEW/MO/NC/1000 | 555.78d | 0d | BEW 7 Day SIL |  |  | 0 |
| BEW/MO/NC/1160 |  | Obtaining NOC from OETC |  | 21d | 2013-07-21 | 2013-08-10 | BEW/MO/NC/1000 | 555.78d | 0d | BEW 7 Day SIL |  |  | 0 |
| BEW/MO/NC/1170 |  | Obtaining NOC from Oman Gas |  | 21d | 2013-07-21 | 2013-08-10 | BEW/MO/NC/1000 | 555.78d | 0d | BEW 7 Day SIL |  |  | 0 |
| BEW/MO/NC/1180 |  | Obtaining NOC from Regional Municipality |  | 21d | 2013-07-21 | 2013-08-10 | BEW/MO/NC/1000 | 555.78d | 0d | BEW 7 Day SIL |  |  | 0 |
| BEW/MO/NC/1190 |  | Obtaining NOC from Ministry of Interior |  | 21d | 2013-07-21 | 2013-08-10 | BEW/MO/NC/1000 | 555.78d | 0d | BEW 7 Day SIL |  |  | 0 |
| BEW/MO/NC/1200 |  | Obtaining NOC from Ministry of Housing |  | 21d | 2013-07-21 | 2013-08-10 | BEW/MO/NC/1000 | 555.78d | 0d | BEW 7 Day SIL |  |  | 0 |
| BEW/MO/NC/1210 |  | Obtaining NOC from Environment |  | 21d | 2013-07-21 | 2013-08-10 | BEW/MO/NC/1000 | 555.78d | 0d | BEW 7 Day SIL |  |  | 0 |
| BEW/MO/NC/1220 |  | Clearance from SKJV safety Dept |  | 14d | 2013-08-11 | 2013-08-24 | BEW/MO/NC/1050, BEW/MO/NC/1130, BEW/MO/NC/1140, BEW/MO/NC/1150, BEW/MO/NC/1160, BEW/MO/NC/1170, BEW/MO/NC/1180, BEW/MO/NC/1190, BEW/MO/NC/1200, BEW/MO/NC/1210, BEW/MO/NC/1060, BEW/MO/NC/1080, BEW/MO/NC/1090, BEW/MO/NC/1100, BEW/MO/NC/1070, BEW/MO/NC/1110, BEW/MO/NC/1120 | 555.78d | 0d | BEW 7 Day SIL | 4240 | 21 days | 0 |

| ID | WBS | Activity | Duration | Start | Finish | Predecessors | Total float | Free float | Calendar | Resources | MSP Activity ID | EAM Contact Person | DIFF |
| --- | --- | --- | --- | --- | --- | --- | --- | --- | --- | --- | --- | --- | --- |
|  | 1 | **Mobilization of Engineers and Contractors Facilities** |  | 2013-07-16 | 2013-08-29 |  |  |  |  |  |  |  |  |
| BEW/MO/EF/1030 |  | instalation of Borewells at various locations | 21d | 2013-07-16 | 2013-08-05 | BEW/GEN/MS/0010 | 593.22d | 84.83d | BEW 7 Day SIL |  | 3491 | 30 days | 0 |
| BEW/MO/EF/1000 |  | Submission of Site Mobilization Drawings | 5d | 2013-07-21 | 2013-07-25 | BEW/MO/NC/1030 SS | 585.22d | 0d | BEW 7 Day SIL |  | 6 | 7 days | 0 |
| BEW/MO/EF/1010 |  | Mobilization of Enginners facilities Phase 1 | 40d | 2013-07-21 | 2013-08-29 | BEW/MO/NC/1030 SS | 0d |  | BEW 7 Day SIL |  | 3493 | 54 days | 0 |
| BEW/MO/EF/1020 |  | Mobilisation of Contractors facilities Phase 1 | 40d | 2013-07-21 | 2013-08-29 | BEW/MO/EF/1010 SS | 0d |  | BEW 7 Day SIL |  | 3492 | 54 days | 0 |
| BEW/MO/EF/1040 |  | Mobilisation of Site Laboratory Phase 1 | 40d | 2013-07-21 | 2013-08-29 | BEW/MO/EF/1020 SS | 94d | 2d | BEW 7 Day SIL |  |  |  | 0 |
| BEW/MO/EF/1050 |  | Aproval of Site Mobilisation drawings | 7d | 2013-07-26 | 2013-08-01 | BEW/MO/EF/1000 | 585.22d | 28d | BEW 7 Day SIL |  |  |  | 0 |
|  | 2 | **Initial Submissions and approvals** |  | 2013-07-16 | 2013-08-29 |  |  |  |  |  |  |  |  |
| BEW/MO/IS/1000 |  | Submission of Soil Investigation subcontractor | 14d | 2013-07-16 | 2013-07-29 | BEW/GEN/MS/0010 | 510.22d | 0d | BEW 7 Day SIL |  |  |  | 0 |
| BEW/MO/IS/1010 |  | Receiving Contract Drawings from Designer | 7d | 2013-07-16 | 2013-07-22 | BEW/GEN/MS/0010 | 149.89d | 40d | BEW 7 Day SIL |  |  |  | 0 |
| BEW/MO/IS/1020 |  | Approval of Soil Investigator by Consultant | 21d | 2013-07-30 | 2013-08-19 | BEW/MO/IS/1000 | 510.22d | 0d | BEW 7 Day SIL |  |  |  | 0 |
| BEW/MO/IS/1030 |  | Receivng approvals of the formats submitted through PQP | 7d | 2013-07-30 | 2013-08-05 | BEW/MO/SS/1010 | 534.22d | 26d | BEW 7 Day SIL |  |  |  | 0 |
| BEW/MO/IS/1040 |  | Receiving Borehole Drawings | 10d | 2013-08-20 | 2013-08-29 | BEW/MO/IS/1020 | 510.22d | 2d | BEW 7 Day SIL |  |  |  | 0 |
|  | 03 | **Priliminaries** |  | 2013-07-16 | 2016-08-28 |  |  |  |  |  |  |  |  |
|  | 7 | **Design Support Activities** |  | 2013-09-01 | 2014-02-10 |  |  |  |  |  |  |  |  |
| BEW/PR/DS/1000 |  | Digging Confirmatory Boreholes No 1 to 25 | 15d | 2013-09-01 | 2013-09-19 | BEW/MO/IS/1040, BEW/MO/IS/1030 | 348.28d | 0d |  | Confirmatory boreholes [25 Number]; Helper [18 h] |  |  | 0 |
| BEW/PR/DS/1010 |  | Soil Investingation and Report 1 | 21d | 2013-09-19 | 2013-10-22 | BEW/PR/DS/1000 | 348.28d | 0d |  | Soil Investigation [0.17 Lump Sum] |  |  | 0 |
| BEW/PR/DS/1020 |  | Digging Confirmatory Boreholes No 26 - 50 | 15d | 2013-09-19 | 2013-10-10 | BEW/PR/DS/1000 | 461.06d | 0d |  | Confirmatory boreholes [25 Number]; Helper [18 h] |  |  | 0 |
| BEW/PR/DS/1030 |  | Digging Confirmatory Boreholes No 51 to 75 | 15d | 2013-10-10 | 2013-11-04 | BEW/PR/DS/1020 | 461.06d | 0d |  | Confirmatory boreholes [25 Number]; Helper [18 h] |  |  | 0 |
| BEW/PR/DS/1040 |  | Soil Investingation and Report 2 | 21d | 2013-10-10 | 2013-11-13 | BEW/PR/DS/1020 | 491.06d | 0d |  | Soil Investigation [0.17 Lump Sum] |  |  | 0 |
| BEW/PR/DS/1050 |  | Digging Confirmatory Boreholes No 76 to 100 | 15d | 2013-11-04 | 2013-11-27 | BEW/PR/DS/1030 | 461.06d | 0d |  | Confirmatory boreholes [25 Number]; Helper [18 h] |  |  | 0 |
| BEW/PR/DS/1060 |  | Soil Investingation and Report 3 | 21d | 2013-11-04 | 2013-12-05 | BEW/PR/DS/1030 | 476.06d | 0d |  | Soil Investigation [0.17 Lump Sum] |  |  | 0 |
| BEW/PR/DS/1070 |  | Digging Confirmatory Boreholes No 101 to 125 | 15d | 2013-11-27 | 2013-12-18 | BEW/PR/DS/1050 | 527.06d | 0d |  | Confirmatory boreholes [25 Number]; Helper [18 h] |  |  | 0 |
| BEW/PR/DS/1080 |  | Soil Investingation and Report 4 | 21d | 2013-11-27 | 2013-12-26 | BEW/PR/DS/1050 | 461.06d | 0d |  | Soil Investigation [0.17 Lump Sum] |  |  | 0 |
| BEW/PR/DS/1090 |  | Digging Confirmatory Boreholes No 126 to 146 | 15d | 2013-12-18 | 2014-01-09 | BEW/PR/DS/1070 | 527.06d | 0d |  | Confirmatory boreholes [21 Number]; Helper [18 h] |  |  | 0 |
| BEW/PR/DS/1100 |  | Soil Investingation and Report 5 | 21d | 2013-12-18 | 2014-01-20 | BEW/PR/DS/1070 | 542.06d | 0d |  | Soil Investigation [0.17 Lump Sum] |  |  | 0 |
| BEW/PR/DS/1110 |  | Soil Investingation and Report 6 | 21d | 2014-01-09 | 2014-02-10 | BEW/PR/DS/1090 | 527.06d | 0d |  | Soil Investigation [0.17 Lump Sum] |  |  | 0 |

| ID | WBS | Activity | Duration | Start | Finish | Predecessors | Planned start | Planned finish | Total float | Free float | Calendar | Resources | MSP Activity ID | EAM Contact Person | DIFF |
| --- | --- | --- | --- | --- | --- | --- | --- | --- | --- | --- | --- | --- | --- | --- | --- |
|  | 1 | **Mobilization & Demobilization** |  | 2013-08-11 | 2014-01-01 |  |  |  |  |  |  |  |  |  |  |
| BEW/PR/FC/1000 |  | Instalation of Crusher and CABC Plant | 90d | 2013-08-11 | 2013-12-18 | BEW/MO/NC/1020, BEW/GEN/MS/0010, BEW/MO/SS/1000, BEW/MO/SS/1010, BEW/MO/SS/1020, BEW/MO/SS/1030 |  |  | 32.94d | 0d |  | Helper [72 h]; Mobilization and demobilization [0.1 Lump Sum]; Mason [36 h]; Steel Fitter [18 h]; Carpenter [18 h] | 4705 | 135 days | 0 |
| BEW/PR/FC/1010 |  | Fencing the Camp area | 4.44d | 2013-08-25 | 2013-08-29 | BEW/MO/NC/1220, BEW/MO/NC/1030 |  |  | 381.83d | 0.56d |  | Mason [18 h]; Steel Fitter [9 h]; Carpenter [18 h]; Helper [72 h] |  |  | 0 |
| BEW/PR/FC/1020 |  | Instalation of Project sign Board | 12d | 2013-08-30 | 2013-09-10 | BEW/MO/EF/1050, BEW/MO/EF/1010, BEW/PR/FC/1010 |  |  | 557.22d | 48.83d | BEW 7 Day SIL | Signboards [1.2 Number]; Mason [18 h]; Carpenter [18 h]; Helper [36 h] | 8 | 22 days | 0 |
| BEW/PR/FC/1030 |  | Instalation of Asphalt Plant | 125d | 2013-08-30 | 2014-01-01 | BEW/MO/NC/1040, BEW/GEN/MS/0010, BEW/MO/EF/1010 |  |  | 79.89d | 15.94d | BEW 7 Day SIL | Helper [72 h]; Mason [36 h]; Steel Fitter [18 h]; Carpenter [18 h] | 3675 | 135 days | 0 |
| BEW/PR/FC/1270 |  | Instalation of Concrete Plant | 80d | 2013-09-01 | 2013-12-25 | BEW/GEN/MS/0010, BEW/MO/NC/1010, BEW/MO/SS/1000, BEW/MO/SS/1010, BEW/MO/SS/1020, BEW/MO/SS/1030, BEW/MO/EF/1010 |  |  | 77.16d | 0d |  | Helper [72 h]; Mobilization and demobilization [0.1 Lump Sum]; Mason [54 h]; Steel Fitter [36 h]; Carpenter [18 h] | 3674 | 135 days | 0 |
| BEW/PR/FC/1280 |  | Making of Access Roads | 60d | 2013-09-01 | 2013-11-27 | BEW/MO/EF/1010 |  |  | 258.17d | 35.22d |  | Mobilization and demobilization [0.2 Lump Sum]; Helper [36 h] | 3679 | 91 days | 0 |
| BEW/PR/FC/1290 |  | Mobilisation of Contractors facilities Phase 2 | 60d | 2013-09-01 | 2013-11-27 | BEW/MO/EF/1020, BEW/MO/EF/1020 FF |  |  | 258.17d | 35.22d |  | Mobilization and demobilization [0.4 Lump Sum]; Mason [72 h]; Steel Fitter [99 h]; Carpenter [72 h]; Helper [198 h] | 3678 | 91 days | 0 |
| BEW/PR/FC/1300 |  | Mobilisation of Site Laboratory Phase 2 | 45d | 2013-09-01 | 2013-11-04 | BEW/MO/EF/1040, BEW/MO/EF/1040 FF |  |  | 62.16d | 0d |  | Mobilization and demobilization [0.2 Lump Sum]; Mason [99 h]; Steel Fitter [36 h]; Carpenter [108 h]; Helper [180 h] |  |  | 0 |
|  | 2 | **Engineers Fecilities** |  | 2013-08-30 | 2016-08-28 |  |  |  |  |  |  |  |  |  |  |
| BEW/PR/FC/1040 |  | Maintenance of Engg Off Type 1 | 1095d | 2013-08-30 | 2016-08-28 | BEW/MO/EF/1010 |  |  | 0d |  | BEW 7 Day SIL | Maintenance type-1 [39 Month] |  |  | 0 |
| BEW/PR/FC/1050 |  | Maintenance of Engg Off Type 2 | 1095d | 2013-08-30 | 2016-08-28 | BEW/MO/EF/1010 |  |  | 0d |  | BEW 7 Day SIL | Maintenance type-2 [36 Month] |  |  | 0 |
| BEW/PR/FC/1060 |  | Provision of Survey Equipments | 1095d | 2013-08-30 | 2016-08-28 | BEW/MO/EF/1010 |  |  | 0d |  | BEW 7 Day SIL | Surveying equipments [36 Month] |  |  | 0 |
| BEW/PR/FC/1070 |  | Maintenance of Survey Equipments | 1095d | 2013-08-30 | 2016-08-28 | BEW/MO/EF/1010 |  |  | 0d |  | BEW 7 Day SIL | Maintenance of Surveying equipments [36 Month] |  |  | 0 |
| BEW/PR/FC/1080 |  | Provision of Engineers Office Type 2 | 1095d | 2013-08-30 | 2016-08-28 | BEW/MO/EF/1010 |  |  | 0d |  | BEW 7 Day SIL | Helper [180 h]; Office Type 2 [36 Month] | 3675 | 135 days | 0 |
| BEW/PR/FC/1090 |  | Provision of Engineers Office Type 1 | 1095d | 2013-08-30 | 2016-08-28 | BEW/MO/EF/1010 |  |  | 0d |  | BEW 7 Day SIL | Office Type-1 (CRE + RE + QS + AA) [39 Month] |  |  | 0 |
| BEW/PR/FC/1100 |  | Provision of Engr Accomodation Type 1 | 1095d | 2013-08-30 | 2016-08-28 | BEW/MO/EF/1010 |  |  | 0d |  | BEW 7 Day SIL | Accommodation type-1 (CRE & RE) [117 Month] |  |  | 0 |
| BEW/PR/FC/1110 |  | Provision of Engr Accomodation Type 2 QS | 1095d | 2013-08-30 | 2016-08-28 | BEW/MO/EF/1010 |  |  | 0d |  | BEW 7 Day SIL | Accommodation type-2 (QS) [78 Month] |  |  | 0 |
| BEW/PR/FC/1120 |  | Provision of Engr Accomodation Type 2 | 1095d | 2013-08-30 | 2016-08-28 | BEW/MO/EF/1010 |  |  | 0d |  | BEW 7 Day SIL | Accommodation type-2 (CE, ME, PE, UE&MOTC) [468 Month] |  |  | 0 |
| BEW/PR/FC/1130 |  | Provision of Engr Accomodation Type 3 | 1095d | 2013-08-30 | 2016-08-28 | BEW/MO/EF/1010 |  |  | 0d |  | BEW 7 Day SIL | Accommodation type-3 (SO, SI, MI, SI, LT, LS, AA&DC) [1044 Month] |  |  | 0 |
| BEW/PR/FC/1140 |  | Provision of Engr Accomodation Type 4 | 1095d | 2013-08-30 | 2016-08-28 | BEW/MO/EF/1010 |  |  | 0d |  | BEW 7 Day SIL | Accommodation type-4 [39 Month] |  |  | 0 |
| BEW/PR/FC/1150 |  | Maintanance of Engr Accomodation Type 1 | 1095d | 2013-08-30 | 2016-08-28 | BEW/MO/EF/1010 |  |  | 0d |  | BEW 7 Day SIL | Maintenance of Accommodation type-1 [117 Month] |  |  | 0 |
| BEW/PR/FC/1160 |  | Maintanance of Engr Accomodation Type 2 QS | 1095d | 2013-08-30 | 2016-08-28 | BEW/MO/EF/1010 |  |  | 0d |  | BEW 7 Day SIL | Maintenance of Accommodation type-2 [78 Month] |  |  | 0 |
| BEW/PR/FC/1170 |  | Maintanance of Engr Accomodation Type 2 | 1095d | 2013-08-30 | 2016-08-28 | BEW/MO/EF/1010 |  |  | 0d |  | BEW 7 Day SIL | Maintenance of Accommodation type-2 [468 Month] |  |  | 0 |
| BEW/PR/FC/1180 |  | Maintanance of Engr Accomodation Type 3 | 1095d | 2013-08-30 | 2016-08-28 | BEW/MO/EF/1010 |  |  | 0d |  | BEW 7 Day SIL | Maintenance of Accommodation type-3 [1044 Month] |  |  | 0 |
| BEW/PR/FC/1190 |  | Maintanance of Engr Accomodation Type 4 | 1095d | 2013-08-30 | 2016-08-28 | BEW/MO/EF/1010 |  |  | 0d |  | BEW 7 Day SIL | Maintenance of Accommodation type-4 [39 Month] |  |  | 0 |
| BEW/PR/FC/1200 |  | Provison of Site Lab | 1095d | 2013-08-30 | 2016-08-28 | BEW/MO/EF/1010 |  |  | 0d |  | BEW 7 Day SIL | Site Laboratory [36 Month] |  |  | 0 |
| BEW/PR/FC/1210 |  | Maintanance of Site Lab | 1095d | 2013-08-30 | 2016-08-28 | BEW/MO/EF/1010 |  |  | 0d |  | BEW 7 Day SIL | Maintenance of Site Laboratory [36 Month] |  |  | 0 |
| BEW/PR/FC/1220 |  | Maintanance of Traffic | 1095d | 2013-08-30 | 2016-08-28 | BEW/MO/EF/1010 |  |  | 0d |  | BEW 7 Day SIL | Maintenance and Protection of Traffic [36 Month] |  |  | 0 |
| BEW/PR/FC/1230 |  | Provision of Photographs | 1095d | 2013-08-30 | 2016-08-28 | BEW/MO/EF/1010 |  |  | 0d |  | BEW 7 Day SIL | Provision of 5 sets of photographs [36 Month] |  |  | 0 |
| BEW/PR/FC/1240 |  | Provision of Video | 1095d | 2013-08-30 | 2016-08-28 | BEW/MO/EF/1010 |  |  | 0d |  | BEW 7 Day SIL | Video recordings [36 Month] |  |  | 0 |
| BEW/PR/FC/1250 |  | Maintenance of Project Sign Board | 1095.23d | 2013-08-30 | 2016-08-28 | BEW/MO/EF/1010 | 2013-08-30 | 2016-08-29 | 0d |  | BEW 7 Day SIL | Signboards [0.4 Number] |  |  | 2 |
| BEW/PR/FC/1260 |  | Maintanance of Contractors Fecilities | 1095d | 2013-08-30 | 2016-08-28 | BEW/MO/EF/1020 |  |  | 0d |  | BEW 7 Day SIL | Maintenance of Contractor's site facilities [36 Month]; Project Director [9 h]; Dy Project Director [18 h]; Road Engineer [72 h]; Structural Engineer [72 h]; Planning Engineer [18 h]; Other Engineers (QA/HSE/QS etc) [126 h]; Supevisors [144 h]; Supprt Staff [189 h]; Formen [144 h]; Drivers [594 h] |  |  | 0 |

Notes:
- BEW/PR/FC/1030: Description: Increase
- BEW/PR/FC/1080: Description: Increase

| ID | WBS | Activity | Duration | Start | Finish | Predecessors | Total float | Free float | Calendar | Resources | DIFF | MSP Activity ID | EAM Contact Person |
| --- | --- | --- | --- | --- | --- | --- | --- | --- | --- | --- | --- | --- | --- |
|  | 3 | **As Built Drawings** |  | 2013-07-16 | 2015-04-07 |  |  |  |  |  |  |  |  |
| BEW/PR/AB/1010 |  | As Built Drawing Submission Part 15 | 24d | 2013-07-16 | 2013-08-22 |  | 745.94d | 397.67d |  | As-built drawings [0.2 Lump Sum] | 0 |  |  |
| BEW/PR/AB/1050 |  | As Built Drawing Submission Part 14 | 24d | 2013-07-16 | 2013-08-22 |  | 745.94d | 397.67d |  | As-built drawings [0.05 Lump Sum] | 0 |  |  |
| BEW/PR/AB/1060 |  | As Built Drawing Submission Part 7 | 24d | 2013-07-16 | 2013-08-22 |  | 745.94d | 397.67d |  | As-built drawings [0.05 Lump Sum] | 0 |  |  |
| BEW/PR/AB/1070 |  | As Built Drawing Submission Part 3 | 24d | 2013-07-16 | 2013-08-22 |  | 745.94d | 397.67d |  | As-built drawings [0.05 Lump Sum] | 0 |  |  |
| BEW/PR/AB/1080 |  | As Built Drawing Submission Part 9 | 24d | 2013-07-16 | 2013-08-22 |  | 755.94d |  |  | As-built drawings [0.05 Lump Sum] | 0 |  |  |
| BEW/PR/AB/1090 |  | As Built Drawing Submission Part 2 | 24d | 2013-07-16 | 2013-08-22 |  | 745.94d | 397.67d |  | As-built drawings [0.05 Lump Sum] | 0 |  |  |
| BEW/PR/AB/1100 |  | As Built Drawing Submission Part 10 | 24d | 2013-07-16 | 2013-08-22 |  | 745.94d | 397.67d |  | As-built drawings [0.05 Lump Sum] | 0 |  |  |
| BEW/PR/AB/1110 |  | As Built Drawing Submission Part 4 | 24d | 2013-07-16 | 2013-08-22 |  | 745.94d | 397.67d |  | As-built drawings [0.05 Lump Sum] | 0 |  |  |
| BEW/PR/AB/1130 |  | As Built Drawing Submission Part 8 | 20d | 2013-07-16 | 2013-08-18 |  | 759.94d |  |  | As-built drawings [0.05 Lump Sum] | 0 |  |  |
| BEW/PR/AB/1140 |  | As Built Drawing Submission Part 5 | 24d | 2013-07-16 | 2013-08-22 |  | 755.94d |  |  | As-built drawings [0.05 Lump Sum] | 0 |  |  |
| BEW/PR/AB/1020 |  | As Built Drawing Submission Part 12 | 24d | 2014-03-31 | 2014-05-01 | BEW/UTL/GEN/1050 | 546.89d | 126.61d |  | As-built drawings [0.05 Lump Sum] | 0 |  |  |
| BEW/PR/AB/1120 |  | As Built Drawing Submission Part 11 | 24d | 2014-11-06 | 2014-12-11 | BEW/ST/WB4/2310, BEW/PR/AB/1020 | 420.28d | 72d |  | As-built drawings [0.05 Lump Sum] | 0 |  |  |
| BEW/PR/AB/1030 |  | As Built Drawing Submission Part 6 | 24d | 2015-02-08 | 2015-03-12 | BEW/ST/OP14/4580 | 356.72d | 8.44d |  | As-built drawings [0.05 Lump Sum] | 0 |  |  |
| BEW/PR/AB/1040 |  | As Built Drawing Submission Part 1 | 24d | 2015-02-18 | 2015-03-24 | BEW/ST/IC10/1830 | 348.28d | 0d |  | As-built drawings [0.05 Lump Sum] | 0 |  |  |
| BEW/PR/AB/1000 |  | As Built Drawing Submission Part 13 | 10d | 2015-03-24 | 2015-04-07 | BEW/IN/GEN/1050, BEW/PR/AB/1010, BEW/PR/AB/1020, BEW/PR/AB/1030, BEW/PR/AB/1040, BEW/PR/AB/1050, BEW/PR/AB/1060, BEW/PR/AB/1070, BEW/PR/AB/1090, BEW/PR/AB/1100, BEW/PR/AB/1110, BEW/PR/AB/1120 | 348.28d |  |  | As-built drawings [0.15 Lump Sum] | 0 |  |  |
|  | 4 | **Closing** |  | 2016-08-24 | 2016-08-28 |  |  |  |  |  |  |  |  |
| BEW/PR/FC/1310 |  | Supply and erection of commemorative plaque | 4.44d | 2016-08-24 | 2016-08-28 | BEW/PR/FC/1330 FF | 0d |  | BEW 7 Day SIL | Commemorative plaque [1 Number] | 0 |  |  |
| BEW/PR/FC/1320 |  | Opening ceremony including all facilities | 4.44d | 2016-08-24 | 2016-08-28 | BEW/PR/FC/1330 FF | 0d |  | BEW 7 Day SIL | Opening ceremony [1 Number] | 0 |  |  |
| BEW/PR/FC/1330 |  | Removal of Project Sign Board | 4.44d | 2016-08-24 | 2016-08-28 | BEW/PR/FC/1250 FF | 0d |  | BEW 7 Day SIL | Signboards [0.4 Number]; Helper [40 h] | 0 |  |  |
|  | 04 | **Design and Support works** |  | 2013-07-16 | 2014-04-08 |  |  |  |  |  |  |  |  |
|  | 1 | **Survey Works** |  | 2013-09-01 | 2014-02-17 |  |  |  |  |  |  |  |  |
| BEW/DE/DS/1070 |  | Survey Phase 1 Traversing and Centre Line Marking Loc 1 | 25d | 2013-09-01 | 2013-10-03 | BEW/MO/IS/1010, BEW/MO/EF/1010 | 76.06d | 0d |  |  | 0 | 14 | 87 days |
| BEW/DE/DS/1150 |  | Survey Phase 2 OGL recording 90+300 to 95+300, Traverse Loc 2 | 10d | 2013-09-19 | 2013-10-03 | BEW/DE/DS/1070 FS-10d | 196.06d | 0d |  |  | 0 | 3682 | 92 days |
| BEW/DE/DS/1180 |  | Survey Phase 3 OGL 95+300 to 100+000 | 10d | 2013-10-03 | 2013-10-21 | BEW/DE/DS/1150 | 456.06d | 0d |  |  | 0 | 3682 | 92 days |
| BEW/DE/DS/1220 |  | Survey Phase 4 OGL 100+000 to 105+000 | 10d | 2013-10-21 | 2013-11-04 | BEW/DE/DS/1180 | 456.06d | 0d |  |  | 0 | 3682 | 92 days |
| BEW/DE/DS/1110 |  | Receiving Pile Drawings 1 | 7d | 2013-10-22 | 2013-10-29 | BEW/PR/DS/1010 | 508.39d | 0d | BEW 7 Day SIL |  | 0 |  |  |
| BEW/DE/DS/1240 |  | Survey Phase 5 OGL 105+000 to 110+000 | 10d | 2013-11-04 | 2013-11-20 | BEW/DE/DS/1220 | 456.06d | 0d |  |  | 0 | 3682 | 92 days |
| BEW/DE/DS/1140 |  | Receiving Pile Drawings 2 | 7d | 2013-11-13 | 2013-11-20 | BEW/PR/DS/1040 | 717.17d | 43d | BEW 7 Day SIL |  | 0 |  |  |
| BEW/DE/DS/1250 |  | Survey Phase 6 OGL 110+000 to 115+000 | 10d | 2013-11-20 | 2013-12-04 | BEW/DE/DS/1240 | 456.06d | 0d |  |  | 0 | 3682 | 92 days |
| BEW/DE/DS/1260 |  | Survey Phase 7 OGL 115+000 to 120+000 | 10d | 2013-12-04 | 2013-12-18 | BEW/DE/DS/1250 | 456.06d | 0d |  |  | 0 | 3682 | 92 days |
| BEW/DE/DS/1170 |  | Receiving Pile Drawings 3 | 7d | 2013-12-05 | 2013-12-12 | BEW/PR/DS/1060 | 695.17d | 21d | BEW 7 Day SIL |  | 0 |  |  |
| BEW/DE/DS/1270 |  | Survey Phase 8 OGL 120+000 to 125+000 | 10d | 2013-12-18 | 2014-01-02 | BEW/DE/DS/1260 | 456.06d | 0d |  |  | 0 | 3682 | 92 days |
| BEW/DE/DS/1200 |  | Receiving Pile Drawings 4 | 7d | 2013-12-26 | 2014-01-02 | BEW/PR/DS/1080 | 674.17d | 0d | BEW 7 Day SIL |  | 0 |  |  |
| BEW/DE/DS/1280 |  | Survey Phase 9 OGL 125+000 to 130+000 | 10d | 2014-01-02 | 2014-01-19 | BEW/DE/DS/1270 | 599.06d | 0d |  |  | 0 | 3682 | 92 days |
| BEW/DE/DS/1370 |  | Survey Phase 10 OGL 130+000 to 136+500 | 10d | 2014-01-19 | 2014-02-02 | BEW/DE/DS/1280 | 606.06d | 0d |  |  | 0 | 3682 | 92 days |
| BEW/DE/DS/1210 |  | Receiving Pile Drawings 5 | 7d | 2014-01-20 | 2014-01-27 | BEW/PR/DS/1100 | 785.17d | 21d | BEW 7 Day SIL |  | 0 |  |  |
| BEW/DE/DS/1230 |  | Receiving Pile Drawings 6 | 7d | 2014-02-10 | 2014-02-17 | BEW/PR/DS/1110 | 764.17d | 0d | BEW 7 Day SIL |  | 0 |  |  |

| ID | WBS | Activity | Duration | Start | Finish | Predecessors | Total float | Free float | Calendar | MSP Activity ID | EAM Contact Person | DIFF |
| --- | --- | --- | --- | --- | --- | --- | --- | --- | --- | --- | --- | --- |
|  | 9 | **Approval of Methodology** |  | 2013-07-30 | 2013-08-21 |  |  |  |  |  |  |  |
| BEW/DE/DS/1080 |  | Approval of Piling Methodology | 14d | 2013-07-30 | 2013-08-21 | BEW/MO/SS/1030, BEW/MO/SS/1020, BEW/MO/SS/1000, BEW/MO/SS/1010 | 396.17d | 0d |  | 1729 | 22 days | 0 |
| BEW/DE/DS/1090 |  | Approval of MoS for Structural Excavation | 14d | 2013-07-30 | 2013-08-21 | BEW/DE/DS/1080 SS | 396.17d | 47.89d |  | 1728 | 22 days | 0 |
|  | 8 | **Approval of Material/ Supplier/Applicator** |  | 2013-07-16 | 2014-02-02 |  |  |  |  |  |  |  |
| BEW/DE/DS/1000 |  | Approval of Soil Investigator | 15d | 2013-07-16 | 2013-07-30 | BEW/GEN/MS/0010 | 383d | 0d | BEW 7 Day SIL | 18 | 30 days | 0 |
| BEW/DE/DS/1010 |  | Approval of Concrete Supplier and Mix Design | 60d | 2013-07-16 | 2013-10-13 | BEW/GEN/MS/0010 | 359.06d | 10.78d |  | 3680 | 89 days | 0 |
| BEW/DE/DS/1020 |  | Identification of Borrow Pit, testing of the material, Permission and approvals | 75d | 2013-07-16 | 2013-11-06 | BEW/GEN/MS/0010 | 205.83d | 29.89d |  | 4689 | 135 days | 0 |
| BEW/DE/DS/1030 |  | Identification, finalisation of Expansion Joint, Inspection, testing and Material approval | 125d | 2013-07-16 | 2014-01-20 | BEW/GEN/MS/0010 | 222.94d | 0d |  | 4697 | 188 days | 0 |
| BEW/DE/DS/1040 |  | Identification, finalisation of Elastomeric Bering, Inspection, testing and Material approval | 125d | 2013-07-16 | 2014-01-20 | BEW/GEN/MS/0010 | 222.94d | 0d |  | 4698 | 188 days | 0 |
| BEW/DE/DS/1050 |  | Identification, finalisation of Spherical Bering, Inspection, testing and Material approval | 125d | 2013-07-16 | 2014-01-20 | BEW/GEN/MS/0010 | 222.94d | 0d |  |  |  | 0 |
| BEW/DE/DS/1100 |  | Approval of Reinforcement Steel | 45d | 2013-07-31 | 2013-10-06 | BEW/DE/DS/1000 | 364.17d | 15.89d |  | 22 | 65 days | 0 |
| BEW/DE/DS/1380 |  | Approval of Polythene sheet | 21d | 2013-08-30 | 2013-09-19 | BEW/MO/EF/1010 | 696.22d | 185.83d | BEW 7 Day SIL | 18 | 30 days | 0 |
| BEW/DE/DS/1390 |  | Approval of RC pipes & fittings | 21d | 2013-08-30 | 2013-09-19 | BEW/MO/EF/1010 | 1074d |  | BEW 7 Day SIL | 18 | 30 days | 0 |
| BEW/DE/DS/1400 |  | Approval of Cement Source | 21d | 2013-08-30 | 2013-09-19 | BEW/MO/EF/1010 | 548.22d | 39.83d | BEW 7 Day SIL | 18 | 30 days | 0 |
| BEW/DE/DS/1410 |  | Approval of UPVC Pipes & Fittings | 21d | 2013-08-30 | 2013-09-19 | BEW/MO/EF/1010 | 1074d |  | BEW 7 Day SIL | 18 | 30 days | 0 |
| BEW/DE/DS/1420 |  | Approval of Performed fillers | 21d | 2013-08-30 | 2013-09-19 | BEW/MO/EF/1010 | 1074d |  | BEW 7 Day SIL | 18 | 30 days | 0 |
| BEW/DE/DS/1430 |  | Approval of Concrete Mix Designs | 21d | 2013-08-30 | 2013-09-19 | BEW/MO/EF/1010 | 548.22d | 39.83d | BEW 7 Day SIL | 18 | 30 days | 0 |
| BEW/DE/DS/1440 |  | Approval of Steel Reinforcement | 21d | 2013-08-30 | 2013-09-19 | BEW/MO/EF/1010 | 548.22d | 39.83d | BEW 7 Day SIL | 18 | 30 days | 0 |
| BEW/DE/DS/1450 |  | Approval of Waterproofing membrane and protection board | 21d | 2013-08-30 | 2013-09-19 | BEW/MO/EF/1010 | 710.67d | 200.28d | BEW 7 Day SIL | 18 | 30 days | 0 |
| BEW/DE/DS/1460 |  | Approval of Epoxy / cementitious grout for bearings | 21d | 2013-08-30 | 2013-09-19 | BEW/MO/EF/1010 | 710.67d | 200.28d | BEW 7 Day SIL | 18 | 30 days | 0 |
| BEW/DE/DS/1130 |  | Approval of Concrete Mix design | 50d | 2013-11-04 | 2014-01-19 | BEW/PR/FC/1300 | 62.16d | 0d |  | 21 | 65 days | 0 |
| BEW/DE/DS/1190 |  | Approval of Bitumen Mix design | 30d | 2013-12-18 | 2014-02-02 | BEW/PR/FC/1000, BEW/PR/FC/1030 FS-30d | 43.94d | 0d |  | 1724 | 128 days | 0 |
|  | 10 | **Approval of Drawings/Barbending Schedules** |  | 2013-07-16 | 2014-04-08 |  |  |  |  |  |  |  |
| BEW/DE/DS/1060 |  | Approval of Drawing for the initial activities | 21d | 2013-07-16 | 2013-08-19 | BEW/GEN/MS/0010 | 502.83d | 0d |  | 1735 | 30 days | 0 |
| BEW/DE/DS/1120 |  | Approval of Initial Shop Drawings | 12d | 2013-09-15 | 2013-09-30 | BEW/DE/DS/1070 FS-15d | 76.06d | 0d |  | 4194 | 21 days | 0 |
| BEW/DE/DS/1160 |  | Approval of Initial Cross sections | 21d | 2013-10-03 | 2013-11-06 | BEW/DE/DS/1070 | 102.06d | 0d |  | 1734 | 23 days | 0 |

| ID | WBS | Activity | Duration | Start | Finish | Predecessors | Total float | Free float | Calendar | MSP Activity ID | EAM Contact Person | DIFF |
| --- | --- | --- | --- | --- | --- | --- | --- | --- | --- | --- | --- | --- |
|  | 6 | **Submission of Cross sections and Shop Drawings** |  | 2013-09-19 | 2014-04-08 |  |  |  |  |  |  |  |
|  | 1 | **Structural works Ch 90 +300 to 92+000** |  | 2013-10-03 | 2013-12-02 |  |  |  |  |  |  |  |
| BEW/1280 |  | Preparation & Submission of shopdrawings | 21d | 2013-10-03 | 2013-11-06 | BEW/DE/DS/1150 | 561.06d | 0d |  | 2626 | 2 days | 0 |
| BEW/1300 |  | Review and reply by Engineer | 7d | 2013-11-06 | 2013-11-13 | BEW/1280 | 817.17d | 0d | BEW 7 Day SIL |  |  | 0 |
| BEW/1290 |  | Re-Submission of shopdrawings | 7d | 2013-11-13 | 2013-11-25 | BEW/1300 | 561.06d | 0d |  | 2626 | 2 days | 0 |
| BEW/1310 |  | Approval of Shop Drawings | 7d | 2013-11-25 | 2013-12-02 | BEW/1290 | 814.17d | 76d | BEW 7 Day SIL |  |  | 0 |
|  | 2 | **Ch 90 +300 to 92+000** |  | 2013-09-19 | 2013-10-17 |  |  |  |  |  |  |  |
| BEW/1000 |  | Preparation & Submission of Cross Sections | 5d | 2013-09-19 | 2013-09-26 | BEW/DE/DS/1150 FS-10d | 521.06d | 0d |  | 2626 | 2 days | 0 |
| BEW/1010 |  | Approval of Cross sections | 21d | 2013-09-26 | 2013-10-17 | BEW/1000 | 762.06d | 19.89d | BEW 7 Day SIL |  |  | 0 |
|  | 3 | **Structural works Ch 92 +000 to 95+000** |  | 2013-10-03 | 2013-12-02 |  |  |  |  |  |  |  |
| BEW/1320 |  | Preparation & Submission of shopdrawings | 21d | 2013-10-03 | 2013-11-06 | BEW/DE/DS/1150 | 688.06d | 0d |  | 2626 | 2 days | 0 |
| BEW/1330 |  | Review and reply by Engineer | 7d | 2013-11-06 | 2013-11-13 | BEW/1320 | 1001.17d | 0d | BEW 7 Day SIL |  |  | 0 |
| BEW/1340 |  | Re-Submission of shopdrawings | 7d | 2013-11-13 | 2013-11-25 | BEW/1330 | 688.06d | 0d |  | 2626 | 2 days | 0 |
| BEW/1350 |  | Approval of Shop Drawings | 7d | 2013-11-25 | 2013-12-02 | BEW/1340 | 1000.17d |  | BEW 7 Day SIL |  |  | 0 |
|  | 4 | **Ch 92 +000 to 95+000** |  | 2013-10-03 | 2013-12-03 |  |  |  |  |  |  |  |
| BEW/1020 |  | Preparation & Submission of Cross Sections | 25d | 2013-10-03 | 2013-11-12 | BEW/DE/DS/1150 | 686.06d | 0d |  | 2626 | 2 days | 0 |
| BEW/1030 |  | Approval of Cross sections | 21d | 2013-11-12 | 2013-12-03 | BEW/1020 | 999.17d |  | BEW 7 Day SIL |  |  | 0 |
|  | 5 | **Structural works Ch 95 +000 to 98+000** |  | 2013-10-21 | 2013-12-16 |  |  |  |  |  |  |  |
| BEW/1360 |  | Preparation & Submission of shopdrawings | 21d | 2013-10-21 | 2013-11-21 | BEW/DE/DS/1180 | 678.06d | 0d |  | 2626 | 2 days | 0 |
| BEW/1370 |  | Review and reply by Engineer | 7d | 2013-11-21 | 2013-11-28 | BEW/1360 | 986.17d | 0d | BEW 7 Day SIL |  |  | 0 |
| BEW/1380 |  | Re-Submission of shopdrawings | 7d | 2013-11-28 | 2013-12-09 | BEW/1370 | 678.06d | 0d |  | 2626 | 2 days | 0 |
| BEW/1390 |  | Approval of Shop Drawings | 7d | 2013-12-09 | 2013-12-16 | BEW/1380 | 986.17d |  | BEW 7 Day SIL |  |  | 0 |
|  | 6 | **Ch 95 +000 to 98+000** |  | 2013-09-26 | 2013-11-25 |  |  |  |  |  |  |  |
| BEW/1040 |  | Preparation & Submission of Cross Sections | 25d | 2013-09-26 | 2013-11-04 | BEW/DE/DS/1180 FS-15d | 691.06d | 0d |  | 2626 | 2 days | 0 |
| BEW/1050 |  | Approval of Cross sections | 21d | 2013-11-04 | 2013-11-25 | BEW/1040 | 1007.17d |  | BEW 7 Day SIL |  |  | 0 |

| ID | WBS | Activity | Duration | Start | Finish | Predecessors | Total float | Free float | Calendar | MSP Activity ID | EAM Contact Person | DIFF |
| --- | --- | --- | --- | --- | --- | --- | --- | --- | --- | --- | --- | --- |
|  | 36 | **Ch 124 +500 to 127+500** |  | 2014-01-02 | 2014-03-02 |  |  |  |  |  |  |  |
| BEW/1680 |  | Preparation & Submission of Cross Sections | 25d | 2014-01-02 | 2014-02-09 | BEW/DE/DS/1270 | 626.06d | 0d |  | 2626 | 2 days | 0 |
| BEW/1690 |  | Approval of Cross sections | 21d | 2014-02-09 | 2014-03-02 | BEW/1680 | 910.17d |  | BEW 7 Day SIL |  |  | 0 |
|  | 7 | **Structural works Ch 98 +000 to 102+800** |  | 2013-11-04 | 2013-12-30 |  |  |  |  |  |  |  |
| BEW/1400 |  | Preparation & Submission of shopdrawings | 21d | 2013-11-04 | 2013-12-05 | BEW/DE/DS/1220 | 668.06d | 0d |  | 2626 | 2 days | 0 |
| BEW/1410 |  | Review and reply by Engineer | 7d | 2013-12-05 | 2013-12-12 | BEW/1400 | 972.17d | 0d | BEW 7 Day SIL |  |  | 0 |
| BEW/1420 |  | Re-Submission of shopdrawings | 7d | 2013-12-12 | 2013-12-23 | BEW/1410 | 668.06d | 0d |  | 2626 | 2 days | 0 |
| BEW/1430 |  | Approval of Shop Drawings | 7d | 2013-12-23 | 2013-12-30 | BEW/1420 | 972.17d |  | BEW 7 Day SIL |  |  | 0 |
|  | 8 | **Ch 98 +000 to 102+800** |  | 2013-11-04 | 2014-01-26 |  |  |  |  |  |  |  |
| BEW/1160 |  | Preparation & Submission of Cross Sections | 25d | 2013-11-04 | 2013-12-11 | BEW/DE/DS/1220 | 649.06d | 0d |  | 2626 | 2 days | 0 |
| BEW/1170 |  | Review and reply by Engineer | 21d | 2013-12-11 | 2014-01-01 | BEW/1160 | 945.17d | 0.17d | BEW 7 Day SIL |  |  | 0 |
| BEW/1180 |  | Re- Submission of Cross Sections | 7d | 2014-01-02 | 2014-01-12 | BEW/1170 | 649.89d | 0d |  | 2626 | 2 days | 0 |
| BEW/1190 |  | Approval of Cross sections | 14d | 2014-01-13 | 2014-01-26 | BEW/1180 | 945d |  | BEW 7 Day SIL |  |  | 0 |
|  | 9 | **Structural works Ch 102 +800 to 105+300** |  | 2013-11-04 | 2013-12-30 |  |  |  |  |  |  |  |
| BEW/1440 |  | Preparation & Submission of shopdrawings | 21d | 2013-11-04 | 2013-12-05 | BEW/DE/DS/1220 | 668.06d | 0d |  | 2626 | 2 days | 0 |
| BEW/1450 |  | Review and reply by Engineer | 7d | 2013-12-05 | 2013-12-12 | BEW/1440 | 972.17d | 0d | BEW 7 Day SIL |  |  | 0 |
| BEW/1460 |  | Re-Submission of shopdrawings | 7d | 2013-12-12 | 2013-12-23 | BEW/1450 | 668.06d | 0d |  | 2626 | 2 days | 0 |
| BEW/1470 |  | Approval of Shop Drawings | 7d | 2013-12-23 | 2013-12-30 | BEW/1460 | 972.17d |  | BEW 7 Day SIL |  |  | 0 |
|  | 10 | **Ch 102 +800 to 105+300** |  | 2013-11-04 | 2014-01-26 |  |  |  |  |  |  |  |
| BEW/1200 |  | Preparation & Submission of Cross Sections | 25d | 2013-11-04 | 2013-12-11 | BEW/DE/DS/1220 | 649.06d | 0d |  | 2626 | 2 days | 0 |
| BEW/1210 |  | Review and reply by Engineer | 21d | 2013-12-11 | 2014-01-01 | BEW/1200 | 945.17d | 0.17d | BEW 7 Day SIL |  |  | 0 |
| BEW/1220 |  | Re- Submission of Cross Sections | 7d | 2014-01-02 | 2014-01-12 | BEW/1210 | 649.89d | 0d |  | 2626 | 2 days | 0 |
| BEW/1230 |  | Approval of Cross sections | 14d | 2014-01-13 | 2014-01-26 | BEW/1220 | 945d |  | BEW 7 Day SIL |  |  | 0 |
|  | 11 | **Structural works Ch 105 +300 to 109+000** |  | 2013-11-20 | 2014-01-14 |  |  |  |  |  |  |  |
| BEW/1480 |  | Preparation & Submission of shopdrawings | 21d | 2013-11-20 | 2013-12-19 | BEW/DE/DS/1240 | 658.06d | 0d |  | 2626 | 2 days | 0 |
| BEW/1490 |  | Review and reply by Engineer | 7d | 2013-12-19 | 2013-12-26 | BEW/1480 | 958.17d | 0d | BEW 7 Day SIL |  |  | 0 |
| BEW/1500 |  | Re-Submission of shopdrawings | 7d | 2013-12-26 | 2014-01-07 | BEW/1490 | 658.06d | 0d |  | 2626 | 2 days | 0 |
| BEW/1510 |  | Approval of Shop Drawings | 7d | 2014-01-07 | 2014-01-14 | BEW/1500 | 957.17d |  | BEW 7 Day SIL |  |  | 0 |

| ID | WBS | Activity | Duration | Start | Finish | Predecessors | Total float | Free float | Calendar | MSP Activity ID | EAM Contact Person | DIFF |
| --- | --- | --- | --- | --- | --- | --- | --- | --- | --- | --- | --- | --- |
|  | 12 | **Ch 105 +300 to 109+000** |  | 2013-11-20 | 2014-01-15 |  |  |  |  |  |  |  |
| BEW/1060 |  | Preparation & Submission of Cross Sections | 25d | 2013-11-20 | 2013-12-25 | BEW/DE/DS/1240 | 656.06d | 0d |  | 2626 | 2 days | 0 |
| BEW/1070 |  | Approval of Cross sections | 21d | 2013-12-25 | 2014-01-15 | BEW/1060 | 956.17d |  | BEW 7 Day SIL |  |  | 0 |
|  | 13 | **Structural works Ch 109 +000 to 112+200** |  | 2013-12-04 | 2014-01-29 |  |  |  |  |  |  |  |
| BEW/1520 |  | Preparation & Submission of shopdrawings | 21d | 2013-12-04 | 2014-01-05 | BEW/DE/DS/1250 | 648.06d | 0d |  | 2626 | 2 days | 0 |
| BEW/1530 |  | Review and reply by Engineer | 7d | 2014-01-05 | 2014-01-12 | BEW/1520 | 941.17d | 0d | BEW 7 Day SIL |  |  | 0 |
| BEW/1540 |  | Re-Submission of shopdrawings | 7d | 2014-01-12 | 2014-01-22 | BEW/1530 | 648.06d | 0d |  | 2626 | 2 days | 0 |
| BEW/1550 |  | Approval of Shop Drawings | 7d | 2014-01-22 | 2014-01-29 | BEW/1540 | 942.17d |  | BEW 7 Day SIL |  |  | 0 |
|  | 14 | **Ch 109 +000 to 112+200** |  | 2013-12-04 | 2014-01-30 |  |  |  |  |  |  |  |
| BEW/1080 |  | Preparation & Submission of Cross Sections | 25d | 2013-12-04 | 2014-01-09 | BEW/DE/DS/1250 | 646.06d | 0d |  | 2626 | 2 days | 0 |
| BEW/1090 |  | Approval of Cross sections | 21d | 2014-01-09 | 2014-01-30 | BEW/1080 | 941.17d |  | BEW 7 Day SIL |  |  | 0 |
|  | 15 | **Structural works IC 08 and 09** |  | 2013-12-04 | 2014-01-29 |  |  |  |  |  |  |  |
| BEW/1560 |  | Preparation & Submission of shopdrawings | 21d | 2013-12-04 | 2014-01-05 | BEW/DE/DS/1250 | 648.06d | 0d |  | 2626 | 2 days | 0 |
| BEW/1570 |  | Review and reply by Engineer | 7d | 2014-01-05 | 2014-01-12 | BEW/1560 | 941.17d | 0d | BEW 7 Day SIL |  |  | 0 |
| BEW/1580 |  | Re-Submission of shopdrawings | 7d | 2014-01-12 | 2014-01-22 | BEW/1570 | 648.06d | 0d |  | 2626 | 2 days | 0 |
| BEW/1590 |  | Approval of Shop Drawings | 7d | 2014-01-22 | 2014-01-29 | BEW/1580 | 942.17d |  | BEW 7 Day SIL |  |  | 0 |
|  | 16 | **Road work at Interchange 08** |  | 2013-12-04 | 2014-01-30 |  |  |  |  |  |  |  |
| BEW/1100 |  | Preparation & Submission of Cross Sections | 25d | 2013-12-04 | 2014-01-09 | BEW/DE/DS/1250 | 514.06d | 0d |  | 2626 | 2 days | 0 |
| BEW/1110 |  | Approval of Cross sections | 21d | 2014-01-09 | 2014-01-30 | BEW/1100 | 748.17d | 0d | BEW 7 Day SIL |  |  | 0 |
|  | 17 | **Road work at Interchange 09** |  | 2013-12-18 | 2014-03-11 |  |  |  |  |  |  |  |
| BEW/1240 |  | Preparation & Submission of Cross Sections | 25d | 2013-12-18 | 2014-01-26 | BEW/DE/DS/1260 | 619.06d | 0d |  | 2626 | 2 days | 0 |
| BEW/1250 |  | Review and reply by Engineer | 21d | 2014-01-26 | 2014-02-16 | BEW/1240 | 899.17d | 0d | BEW 7 Day SIL |  |  | 0 |
| BEW/1260 |  | Re- Submission of Cross Sections | 7d | 2014-02-16 | 2014-02-25 | BEW/1250 | 619.06d | 0d |  | 2626 | 2 days | 0 |
| BEW/1270 |  | Approval of Cross sections | 14d | 2014-02-25 | 2014-03-11 | BEW/1260 | 901.17d |  | BEW 7 Day SIL |  |  | 0 |

| ID | WBS | Activity | Duration | Start | Finish | Predecessors | Total float | Free float | Calendar | MSP Activity ID | EAM Contact Person | DIFF |
| --- | --- | --- | --- | --- | --- | --- | --- | --- | --- | --- | --- | --- |
|  | 18 | **Road work at Overpass 10** |  | 2014-01-02 | 2014-03-02 |  |  |  |  |  |  |  |
| BEW/1120 |  | Preparation & Submission of Cross Sections | 25d | 2014-01-02 | 2014-02-09 | BEW/DE/DS/1270 | 456.06d | 0d |  | 2626 | 2 days | 0 |
| BEW/1130 |  | Approval of Cross sections | 21d | 2014-02-09 | 2014-03-02 | BEW/1120 | 664.17d | 0d | BEW 7 Day SIL |  |  | 0 |
|  | 19 | **Road work at Overpass 11** |  | 2014-01-02 | 2014-03-02 |  |  |  |  |  |  |  |
| BEW/1140 |  | Preparation & Submission of Cross Sections | 25d | 2014-01-02 | 2014-02-09 | BEW/DE/DS/1270 | 626.06d | 0d |  | 2626 | 2 days | 0 |
| BEW/1150 |  | Approval of Cross sections | 21d | 2014-02-09 | 2014-03-02 | BEW/1140 | 910.17d |  | BEW 7 Day SIL |  |  | 0 |
|  | 38 | **Ch 127 +500 to 130+500** |  | 2014-01-19 | 2014-04-08 |  |  |  |  |  |  |  |
| BEW/1600 |  | Preparation & Submission of Cross Sections | 25d | 2014-01-19 | 2014-02-23 | BEW/DE/DS/1280 | 599.06d | 0d |  | 2626 | 2 days | 0 |
| BEW/1610 |  | Review and reply by Engineer | 21d | 2014-02-23 | 2014-03-16 | BEW/1600 | 871.17d | 0d | BEW 7 Day SIL |  |  | 0 |
| BEW/1620 |  | Re- Submission of Cross Sections | 7d | 2014-03-16 | 2014-03-25 | BEW/1610 | 599.06d | 0d |  | 2626 | 2 days | 0 |
| BEW/1630 |  | Approval of Cross sections | 14d | 2014-03-25 | 2014-04-08 | BEW/1620 | 873.17d |  | BEW 7 Day SIL |  |  | 0 |
|  | 37 | **Structural works Ch 124 +500 to 127+500** |  | 2013-12-10 | 2014-02-03 |  |  |  |  |  |  |  |
| BEW/1800 |  | Preparation & Submission of shopdrawings | 21d | 2013-12-10 | 2014-01-09 | BEW/DE/DS/1270 FF+5d | 644.06d | 0d |  | 2626 | 2 days | 0 |
| BEW/1810 |  | Review and reply by Engineer | 7d | 2014-01-09 | 2014-01-16 | BEW/1800 | 937.17d | 0d | BEW 7 Day SIL |  |  | 0 |
| BEW/1820 |  | Re-Submission of shopdrawings | 7d | 2014-01-16 | 2014-01-27 | BEW/1810 | 645.06d | 0d |  | 2626 | 2 days | 0 |
| BEW/1830 |  | Approval of Shop Drawings | 7d | 2014-01-27 | 2014-02-03 | BEW/1820 | 937.17d |  | BEW 7 Day SIL |  |  | 0 |
|  | 35 | **Structural works Ch 121 +500 to 124+500** |  | 2014-01-19 | 2014-03-12 |  |  |  |  |  |  |  |
| BEW/1840 |  | Preparation & Submission of shopdrawings | 21d | 2014-01-19 | 2014-02-17 | BEW/DE/DS/1280 | 618.06d | 0d |  | 2626 | 2 days | 0 |
| BEW/1850 |  | Review and reply by Engineer | 7d | 2014-02-17 | 2014-02-24 | BEW/1840 | 898.17d | 0d | BEW 7 Day SIL |  |  | 0 |
| BEW/1860 |  | Re-Submission of shopdrawings | 7d | 2014-02-24 | 2014-03-05 | BEW/1850 | 618.06d | 0d |  | 2626 | 2 days | 0 |
| BEW/1870 |  | Approval of Shop Drawings | 7d | 2014-03-05 | 2014-03-12 | BEW/1860 | 900.17d |  | BEW 7 Day SIL |  |  | 0 |
|  | 34 | **Ch 121 +500 to 124+500** |  | 2014-01-02 | 2014-03-02 |  |  |  |  |  |  |  |
| BEW/1700 |  | Preparation & Submission of Cross Sections | 25d | 2014-01-02 | 2014-02-09 | BEW/DE/DS/1270 | 626.06d | 0d |  | 2626 | 2 days | 0 |
| BEW/1710 |  | Approval of Cross sections | 21d | 2014-02-09 | 2014-03-02 | BEW/1700 | 910.17d |  | BEW 7 Day SIL |  |  | 0 |

| ID | WBS | Activity | Duration | Start | Finish | Predecessors | Total float | Free float | Calendar | MSP Activity ID | EAM Contact Person | DIFF |
| --- | --- | --- | --- | --- | --- | --- | --- | --- | --- | --- | --- | --- |
|  | 33 | **Structural works Ch 118 +000 to 121+500** |  | 2014-01-02 | 2014-02-26 |  |  |  |  |  |  |  |
| BEW/1880 |  | Preparation & Submission of shopdrawings | 21d | 2014-01-02 | 2014-02-03 | BEW/DE/DS/1270 | 628.06d | 0d |  | 2626 | 2 days | 0 |
| BEW/1890 |  | Review and reply by Engineer | 7d | 2014-02-03 | 2014-02-10 | BEW/1880 | 912.17d | 0d | BEW 7 Day SIL |  |  | 0 |
| BEW/1900 |  | Re-Submission of shopdrawings | 7d | 2014-02-10 | 2014-02-19 | BEW/1890 | 628.06d | 0d |  | 2626 | 2 days | 0 |
| BEW/1910 |  | Approval of Shop Drawings | 7d | 2014-02-19 | 2014-02-26 | BEW/1900 | 914.17d |  | BEW 7 Day SIL |  |  | 0 |
|  | 32 | **Ch 118 +000 to 121+500** |  | 2013-12-18 | 2014-01-19 |  |  |  |  |  |  |  |
| BEW/1720 |  | Preparation & Submission of Cross Sections | 7d | 2013-12-18 | 2013-12-29 | BEW/DE/DS/1260 | 654.06d | 0d |  | 2626 | 2 days | 0 |
| BEW/1730 |  | Approval of Cross sections | 21d | 2013-12-29 | 2014-01-19 | BEW/1720 | 952.17d |  | BEW 7 Day SIL |  |  | 0 |
|  | 31 | **Structural works Ch 114 +900 to 118+000** |  | 2013-12-18 | 2014-02-12 |  |  |  |  |  |  |  |
| BEW/1920 |  | Preparation & Submission of shopdrawings | 21d | 2013-12-18 | 2014-01-20 | BEW/DE/DS/1260 | 638.06d | 0d |  | 2626 | 2 days | 0 |
| BEW/1930 |  | Review and reply by Engineer | 7d | 2014-01-20 | 2014-01-27 | BEW/1920 | 926.17d | 0d | BEW 7 Day SIL |  |  | 0 |
| BEW/1940 |  | Re-Submission of shopdrawings | 7d | 2014-01-27 | 2014-02-05 | BEW/1930 | 638.06d | 0d |  | 2626 | 2 days | 0 |
| BEW/1950 |  | Approval of Shop Drawings | 7d | 2014-02-05 | 2014-02-12 | BEW/1940 | 928.17d |  | BEW 7 Day SIL |  |  | 0 |
|  | 30 | **Ch 114 +900 to 118+000** |  | 2013-12-18 | 2014-02-16 |  |  |  |  |  |  |  |
| BEW/1740 |  | Preparation & Submission of Cross Sections | 25d | 2013-12-18 | 2014-01-26 | BEW/DE/DS/1250, BEW/DE/DS/1260 | 636.06d | 0d |  | 2626 | 2 days | 0 |
| BEW/1750 |  | Approval of Cross sections | 21d | 2014-01-26 | 2014-02-16 | BEW/1740 | 924.17d |  | BEW 7 Day SIL |  |  | 0 |
|  | 29 | **Structural works Ch 112 +200 to 118+000** |  | 2013-12-18 | 2014-02-12 |  |  |  |  |  |  |  |
| BEW/1960 |  | Preparation & Submission of shopdrawings | 21d | 2013-12-18 | 2014-01-20 | BEW/DE/DS/1260 | 638.06d | 0d |  | 2626 | 2 days | 0 |
| BEW/1970 |  | Review and reply by Engineer | 7d | 2014-01-20 | 2014-01-27 | BEW/1960 | 926.17d | 0d | BEW 7 Day SIL |  |  | 0 |
| BEW/1980 |  | Re-Submission of shopdrawings | 7d | 2014-01-27 | 2014-02-05 | BEW/1970 | 638.06d | 0d |  | 2626 | 2 days | 0 |
| BEW/1990 |  | Approval of Shop Drawings | 7d | 2014-02-05 | 2014-02-12 | BEW/1980 | 928.17d |  | BEW 7 Day SIL |  |  | 0 |
|  | 28 | **Ch 112 +200 to 114+900** |  | 2013-12-04 | 2014-02-24 |  |  |  |  |  |  |  |
| BEW/1640 |  | Preparation & Submission of Cross Sections | 25d | 2013-12-04 | 2014-01-09 | BEW/DE/DS/1250 | 629.06d | 0d |  | 2626 | 2 days | 0 |
| BEW/1650 |  | Review and reply by Engineer | 21d | 2014-01-09 | 2014-01-30 | BEW/1640 | 916.17d | 0d | BEW 7 Day SIL |  |  | 0 |
| BEW/1660 |  | Re- Submission of Cross Sections | 7d | 2014-01-30 | 2014-02-10 | BEW/1650 | 630.06d | 0d |  | 2626 | 2 days | 0 |
| BEW/1670 |  | Approval of Cross sections | 14d | 2014-02-10 | 2014-02-24 | BEW/1660 | 916.17d |  | BEW 7 Day SIL |  |  | 0 |

| ID | WBS | Activity | Duration | Start | Finish | Predecessors | Total float | Free float | Calendar | MSP Activity ID | EAM Contact Person | DIFF |
| --- | --- | --- | --- | --- | --- | --- | --- | --- | --- | --- | --- | --- |
|  | 27 | **Structural works IC 10, 11,12** |  | 2013-12-18 | 2014-02-12 |  |  |  |  |  |  |  |
| BEW/2000 |  | Preparation & Submission of shopdrawings | 21d | 2013-12-18 | 2014-01-20 | BEW/DE/DS/1260 | 638.06d | 0d |  | 2626 | 2 days | 0 |
| BEW/2010 |  | Review and reply by Engineer | 7d | 2014-01-20 | 2014-01-27 | BEW/2000 | 926.17d | 0d | BEW 7 Day SIL |  |  | 0 |
| BEW/2020 |  | Re-Submission of shopdrawings | 7d | 2014-01-27 | 2014-02-05 | BEW/2010 | 638.06d | 0d |  | 2626 | 2 days | 0 |
| BEW/2030 |  | Approval of Shop Drawings | 7d | 2014-02-05 | 2014-02-12 | BEW/2020 | 928.17d |  | BEW 7 Day SIL |  |  | 0 |
|  | 25 | **Structural works at Overpasses** |  | 2013-12-18 | 2014-02-12 |  |  |  |  |  |  |  |
| BEW/2040 |  | Preparation & Submission of shopdrawings | 21d | 2013-12-18 | 2014-01-20 | BEW/DE/DS/1260 | 638.06d | 0d |  | 2626 | 2 days | 0 |
| BEW/2050 |  | Review and reply by Engineer | 7d | 2014-01-20 | 2014-01-27 | BEW/2040 | 926.17d | 0d | BEW 7 Day SIL |  |  | 0 |
| BEW/2060 |  | Re-Submission of shopdrawings | 7d | 2014-01-27 | 2014-02-05 | BEW/2050 | 638.06d | 0d |  | 2626 | 2 days | 0 |
| BEW/2070 |  | Approval of Shop Drawings | 7d | 2014-02-05 | 2014-02-12 | BEW/2060 | 928.17d |  | BEW 7 Day SIL |  |  | 0 |
|  | 24 | **Road work at Interchange 10** |  | 2014-01-02 | 2014-03-02 |  |  |  |  |  |  |  |
| BEW/1760 |  | Preparation & Submission of Cross Sections | 25d | 2014-01-02 | 2014-02-09 | BEW/DE/DS/1270 | 626.06d | 0d |  | 2626 | 2 days | 0 |
| BEW/1770 |  | Approval of Cross sections | 21d | 2014-02-09 | 2014-03-02 | BEW/1760 | 910.17d |  | BEW 7 Day SIL |  |  | 0 |
|  | 22 | **Road work at Interchange 11** |  | 2014-01-02 | 2014-03-02 |  |  |  |  |  |  |  |
| BEW/2120 |  | Preparation & Submission of Cross Sections | 25d | 2014-01-02 | 2014-02-09 | BEW/DE/DS/1270 | 626.06d | 0d |  | 2626 | 2 days | 0 |
| BEW/2130 |  | Approval of Cross sections | 21d | 2014-02-09 | 2014-03-02 | BEW/2120 | 910.17d |  | BEW 7 Day SIL |  |  | 0 |
|  | 23 | **Road work at Overpass 12** |  | 2014-01-19 | 2014-03-16 |  |  |  |  |  |  |  |
| BEW/1780 |  | Preparation & Submission of Cross Sections | 25d | 2014-01-19 | 2014-02-23 | BEW/DE/DS/1280 | 616.06d | 0d |  | 2626 | 2 days | 0 |
| BEW/1790 |  | Approval of Cross sections | 21d | 2014-02-23 | 2014-03-16 | BEW/1780 | 896.17d |  | BEW 7 Day SIL |  |  | 0 |
|  | 21 | **Structural works Ch 127 +500 to 130+500** |  | 2014-01-02 | 2014-02-10 |  |  |  |  |  |  |  |
| BEW/2080 |  | Preparation & Submission of shopdrawings | 21d | 2014-01-02 | 2014-02-03 | BEW/DE/DS/1270 | 640.06d | 0d |  | 2626 | 2 days | 0 |
| BEW/2110 |  | Approval of Shop Drawings | 7d | 2014-02-03 | 2014-02-10 | BEW/2080 | 930.17d |  | BEW 7 Day SIL |  |  | 0 |
|  | 46 | **Road work at Overpass 14** |  | 2014-01-19 | 2014-03-16 |  |  |  |  |  |  |  |
| BEW/2200 |  | Preparation & Submission of Cross Sections | 25d | 2014-01-19 | 2014-02-23 | BEW/DE/DS/1280 | 616.06d | 0d |  | 2626 | 2 days | 0 |
| BEW/2210 |  | Approval of Cross sections | 21d | 2014-02-23 | 2014-03-16 | BEW/2200 | 896.17d |  | BEW 7 Day SIL |  |  | 0 |

| ID | WBS | Activity | Duration | Start | Finish | Predecessors | Total float | Free float | Calendar | Resources | MSP Activity ID | EAM Contact Person | DIFF |
| --- | --- | --- | --- | --- | --- | --- | --- | --- | --- | --- | --- | --- | --- |
|  | 45 | **Structural works Ch 133 +500 to 136+500** |  | 2014-01-19 | 2014-03-16 |  |  |  |  |  |  |  |  |
| BEW/2140 |  | Preparation & Submission of Cross Sections | 25d | 2014-01-19 | 2014-02-23 | BEW/DE/DS/1280 | 616.06d | 0d |  |  | 2626 | 2 days | 0 |
| BEW/2150 |  | Approval of Cross sections | 21d | 2014-02-23 | 2014-03-16 | BEW/2140 | 896.17d |  | BEW 7 Day SIL |  |  |  | 0 |
|  | 44 | **Ch 133 +500 to 136+500** |  | 2014-02-02 | 2014-03-30 |  |  |  |  |  |  |  |  |
| BEW/2220 |  | Preparation & Submission of Cross Sections | 25d | 2014-02-02 | 2014-03-09 | BEW/DE/DS/1370 | 606.06d | 0d |  |  | 2626 | 2 days | 0 |
| BEW/2230 |  | Approval of Cross sections | 21d | 2014-03-09 | 2014-03-30 | BEW/2220 | 882.17d |  | BEW 7 Day SIL |  |  |  | 0 |
|  | 43 | **Structural works Weigh Bridge Location** |  | 2014-02-02 | 2014-03-30 |  |  |  |  |  |  |  |  |
| BEW/2160 |  | Preparation & Submission of Cross Sections | 25d | 2014-02-02 | 2014-03-09 | BEW/DE/DS/1370 | 606.06d | 0d |  |  | 2626 | 2 days | 0 |
| BEW/2170 |  | Approval of Cross sections | 21d | 2014-03-09 | 2014-03-30 | BEW/2160 | 882.17d |  | BEW 7 Day SIL |  |  |  | 0 |
|  | 42 | **Road work at Interchange 12** |  | 2014-02-02 | 2014-03-30 |  |  |  |  |  |  |  |  |
| BEW/2240 |  | Preparation & Submission of Cross Sections | 25d | 2014-02-02 | 2014-03-09 | BEW/DE/DS/1370 | 606.06d | 0d |  |  | 2626 | 2 days | 0 |
| BEW/2250 |  | Approval of Cross sections | 21d | 2014-03-09 | 2014-03-30 | BEW/2240 | 882.17d |  | BEW 7 Day SIL |  |  |  | 0 |
|  | 41 | **Road work at Overpass 13** |  | 2014-02-02 | 2014-03-30 |  |  |  |  |  |  |  |  |
| BEW/2260 |  | Preparation & Submission of Cross Sections | 25d | 2014-02-02 | 2014-03-09 | BEW/DE/DS/1370 | 606.06d | 0d |  |  | 2626 | 2 days | 0 |
| BEW/2270 |  | Approval of Cross sections | 21d | 2014-03-09 | 2014-03-30 | BEW/2260 | 882.17d |  | BEW 7 Day SIL |  |  |  | 0 |
|  | 40 | **Ch 130 +500 to 133+500** |  | 2014-02-02 | 2014-03-30 |  |  |  |  |  |  |  |  |
| BEW/2280 |  | Preparation & Submission of Cross Sections | 25d | 2014-02-02 | 2014-03-09 | BEW/DE/DS/1370 | 606.06d | 0d |  |  | 2626 | 2 days | 0 |
| BEW/2290 |  | Approval of Cross sections | 21d | 2014-03-09 | 2014-03-30 | BEW/2280 | 882.17d |  | BEW 7 Day SIL |  |  |  | 0 |
|  | 39 | **Structural works Ch 130 +500 to 133+500** |  | 2014-02-02 | 2014-03-30 |  |  |  |  |  |  |  |  |
| BEW/2180 |  | Preparation & Submission of Cross Sections | 25d | 2014-02-02 | 2014-03-09 | BEW/DE/DS/1370 | 606.06d | 0d |  |  | 2626 | 2 days | 0 |
| BEW/2190 |  | Approval of Cross sections | 21d | 2014-03-09 | 2014-03-30 | BEW/2180 | 882.17d |  | BEW 7 Day SIL |  |  |  | 0 |
|  | 05 | **Utilities** |  | 2013-10-03 | 2013-12-26 |  |  |  |  |  |  |  |  |
| BEW/UT/INI/1000 |  | Identifying and Marking of 33 KV line at Ch 129+000 | 7d | 2013-10-03 | 2013-10-14 | BEW/DE/DS/1070 | 670.06d | 0d |  | Helper [63 h] |  |  | 0 |
| BEW/UT/INI/1010 |  | Identifying and Marking of 11 KV line at Ch 108+000 | 7d | 2013-10-03 | 2013-10-14 | BEW/DE/DS/1070 | 670.06d | 0d |  | Helper [63 h] |  |  | 0 |
| BEW/UT/INI/1020 |  | Identifying and Marking of 11 KV line at Ch 117 | 7d | 2013-10-03 | 2013-10-14 | BEW/DE/DS/1070 | 670.06d | 0d |  | Helper [63 h] |  |  | 0 |
| BEW/UT/INI/1030 |  | Identifying and Marking of Telephone line | 7d | 2013-10-03 | 2013-10-14 | BEW/DE/DS/1070 | 670.06d | 0d |  | Helper [63 h] |  |  | 0 |
| BEW/UT/INI/1040 |  | Submission of Request for protection Ch 129 | 7d | 2013-10-14 | 2013-10-27 | BEW/UT/INI/1000 | 670.06d | 0d |  |  |  |  | 0 |
| BEW/UT/INI/1050 |  | Submission of Request for protection ch 108 | 7d | 2013-10-14 | 2013-10-27 | BEW/UT/INI/1010 | 670.06d | 0d |  |  |  |  | 0 |
| BEW/UT/INI/1060 |  | Submission of Request for protection Ch 117 | 7d | 2013-10-14 | 2013-10-27 | BEW/UT/INI/1020 | 670.06d | 0d |  |  |  |  | 0 |
| BEW/UT/INI/1070 |  | Submission of Request for protection of Telephone | 7d | 2013-10-14 | 2013-10-27 | BEW/UT/INI/1030 | 670.06d | 0d |  |  |  |  | 0 |
| BEW/UT/INI/1080 |  | Approval of Protection Ch 129 | 21d | 2013-10-27 | 2013-11-27 | BEW/UT/INI/1040 | 670.06d | 0d |  |  |  |  | 0 |
| BEW/UT/INI/1090 |  | Approval of Protection at Ch 108 | 21d | 2013-10-27 | 2013-11-27 | BEW/UT/INI/1050 | 670.06d | 0d |  |  |  |  | 0 |
| BEW/UT/INI/1100 |  | Approval of Protection Ch 117 | 21d | 2013-10-27 | 2013-11-27 | BEW/UT/INI/1060 | 670.06d | 0d |  |  |  |  | 0 |
| BEW/UT/INI/1110 |  | Approval of Protection Telephone line | 21d | 2013-10-27 | 2013-11-27 | BEW/UT/INI/1070 | 670.06d | 0d |  |  |  |  | 0 |
| BEW/UT/INI/1120 |  | Providing protection of 33 Line ch 129 | 21d | 2013-11-27 | 2013-12-26 | BEW/UT/INI/1080 | 670.06d |  |  | protect underground 33kv electrical cables [50 LM]; disconnect and remove existing 33KV overhead electrical [280 LM]; underground proposed 33KV Electrical cable [400 LM]; Helper [72 h] |  |  | 0 |
| BEW/UT/INI/1130 |  | Providing Relocation and protection of 11 KV Line Ch 108 | 21d | 2013-11-27 | 2013-12-26 | BEW/UT/INI/1090 | 670.06d |  |  | disconnect and remove existing 11KV overhead electrical [201 LM]; underground proposed 11KV Electrical cable [189 LM]; Helper [72 h] |  |  | 0 |
| BEW/UT/INI/1140 |  | Providing protection of 11kv Line ch 117 | 21d | 2013-11-27 | 2013-12-26 | BEW/UT/INI/1100 | 670.06d |  |  | disconnect and remove existing 11KV overhead electrical [130 LM]; underground proposed 11KV Electrical cable [201 LM]; Helper [72 h] |  |  | 0 |
| BEW/UT/INI/1150 |  | Providing protection of Telephone Line | 21d | 2013-11-27 | 2013-12-26 | BEW/UT/INI/1110 | 670.06d |  |  | 1way 100mm dia Upvc Split protect existing Omantel / Nawras / MOD cables [65 LM]; Helper [189 h] |  |  | 0 |

| ID | WBS | Activity | Duration | Start | Finish | Predecessors | Total float | Free float | Resources | MSP Activity ID | EAM Contact Person | DIFF |
| --- | --- | --- | --- | --- | --- | --- | --- | --- | --- | --- | --- | --- |
|  | 06 | **Road Works** |  | 2013-07-16 | 2016-06-22 |  |  |  |  |  |  |  |
|  | 1 | **Diversion of Existing Traffic & Utilities** |  | 2013-08-19 | 2014-01-21 |  |  |  |  |  |  |  |
| BEW/RD/INI/1000 |  | Preparation & Approval of Diversion Plan from Royal Oman Police | 52d | 2013-08-19 | 2013-11-03 | BEW/DE/DS/1060 | 654.83d | 0d |  | 4213 | 79 days | 0 |
| BEW/RD/INI/1010 |  | Diversion of Existing Traffic if required | 53d | 2013-11-03 | 2014-01-21 | BEW/RD/INI/1000 | 654.83d |  |  | 4214 | 78 days | 0 |
|  | 2 | **Rock Blasting** |  | 2013-11-06 | 2015-05-04 |  |  |  |  |  |  |  |
| BEW/RD/INI/1030 |  | Rock Blasting Ch: 96+100 to 97+100 | 78d | 2013-11-06 | 2014-02-27 | BEW/DE/DS/1160 | 347.06d | 0d | Excavator (Bucket & Breaker) [9 h]; Tipper (18 M3) [180 h]; Dozer (D275A) with Ripper [36 h]; Helper [180 h]; Unclassified Excavation [261299 M3] | 3382 | 115 days | 0 |
| BEW/RD/INI/1040 |  | Rock Blasting Ch: 111+700 to 114+500 | 222d | 2013-11-06 | 2014-09-25 | BEW/DE/DS/1160 | 281.06d | 0d | Excavator (Bucket & Breaker) [9 h]; Tipper (18 M3) [180 h]; Dozer (D275A) with Ripper [18 h]; Helper [180 h]; Unclassified Excavation [885000 M3] | 3384 | 322 days | 0 |
| BEW/RD/INI/1050 |  | Rock Blasting Ch: 122+900 to 124+500 | 245d | 2013-11-06 | 2014-10-30 | BEW/DE/DS/1160 | 102.06d | 0d | Excavator (Bucket & Breaker) [9 h]; Tipper (18 M3) [180 h]; Dozer (D275A) with Ripper [18 h]; Helper [180 h]; Unclassified Excavation [1612588 M3] | 3486 | 360 days | 0 |
| BEW/RD/INI/1060 |  | Rock Blasting Ch: 134+300 to 136+100 | 375d | 2013-11-06 | 2015-05-04 | BEW/DE/DS/1160 | 176.06d | 0d | Excavator (Bucket & Breaker) [9 h]; Tipper (18 M3) [180 h]; Dozer (D275A) with Ripper [18 h]; Helper [180 h]; Unclassified Excavation [1590255 M3] | 3485 | 549 days | 8 |
| BEW/RD/INI/1100 |  | Rock Blasting Ch: 109+000 to 110+000 | 150d | 2014-02-27 | 2014-10-07 | BEW/RD/INI/1030 | 347.06d | 101d | Excavator (Bucket & Breaker) [9 h]; Tipper (18 M3) [180 h]; Dozer (D275A) with Ripper [18 h]; Helper [180 h]; Unclassified Excavation [685000 M3] | 3383 | 215 days | 0 |
| BEW/RD/INI/1120 |  | Rock Blasting Ch: 119+200 to 120+300 | 84d | 2014-10-30 | 2015-03-01 | BEW/RD/INI/1050 | 102.06d | 0d | Excavator (Bucket & Breaker) [9 h]; Tipper (18 M3) [180 h]; Dozer (D275A) with Ripper [18 h]; Helper [180 h]; Unclassified Excavation [585000 M3] | 3487 | 124 days | 8 |
| BEW/RD/INI/1130 |  | Rock Blasting Ch: 114+900 to 116+200 | 45d | 2015-03-01 | 2015-05-03 | BEW/RD/INI/1120 | 102.06d | 0d | Excavator (Bucket & Breaker) [9 h]; Tipper (18 M3) [360 h]; Dozer (D275A) with Ripper [36 h]; Helper [180 h]; Unclassified Excavation [490870 M3] | 3488 | 64 days | 0 |
|  | 3 | **Raw material Production & Stock Pile Preparation** |  | 2013-12-18 | 2016-06-22 |  |  |  |  |  |  |  |
| BEW/RD/INI/1070 |  | Preparation Embankment & GSB Stock pile | 500d | 2013-12-18 | 2015-12-17 | BEW/MO/EF/1040, BEW/PR/FC/1000, BEW/DE/DS/1020 | 175.94d | 134.89d | Power Screen 600 TPH [26.67 h]; Wheel Loader (Komatsu) [18 h]; Dozer (D155A) with Ripper [18 h]; Water Tanker (10K Gal) [27 h]; Tipper (18 M3) [180 h]; Helper [180 h] |  |  | 8 |
| BEW/RD/INI/1080 |  | Production of CABC | 630d | 2013-12-18 | 2016-06-20 | BEW/MO/NC/1020, BEW/PR/FC/1000 | 32.94d | 0d | CABC Plant (200 TPH) [18 h]; Wheel Loader (Komatsu) [18 h]; Water Tanker (10K Gal) [27 h]; Tipper (18 M3) [180 h]; Crushing Plant (300 TPH) [18 h]; Helper [180 h] |  |  | 8 |
| BEW/RD/INI/1090 |  | Production of Concrete | 580.89d | 2014-01-19 | 2016-05-09 | BEW/PR/FC/1270, BEW/DE/DS/1130 | 62.16d | 29.22d | Concrete Batching Plant (60 M3/H) [9 h]; Concrete Batching Plant (120 M3/H) [9 h]; Ice Maker [9 h]; Sand Washing Unit (60 m3/H) [9 h]; Generator (500 KVA) [36 h]; Transcit Mixer (10 M3) [108 h]; Transcit Mixer (6 M3) [36 h]; Helper [180 h] |  |  | 0 |
| BEW/RD/INI/1110 |  | Production Asphalt for BBC, BWC | 542d | 2014-04-27 | 2016-06-22 | BEW/PR/FC/1030, BEW/DE/DS/1190 FS+60d | 43.94d |  | Asphalt Plant (200 TPH) (Amman) [18 h]; Primer Mixer Unit [18 h]; Wheel Loader (Komatsu) [18 h]; Helper [180 h] |  |  | 0 |
|  | 4 | **Earthwork** |  | 2013-11-06 | 2014-08-20 |  |  |  |  |  |  |  |
|  | 1 | **Location 1** |  | 2013-11-06 | 2014-08-20 |  |  |  |  |  |  |  |
|  | 1 | **Drainage Works Ch 90 +300 to 92+000** |  | 2014-02-16 | 2014-08-11 |  |  |  |  |  |  |  |
| BEW/RD/DRG/1000 |  | Construction of Box Culvert at 91+131 | 41d | 2014-02-16 | 2014-04-14 | BEW/DE/DS/1120, BEW/1310, BEW/RD1/EW/1060 | 509.06d | 0d | Helper [72 h]; Water Proofing Paint in Culverts [306 Sqm]; Steel for Retaining wall and Box culverts [28 Tonne]; RCC 37.5/20 MS7 Box Culvert [254 M3]; Unreinforced Concrete 16/20 [26 M3]; Unclassified structural excavation (depth 0m to 2.0m) [145 M3]; Unclassified structural excavation (depth >2.0m to <4.0m) [145 M3]; Removal of reinforced concrete (for box culverts) [5 M3]; Catch Pit (1000mm x 1000mm) with DI grating and frame [1 Number]; Mason [36 h]; Steel Fitter [72 h]; Carpenter [72 h] | 3387 | 46 days | 0 |
| BEW/RD/DRG/1010 |  | Construction of Box Culvert at 91+583 | 41d | 2014-02-16 | 2014-04-14 | BEW/DE/DS/1120, BEW/1310, BEW/RD/DRG/1000 SS | 509.06d | 0d | Helper [72 h]; Unclassified structural excavation (depth 0m to 2.0m) [305 M3]; Unclassified structural excavation (depth >2.0m to <4.0m) [175 M3]; Unreinforced Concrete 16/20 [26 M3]; RCC 37.5/20 MS7 Box Culvert [254 M3]; Steel for Retaining wall and Box culverts [36 Tonne]; Water Proofing Paint in Culverts [300 Sqm]; Heavy Beam 350 x 67 Vertical Post [32 LM]; Outer Diameter 88.9 - 4.05mm Thick Horizontal MS Pipe [29 LM]; Catch Pit (1000mm x 1000mm) with DI grating and frame [2 Number]; Mason [36 h]; Steel Fitter [72 h]; Carpenter [72 h] | 3388 | 96 days | 0 |
| BEW/RD/DRG/1070 |  | Construction of Box Culvert at 90+601 | 41d | 2014-04-14 | 2014-06-11 | BEW/DE/DS/1120, BEW/1310, BEW/RD/DRG/1000 | 547.06d | 38d | Water Proofing Paint in Culverts [300 Sqm]; Steel for Retaining wall and Box culverts [28 Tonne]; RCC 37.5/20 MS7 Box Culvert [254 M3]; Unreinforced Concrete 16/20 [22 M3]; Unclassified structural excavation (depth 0m to 2.0m) [145 M3]; Unclassified structural excavation (depth >2.0m to <4.0m) [145 M3]; Heavy Beam 350 x 67 Vertical Post [32 LM]; Outer Diameter 88.9 - 4.05mm Thick Horizontal MS Pipe [29 LM]; Catch Pit (1000mm x 1000mm) with DI grating and frame [1 Number]; Mason [36 h]; Steel Fitter [72 h]; Carpenter [72 h] |  |  | 0 |
| BEW/RD/DRG/1100 |  | Construction of Box Culvert at 91+854 | 79d | 2014-04-14 | 2014-08-11 | BEW/RD/DRG/1010, BEW/1310 | 509.06d | 0d | Helper [72 h]; Water Proofing Paint in Culverts [441 Sqm]; Steel for Retaining wall and Box culverts [34 Tonne]; RCC 37.5/20 MS7 Box Culvert [441 M3]; Unreinforced Concrete 16/20 [49 M3]; Unclassified structural excavation (depth 0m to 2.0m) [275 M3]; Unclassified structural excavation (depth >2.0m to <4.0m) [175 M3]; Heavy Beam 350 x 67 Vertical Post [32 LM]; Outer Diameter 88.9 - 4.05mm Thick Horizontal MS Pipe [29 LM]; Catch Pit (1000mm x 1000mm) with DI grating and frame [1 Number]; Mason [36 h]; Steel Fitter [72 h]; Carpenter [72 h] | 3389 | 67 days | 0 |

Notes:
- BEW/RD/DRG/1000: Description: Team 1
- BEW/RD/DRG/1010: Description: Team 2
- BEW/RD/DRG/1100: Description: Team 2

| ID | WBS | Activity | Duration | Start | Finish | Predecessors | Total float | Free float | Resources | Cost | MSP Activity ID | EAM Contact Person | DIFF |
| --- | --- | --- | --- | --- | --- | --- | --- | --- | --- | --- | --- | --- | --- |
|  | 2 | **Ch 90 +300 to 92+000** |  | 2013-11-06 | 2014-08-20 |  |  |  |  |  |  |  |  |
| BEW/RD1/EW/1000 |  | Asphalt Removal | 2d | 2013-11-06 | 2013-11-10 | BEW/DE/DS/1160, BEW/1010 | 509.06d | 0d | Dozer (D275A) with Ripper [2 h]; Removalof bituminous pavement [300 M3] |  | 2626 | 2 days | 0 |
| BEW/RD1/EW/1010 |  | Removal of Interlock | 2d | 2013-11-06 | 2013-11-10 | BEW/RD1/EW/1000 SS | 509.06d | 0d | Removal of interlocking tiles in sidewalks and median [20 Sqm] |  | 2627 | 2 days | 0 |
| BEW/RD1/EW/1020 |  | Removal of Kerb | 2d | 2013-11-06 | 2013-11-10 | BEW/RD1/EW/1000 SS | 509.06d | 0d | Removal of Concrete Curbs [20 LM] |  | 2628 | 2 days | 0 |
| BEW/RD1/EW/1030 |  | Removal of Sign Boards | 2d | 2013-11-06 | 2013-11-10 | BEW/RD1/EW/1000 SS | 509.06d | 0d |  |  | 2629 | 2 days | 0 |
| BEW/RD1/EW/1040 |  | Clearing & Grubbing | 2d | 2013-11-10 | 2013-11-12 | BEW/RD1/EW/1030, BEW/RD1/EW/1020, BEW/RD1/EW/1010 | 509.06d | 0d | Dozer (D275A) with Ripper [2 h]; Helper [18 h]; Clearing and Grubbing [150000 Sqm]; Tree removal less than 300 dia [26 Number]; Tree removal more than 300 dia [73 Number]; Removal of mass concrete (200mm thick) [3 M3]; Removal of pipe culvert (900mm diameter) [3 LM]; Removal of steel safety barrier [8 LM]; Removal of concrete barrier [4 LM]; Removal of sign boards (single post) [1 Number]; Removal of Mortared Riprap [16 M3]; Removal of Existing Fence [14 LM]; Removal of Masonry Wall [17 LM]; Removal of Street light Pole [1 Number]; Removal of Flag Pole [1 Number] | 25,500 | 2630 | 2 days | 0 |
| BEW/RD1/EW/1050 |  | Excavation | 37d | 2013-11-12 | 2014-01-06 | BEW/RD1/EW/1040 | 509.06d | 0d | Dozer (D275A) with Ripper [36 h]; Wheel Loader (Komatsu) [27 h]; Tipper (18 M3) [45 h]; Helper [15 h]; Unclassified Excavation [116534 M3] |  | 3506 | 21 days | 0 |
| BEW/RD1/EW/1060 |  | Embankment Filling upto GSB Bottom | 38d | 2013-12-22 | 2014-02-16 | BEW/RD1/EW/1050 FS-10d | 509.06d | 0d | Water Tanker (5K Gal) [10 h]; Water Tanker (10K Gal) [9 h]; Motor Grader [27 h]; Tipper (18 M3) [180 h]; Vibratory Roller [18 h]; Helper [39 h]; Wheel Loader (Komatsu) [27 h]; Borrow excavation to embankment [217252 M3]; Sub grade preparation in cut [22000 Sqm] |  | 3507 | 55 days | 0 |
| BEW/RD1/EW/1070 |  | Granular Sub Base | 7d | 2014-08-11 | 2014-08-20 | BEW/RD1/EW/1060, BEW/RD/INI/1070 SS+25d, BEW/RD/DRG/1100, BEW/RD/DRG/1070 | 509.06d |  | Motor Grader [21 h]; Vibratory Roller [18 h]; Water Tanker (5K Gal) [10 h]; Water Tanker (10K Gal) [9 h]; Tipper (18 M3) [140 h]; Helper [54 h]; Granular Sub-Base Course (Class B) [27185 M3] |  | 3508 | 12 days | 0 |
|  | 18 | **Road work at Overpass 10** |  | 2014-03-02 | 2014-06-22 |  |  |  |  |  |  |  |  |
| BEW/RD1/EW/1640 |  | Asphalt Removal | 2d | 2014-03-02 | 2014-03-04 | BEW/1130 | 455.06d | 0d | Dozer (D275A) with Ripper [2 h]; Removalof bituminous pavement [300 M3] |  | 2751 | 2 days | 0 |
| BEW/RD1/EW/1650 |  | Removal of Interlock | 2d | 2014-03-02 | 2014-03-04 | BEW/RD1/EW/1640 SS | 455.06d | 0d | Removal of interlocking tiles in sidewalks and median [20 Sqm] |  | 2752 | 2 days | 0 |
| BEW/RD1/EW/1660 |  | Removal of Kerb | 2d | 2014-03-02 | 2014-03-04 | BEW/RD1/EW/1640 SS | 455.06d | 0d | Removal of Concrete Curbs [20 LM] |  | 2753 | 2 days | 0 |
| BEW/RD1/EW/1670 |  | Removal of Sign Boards | 2d | 2014-03-02 | 2014-03-04 | BEW/RD1/EW/1640 SS | 455.06d | 0d |  |  | 2754 | 2 days | 0 |
| BEW/RD1/EW/1730 |  | Clearing & Grubbing | 2d | 2014-03-04 | 2014-03-06 | BEW/RD1/EW/1670, BEW/RD1/EW/1650, BEW/RD1/EW/1660 | 455.06d | 0d | Dozer (D275A) with Ripper [2 h]; Helper [18 h]; Clearing and Grubbing [12458 Sqm]; Tree removal less than 300 dia [26 Number]; Tree removal more than 300 dia [11 Number]; Removal of mass concrete (200mm thick) [1 M3]; Removal of steel safety barrier [8 LM]; Removal of concrete barrier [4 LM] | 2,117.86 | 2755 | 4 days | 0 |
| BEW/RD1/EW/1760 |  | Excavation | 19d | 2014-03-06 | 2014-04-02 | BEW/RD1/EW/1730 | 455.06d | 0d | Dozer (D275A) with Ripper [36 h]; Tipper (18 M3) [180 h]; Wheel Loader (Komatsu) [27 h]; Helper [15 h]; Unclassified Excavation [8700 M3]; Unclassified Excavation under water [94 M3] |  | 3530 | 28 days | 0 |
| BEW/RD1/EW/1790 |  | Embankment Filling upto GSB Bottom | 28d | 2014-04-02 | 2014-05-12 | BEW/RD1/EW/1760 | 455.06d | 0d | Tipper (18 M3) [364 h]; Motor Grader [27 h]; Water Tanker (5K Gal) [10 h]; Water Tanker (10K Gal) [9 h]; Vibratory Roller [18 h]; Helper [28 h]; Wheel Loader (Komatsu) [27 h]; Borrow excavation to embankment [26400 M3]; Sub grade preparation in cut [14580 Sqm] |  | 3531 | 42 days | 0 |
| BEW/RD1/EW/1820 |  | Granular Sub Base | 7d | 2014-05-12 | 2014-05-21 | BEW/RD1/EW/1790 | 455.06d | 0d | Motor Grader [21 h]; Vibratory Roller [18 h]; Water Tanker (5K Gal) [10 h]; Water Tanker (10K Gal) [9 h]; Tipper (18 M3) [84 h]; Helper [54 h]; Granular Sub-Base Course (Class B) [27185 M3] |  | 3532 | 9 days | 0 |
| BEW/RD1/EW/1870 |  | Kerb PCC | 6d | 2014-05-21 | 2014-06-01 | BEW/RD1/EW/1820 | 455.06d | 0d | Helper [36 h] |  | 3533 | 8 days | 0 |
| BEW/RD1/EW/1880 |  | Ducting | 6d | 2014-05-21 | 2014-06-01 | BEW/RD1/EW/1820 | 467.06d | 12d | Helper [6 h] |  | 3536 | 8 days | 0 |
| BEW/RD1/EW/1890 |  | Catch pit and HDPE Pipe Laying | 6d | 2014-05-21 | 2014-06-01 | BEW/RD1/EW/1820 | 467.06d | 12d | Helper [54 h] |  | 3537 | 8 days | 0 |
| BEW/RD1/EW/1940 |  | Kerbstone | 6d | 2014-06-01 | 2014-06-09 | BEW/RD1/EW/1870 | 455.06d | 0d | Helper [36 h] |  | 3534 | 8 days | 0 |
| BEW/RD1/EW/1970 |  | Haunch | 6d | 2014-06-09 | 2014-06-17 | BEW/RD1/EW/1940 | 455.06d | 0d | Helper [36 h] |  | 3535 | 8 days | 0 |
| BEW/RD1/EW/2000 |  | GSB Bed Finalisation | 3d | 2014-06-17 | 2014-06-22 | BEW/RD1/EW/1890, BEW/RD1/EW/1880, BEW/RD1/EW/1970 | 455.06d | 0d | Motor Grader [9 h]; Vibratory Roller [9 h]; Water Tanker (5K Gal) [10 h]; Water Tanker (10K Gal) [9 h]; Tipper (18 M3) [36 h]; Helper [54 h] |  | 3975 | 3 days | 0 |

| ID | WBS | Activity | Duration | Start | Finish | Predecessors | Total float | Free float | Resources | Cost | MSP Activity ID | EAM Contact Person | DIFF |
| --- | --- | --- | --- | --- | --- | --- | --- | --- | --- | --- | --- | --- | --- |
|  | 16 | **Road work at Interchange 08** |  | 2014-01-30 | 2014-05-05 |  |  |  |  |  |  |  |  |
| BEW/RD1/EW/2020 |  | Asphalt Removal | 2d | 2014-01-30 | 2014-02-03 | BEW/1110 | 515.06d | 0d | Dozer (D275A) with Ripper [2 h]; Removalof bituminous pavement [300 M3] |  | 2751 | 2 days | 0 |
| BEW/RD1/EW/2030 |  | Removal of Interlock | 2d | 2014-01-30 | 2014-02-03 | BEW/RD1/EW/2020 SS | 515.06d | 0d | Removal of interlocking tiles in sidewalks and median [20 Sqm] |  | 2752 | 2 days | 0 |
| BEW/RD1/EW/2040 |  | Removal of Kerb | 2d | 2014-01-30 | 2014-02-03 | BEW/RD1/EW/2020 SS | 515.06d | 0d | Removal of Concrete Curbs [20 LM] |  | 2753 | 2 days | 0 |
| BEW/RD1/EW/2050 |  | Removal of Sign Boards | 2d | 2014-01-30 | 2014-02-03 | BEW/RD1/EW/2020 SS | 515.06d | 0d |  |  | 2754 | 2 days | 0 |
| BEW/RD1/EW/2060 |  | Clearing & Grubbing | 2d | 2014-02-03 | 2014-02-05 | BEW/RD1/EW/2050, BEW/RD1/EW/2030, BEW/RD1/EW/2040 | 515.06d | 0d | Dozer (D275A) with Ripper [2 h]; Helper [18 h]; Clearing and Grubbing [22548 Sqm]; Tree removal less than 300 dia [8 Number]; Tree removal more than 300 dia [11 Number]; Removal of mass concrete (200mm thick) [1 M3]; Removal of steel safety barrier [8 LM]; Removal of concrete barrier [4 LM]; Removal of sign boards (single post) [1 Number] | 3,833.16 | 2755 | 4 days | 0 |
| BEW/RD1/EW/2070 |  | Excavation | 20d | 2014-02-05 | 2014-03-05 | BEW/RD1/EW/2060 | 515.06d | 0d | Dozer (D275A) with Ripper [36 h]; Tipper (18 M3) [180 h]; Wheel Loader (Komatsu) [27 h]; Helper [15 h]; Unclassified Excavation [8700 M3]; Unclassified Excavation under water [180 M3] |  | 3530 | 28 days | 0 |
| BEW/RD1/EW/2080 |  | Embankment Filling upto GSB Bottom | 15d | 2014-03-05 | 2014-03-26 | BEW/RD1/EW/2070 | 515.06d | 0d | Tipper (18 M3) [364 h]; Motor Grader [27 h]; Water Tanker (5K Gal) [10 h]; Water Tanker (10K Gal) [9 h]; Vibratory Roller [18 h]; Helper [28 h]; Wheel Loader (Komatsu) [27 h]; Borrow excavation to embankment [38400 M3]; Sub grade preparation in cut [22500 Sqm] |  | 3531 | 42 days | 0 |
| BEW/RD1/EW/2090 |  | Granular Sub Base | 7d | 2014-03-26 | 2014-04-06 | BEW/RD1/EW/2080 | 515.06d | 0d | Motor Grader [21 h]; Vibratory Roller [18 h]; Water Tanker (5K Gal) [10 h]; Water Tanker (10K Gal) [9 h]; Tipper (18 M3) [84 h]; Helper [54 h]; Granular Sub-Base Course (Class B) [27185 M3] |  | 3532 | 9 days | 0 |
| BEW/RD1/EW/2100 |  | Kerb PCC | 6d | 2014-04-06 | 2014-04-14 | BEW/RD1/EW/2090 | 515.06d | 0d | Helper [36 h] |  | 3533 | 8 days | 0 |
| BEW/RD1/EW/2110 |  | Ducting | 6d | 2014-04-06 | 2014-04-14 | BEW/RD1/EW/2090 | 527.06d | 12d | Helper [6 h] |  | 3536 | 8 days | 0 |
| BEW/RD1/EW/2120 |  | Catch pit and HDPE Pipe Laying | 6d | 2014-04-06 | 2014-04-14 | BEW/RD1/EW/2090 | 527.06d | 12d | Helper [54 h] |  | 3537 | 8 days | 0 |
| BEW/RD1/EW/2130 |  | Kerbstone | 6d | 2014-04-14 | 2014-04-22 | BEW/RD1/EW/2100 | 515.06d | 0d | Helper [36 h]; Interlocking blocks 60mm thick for side walks and median [600 Sqm]; Precast Non-Mountable Concrete Curb [4000 LM]; Precast flush curb [100 LM]; Precast concrete edge curb [200 LM]; Precast semi-battered curb [100 LM]; Cast in situ Concrete curb stone [20 LM] |  | 3534 | 8 days | 0 |
| BEW/RD1/EW/2140 |  | Haunch | 6d | 2014-04-22 | 2014-04-30 | BEW/RD1/EW/2130 | 515.06d | 0d | Helper [36 h] |  | 3535 | 8 days | 0 |
| BEW/RD1/EW/2150 |  | GSB Bed Finalisation | 3d | 2014-04-30 | 2014-05-05 | BEW/RD1/EW/2120, BEW/RD1/EW/2110, BEW/RD1/EW/2140 | 515.06d | 0d | Motor Grader [9 h]; Vibratory Roller [9 h]; Water Tanker (5K Gal) [10 h]; Water Tanker (10K Gal) [9 h]; Tipper (18 M3) [36 h]; Helper [54 h] |  | 3975 | 3 days | 0 |
|  | 5 | **ABC, Bitumen Works** |  | 2013-07-16 | 2014-09-28 |  |  |  |  |  |  |  |  |
|  | 1 | **Location 1** |  | 2013-07-16 | 2014-09-28 |  |  |  |  |  |  |  |  |
|  | 4 | **Ch 98 +000 to 102+800** |  | 2013-07-16 | 2013-10-27 |  |  |  |  |  |  |  |  |
| BEW/RD1/BI/1390 |  | CABC | 30d | 2013-07-16 | 2013-09-01 |  | 634.94d | 0d | Vibratory Roller [18 h]; Water Tanker (5K Gal) [10 h]; Finishing Paver (Vogalle) [18 h]; Helper [72 h]; Crushed Aggregate Base Course (Class A) [22000 M3] |  | 3721 | 49 days | 0 |
| BEW/RD1/BI/1400 |  | BBC | 29d | 2013-09-01 | 2013-10-10 | BEW/RD1/BI/1390 | 634.94d | 0d | Finishing Paver (Vogalle) [27 h]; Tandem Roller [18 h]; Pnematic Tyre Rollar [20 h]; Bituminous Sprayer [9 h]; Tractor Broomer [9 h]; Skid Wheel Loader (Bob Cat) [29 h]; Air Compressor 200 CFT [18 h]; Helper [72 h]; Bituminous Prime Coat [123520 Kilogram]; Bituminous Tack Coat [38000 Kilogram]; Bituminous Base Course [18000 M3] | 10,640 | 3722 | 41 days | 0 |
| BEW/RD1/BI/1060 |  | RCC Drain works | 10d | 2013-10-10 | 2013-10-27 | BEW/RD1/BI/1420 SS | 711.94d |  | RCC 30/20 MS7 for drains [144 M3]; Mason [18 h]; Steel Fitter [36 h]; Carpenter [18 h]; Helper [36 h]; Unclassified structural excavation (depth 0m to 2.0m) [10 M3]; Unreinforced Concrete 16/20 [10 M3]; Steel for Retaining wall and Box culverts [16 Tonne]; Grouted Stone Ditch lining (200/300mm thick) [12000 Sqm]; Reinforced Concrete Chute [450 LM]; Concrete Ditch Lining [90 Sqm] |  |  |  | 0 |
| BEW/RD1/BI/1420 |  | BWC | 10d | 2013-10-10 | 2013-10-27 | BEW/RD1/BI/1400 | 634.94d | 0d | Finishing Paver (Vogalle) [20 h]; Tandem Roller [20 h]; Pnematic Tyre Rollar [20 h]; Bituminous Sprayer [9 h]; Tractor Broomer [9 h]; Skid Wheel Loader (Bob Cat) [10 h]; Air Compressor 200 CFT [18 h]; Helper [72 h]; Surface milling (up to 50mm thick) [111 Sqm]; IRI for Asphalt pavement [28000 LM]; Bituminous Tack Coat [38000 Kilogram]; Bituminous Wearing Course [7100 M3] | 20,160 | 3724 | 12 days | 0 |
|  | 8 | **IC 08** |  | 2014-05-05 | 2014-08-12 |  |  |  |  |  |  |  |  |
| BEW/RD1/BI/1000 |  | CABC | 28d | 2014-05-05 | 2014-06-15 | BEW/RD1/EW/2150 | 515.06d | 0d | Vibratory Roller [9 h]; Water Tanker (5K Gal) [10 h]; Finishing Paver (Vogalle) [9 h]; Helper [72 h]; Crushed Aggregate Base Course (Class A) [22000 M3] |  | 3775 | 40 days | 0 |
| BEW/RD1/BI/1140 |  | BBC | 27d | 2014-06-15 | 2014-07-22 | BEW/RD1/BI/1000 | 515.06d | 0d | Finishing Paver (Vogalle) [27 h]; Tandem Roller [18 h]; Pnematic Tyre Rollar [20 h]; Bituminous Sprayer [9 h]; Tractor Broomer [9 h]; Skid Wheel Loader (Bob Cat) [27 h]; Helper [72 h]; Bituminous Prime Coat [27185 Kilogram]; Bituminous Tack Coat [9200 Kilogram]; Bituminous Base Course [2800 M3] | 2,576 | 3776 | 38 days | 0 |
| BEW/RD1/BI/1100 |  | RCC Drain works | 10d | 2014-07-22 | 2014-08-12 | BEW/RD1/BI/1220 SS | 515.06d |  |  |  |  |  | 0 |
| BEW/RD1/BI/1220 |  | BWC | 9d | 2014-07-22 | 2014-08-11 | BEW/RD1/BI/1140 | 515.06d | 0d | Finishing Paver (Vogalle) [9 h]; Tandem Roller [18 h]; Pnematic Tyre Rollar [20 h]; Bituminous Sprayer [9 h]; Tractor Broomer [9 h]; Skid Wheel Loader (Bob Cat) [9 h]; Air Compressor 200 CFT [18 h]; Helper [72 h]; Surface milling (up to 50mm thick) [101 Sqm]; IRI for Asphalt pavement [7500 LM]; Bituminous Tack Coat [9200 Kilogram]; Bituminous Wearing Course [110 M3] | 5,126 | 3778 | 11 days | 0 |

| ID | WBS | Activity | Duration | Start | Finish | Predecessors | Total float | Free float | Resources | Cost | MSP Activity ID | EAM Contact Person | DIFF |
| --- | --- | --- | --- | --- | --- | --- | --- | --- | --- | --- | --- | --- | --- |
|  | 10 | **OP 10** |  | 2014-06-22 | 2014-09-28 |  |  |  |  |  |  |  |  |
| BEW/RD1/BI/1020 |  | CABC | 28d | 2014-06-22 | 2014-08-06 | BEW/RD1/EW/2000 | 455.06d | 0d | Vibratory Roller [9 h]; Water Tanker (5K Gal) [10 h]; Finishing Paver (Vogalle) [9 h]; Helper [72 h]; Crushed Aggregate Base Course (Class A) [22000 M3] |  | 3775 | 40 days | 0 |
| BEW/RD1/BI/1160 |  | BBC | 27d | 2014-08-06 | 2014-09-14 | BEW/RD1/BI/1020 | 455.06d | 0d | Finishing Paver (Vogalle) [27 h]; Tandem Roller [18 h]; Pnematic Tyre Rollar [20 h]; Bituminous Sprayer [9 h]; Tractor Broomer [9 h]; Skid Wheel Loader (Bob Cat) [27 h]; Helper [72 h]; Bituminous Prime Coat [27185 Kilogram]; Bituminous Tack Coat [9200 Kilogram]; Bituminous Base Course [2800 M3] | 2,576 | 3776 | 38 days | 0 |
| BEW/RD1/BI/1120 |  | RCC Drain works | 10d | 2014-09-14 | 2014-09-28 | BEW/RD1/BI/1240 SS | 455.06d | 0d |  |  |  |  | 0 |
| BEW/RD1/BI/1240 |  | BWC | 9d | 2014-09-14 | 2014-09-25 | BEW/RD1/BI/1160 | 455.06d | 0d | Finishing Paver (Vogalle) [9 h]; Tandem Roller [18 h]; Pnematic Tyre Rollar [20 h]; Bituminous Sprayer [9 h]; Tractor Broomer [9 h]; Skid Wheel Loader (Bob Cat) [9 h]; Air Compressor 200 CFT [18 h]; Helper [72 h]; Surface milling (up to 50mm thick) [101 Sqm]; IRI for Asphalt pavement [4200 LM]; Bituminous Tack Coat [9200 Kilogram]; Bituminous Wearing Course [110 M3] | 4,004 | 3778 | 11 days | 0 |
|  | 07 | **Structural Works** |  | 2013-10-29 | 2015-09-21 |  |  |  |  |  |  |  |  |
|  | 1 | **Piling** |  | 2013-10-29 | 2014-12-08 |  |  |  |  |  |  |  |  |
|  | 1 | **Pile Design Support Works** |  | 2013-10-29 | 2014-11-03 |  |  |  |  |  |  |  |  |
| BEW/ST/PL/2020 |  | Instalation of Test Piles 22 Nos | 12d | 2013-10-29 | 2013-11-17 | BEW/MO/EF/1030, BEW/DE/DS/1100, BEW/MO/NC/1220, BEW/DE/DS/1080, BEW/PR/FC/1020, BEW/DE/DS/1010, BEW/DE/DS/1090, BEW/DE/DS/1110, BEW/DE/DS/1400, BEW/DE/DS/1430, BEW/DE/DS/1440 | 348.28d | 0d | Piling Rig [18 h]; Crane [35.89 h]; Low Bed Trailor [18 h]; Hydra Crane [35.89 h]; Mason [36 h]; Helper [72 h]; Steel Fitter [36 h] |  | 25 | 44 days | 0 |
| BEW/ST/PL/2030 |  | Testing the Piles 1-6 | 24d | 2013-11-17 | 2013-12-22 | BEW/ST/PL/2020 | 348.28d | 0d | Helper [72 h]; Mason [18 h]; Load Testing Initial [6 Number] |  | 26 | 39 days | 0 |
| BEW/ST/PL/2050 |  | Testing the Piles 7-12 | 24d | 2013-12-22 | 2014-01-27 | BEW/ST/PL/2030 | 348.28d | 0d | Helper [72 h]; Mason [18 h]; Load Testing Initial [6 Number] |  | 26 | 39 days | 0 |
| BEW/ST/PL/2070 |  | Instalation of Test Piles 23-44 | 12d | 2014-01-02 | 2014-01-21 | BEW/ST/PL/2020, BEW/DE/DS/1140, BEW/DE/DS/1170, BEW/DE/DS/1200 | 462.06d | 19d | Piling Rig [18 h]; Crane [35.89 h]; Low Bed Trailor [18 h]; Hydra Crane [35.89 h]; Mason [36 h]; Helper [72 h]; Steel Fitter [36 h] |  | 25 | 44 days | 0 |
| BEW/ST/PL/2090 |  | Testing the Piles 13-18 | 24d | 2014-01-27 | 2014-03-02 | BEW/ST/PL/2050 | 361.72d | 0d | Helper [72 h]; Mason [18 h]; Load Testing Initial [6 Number] |  | 26 | 39 days | 0 |
| BEW/ST/PL/2110 |  | Instalation of Test Piles No 45 to 65 | 12d | 2014-02-17 | 2014-03-05 | BEW/ST/PL/2070, BEW/DE/DS/1210, BEW/DE/DS/1230 | 527.06d | 93d | Piling Rig [18 h]; Crane [35.89 h]; Low Bed Trailor [18 h]; Hydra Crane [35.89 h]; Mason [36 h]; Helper [72 h]; Steel Fitter [36 h] |  | 25 | 44 days | 0 |
| BEW/ST/PL/2130 |  | Testing the Piles 19-24 | 24d | 2014-03-02 | 2014-04-03 | BEW/ST/PL/2090, BEW/ST/PL/2070 | 434.06d | 0d | Helper [72 h]; Mason [18 h]; Load Testing Initial [6 Number] |  | 26 | 39 days | 0 |
| BEW/ST/PL/2180 |  | Testing the Piles 25-30 | 24d | 2014-04-03 | 2014-05-07 | BEW/ST/PL/2130, BEW/ST/PL/2070 | 434.06d | 0d | Helper [72 h]; Mason [18 h]; Load Testing Initial [6 Number] |  | 26 | 39 days | 0 |
| BEW/ST/PL/2250 |  | Testing the Piles 31-36 | 24d | 2014-05-07 | 2014-06-11 | BEW/ST/PL/2180 | 434.06d | 0d | Helper [72 h]; Mason [18 h]; Load Testing Initial [6 Number] |  | 26 | 39 days | 0 |
| BEW/ST/PL/2320 |  | Testing the Piles 37-42 | 24d | 2014-06-11 | 2014-07-15 | BEW/ST/PL/2250 | 434.06d | 0d | Helper [72 h]; Mason [18 h]; Load Testing Initial [6 Number] |  | 26 | 39 days | 0 |
| BEW/ST/PL/2360 |  | Testing the Piles 43-48 | 24d | 2014-07-15 | 2014-08-25 | BEW/ST/PL/2320, BEW/ST/PL/2110 | 434.06d | 0d | Helper [72 h]; Mason [18 h]; Load Testing Initial [6 Number] |  | 26 | 39 days | 0 |
| BEW/ST/PL/2380 |  | Testing the Piles 49-54 | 24d | 2014-08-25 | 2014-09-28 | BEW/ST/PL/2360 | 434.06d | 0d | Helper [72 h]; Mason [18 h]; Load Testing Initial [6 Number] |  | 26 | 39 days | 0 |
| BEW/ST/PL/2400 |  | Testing the Piles 54-60 | 24d | 2014-09-28 | 2014-11-03 | BEW/ST/PL/2380 | 434.06d | 0d | Helper [72 h]; Mason [18 h]; Load Testing Initial [6 Number] |  | 26 | 39 days | 0 |
| BEW/ST/PL/2410 |  | Testing the Piles 60-65 | 24d | 2014-09-28 | 2014-11-03 | BEW/ST/PL/2400 SS | 434.06d | 0d | Helper [72 h]; Mason [18 h]; Load Testing Initial [5 Number] |  | 26 | 39 days | 0 |
|  | 2 | **Working Piles** |  | 2013-12-22 | 2014-11-03 |  |  |  |  |  |  |  |  |
| BEW/ST/PL/2260 |  | Piling at Wadi Bridge 13 | 98d | 2013-12-22 | 2014-05-11 | BEW/ST/PL/2030, BEW/PR/FC/1270 FS-30d | 454.06d | 0d | Piling Rig [36 h]; Hydra Crane [18 h]; Low Bed Trailor [18 h]; Crane [9 h]; Piling - Cast in place Pier [6351 LM]; Piling - Cast in place, Abutment [1825 LM]; Setting up at each 750mm diameter pile location [404 Number]; Mason [18 h]; Steel Fitter [882 h]; Carpenter [882 h]; Helper [108 h] |  | 39 | 140 days | 0 |
| BEW/ST/PL/2340 |  | Piling at Wadi Bridge 14 | 76d | 2013-12-22 | 2014-04-09 | BEW/PR/FC/1270 FS-30d, BEW/ST/PL/2030 | 420.28d | 0d | Piling Rig [36 h]; Hydra Crane [18 h]; Low Bed Trailor [18 h]; Crane [9 h]; Piling - Cast in place Pier [3378 LM]; Piling - Cast in place, Abutment [925 LM]; Setting up at each 750mm diameter pile location [355 Number]; Mason [18 h]; Steel Fitter [684 h]; Carpenter [684 h]; Helper [108 h] |  | 40 | 108 days | 0 |
| BEW/ST/PL/2080 |  | Piling at Interchange 10 | 29d | 2014-01-27 | 2014-03-09 | BEW/ST/PL/2050 | 348.28d | 0d | Piling Rig [27 h]; Hydra Crane [18 h]; Low Bed Trailor [29 h]; Crane [29 h]; Piling - Cast in place Pier [240 LM]; Piling - Cast in place, Abutment [450 LM]; Setting up at each 750mm diameter pile location [54 Number]; Mason [18 h]; Steel Fitter [261 h]; Carpenter [261 h]; Helper [108 h] |  | 29 | 39 days | 0 |
| BEW/ST/PL/2120 |  | Piling at Overpass 14 | 14d | 2014-03-09 | 2014-03-27 | BEW/ST/PL/2090, BEW/ST/PL/2080 | 356.72d | 0d | Piling Rig [18 h]; Hydra Crane [18 h]; Low Bed Trailor [14 h]; Crane [9 h]; Piling - Cast in place Pier [120 LM]; Piling - Cast in place, Abutment [562 LM]; Setting up at each 750mm diameter pile location [27 Number]; Mason [18 h]; Steel Fitter [126 h]; Carpenter [126 h]; Helper [108 h] |  | 34 | 21 days | 0 |
| BEW/ST/PL/2150 |  | Piling at Interchange 08 | 29d | 2014-03-27 | 2014-05-07 | BEW/ST/PL/2120 | 447.06d | 0d | Piling Rig [27 h]; Hydra Crane [29 h]; Low Bed Trailor [18 h]; Crane [29 h]; Piling - Cast in place Pier [240 LM]; Piling - Cast in place, Abutment [450 LM]; Setting up at each 750mm diameter pile location [54 Number]; Mason [18 h]; Steel Fitter [261 h]; Carpenter [261 h]; Helper [108 h] |  | 30 | 48 days | 0 |
| BEW/ST/PL/2060 |  | Piling at Wadi Bridge 12 | 120d | 2014-04-09 | 2014-10-02 | BEW/PR/FC/1270, BEW/ST/PL/2030 SS+10d, BEW/ST/PL/2340 | 468.06d | 0d | Piling Rig [36 h]; Hydra Crane [18 h]; Low Bed Trailor [18 h]; Crane [9 h]; Piling - Cast in place Pier [6423 LM]; Piling - Cast in place, Abutment [1755 LM]; Setting up at each 750mm diameter pile location [555 Number]; Mason [18 h]; Steel Fitter [1080 h]; Carpenter [1080 h]; Helper [108 h] |  | 38 | 171 days | 0 |
| BEW/ST/PL/2170 |  | Piling at Overpass 11 | 14d | 2014-05-07 | 2014-05-28 | BEW/ST/PL/2150 | 447.06d | 0d | Piling Rig [18 h]; Hydra Crane [18 h]; Low Bed Trailor [14 h]; Crane [14 h]; Piling - Cast in place Pier [120 LM]; Piling - Cast in place, Abutment [562 LM]; Setting up at each 750mm diameter pile location [27 Number]; Mason [18 h]; Steel Fitter [126 h]; Carpenter [126 h]; Helper [108 h] |  | 35 | 20 days | 0 |
| BEW/ST/PL/2040 |  | Piling at Wadi Bridge 11 | 112d | 2014-05-11 | 2014-10-26 | BEW/PR/FC/1270 FS-30d, BEW/ST/PL/2030 SS+10d, BEW/ST/PL/2260 | 454.06d | 0d | Piling Rig [36 h]; Hydra Crane [18 h]; Low Bed Trailor [18 h]; Crane [9 h]; Piling - Cast in place Pier [6423 LM]; Piling - Cast in place, Abutment [1755 LM]; Setting up at each 750mm diameter pile location [555 Number]; Mason [18 h]; Steel Fitter [1008 h]; Carpenter [1008 h]; Helper [108 h] |  | 37 | 161 days | 0 |
| BEW/ST/PL/2210 |  | Piling at Interchange 09 | 17d | 2014-05-28 | 2014-06-22 | BEW/ST/PL/2170 | 447.06d | 0d | Piling Rig [27 h]; Hydra Crane [17 h]; Low Bed Trailor [17 h]; Crane [17 h]; Piling - Cast in place Pier [240 LM]; Piling - Cast in place, Abutment [450 LM]; Setting up at each 750mm diameter pile location [54 Number]; Mason [18 h]; Steel Fitter [153 h]; Carpenter [153 h]; Helper [108 h] |  | 31 | 23 days | 0 |
| BEW/ST/PL/2190 |  | Piling at Overpass 10 | 14d | 2014-06-22 | 2014-07-10 | BEW/ST/PL/2210 | 447.06d | 0d | Piling - Cast in place Pier [120 LM]; Piling - Cast in place, Abutment [562 LM]; Setting up at each 750mm diameter pile location [27 Number]; Mason [18 h]; Steel Fitter [40 h]; Carpenter [40 h]; Helper [108 h]; Hydra Crane [18 h]; Piling Rig [18 h]; Crane [9 h]; Low Bed Trailor [18 h] |  |  |  | 0 |
| BEW/ST/PL/2270 |  | Piling at Interchange 11 | 17d | 2014-07-10 | 2014-08-11 | BEW/ST/PL/2190 | 447.06d | 0d | Piling Rig [27 h]; Hydra Crane [17 h]; Low Bed Trailor [17 h]; Crane [17 h]; Piling - Cast in place Pier [240 LM]; Piling - Cast in place, Abutment [450 LM]; Setting up at each 750mm diameter pile location [54 Number]; Mason [18 h]; Steel Fitter [153 h]; Carpenter [153 h]; Helper [108 h] |  | 32 | 28 days | 0 |
| BEW/ST/PL/2230 |  | Piling at Overpass 12 | 14d | 2014-08-11 | 2014-08-31 | BEW/ST/PL/2270 | 447.06d | 0d | Piling Rig [18 h]; Hydra Crane [18 h]; Low Bed Trailor [14 h]; Crane [9 h]; Piling - Cast in place Pier [120 LM]; Piling - Cast in place, Abutment [562 LM]; Setting up at each 750mm diameter pile location [27 Number]; Mason [18 h]; Steel Fitter [126 h]; Carpenter [126 h]; Helper [108 h] |  | 36 | 20 days | 0 |
| BEW/ST/PL/2300 |  | Piling at Interchange 12 | 17d | 2014-08-31 | 2014-09-23 | BEW/ST/PL/2230 | 447.06d | 0d | Piling Rig [27 h]; Hydra Crane [17 h]; Low Bed Trailor [17 h]; Crane [17 h]; Piling - Cast in place Pier [240 LM]; Piling - Cast in place, Abutment [450 LM]; Setting up at each 750mm diameter pile location [54 Number]; Mason [18 h]; Steel Fitter [153 h]; Carpenter [153 h]; Helper [108 h] |  | 33 | 23 days | 0 |
| BEW/ST/PL/2280 |  | Piling at Overpass 13 | 14d | 2014-10-14 | 2014-11-03 | BEW/ST/PL/2300, BEW/ST/PL/2410 FF | 434.06d | 0d | Piling - Cast in place Pier [120 LM]; Piling - Cast in place, Abutment [562 LM]; Setting up at each 750mm diameter pile location [27 Number]; Mason [18 h]; Steel Fitter [40 h]; Carpenter [40 h]; Helper [108 h]; Hydra Crane [18 h]; Piling Rig [18 h]; Crane [9 h]; Low Bed Trailor [18 h] |  |  |  | 0 |

| ID | WBS | Activity | Duration | Start | Finish | Predecessors | Planned start | Planned finish | Total float | Free float | Resources | MSP Activity ID | EAM Contact Person | DIFF | user_text1 |
| --- | --- | --- | --- | --- | --- | --- | --- | --- | --- | --- | --- | --- | --- | --- | --- |
|  | 3 | **Pile Testing (Load Test and Integrity)** |  | 2014-02-18 | 2014-12-08 |  |  |  |  |  |  |  |  |  |  |
| BEW/ST/PL/2350 |  | Pile testing at Wadi Bridge 13 | 68d | 2014-02-18 | 2014-05-26 | BEW/ST/PL/2260 SS+40d |  |  | 566.06d |  | Load Testing working piles [8 Number]; Integrity Test [404 Number] | 4733 | 56 days | 0 |  |
| BEW/ST/PL/2390 |  | Pile testing at Wadi Bridge 14 | 46d | 2014-02-18 | 2014-04-23 | BEW/ST/PL/2340 SS+40d |  |  | 420.28d | 0d | Load Testing working piles [5 Number]; Integrity Test [355 Number] | 4732 | 47 days | 0 |  |
| BEW/ST/PL/2160 |  | Pile testing at Interchange 10 | 10d | 2014-03-10 | 2014-03-24 | BEW/ST/PL/2080 SS+30d |  |  | 348.28d | 0d | Load Testing working piles [1 Number]; Integrity Test [54 Number] | 4731 | 15 days | 0 |  |
| BEW/ST/PL/2200 |  | Pile testing at Overpass 14 | 10d | 2014-04-20 | 2014-05-04 | BEW/ST/PL/2120 SS+30d |  |  | 501.06d | 4d | Load Testing working piles [1 Number]; Integrity Test [27 Number] | 4730 | 12 days | 0 |  |
| BEW/ST/PL/2220 |  | Pile testing at Interchange 08 | 10d | 2014-05-08 | 2014-05-22 | BEW/ST/PL/2150 SS+30d, BEW/ST/PL/2200 |  |  | 497.06d | 19d | Load Testing working piles [1 Number]; Integrity Test [54 Number] | 4728 | 14 days | 0 |  |
| BEW/ST/PL/2140 |  | Pile testing at Wadi Bridge 12 | 90d | 2014-06-05 | 2014-10-20 | BEW/ST/PL/2060 SS+40d |  |  | 468.06d |  | Load Testing working piles [10 Number]; Integrity Test [555 Number] | 4734 | 71 days | 0 |  |
| BEW/ST/PL/2240 |  | Pile testing at Overpass 11 | 10d | 2014-06-19 | 2014-07-03 | BEW/ST/PL/2170 SS+30d, BEW/ST/PL/2220 |  |  | 478.06d | 4d | Load Testing working piles [1 Number]; Integrity Test [27 Number] | 4729 | 21 days | 0 |  |
| BEW/ST/PL/2100 |  | Pile testing at Wadi Bridge 11 | 82d | 2014-07-07 | 2014-11-09 | BEW/ST/PL/2040 SS+40d |  |  | 454.06d |  | Load Testing working piles [10 Number]; Integrity Test [555 Number] | 4735 | 71 days | 0 |  |
| BEW/ST/PL/2290 |  | Pile testing at Interchange 09 | 10d | 2014-07-09 | 2014-07-24 | BEW/ST/PL/2210 SS+30d, BEW/ST/PL/2240 |  |  | 474.06d | 0d | Load Testing working piles [1 Number]; Integrity Test [54 Number] | 4727 | 17 days | 0 |  |
| BEW/ST/PL/2310 |  | Pile testing at Overpass 10 | 10d | 2014-07-24 | 2014-08-13 | BEW/ST/PL/2190, BEW/ST/PL/2290 |  |  | 474.06d | 11d | Load Testing working piles [1 Number]; Integrity Test [27 Number] | 4726 | 14 days | 0 |  |
| BEW/ST/PL/2330 |  | Pile testing at Interchange 11 | 10d | 2014-08-28 | 2014-09-11 | BEW/ST/PL/2270 SS+30d, BEW/ST/PL/2310 |  |  | 463.06d | 5d | Load Testing working piles [1 Number]; Integrity Test [54 Number] | 4725 | 15 days | 0 |  |
| BEW/ST/PL/2010 |  | Pile testing at Overpass 12 | 10d | 2014-09-18 | 2014-10-02 | BEW/ST/PL/2230 SS+28d, BEW/ST/PL/2330 |  |  | 458.06d | 6d | Load Testing working piles [1 Number]; Integrity Test [27 Number] | 4726 | 14 days | 0 |  |
| BEW/ST/PL/2370 |  | Pile testing at Interchange 12 | 10d | 2014-10-14 | 2014-10-28 | BEW/ST/PL/2300 SS+30d, BEW/ST/PL/2010 |  |  | 452.06d | 18d | Load Testing working piles [1 Number]; Integrity Test [54 Number] | 4724 | 14 days | 0 |  |
| BEW/ST/PL/2000 |  | Pile testing at Overpass 13 | 10d | 2014-11-24 | 2014-12-08 | BEW/ST/PL/2280 SS+28d, BEW/ST/PL/2370 |  |  | 434.06d |  | Load Testing working piles [1 Number]; Integrity Test [27 Number] | 4726 | 14 days | 0 |  |
|  | 2 | **MSE Walls** |  | 2014-03-02 | 2015-09-21 |  |  |  |  |  |  |  |  |  |  |
| BEW/ST/MS/2000 |  | Casting of panels for 'Mechanically Stabilized Earth Retaining Wall' | 390d | 2014-03-02 | 2015-09-21 | BEW/DE/DS/1120, BEW/DE/DS/1130 FS+30d |  |  | 236.06d | 42.78d |  | 4195 | 572 days | 0 |  |
|  | 3 | **Interchanges** |  | 2014-03-24 | 2015-02-18 |  |  |  |  |  |  |  |  |  |  |
|  | 1 | **Interchange IC** |  | 2014-03-24 | 2015-02-18 |  |  |  |  |  |  |  |  |  |  |
|  | 1 | **NB Structure** |  | 2014-03-24 | 2014-12-08 |  |  |  |  |  |  |  |  |  |  |
|  | 1 | **Abutment Walls A1** |  | 2014-03-24 | 2014-05-11 |  |  |  |  |  |  |  |  |  |  |
| BEW/ST/IC10/1000 |  | Structural Excavation | 4d | 2014-03-24 | 2014-03-31 | BEW/ST/PL/2160, BEW/DE/DS/1380 | 2014-03-24 | 2014-03-30 | 348.28d | 0d | Excavator (Bucket & Breaker) [9 h]; Unclassified structural excavation (depth 0m to 2.0m) [87.26 M3]; Unclassified structural excavation (depth >2.0m to <4.0m) [87.26 M3]; Unclassified structural excavation (depth - 4.0m) [87.26 M3]; Tipper (18 M3) [18 h]; Helper [54 h] |  |  | -4 |  |
| BEW/ST/IC10/1010 |  | PCC & Pile Head Breaking | 6d | 2014-03-31 | 2014-04-08 | BEW/ST/IC10/1000 |  |  | 348.28d | 0d | Helper [54 h]; Unreinforced Concrete 16/20 [2.77 M3]; Mason [18 h] | 47 | 14 days | 0 | G1 |
| BEW/ST/IC10/1020 |  | Concreting for Pile Cap / Abutment Foundation | 9d | 2014-04-08 | 2014-04-21 | BEW/ST/IC10/1010 |  |  | 380.61d | 0d | Helper [54 h]; RCC Class 45/20 MS7 in Bridge abutment IC OP [15 M3]; Steel Grade 500 for IC, WB, OP [13.41 Tonne]; Mason [18 h]; Steel Fitter [36 h]; Carpenter [36 h]; Crane [9 h]; Boom Placers [9 h] | 48 | 11 days | 0 | G1 |
| BEW/ST/IC10/1070 |  | Conceting including Formwork & Reinforcement fixing for Abutment | 14d | 2014-04-21 | 2014-05-11 | BEW/ST/IC10/1020 |  |  | 380.61d | 20.89d | Helper [54 h]; RCC Class 45/20 MS7 in Bridge abutment IC OP [16 M3]; Steel Grade 500 for IC, WB, OP [13.41 Tonne]; Mason [18 h]; Steel Fitter [36 h]; Carpenter [36 h]; Boom Placers [9 h]; Crane [9 h] | 49 | 18 days | 0 | G1 |

Notes:
- BEW/ST/IC10/1010: Description: G1
- BEW/ST/IC10/1020: Description: G1
- BEW/ST/IC10/1070: Description: G1

| ID | WBS | Activity | Duration | Start | Finish | Predecessors | Planned start | Planned finish | Total float | Free float | Resources | DIFF | user_text1 | MSP Activity ID | EAM Contact Person |
| --- | --- | --- | --- | --- | --- | --- | --- | --- | --- | --- | --- | --- | --- | --- | --- |
|  | 2 | **Abutment Walls A2** |  | 2014-04-08 | 2014-05-26 |  |  |  |  |  |  |  |  |  |  |
| BEW/ST/IC10/1030 |  | Structural Excavation | 4d | 2014-04-08 | 2014-04-14 | BEW/ST/IC10/1010 |  |  | 359.72d | 0d | Excavator (Bucket & Breaker) [9 h]; Unclassified structural excavation (depth 0m to 2.0m) [87.26 M3]; Unclassified structural excavation (depth >2.0m to <4.0m) [87.26 M3]; Unclassified structural excavation (depth - 4.0m) [87.26 M3]; Tipper (18 M3) [18 h]; Helper [54 h] | -4 |  |  |  |
| BEW/ST/IC10/1050 |  | PCC & Pile Head Breaking | 6d | 2014-04-14 | 2014-04-22 | BEW/ST/IC10/1030 |  |  | 359.72d | 0d | Helper [54 h]; Unreinforced Concrete 16/20 [2.77 M3]; Mason [18 h] | 0 | G1 | 47 | 14 days |
| BEW/ST/IC10/1080 |  | Concreting for Pile Cap / Abutment Foundation | 9d | 2014-04-22 | 2014-05-05 | BEW/ST/IC10/1050 |  |  | 370.17d | 0d | Helper [54 h]; RCC Class 45/20 MS7 in Bridge abutment IC OP [15 M3]; Steel Grade 500 for IC, WB, OP [13.41 Tonne]; Mason [18 h]; Steel Fitter [36 h]; Carpenter [36 h]; Crane [9 h]; Boom Placers [9 h] | 0 | G1 | 48 | 11 days |
| BEW/ST/IC10/1140 |  | Conceting including Formwork & Reinforcement fixing for Abutment | 14d | 2014-05-05 | 2014-05-26 | BEW/ST/IC10/1080 |  |  | 370.17d | 10.44d | Helper [54 h]; RCC Class 45/20 MS7 in Bridge abutment IC OP [16 M3]; Steel Grade 500 for IC, WB, OP [13.41 Tonne]; Mason [18 h]; Steel Fitter [36 h]; Carpenter [36 h]; Boom Placers [9 h]; Crane [9 h] | 0 | G1 | 49 | 18 days |
|  | 3 | **Pier P 1** |  | 2014-04-22 | 2014-06-10 |  |  |  |  |  |  |  |  |  |  |
| BEW/ST/IC10/1090 |  | Structural Excavation | 4d | 2014-04-22 | 2014-04-29 | BEW/ST/IC10/1050 | 2014-04-22 | 2014-04-28 | 359.72d | 0d | Excavator (Bucket & Breaker) [9 h]; Unclassified structural excavation (depth 0m to 2.0m) [87.26 M3]; Unclassified structural excavation (depth >2.0m to <4.0m) [87.26 M3]; Unclassified structural excavation (depth - 4.0m) [87.26 M3]; Tipper (18 M3) [18 h]; Helper [54 h] | -4 |  |  |  |
| BEW/ST/IC10/1120 |  | PCC & Pile Head Breaking | 6d | 2014-04-29 | 2014-05-07 | BEW/ST/IC10/1090 |  |  | 359.72d | 0d | Helper [54 h]; Unreinforced Concrete 16/20 [15.78 M3]; Mason [18 h] | 0 | G1 | 47 | 14 days |
| BEW/ST/IC10/1160 |  | Concreting for Pile Cap / Pier Foundation | 9d | 2014-05-07 | 2014-05-20 | BEW/ST/IC10/1120 |  |  | 359.72d | 0d | Helper [54 h]; Concrete 45/20 MS7 in Pile Caps & Footings (IC OP) [210 M3]; Steel Grade 500 for IC, WB, OP [50.5 Tonne]; Mason [18 h]; Steel Fitter [36 h]; Carpenter [36 h]; Crane [9 h]; Boom Placers [9 h] | 0 | G1 | 48 | 11 days |
| BEW/ST/IC10/1230 |  | Conceting including Formwork & Reinforcement fixing for Pier | 14d | 2014-05-20 | 2014-06-10 | BEW/ST/IC10/1160 |  |  | 359.72d | 0d | Helper [54 h]; Concrete 45/20 MS7 in Pier Columns & Caps (IC OP) [39 M3]; Steel Grade 500 for IC, WB, OP [5.73 Tonne]; Mason [18 h]; Steel Fitter [36 h]; Carpenter [36 h]; Boom Placers [9 h]; Crane [9 h]; GRP Cladding [8 Sqm] | 0 | G1 | 49 | 18 days |
|  | 4 | **Girder Casting** |  | 2014-06-10 | 2014-12-08 |  |  |  |  |  |  |  |  |  |  |
|  | 1 | **Soffit and Wall** |  | 2014-06-10 | 2014-09-24 |  |  |  |  |  |  |  |  |  |  |
| BEW/ST/IC10/1340 |  | Staging For girder | 14d | 2014-06-10 | 2014-06-30 | BEW/ST/IC10/1070, BEW/ST/IC10/1140, BEW/ST/IC10/1230 |  |  | 359.72d | 0d | Helper [108 h]; Mason [18 h]; Steel Fitter [72 h]; Carpenter [72 h]; Stagging Materials (in M3) [72000 h] | 0 |  | 67 | 20 days |
| BEW/ST/IC10/1400 |  | Fixing of the Bearing | 4d | 2014-06-30 | 2014-07-06 | BEW/ST/IC10/1340 |  |  | 369.72d | 10d | Helper [108 h]; Spherical Bearing [3 Number] | 0 |  | 4736 | 6 days |
| BEW/ST/IC10/1410 |  | Bottom Formwork along with Sides of Box Girder | 14d | 2014-06-30 | 2014-07-20 | BEW/ST/IC10/1340 |  |  | 359.72d | 0d | Helper [72 h]; Crane [14 h]; Interchange Fishbelly Shutter [9 h] | 0 |  | 68 | 20 days |
| BEW/ST/IC10/1470 |  | Reinforcement Fixing for Base & Sides of Box Girder | 14d | 2014-07-20 | 2014-08-14 | BEW/ST/IC10/1410, BEW/ST/IC10/1400 |  |  | 359.72d | 0d | Helper [108 h]; Crane [9 h]; Steel Grade 500 for IC, WB, OP [60.98 Tonne]; Mason [18 h]; Steel Fitter [72 h]; Carpenter [72 h] | 0 |  | 69 | 18 days |
| BEW/ST/IC10/1520 |  | Formwork for Inner Sides & Wall | 14d | 2014-08-14 | 2014-09-03 | BEW/ST/IC10/1470 |  |  | 359.72d | 0d | Helper [108 h]; Crane [14 h]; Mason [18 h]; Steel Fitter [72 h]; Carpenter [72 h]; Interchange Fishbelly Shutter [9 h] | 0 |  | 72 | 20 days |
| BEW/ST/IC10/1560 |  | Reinforcement fixing at Sides | 14d | 2014-09-03 | 2014-09-23 | BEW/ST/IC10/1520 |  |  | 359.72d | 0d | Helper [108 h]; Crane [9 h]; Carpenter [72 h]; Steel Fitter [72 h]; Mason [18 h]; Steel Grade 500 for IC, WB, OP [22 Tonne]; Interchange Fishbelly Shutter [9 h] | 0 |  | 73 | 20 days |
| BEW/ST/IC10/1590 |  | Concreting at sides | 1d | 2014-09-23 | 2014-09-24 | BEW/ST/IC10/1400, BEW/ST/IC10/1560 |  |  | 359.72d | 0d | Helper [108 h]; Interchange Fishbelly Shutter [9 h]; Carpenter [72 h]; Steel Fitter [72 h]; Mason [18 h]; Post-tensioned Concrete, 50/20 MS7 Box Girders [415.58 M3]; Metal Access door for box girder bridges [3 Number] | 8088 |  | 74 | 1 days |
|  | 2 | **Top Slab of Box Girder** |  | 2014-09-29 | 2014-12-08 |  |  |  |  |  |  |  |  |  |  |
| BEW/ST/IC10/1620 |  | Shuttering of Top Slab | 15d | 2014-09-29 | 2014-10-22 | BEW/ST/IC10/1590 FS+3d |  |  | 359.72d | 0d | Helper [108 h]; Crane [9 h]; Interchange Fishbelly Shutter [9 h]; Mason [18 h]; Steel Fitter [72 h]; Carpenter [72 h] | 0 |  | 76 | 21 days |
| BEW/ST/IC10/1640 |  | Reinforcement fixing for Top Slab | 14d | 2014-10-09 | 2014-10-29 | BEW/ST/IC10/1620 SS+6d |  |  | 359.72d | 0d | Helper [108 h]; Crane [9 h]; Interchange Fishbelly Shutter [9 h]; Mason [18 h]; Steel Fitter [72 h]; Carpenter [72 h]; Steel Grade 500 for IC, WB, OP [20 Tonne] | 0 |  | 77 | 20 days |
| BEW/ST/IC10/1700 |  | Concreting of Top Slab | 1d | 2014-10-29 | 2014-10-30 | BEW/ST/IC10/1640 |  |  | 359.72d | 0d | Helper [108 h]; Crane [9 h]; Interchange Fishbelly Shutter [9 h]; Mason [18 h]; Steel Fitter [72 h]; Carpenter [72 h]; Post-tensioned Concrete, 50/20 MS7 Box Girders [202 M3] | 0 |  | 78 | 1 days |
| BEW/ST/IC10/1730 |  | Removal of Staging | 6d | 2014-11-13 | 2014-11-24 | BEW/ST/IC10/1710 |  |  | 359.72d | 0d | Helper [108 h]; Crane [9 h]; Mason [18 h]; Steel Fitter [72 h]; Carpenter [72 h] | 0 |  | 79 | 8 days |
| BEW/ST/IC10/1750 |  | Miscellaneous Works | 10d | 2014-11-24 | 2014-12-08 | BEW/ST/IC10/1730 |  |  | 359.72d | 11.44d | Helper [108 h]; Mason [18 h]; Steel Fitter [72 h]; Carpenter [72 h] | 0 |  | 80 | 12 days |

Notes:
- BEW/ST/IC10/1050: Description: G1
- BEW/ST/IC10/1080: Description: G1
- BEW/ST/IC10/1140: Description: G1
- BEW/ST/IC10/1120: Description: G1
- BEW/ST/IC10/1160: Description: G1
- BEW/ST/IC10/1230: Description: G1

| ID | WBS | Activity | Duration | Start | Finish | Predecessors | Planned start | Planned finish | Total float | Free float | Resources | MSP Activity ID | EAM Contact Person | DIFF | user_text1 |
| --- | --- | --- | --- | --- | --- | --- | --- | --- | --- | --- | --- | --- | --- | --- | --- |
|  | 3 | **Girder Stressing** |  | 2014-11-06 | 2014-11-13 |  |  |  |  |  |  |  |  |  |  |
| BEW/ST/IC10/1710 |  | Stressing of the Structure including Grouting | 5d | 2014-11-06 | 2014-11-13 | BEW/ST/IC10/1700 FS+5d |  |  | 359.72d | 0d | Interchange Fishbelly Shutter [9 h]; Prestressing Cables - 0.6" [9.26 Tonne]; Mason [18 h]; Steel Fitter [72 h]; Carpenter [72 h]; Helper [108 h] | 4741 | 8 days | 0 |  |
|  | 2 | **SB Structure** |  | 2014-04-08 | 2014-12-23 |  |  |  |  |  |  |  |  |  |  |
|  | 1 | **Abutment Walls A1** |  | 2014-04-08 | 2014-05-26 |  |  |  |  |  |  |  |  |  |  |
| BEW/ST/IC10/1040 |  | Structural Excavation | 4d | 2014-04-08 | 2014-04-14 | BEW/ST/IC10/1010, BEW/DE/DS/1450, BEW/DE/DS/1460 |  |  | 348.28d | 0d | Excavator (Bucket & Breaker) [9 h]; Unclassified structural excavation (depth 0m to 2.0m) [87.26 M3]; Unclassified structural excavation (depth >2.0m to <4.0m) [87.26 M3]; Unclassified structural excavation (depth - 4.0m) [87.26 M3]; Tipper (18 M3) [18 h]; Helper [54 h] |  |  | -4 |  |
| BEW/ST/IC10/1060 |  | PCC & Pile Head Breaking | 6d | 2014-04-14 | 2014-04-22 | BEW/ST/IC10/1040 |  |  | 348.28d | 0d | Helper [54 h]; Unreinforced Concrete 16/20 [2.77 M3]; Mason [18 h] | 47 | 14 days | 0 | G1 |
| BEW/ST/IC10/1100 |  | Concreting for Pile Cap / Abutment Foundation | 9d | 2014-04-22 | 2014-05-05 | BEW/ST/IC10/1060 |  |  | 369.17d | 0d | Helper [54 h]; RCC Class 45/20 MS7 in Bridge abutment IC OP [15 M3]; Steel Grade 500 for IC, WB, OP [13.41 Tonne]; Mason [18 h]; Steel Fitter [36 h]; Carpenter [36 h]; Crane [9 h]; Boom Placers [9 h] | 48 | 11 days | 0 | G1 |
| BEW/ST/IC10/1150 |  | Conceting including Formwork & Reinforcement fixing for Abutment | 14d | 2014-05-05 | 2014-05-26 | BEW/ST/IC10/1100 |  |  | 369.17d | 20.89d | Helper [54 h]; RCC Class 45/20 MS7 in Bridge abutment IC OP [16 M3]; Steel Grade 500 for IC, WB, OP [13.41 Tonne]; Mason [18 h]; Steel Fitter [36 h]; Carpenter [36 h]; Boom Placers [9 h]; Crane [9 h] | 49 | 18 days | 0 | G1 |
|  | 2 | **Abutment Walls A2** |  | 2014-04-22 | 2014-06-10 |  |  |  |  |  |  |  |  |  |  |
| BEW/ST/IC10/1110 |  | Structural Excavation | 4d | 2014-04-22 | 2014-04-29 | BEW/ST/IC10/1060 | 2014-04-22 | 2014-04-28 | 348.28d | 0d | Excavator (Bucket & Breaker) [9 h]; Unclassified structural excavation (depth 0m to 2.0m) [87.26 M3]; Unclassified structural excavation (depth >2.0m to <4.0m) [87.26 M3]; Unclassified structural excavation (depth - 4.0m) [87.26 M3]; Tipper (18 M3) [18 h]; Helper [54 h] |  |  | -4 |  |
| BEW/ST/IC10/1130 |  | PCC & Pile Head Breaking | 6d | 2014-04-29 | 2014-05-07 | BEW/ST/IC10/1110 |  |  | 348.28d | 0d | Helper [54 h]; Unreinforced Concrete 16/20 [2.77 M3]; Mason [18 h] | 47 | 14 days | 0 | G1 |
| BEW/ST/IC10/1170 |  | Concreting for Pile Cap / Abutment Foundation | 9d | 2014-05-07 | 2014-05-20 | BEW/ST/IC10/1130 |  |  | 358.72d | 0d | Helper [54 h]; RCC Class 45/20 MS7 in Bridge abutment IC OP [15 M3]; Steel Grade 500 for IC, WB, OP [13.41 Tonne]; Mason [18 h]; Steel Fitter [36 h]; Carpenter [36 h]; Crane [9 h]; Boom Placers [9 h] | 48 | 11 days | 0 | G1 |
| BEW/ST/IC10/1240 |  | Conceting including Formwork & Reinforcement fixing for Abutment | 14d | 2014-05-20 | 2014-06-10 | BEW/ST/IC10/1170 |  |  | 358.72d | 10.44d | Helper [54 h]; RCC Class 45/20 MS7 in Bridge abutment IC OP [16 M3]; Steel Grade 500 for IC, WB, OP [13.41 Tonne]; Mason [18 h]; Steel Fitter [36 h]; Carpenter [36 h]; Boom Placers [9 h]; Crane [9 h] | 49 | 18 days | 0 | G1 |
|  | 3 | **Pier P 1** |  | 2014-05-07 | 2014-06-24 |  |  |  |  |  |  |  |  |  |  |
| BEW/ST/IC10/1180 |  | Structural Excavation | 4d | 2014-05-07 | 2014-05-13 | BEW/ST/IC10/1130 |  |  | 348.28d | 0d | Excavator (Bucket & Breaker) [9 h]; Unclassified structural excavation (depth 0m to 2.0m) [87.26 M3]; Unclassified structural excavation (depth >2.0m to <4.0m) [87.26 M3]; Unclassified structural excavation (depth - 4.0m) [87.26 M3]; Tipper (18 M3) [18 h]; Helper [54 h] |  |  | -4 |  |
| BEW/ST/IC10/1200 |  | PCC & Pile Head Breaking | 6d | 2014-05-13 | 2014-05-21 | BEW/ST/IC10/1180 |  |  | 348.28d | 0d | Helper [54 h]; Unreinforced Concrete 16/20 [15.78 M3]; Mason [18 h] | 47 | 14 days | 0 | G1 |
| BEW/ST/IC10/1250 |  | Concreting for Pile Cap / Pier Foundation | 9d | 2014-05-21 | 2014-06-04 | BEW/ST/IC10/1200 |  |  | 348.28d | 0d | Helper [54 h]; Concrete 45/20 MS7 in Pile Caps & Footings (IC OP) [210 M3]; Steel Grade 500 for IC, WB, OP [50.5 Tonne]; Mason [18 h]; Steel Fitter [36 h]; Carpenter [36 h]; Crane [9 h]; Boom Placers [9 h] | 48 | 11 days | 0 | G1 |
| BEW/ST/IC10/1300 |  | Conceting including Formwork & Reinforcement fixing for Pier | 14d | 2014-06-04 | 2014-06-24 | BEW/ST/IC10/1250 |  |  | 348.28d | 0d | Helper [54 h]; Concrete 45/20 MS7 in Pier Columns & Caps (IC OP) [39 M3]; Steel Grade 500 for IC, WB, OP [5.73 Tonne]; Mason [18 h]; Steel Fitter [36 h]; Carpenter [36 h]; Boom Placers [9 h]; Crane [9 h]; GRP Cladding [8 Sqm] | 49 | 18 days | 0 | G1 |
|  | 4 | **Girder Casting** |  | 2014-06-24 | 2014-12-23 |  |  |  |  |  |  |  |  |  |  |
|  | 1 | **Soffit and Wall** |  | 2014-06-24 | 2014-10-13 |  |  |  |  |  |  |  |  |  |  |
| BEW/ST/IC10/1390 |  | Staging For girder | 14d | 2014-06-24 | 2014-07-14 | BEW/ST/IC10/1150, BEW/ST/IC10/1240, BEW/ST/IC10/1300 |  |  | 348.28d | 0d | Helper [108 h]; Mason [18 h]; Steel Fitter [72 h]; Carpenter [72 h]; Stagging Materials (in M3) [72000 h] | 67 | 20 days | 0 |  |
| BEW/ST/IC10/1430 |  | Fixing of the Bearing | 4d | 2014-07-14 | 2014-07-20 | BEW/ST/IC10/1390 |  |  | 358.28d | 10d | Helper [108 h]; Spherical Bearing [3 Number] | 4736 | 6 days | 0 |  |
| BEW/ST/IC10/1440 |  | Bottom Formwork along with Sides of Box Girder | 14d | 2014-07-14 | 2014-08-10 | BEW/ST/IC10/1390 |  |  | 348.28d | 0d | Helper [72 h]; Crane [14 h]; Interchange Fishbelly Shutter [9 h] | 68 | 20 days | 0 |  |
| BEW/ST/IC10/1500 |  | Reinforcement Fixing for Base & Sides of Box Girder | 14d | 2014-08-10 | 2014-08-28 | BEW/ST/IC10/1440, BEW/ST/IC10/1430 |  |  | 348.28d | 0d | Helper [108 h]; Crane [9 h]; Steel Grade 500 for IC, WB, OP [60.98 Tonne]; Mason [18 h]; Steel Fitter [72 h]; Carpenter [72 h] | 69 | 18 days | 0 |  |
| BEW/ST/IC10/1540 |  | Formwork for Inner Sides & Wall | 14d | 2014-08-28 | 2014-09-17 | BEW/ST/IC10/1500 |  |  | 348.28d | 0d | Helper [108 h]; Crane [14 h]; Mason [18 h]; Steel Fitter [72 h]; Carpenter [72 h]; Interchange Fishbelly Shutter [9 h] | 72 | 20 days | 0 |  |
| BEW/ST/IC10/1580 |  | Reinforcement fixing at Sides | 15d | 2014-09-17 | 2014-10-12 | BEW/ST/IC10/1540 |  |  | 348.28d | 0d | Helper [108 h]; Crane [9 h]; Carpenter [72 h]; Steel Fitter [72 h]; Mason [18 h]; Steel Grade 500 for IC, WB, OP [22 Tonne]; Interchange Fishbelly Shutter [9 h] | 73 | 20 days | 0 |  |
| BEW/ST/IC10/1650 |  | Concreting at sides | 1d | 2014-10-12 | 2014-10-13 | BEW/ST/IC10/1430, BEW/ST/IC10/1580 |  |  | 348.28d | 0d | Helper [108 h]; Interchange Fishbelly Shutter [9 h]; Carpenter [72 h]; Steel Fitter [72 h]; Mason [18 h]; Post-tensioned Concrete, 50/20 MS7 Box Girders [416.03 M3]; Metal Access door for box girder bridges [3 Number] | 74 | 1 days | 0 |  |

Notes:
- BEW/ST/IC10/1060: Description: G1
- BEW/ST/IC10/1100: Description: G1
- BEW/ST/IC10/1150: Description: G1
- BEW/ST/IC10/1130: Description: G1
- BEW/ST/IC10/1170: Description: G1
- BEW/ST/IC10/1240: Description: G1
- BEW/ST/IC10/1200: Description: G1
- BEW/ST/IC10/1250: Description: G1
- BEW/ST/IC10/1300: Description: G1

| ID | WBS | Activity | Duration | Start | Finish | Predecessors | Total float | Free float | Resources | Cost | MSP Activity ID | EAM Contact Person | DIFF |
| --- | --- | --- | --- | --- | --- | --- | --- | --- | --- | --- | --- | --- | --- |
|  | 2 | **Top Slab of Box Girder** |  | 2014-10-16 | 2014-12-23 |  |  |  |  |  |  |  |  |
| BEW/ST/IC10/1670 |  | Shuttering of Top Slab | 15d | 2014-10-16 | 2014-11-06 | BEW/ST/IC10/1650 FS+3d | 348.28d | 0d | Helper [108 h]; Crane [9 h]; Interchange Fishbelly Shutter [9 h]; Mason [18 h]; Steel Fitter [72 h]; Carpenter [72 h] |  | 76 | 21 days | 0 |
| BEW/ST/IC10/1690 |  | Reinforcement fixing for Top Slab | 14d | 2014-10-26 | 2014-11-13 | BEW/ST/IC10/1670 SS+6d | 348.28d | 0d | Helper [108 h]; Crane [9 h]; Interchange Fishbelly Shutter [9 h]; Mason [18 h]; Steel Fitter [72 h]; Carpenter [72 h]; Steel Grade 500 for IC, WB, OP [20 Tonne] |  | 77 | 20 days | 0 |
| BEW/ST/IC10/1720 |  | Concreting of Top Slab | 1d | 2014-11-13 | 2014-11-16 | BEW/ST/IC10/1690 | 348.28d | 0d | Helper [108 h]; Crane [9 h]; Interchange Fishbelly Shutter [9 h]; Mason [18 h]; Steel Fitter [72 h]; Carpenter [72 h]; Post-tensioned Concrete, 50/20 MS7 Box Girders [202 M3] |  | 78 | 1 days | 0 |
| BEW/ST/IC10/1760 |  | Removal of Staging | 6d | 2014-12-01 | 2014-12-09 | BEW/ST/IC10/1740 | 348.28d | 0d | Helper [108 h]; Crane [9 h]; Mason [18 h]; Steel Fitter [72 h]; Carpenter [72 h] |  | 79 | 8 days | 0 |
| BEW/ST/IC10/1770 |  | Miscellaneous Works | 10d | 2014-12-09 | 2014-12-23 | BEW/ST/IC10/1760 | 348.28d | 0d | Helper [108 h]; Mason [18 h]; Steel Fitter [72 h]; Carpenter [72 h] |  | 80 | 12 days | 0 |
|  | 3 | **Girder Stressing** |  | 2014-11-24 | 2014-12-01 |  |  |  |  |  |  |  |  |
| BEW/ST/IC10/1740 |  | Stressing of the Structure including Grouting | 5d | 2014-11-24 | 2014-12-01 | BEW/ST/IC10/1720 FS+5d | 348.28d | 0d | Interchange Fishbelly Shutter [9 h]; Prestressing Cables - 0.6" [9.26 Tonne]; Mason [18 h]; Steel Fitter [72 h]; Carpenter [72 h]; Helper [108 h] |  | 4741 | 8 days | 0 |
|  | 3 | **Roadworks for Interchange RHS of BEW** |  | 2014-05-13 | 2015-02-04 |  |  |  |  |  |  |  |  |
| BEW/ST/IC10/1190 |  | Excavation for MSE Wall - RHS | 4d | 2014-05-13 | 2014-05-19 | BEW/ST/IC10/1180, BEW/ST/IC10/1090 | 399.83d | 0d | Unclassified structural excavation (depth 0m to 2.0m) [211 M3]; Excavator (Bucket & Breaker) [9 h]; Mason [9 h]; Helper [36 h] |  | 122 | 29 days | 0 |
| BEW/ST/IC10/1210 |  | Foundation For MSE Wall including Blinding RHS | 12d | 2014-05-19 | 2014-06-05 | BEW/ST/IC10/1190 | 428.28d | 0d | Boom Placers [9 h]; Unreinforced Concrete 16/20 [30 M3]; Concrete 40/20 MS7 in Retaining Wall [12 M3]; Mason [36 h]; Helper [72 h]; Steel Fitter [36 h]; Carpenter [36 h]; Crane [9 h] |  | 123 | 59 days | 36 |
| BEW/ST/IC10/1220 |  | Excavation for MSE Wall - LHS | 4.44d | 2014-05-19 | 2014-05-27 | BEW/ST/IC10/1190 | 399.83d | 0d | Excavator (Bucket & Breaker) [9 h]; Unclassified structural excavation (depth 0m to 2.0m) [211 M3]; Mason [9 h]; Helper [40 h] |  |  |  | 0 |
| BEW/ST/IC10/1260 |  | Foundation For MSE Wall including Blinding LHS | 12d | 2014-05-27 | 2014-06-12 | BEW/ST/IC10/1220 | 399.83d | 0d | Boom Placers [9 h]; Unreinforced Concrete 16/20 [30 M3]; Concrete 40/20 MS7 in Retaining Wall [12 M3]; Mason [36 h]; Helper [72 h]; Carpenter [36 h]; Steel Fitter [36 h]; Crane [9 h] |  |  |  | 36 |
| BEW/ST/IC10/1310 |  | Fixing of MSE Walls Pannels RHS | 24d | 2014-06-05 | 2014-07-09 | BEW/ST/MS/2000 SS+25d, BEW/ST/IC10/1210 | 428.28d | 0d | Crane [18 h]; MSREWs [500 Sqm]; Standard Coping for MSERWs [10 LM]; Mason [18 h]; Helper [72 h]; Carpenter [36 h] |  | 124 | 120 days | 0 |
| BEW/ST/IC10/1320 |  | Earth filling & Embankment Preparation RHS | 21d | 2014-06-05 | 2014-07-06 | BEW/ST/IC10/1310 SS | 428.28d | 0d | Tipper (18 M3) [36 h]; Water Tanker (10K Gal) [9 h]; Motor Grader [9 h]; Vibratory Roller [18 h]; Borrow excavation to embankment [32000 M3]; Mason [18 h]; Helper [72 h]; Storm Sewer, HDPE Pipe [294 LM]; Storm Sewer, HDPE Pipe [10 LM]; Storm Sewer, RC Pipe [10 LM]; Storm Sewer, RC Pipe [100 LM]; DI Grating [2 Number]; Cerb Inlet [5 Number] |  | 125 | 125 days | 0 |
| BEW/ST/IC10/1350 |  | Fixing of MSE Walls Pannels LHS | 24d | 2014-06-12 | 2014-07-16 | BEW/ST/IC10/1260 | 399.83d | 0d | Crane [18 h]; MSREWs [500 Sqm]; Standard Coping for MSERWs [10 LM]; Mason [18 h]; Helper [72 h]; Carpenter [36 h] |  |  |  | 0 |
| BEW/ST/IC10/1420 |  | Granular Sub-Base RHS | 15d | 2014-07-06 | 2014-08-03 | BEW/ST/IC10/1320 | 428.28d | 0d | Tipper (18 M3) [36 h]; Motor Grader [9 h]; Vibratory Roller [9 h]; Water Tanker (10K Gal) [9 h]; Granular Sub-Base Course (Class B) [5100 M3]; Mason [18 h]; Helper [54 h] |  | 126 | 21 days | 0 |
| BEW/ST/IC10/1450 |  | Earth filling & Embankment Preparation LHS | 21d | 2014-07-16 | 2014-08-21 | BEW/ST/IC10/1350 | 399.83d | 0d | Tipper (18 M3) [36 h]; Water Tanker (10K Gal) [9 h]; Motor Grader [9 h]; Vibratory Roller [18 h]; Borrow excavation to embankment [16000 M3]; Mason [18 h]; Helper [72 h]; Precast Concrete Pipe Culvert (dia 1000mm) [50 LM]; Storm Sewer, HDPE Pipe [294 LM]; Storm Sewer, HDPE Pipe [10 LM]; Storm Sewer, RC Pipe [10 LM]; Storm Sewer, RC Pipe [100 LM]; DI Grating [2 Number]; Cerb Inlet [5 Number] |  |  |  | 0 |
| BEW/ST/IC10/1480 |  | Concreting of Approch Slab RHS | 9d | 2014-08-03 | 2014-08-14 | BEW/ST/IC10/1420 | 428.28d | 28.44d | Boom Placers [9 h]; Concrete Class 40/20 MS7 in Approach Slab [20 M3]; Steel Grade 500 for IC, WB, OP [15.14 Tonne]; Mason [18 h]; Steel Fitter [18 h]; Carpenter [18 h]; Helper [36 h] |  |  |  | 0 |
| BEW/ST/IC10/1530 |  | Granular Sub-Base LHS | 15d | 2014-08-21 | 2014-09-11 | BEW/ST/IC10/1450 | 399.83d | 0d | Tipper (18 M3) [36 h]; Water Tanker (10K Gal) [9 h]; Motor Grader [9 h]; Vibratory Roller [9 h]; Granular Sub-Base Course (Class B) [5100 M3]; Mason [18 h]; Helper [54 h] |  |  |  | 0 |
| BEW/ST/IC10/1570 |  | Concreting of Approch Slab LHS | 9d | 2014-09-11 | 2014-09-24 | BEW/ST/IC10/1530 | 399.83d | 0d | Boom Placers [9 h]; Steel Grade 500 for IC, WB, OP [15.14 Tonne]; Concrete Class 40/20 MS7 in Approach Slab [20 M3]; Mason [18 h]; Helper [36 h]; Carpenter [18 h]; Steel Fitter [18 h] |  |  |  | 0 |
| BEW/ST/IC10/1610 |  | Aggregate Base Course | 10d | 2014-09-24 | 2014-10-12 | BEW/ST/IC10/1420, BEW/ST/IC10/1530, BEW/ST/IC10/1570, BEW/ST/IC10/1480 | 399.83d | 0d | Finishing Paver (Vogalle) [10 h]; Tandem Roller [10 h]; Tipper (18 M3) [54 h]; Crushed Aggregate Base Course (Class A) [1249 M3]; Mason [18 h]; Helper [72 h] |  | 127 | 14 days | 0 |
| BEW/ST/IC10/1660 |  | Crash Barrier & Median Works | 20d | 2014-10-12 | 2014-11-09 | BEW/ST/IC10/1610 | 399.83d | 51.56d | Boom Placers [9 h]; Crane [9 h]; Concrete Barrier Parapet on MSERWs [60 LM]; Mason [36 h]; Helper [72 h]; Carpenter [36 h]; Steel Fitter [36 h]; Concrete Barrier for Bridge [180 LM] |  | 128 | 28 days | 0 |
| BEW/ST/IC10/1780 |  | Bituminous Base Course Including IC | 10d | 2014-12-23 | 2015-01-07 | BEW/ST/IC10/1750, BEW/ST/IC10/1610, BEW/ST/IC10/1770 | 348.28d | 0d | Bituminous Sprayer [9 h]; Finishing Paver (Vogalle) [10 h]; Pnematic Tyre Rollar [20 h]; Air Compressor 200 CFT [18 h]; Water Tanker (5K Gal) [10 h]; Tractor Broomer [9 h]; Bituminous Prime Coat [8685 Kilogram]; Bituminous Tack Coat [12612 Kilogram]; Bituminous Base Course [1226 M3]; Mason [18 h]; Helper [72 h] | 3,531.36 | 129 | 12 days | 0 |
| BEW/ST/IC10/1800 |  | Bituminous Wearing Course | 10d | 2015-01-07 | 2015-01-21 | BEW/ST/IC10/1780 | 348.28d | 0d | Tractor Broomer [9 h]; Finishing Paver (Vogalle) [10 h]; Pnematic Tyre Rollar [20 h]; Tandem Roller [10 h]; Water Tanker (5K Gal) [10 h]; Skid Wheel Loader (Bob Cat) [10 h]; Bituminous Sprayer [9 h]; Bituminous Tack Coat [12612 Kilogram]; Bituminous Wearing Course [410 M3]; Mason [18 h]; Helper [72 h] | 3,531.36 | 130 | 12 days | 0 |
| BEW/ST/IC10/1820 |  | Miscellaneous Works | 10d | 2015-01-21 | 2015-02-04 | BEW/ST/IC10/1660, BEW/ST/IC10/1800 | 348.28d | 0d | Mason [18 h]; Helper [90 h]; Strip Seal Type Expansion Joint [19.5 LM] |  | 132 | 12 days | 0 |

| ID | WBS | Activity | Duration | Start | Finish | Predecessors | Planned start | Planned finish | Total float | Free float | Resources | Cost | MSP Activity ID | EAM Contact Person | DIFF | user_text1 |
| --- | --- | --- | --- | --- | --- | --- | --- | --- | --- | --- | --- | --- | --- | --- | --- | --- |
|  | 4 | **Roadworks for Interchange LHS of BEW** |  | 2014-05-27 | 2015-02-18 |  |  |  |  |  |  |  |  |  |  |  |
| BEW/ST/IC10/1270 |  | Excavation for MSE Wall - RHS | 4d | 2014-05-27 | 2014-06-02 | BEW/ST/IC10/1190, BEW/ST/IC10/1220 |  |  | 401.39d | 0d | Unclassified structural excavation (depth 0m to 2.0m) [211 M3]; Excavator (Bucket & Breaker) [9 h]; Mason [9 h]; Helper [36 h] |  | 122 | 29 days | 0 |  |
| BEW/ST/IC10/1280 |  | Foundation For MSE Wall including Blinding RHS | 12d | 2014-06-02 | 2014-06-18 | BEW/ST/IC10/1270 |  |  | 429.83d | 0d | Boom Placers [9 h]; Unreinforced Concrete 16/20 [30 M3]; Concrete 40/20 MS7 in Retaining Wall [12 M3]; Mason [36 h]; Helper [72 h]; Steel Fitter [36 h]; Carpenter [36 h]; Crane [9 h] |  | 123 | 59 days | 36 |  |
| BEW/ST/IC10/1290 |  | Excavation for MSE Wall - LHS | 4.44d | 2014-06-02 | 2014-06-08 | BEW/ST/IC10/1270 |  |  | 401.39d | 0d | Excavator (Bucket & Breaker) [9 h]; Unclassified structural excavation (depth 0m to 2.0m) [211 M3]; Mason [9 h]; Helper [40 h] |  |  |  | 0 |  |
| BEW/ST/IC10/1330 |  | Foundation For MSE Wall including Blinding LHS | 12d | 2014-06-08 | 2014-06-24 | BEW/ST/IC10/1290 |  |  | 401.39d | 0d | Boom Placers [9 h]; Unreinforced Concrete 16/20 [30 M3]; Concrete 40/20 MS7 in Retaining Wall [12 M3]; Mason [36 h]; Helper [72 h]; Carpenter [36 h]; Steel Fitter [36 h]; Crane [9 h] |  |  |  | 36 |  |
| BEW/ST/IC10/1360 |  | Fixing of MSE Walls Pannels RHS | 24d | 2014-06-18 | 2014-07-22 | BEW/ST/IC10/1280 |  |  | 429.83d | 0d | Crane [18 h]; MSREWs [500 Sqm]; Standard Coping for MSERWs [10 LM]; Mason [18 h]; Helper [72 h]; Carpenter [36 h] |  | 124 | 120 days | 0 |  |
| BEW/ST/IC10/1370 |  | Earth filling & Embankment Preparation RHS | 21d | 2014-06-18 | 2014-07-17 | BEW/ST/IC10/1360 SS |  |  | 429.83d | 0d | Tipper (18 M3) [36 h]; Water Tanker (10K Gal) [9 h]; Motor Grader [9 h]; Vibratory Roller [18 h]; Borrow excavation to embankment [32000 M3]; Mason [18 h]; Helper [72 h]; Storm Sewer, HDPE Pipe [294 LM]; Storm Sewer, HDPE Pipe [10 LM]; Storm Sewer, RC Pipe [100 LM]; DI Grating [2 Number]; Cerb Inlet [5 Number] |  | 125 | 125 days | 0 |  |
| BEW/ST/IC10/1380 |  | Fixing of MSE Walls Pannels LHS | 24d | 2014-06-24 | 2014-08-04 | BEW/ST/IC10/1330 |  |  | 401.39d | 0d | Crane [18 h]; MSREWs [500 Sqm]; Standard Coping for MSERWs [10 LM]; Mason [18 h]; Helper [72 h]; Carpenter [36 h] |  |  |  | 0 |  |
| BEW/ST/IC10/1460 |  | Granular Sub-Base RHS | 15d | 2014-07-17 | 2014-08-14 | BEW/ST/IC10/1370 |  |  | 429.83d | 0d | Tipper (18 M3) [36 h]; Motor Grader [9 h]; Vibratory Roller [9 h]; Water Tanker (10K Gal) [9 h]; Granular Sub-Base Course (Class B) [5100 M3]; Mason [18 h]; Helper [54 h] |  | 126 | 21 days | 0 |  |
| BEW/ST/IC10/1490 |  | Earth filling & Embankment Preparation LHS | 21d | 2014-08-04 | 2014-09-02 | BEW/ST/IC10/1380 |  |  | 401.39d | 0d | Tipper (18 M3) [36 h]; Water Tanker (10K Gal) [9 h]; Motor Grader [9 h]; Vibratory Roller [18 h]; Borrow excavation to embankment [16000 M3]; Mason [18 h]; Helper [72 h]; Precast Concrete Pipe Culvert (dia 1000mm) [50 LM]; Storm Sewer, HDPE Pipe [294 LM]; Storm Sewer, HDPE Pipe [10 LM]; Storm Sewer, RC Pipe [100 LM]; DI Grating [2 Number]; Cerb Inlet [5 Number] |  |  |  | 0 |  |
| BEW/ST/IC10/1510 |  | Concreting of Approch Slab RHS | 9d | 2014-08-14 | 2014-08-27 | BEW/ST/IC10/1460 |  |  | 429.83d | 28.44d | Boom Placers [9 h]; Concrete Class 40/20 MS7 in Approach Slab [20 M3]; Steel Grade 500 for IC, WB, OP [15.14 Tonne]; Mason [18 h]; Steel Fitter [18 h]; Carpenter [18 h]; Helper [36 h] |  |  |  | 0 |  |
| BEW/ST/IC10/1550 |  | Granular Sub-Base LHS | 15d | 2014-09-02 | 2014-09-23 | BEW/ST/IC10/1490 |  |  | 401.39d | 0d | Tipper (18 M3) [36 h]; Water Tanker (10K Gal) [9 h]; Motor Grader [9 h]; Vibratory Roller [9 h]; Granular Sub-Base Course (Class B) [4100 M3]; Mason [18 h]; Helper [54 h] |  |  |  | 0 |  |
| BEW/ST/IC10/1600 |  | Concreting of Approch Slab LHS | 9d | 2014-09-23 | 2014-10-08 | BEW/ST/IC10/1550 |  |  | 401.39d | 0d | Boom Placers [9 h]; Steel Grade 500 for IC, WB, OP [15.14 Tonne]; Concrete Class 40/20 MS7 in Approach Slab [20 M3]; Mason [18 h]; Helper [36 h]; Carpenter [18 h]; Steel Fitter [18 h] |  |  |  | 0 |  |
| BEW/ST/IC10/1630 |  | Aggregate Base Course | 10d | 2014-10-08 | 2014-10-22 | BEW/ST/IC10/1460, BEW/ST/IC10/1550, BEW/ST/IC10/1600, BEW/ST/IC10/1510 |  |  | 401.39d | 0d | Finishing Paver (Vogalle) [10 h]; Tandem Roller [10 h]; Tipper (18 M3) [54 h]; Crushed Aggregate Base Course (Class A) [1249 M3]; Mason [18 h]; Helper [72 h] |  | 127 | 14 days | 0 |  |
| BEW/ST/IC10/1680 |  | Crash Barrier & Median Works | 20d | 2014-10-22 | 2014-11-20 | BEW/ST/IC10/1630 |  |  | 401.39d | 53.11d | Boom Placers [9 h]; Crane [9 h]; Concrete Barrier Parapet on MSERWs [60 LM]; Mason [18 h]; Helper [72 h]; Carpenter [36 h]; Steel Fitter [36 h]; Concrete Barrier for Bridge [180 LM] |  | 128 | 28 days | 0 |  |
| BEW/ST/IC10/1790 |  | Bituminous Base Course Including IC | 10d | 2014-12-23 | 2015-01-07 | BEW/ST/IC10/1630, BEW/ST/IC10/1780 SS |  |  | 358.28d | 0d | Bituminous Sprayer [9 h]; Finishing Paver (Vogalle) [10 h]; Pnematic Tyre Rollar [20 h]; Air Compressor 200 CFT [18 h]; Water Tanker (5K Gal) [10 h]; Tractor Broomer [9 h]; Bituminous Prime Coat [28871 Kilogram]; Bituminous Tack Coat [19254 Kilogram]; Bituminous Base Course [4087 M3]; Mason [18 h]; Helper [72 h] | 5,391.12 | 129 | 12 days | 0 |  |
| BEW/ST/IC10/1810 |  | Bituminous Wearing Course | 10d | 2015-01-07 | 2015-01-21 | BEW/ST/IC10/1790 |  |  | 358.28d | 10d | Tractor Broomer [9 h]; Finishing Paver (Vogalle) [10 h]; Pnematic Tyre Rollar [20 h]; Tandem Roller [10 h]; Water Tanker (5K Gal) [10 h]; Skid Wheel Loader (Bob Cat) [10 h]; Bituminous Sprayer [9 h]; Bituminous Tack Coat [19254 Kilogram]; Bituminous Wearing Course [1362 M3]; Mason [18 h]; Helper [72 h] | 5,391.12 | 130 | 12 days | 0 |  |
| BEW/ST/IC10/1830 |  | Miscellaneous Works | 10d | 2015-02-04 | 2015-02-18 | BEW/ST/IC10/1680, BEW/ST/IC10/1810, BEW/ST/IC10/1820 |  |  | 348.28d | 0d | Mason [18 h]; Helper [90 h]; Strip Seal Type Expansion Joint [19.5 LM] |  | 132 | 12 days | 0 |  |
|  | 4 | **Overpasses** |  | 2014-03-27 | 2015-02-08 |  |  |  |  |  |  |  |  |  |  |  |
|  | 5 | **Overpass 14 @ Sta. 129+593** |  | 2014-03-27 | 2015-02-08 |  |  |  |  |  |  |  |  |  |  |  |
|  | 1 | **Structure** |  | 2014-03-27 | 2014-12-11 |  |  |  |  |  |  |  |  |  |  |  |
|  | 1 | **Abutment Walls A1** |  | 2014-03-27 | 2014-05-14 |  |  |  |  |  |  |  |  |  |  |  |
| BEW/ST/OP14/4000 |  | Structural Excavation | 4d | 2014-03-27 | 2014-04-03 | BEW/ST/PL/2120 | 2014-03-27 | 2014-04-02 | 356.72d | 0d | Excavator (Bucket & Breaker) [9 h]; Unclassified structural excavation (depth - 4.0m) [261.77 M3]; Tipper (18 M3) [18 h]; Helper [54 h]; Unclassified structural excavation (depth 0m to 2.0m) [211 M3]; Unclassified structural excavation (depth >2.0m to <4.0m) [261.77 M3]; Unclassified structural excavation (under water) [300 M3] |  |  |  | -4 |  |
| BEW/ST/OP14/4010 |  | PCC & Pile Head Breaking | 6d | 2014-04-03 | 2014-04-13 | BEW/ST/OP14/4000 |  |  | 356.72d | 0d | Helper [54 h]; Unreinforced Concrete 16/20 [2.65 M3]; Mason [18 h] |  | 47 | 14 days | 0 | G1 |
| BEW/ST/OP14/4020 |  | Concreting for Pile Cap / Abutment Foundation | 9d | 2014-04-13 | 2014-04-24 | BEW/ST/OP14/4010 |  |  | 377.61d | 0d | Helper [54 h]; RCC Class 45/20 MS7 in Bridge abutment IC OP [31 M3]; Steel Grade 500 for IC, WB, OP [12.82 Tonne]; Mason [18 h]; Steel Fitter [36 h]; Carpenter [36 h]; Crane [9 h]; Boom Placers [9 h] |  | 48 | 11 days | 0 | G1 |
| BEW/ST/OP14/4050 |  | Conceting including Formwork & Reinforcement fixing for Abutment | 14d | 2014-04-24 | 2014-05-14 | BEW/ST/OP14/4020 |  |  | 377.61d | 20.89d | Helper [54 h]; RCC Class 45/20 MS7 in Bridge abutment IC OP [6 M3]; Steel Grade 500 for IC, WB, OP [2 Tonne]; Mason [18 h]; Steel Fitter [36 h]; Carpenter [36 h]; Boom Placers [9 h]; Crane [9 h] |  | 49 | 18 days | 0 | G1 |

Notes:
- BEW/ST/OP14/4010: Description: G1
- BEW/ST/OP14/4020: Description: G1
- BEW/ST/OP14/4050: Description: G1

| ID | WBS | Activity | Duration | Start | Finish | Predecessors | Planned start | Planned finish | Total float | Free float | Resources | DIFF | user_text1 | MSP Activity ID | EAM Contact Person |
| --- | --- | --- | --- | --- | --- | --- | --- | --- | --- | --- | --- | --- | --- | --- | --- |
|  | 2 | **Abutment Walls A2** |  | 2014-04-13 | 2014-05-29 |  |  |  |  |  |  |  |  |  |  |
| BEW/ST/OP14/4030 |  | Structural Excavation | 4d | 2014-04-13 | 2014-04-17 | BEW/ST/OP14/4010 |  |  | 356.72d | 0d | Excavator (Bucket & Breaker) [9 h]; Unclassified structural excavation (depth 0m to 2.0m) [211 M3]; Unclassified structural excavation (depth >2.0m to <4.0m) [261.77 M3]; Unclassified structural excavation (depth - 4.0m) [314 M3]; Tipper (18 M3) [18 h]; Helper [54 h]; Unclassified structural excavation (under water) [255 M3] | -4 |  |  |  |
| BEW/ST/OP14/4040 |  | PCC & Pile Head Breaking | 6d | 2014-04-17 | 2014-04-27 | BEW/ST/OP14/4030 |  |  | 356.72d | 0d | Helper [54 h]; Unreinforced Concrete 16/20 [2.65 M3]; Mason [18 h] | 0 | G1 | 47 | 14 days |
| BEW/ST/OP14/4060 |  | Concreting for Pile Cap / Abutment Foundation | 9d | 2014-04-27 | 2014-05-08 | BEW/ST/OP14/4040 |  |  | 367.17d | 0d | Helper [54 h]; RCC Class 45/20 MS7 in Bridge abutment IC OP [31 M3]; Steel Grade 500 for IC, WB, OP [12.82 Tonne]; Mason [18 h]; Steel Fitter [36 h]; Carpenter [36 h]; Crane [9 h]; Boom Placers [9 h] | 0 | G1 | 48 | 11 days |
| BEW/ST/OP14/4120 |  | Conceting including Formwork & Reinforcement fixing for Abutment | 14d | 2014-05-08 | 2014-05-29 | BEW/ST/OP14/4060 |  |  | 367.17d | 10.44d | Helper [54 h]; RCC Class 45/20 MS7 in Bridge abutment IC OP [6 M3]; Steel Grade 500 for IC, WB, OP [2 Tonne]; Mason [18 h]; Steel Fitter [36 h]; Carpenter [36 h]; Boom Placers [9 h]; Crane [9 h] | 0 | G1 | 49 | 18 days |
|  | 3 | **Pier P 1** |  | 2014-04-27 | 2014-06-15 |  |  |  |  |  |  |  |  |  |  |
| BEW/ST/OP14/4070 |  | Structural Excavation | 4d | 2014-04-27 | 2014-05-04 | BEW/ST/OP14/4040 | 2014-04-27 | 2014-05-01 | 356.72d | 0d | Excavator (Bucket & Breaker) [9 h]; Unclassified structural excavation (depth 0m to 2.0m) [87.26 M3]; Unclassified structural excavation (depth >2.0m to <4.0m) [87.26 M3]; Unclassified structural excavation (depth - 4.0m) [87.26 M3]; Tipper (18 M3) [18 h]; Helper [54 h] | -4 |  |  |  |
| BEW/ST/OP14/4090 |  | PCC & Pile Head Breaking | 6d | 2014-05-04 | 2014-05-12 | BEW/ST/OP14/4070 |  |  | 356.72d | 0d | Helper [54 h]; Unreinforced Concrete 16/20 [15.78 M3]; Mason [18 h] | 0 | G1 | 47 | 14 days |
| BEW/ST/OP14/4130 |  | Concreting for Pile Cap / Pier Foundation | 9d | 2014-05-12 | 2014-05-26 | BEW/ST/OP14/4090 |  |  | 356.72d | 0d | Helper [54 h]; Concrete 45/20 MS7 in Pile Caps & Footings (IC OP) [210 M3]; Steel Grade 500 for IC, WB, OP [50.5 Tonne]; Mason [18 h]; Steel Fitter [36 h]; Carpenter [36 h]; Crane [9 h]; Boom Placers [9 h] | 0 | G1 | 48 | 11 days |
| BEW/ST/OP14/4180 |  | Conceting including Formwork & Reinforcement fixing for Pier | 14d | 2014-05-26 | 2014-06-15 | BEW/ST/OP14/4130 |  |  | 356.72d | 0d | Helper [54 h]; Concrete 45/20 MS7 in Pier Columns & Caps (IC OP) [39 M3]; Steel Grade 500 for IC, WB, OP [5.73 Tonne]; Mason [18 h]; Steel Fitter [36 h]; Carpenter [36 h]; Boom Placers [9 h]; Crane [9 h]; GRP Cladding [8 Sqm] | 0 | G1 | 49 | 18 days |
|  | 4 | **Girder Casting** |  | 2014-06-15 | 2014-12-11 |  |  |  |  |  |  |  |  |  |  |
|  | 1 | **Soffit and Wall** |  | 2014-06-15 | 2014-09-29 |  |  |  |  |  |  |  |  |  |  |
| BEW/ST/OP14/4260 |  | Staging For girder | 14d | 2014-06-15 | 2014-07-03 | BEW/ST/OP14/4050, BEW/ST/OP14/4120, BEW/ST/OP14/4180 |  |  | 356.72d | 0d | Helper [108 h]; Mason [18 h]; Steel Fitter [72 h]; Carpenter [72 h]; Stagging Materials (in M3) [72000 h] | 0 |  | 67 | 20 days |
| BEW/ST/OP14/4280 |  | Fixing of the Bearing | 4d | 2014-07-03 | 2014-07-09 | BEW/ST/OP14/4260 |  |  | 366.72d | 10d | Helper [108 h]; Spherical Bearing [3 Number] | 0 |  | 4736 | 6 days |
| BEW/ST/OP14/4290 |  | Bottom Formwork along with Sides of Box Girder | 14d | 2014-07-03 | 2014-07-24 | BEW/ST/OP14/4260 |  |  | 356.72d | 0d | Helper [72 h]; Crane [14 h]; Interchange Fishbelly Shutter [9 h] | 0 |  | 68 | 20 days |
| BEW/ST/OP14/4340 |  | Reinforcement Fixing for Base & Sides of Box Girder | 14d | 2014-07-24 | 2014-08-19 | BEW/ST/OP14/4290, BEW/ST/OP14/4280 |  |  | 356.72d | 0d | Helper [108 h]; Crane [9 h]; Steel Grade 500 for IC, WB, OP [60.98 Tonne]; Mason [18 h]; Steel Fitter [72 h]; Carpenter [72 h] | 0 |  | 69 | 18 days |
| BEW/ST/OP14/4370 |  | Formwork for Inner Sides & Wall | 14d | 2014-08-19 | 2014-09-08 | BEW/ST/OP14/4340 |  |  | 356.72d | 0d | Helper [108 h]; Crane [14 h]; Mason [18 h]; Steel Fitter [72 h]; Carpenter [72 h]; Interchange Fishbelly Shutter [9 h] | 0 |  | 72 | 20 days |
| BEW/ST/OP14/4400 |  | Reinforcement fixing at Sides | 14d | 2014-09-08 | 2014-09-28 | BEW/ST/OP14/4370 |  |  | 356.72d | 0d | Helper [108 h]; Crane [9 h]; Carpenter [72 h]; Steel Fitter [72 h]; Mason [18 h]; Steel Grade 500 for IC, WB, OP [22 Tonne]; Interchange Fishbelly Shutter [9 h] | 0 |  | 73 | 20 days |
| BEW/ST/OP14/4440 |  | Concreting at sides | 1d | 2014-09-28 | 2014-09-29 | BEW/ST/OP14/4280, BEW/ST/OP14/4400 |  |  | 356.72d | 0d | Helper [108 h]; Interchange Fishbelly Shutter [9 h]; Carpenter [72 h]; Steel Fitter [72 h]; Mason [18 h]; Post-tensioned Concrete, 50/20 MS7 Box Girders [416.03 M3]; Metal Access door for box girder bridges [3 Number] | 0 |  | 74 | 1 days |
|  | 2 | **Top Slab of Box Girder** |  | 2014-10-02 | 2014-12-11 |  |  |  |  |  |  |  |  |  |  |
| BEW/ST/OP14/4460 |  | Shuttering of Top Slab | 15d | 2014-10-02 | 2014-10-27 | BEW/ST/OP14/4440 FS+3d |  |  | 356.72d | 0d | Helper [108 h]; Crane [9 h]; Interchange Fishbelly Shutter [9 h]; Mason [18 h]; Steel Fitter [72 h]; Carpenter [72 h] | 0 |  | 76 | 21 days |
| BEW/ST/OP14/4480 |  | Reinforcement fixing for Top Slab | 14d | 2014-10-14 | 2014-11-03 | BEW/ST/OP14/4460 SS+6d |  |  | 356.72d | 0d | Helper [108 h]; Crane [9 h]; Interchange Fishbelly Shutter [9 h]; Mason [18 h]; Steel Fitter [72 h]; Carpenter [72 h]; Steel Grade 500 for IC, WB, OP [20 Tonne] | 0 |  | 77 | 20 days |
| BEW/ST/OP14/4490 |  | Concreting of Top Slab | 1d | 2014-11-03 | 2014-11-04 | BEW/ST/OP14/4480 |  |  | 356.72d | 0d | Helper [108 h]; Crane [9 h]; Interchange Fishbelly Shutter [9 h]; Mason [18 h]; Steel Fitter [72 h]; Carpenter [72 h]; Post-tensioned Concrete, 50/20 MS7 Box Girders [202 M3] | 0 |  | 78 | 1 days |
| BEW/ST/OP14/4510 |  | Removal of Staging | 6d | 2014-11-19 | 2014-11-27 | BEW/ST/OP14/4500 |  |  | 356.72d | 0d | Helper [108 h]; Crane [9 h]; Mason [18 h]; Steel Fitter [72 h]; Carpenter [72 h] | 0 |  | 79 | 8 days |
| BEW/ST/OP14/4520 |  | Miscellaneous Works | 10d | 2014-11-27 | 2014-12-11 | BEW/ST/OP14/4510 |  |  | 356.72d | 0d | Helper [108 h]; Mason [18 h]; Steel Fitter [72 h]; Carpenter [72 h] | 0 |  | 80 | 12 days |

Notes:
- BEW/ST/OP14/4040: Description: G1
- BEW/ST/OP14/4060: Description: G1
- BEW/ST/OP14/4120: Description: G1
- BEW/ST/OP14/4090: Description: G1
- BEW/ST/OP14/4130: Description: G1
- BEW/ST/OP14/4180: Description: G1

| ID | WBS | Activity | Duration | Start | Finish | Predecessors | Total float | Free float | Resources | Cost | MSP Activity ID | EAM Contact Person | DIFF |
| --- | --- | --- | --- | --- | --- | --- | --- | --- | --- | --- | --- | --- | --- |
|  | 3 | **Girder Stressing** |  | 2014-11-11 | 2014-11-19 |  |  |  |  |  |  |  |  |
| BEW/ST/OP14/4500 |  | Stressing of the Structure including Grouting | 5d | 2014-11-11 | 2014-11-19 | BEW/ST/OP14/4490 FS+5d | 356.72d | 0d | Interchange Fishbelly Shutter [9 h]; Prestressing Cables - 0.6" [9.26 Tonne]; Mason [18 h]; Steel Fitter [72 h]; Carpenter [72 h]; Helper [108 h] |  | 4741 | 8 days | 0 |
|  | 3 | **Roadworks for Overpass RHS of BEW** |  | 2014-05-04 | 2015-01-25 |  |  |  |  |  |  |  |  |
| BEW/ST/OP14/4080 |  | Excavation for MSE Wall - RHS | 4d | 2014-05-04 | 2014-05-08 | BEW/ST/OP14/4070 | 407.28d | 0d | Unclassified structural excavation (depth 0m to 2.0m) [211 M3]; Excavator (Bucket & Breaker) [9 h]; Mason [9 h]; Helper [36 h] |  | 122 | 29 days | 0 |
| BEW/ST/OP14/4100 |  | Foundation For MSE Wall including Blinding RHS | 12d | 2014-05-08 | 2014-05-27 | BEW/ST/OP14/4080 | 435.72d | 0d | Boom Placers [9 h]; Unreinforced Concrete 16/20 [30 M3]; Concrete 40/20 MS7 in Retaining Wall [12 M3]; Mason [36 h]; Helper [72 h]; Steel Fitter [36 h]; Carpenter [36 h]; Crane [9 h] |  | 123 | 59 days | 36 |
| BEW/ST/OP14/4110 |  | Excavation for MSE Wall - LHS | 4.44d | 2014-05-08 | 2014-05-14 | BEW/ST/OP14/4080 | 407.28d | 0d | Excavator (Bucket & Breaker) [9 h]; Unclassified structural excavation (depth 0m to 2.0m) [211 M3]; Mason [9 h]; Helper [40 h] |  |  |  | 0 |
| BEW/ST/OP14/4140 |  | Foundation For MSE Wall including Blinding LHS | 12d | 2014-05-14 | 2014-06-02 | BEW/ST/OP14/4110 | 407.28d | 0d | Boom Placers [9 h]; Unreinforced Concrete 16/20 [30 M3]; Concrete 40/20 MS7 in Retaining Wall [12 M3]; Mason [36 h]; Helper [72 h]; Carpenter [36 h]; Steel Fitter [36 h]; Crane [9 h] |  |  |  | 36 |
| BEW/ST/OP14/4190 |  | Fixing of MSE Walls Pannels RHS | 24d | 2014-05-27 | 2014-06-30 | BEW/ST/OP14/4100 | 435.72d | 0d | Crane [18 h]; MSREWs [500 Sqm]; Standard Coping for MSERWs [10 LM]; Mason [18 h]; Helper [72 h]; Carpenter [36 h] |  | 124 | 120 days | 0 |
| BEW/ST/OP14/4200 |  | Earth filling & Embankment Preparation RHS | 21d | 2014-05-27 | 2014-06-25 | BEW/ST/OP14/4190 SS | 435.72d | 0d | Tipper (18 M3) [36 h]; Water Tanker (10K Gal) [9 h]; Motor Grader [9 h]; Vibratory Roller [18 h]; Borrow excavation to embankment [16000 M3]; Mason [18 h]; Helper [72 h] |  | 125 | 125 days | 0 |
| BEW/ST/OP14/4220 |  | Fixing of MSE Walls Pannels LHS | 24d | 2014-06-02 | 2014-07-06 | BEW/ST/OP14/4140 | 407.28d | 0d | Crane [18 h]; MSREWs [500 Sqm]; Standard Coping for MSERWs [10 LM]; Mason [18 h]; Helper [72 h]; Carpenter [36 h] |  |  |  | 0 |
| BEW/ST/OP14/4270 |  | Granular Sub-Base RHS | 15d | 2014-06-25 | 2014-07-16 | BEW/ST/OP14/4200 | 435.72d | 0d | Tipper (18 M3) [36 h]; Motor Grader [9 h]; Vibratory Roller [9 h]; Water Tanker (10K Gal) [9 h]; Granular Sub-Base Course (Class B) [4100 M3]; Mason [18 h]; Helper [54 h] |  | 126 | 21 days | 0 |
| BEW/ST/OP14/4300 |  | Earth filling & Embankment Preparation LHS | 21d | 2014-07-06 | 2014-08-11 | BEW/ST/OP14/4220 | 407.28d | 0d | Tipper (18 M3) [36 h]; Water Tanker (10K Gal) [9 h]; Motor Grader [9 h]; Vibratory Roller [18 h]; Borrow excavation to embankment [16000 M3]; Mason [18 h]; Helper [72 h] |  |  |  | 0 |
| BEW/ST/OP14/4320 |  | Concreting of Approch Slab RHS | 9d | 2014-07-16 | 2014-08-05 | BEW/ST/OP14/4270 | 435.72d | 28.44d | Boom Placers [9 h]; Concrete Class 40/20 MS7 in Approach Slab [10 M3]; Steel Grade 500 for IC, WB, OP [15.14 Tonne]; Mason [18 h]; Steel Fitter [18 h]; Carpenter [18 h]; Helper [36 h] |  |  |  | 0 |
| BEW/ST/OP14/4360 |  | Granular Sub-Base LHS | 15d | 2014-08-11 | 2014-09-01 | BEW/ST/OP14/4300 | 407.28d | 0d | Tipper (18 M3) [36 h]; Water Tanker (10K Gal) [9 h]; Motor Grader [9 h]; Vibratory Roller [9 h]; Granular Sub-Base Course (Class B) [4100 M3]; Mason [18 h]; Helper [54 h] |  |  |  | 0 |
| BEW/ST/OP14/4390 |  | Concreting of Approch Slab LHS | 9d | 2014-09-01 | 2014-09-14 | BEW/ST/OP14/4360 | 407.28d | 0d | Boom Placers [9 h]; Steel Grade 500 for IC, WB, OP [15.14 Tonne]; Concrete Class 40/20 MS7 in Approach Slab [10 M3]; Mason [18 h]; Helper [36 h]; Carpenter [18 h]; Steel Fitter [18 h] |  |  |  | 0 |
| BEW/ST/OP14/4420 |  | Aggregate Base Course | 10d | 2014-09-14 | 2014-09-28 | BEW/ST/OP14/4270, BEW/ST/OP14/4360, BEW/ST/OP14/4390, BEW/ST/OP14/4320 | 407.28d | 0d | Finishing Paver (Vogalle) [10 h]; Tandem Roller [10 h]; Tipper (18 M3) [54 h]; Crushed Aggregate Base Course (Class A) [1249 M3]; Mason [18 h]; Helper [72 h] |  | 127 | 14 days | 0 |
| BEW/ST/OP14/4450 |  | Crash Barrier & Median Works | 20d | 2014-09-28 | 2014-10-28 | BEW/ST/OP14/4420 | 407.28d | 50.56d | Boom Placers [9 h]; Crane [9 h]; Concrete Barrier Parapet on MSERWs [60 LM]; Mason [18 h]; Helper [72 h]; Carpenter [36 h]; Steel Fitter [36 h]; Concrete Barrier for Bridge [180 LM] |  | 128 | 28 days | 0 |
| BEW/ST/OP14/4530 |  | Bituminous Base Course Including IC | 10d | 2014-12-11 | 2014-12-25 | BEW/ST/OP14/4520, BEW/ST/OP14/4420 | 356.72d | 0d | Bituminous Sprayer [9 h]; Finishing Paver (Vogalle) [10 h]; Pnematic Tyre Rollar [20 h]; Air Compressor 200 CFT [18 h]; Water Tanker (5K Gal) [10 h]; Tractor Broomer [9 h]; Bituminous Prime Coat [7495 Kilogram]; Bituminous Tack Coat [2600 Kilogram]; Bituminous Base Course [1061 M3]; Mason [18 h]; Helper [72 h] | 728 | 129 | 12 days | 0 |
| BEW/ST/OP14/4550 |  | Bituminous Wearing Course | 10d | 2014-12-25 | 2015-01-11 | BEW/ST/OP14/4530 | 356.72d | 0d | Tractor Broomer [9 h]; Finishing Paver (Vogalle) [10 h]; Pnematic Tyre Rollar [20 h]; Tandem Roller [10 h]; Water Tanker (5K Gal) [10 h]; Skid Wheel Loader (Bob Cat) [10 h]; Bituminous Sprayer [9 h]; Bituminous Tack Coat [2600 Kilogram]; Bituminous Wearing Course [410 M3]; Mason [18 h]; Helper [72 h] | 728 | 130 | 12 days | 0 |
| BEW/ST/OP14/4570 |  | Miscellaneous Works | 10d | 2015-01-11 | 2015-01-25 | BEW/ST/OP14/4450, BEW/ST/OP14/4550 | 356.72d | 0d | Mason [18 h]; Helper [90 h]; Strip Seal Type Expansion joint -60mm [9 LM] |  | 132 | 12 days | 0 |
|  | 4 | **Roadworks for Overpass LHS of BEW** |  | 2014-05-14 | 2015-02-08 |  |  |  |  |  |  |  |  |
| BEW/ST/OP14/4150 |  | Excavation for MSE Wall - RHS | 4d | 2014-05-14 | 2014-05-20 | BEW/ST/OP14/4080, BEW/ST/OP14/4110 | 408.83d | 0d | Unclassified structural excavation (depth 0m to 2.0m) [211 M3]; Excavator (Bucket & Breaker) [9 h]; Mason [9 h]; Helper [36 h] |  | 122 | 29 days | 0 |
| BEW/ST/OP14/4160 |  | Foundation For MSE Wall including Blinding RHS | 12d | 2014-05-20 | 2014-06-08 | BEW/ST/OP14/4150 | 437.28d | 0d | Boom Placers [9 h]; Unreinforced Concrete 16/20 [30 M3]; Concrete 40/20 MS7 in Retaining Wall [12 M3]; Mason [36 h]; Helper [72 h]; Steel Fitter [36 h]; Carpenter [36 h]; Crane [9 h] |  | 123 | 59 days | 36 |
| BEW/ST/OP14/4170 |  | Excavation for MSE Wall - LHS | 4.44d | 2014-05-20 | 2014-05-28 | BEW/ST/OP14/4150 | 408.83d | 0d | Excavator (Bucket & Breaker) [9 h]; Unclassified structural excavation (depth 0m to 2.0m) [211 M3]; Mason [9 h]; Helper [40 h] |  |  |  | 0 |
| BEW/ST/OP14/4210 |  | Foundation For MSE Wall including Blinding LHS | 12d | 2014-05-28 | 2014-06-15 | BEW/ST/OP14/4170 | 408.83d | 0d | Boom Placers [9 h]; Unreinforced Concrete 16/20 [30 M3]; Concrete 40/20 MS7 in Retaining Wall [12 M3]; Mason [36 h]; Helper [72 h]; Carpenter [36 h]; Steel Fitter [36 h]; Crane [9 h] |  |  |  | 36 |
| BEW/ST/OP14/4230 |  | Fixing of MSE Walls Pannels RHS | 24d | 2014-06-08 | 2014-07-10 | BEW/ST/OP14/4160 | 437.28d | 0d | Crane [18 h]; MSREWs [500 Sqm]; Standard Coping for MSERWs [10 LM]; Mason [18 h]; Helper [72 h]; Carpenter [36 h] |  | 124 | 120 days | 0 |
| BEW/ST/OP14/4240 |  | Earth filling & Embankment Preparation RHS | 21d | 2014-06-08 | 2014-07-07 | BEW/ST/OP14/4230 SS | 437.28d | 0d | Tipper (18 M3) [36 h]; Water Tanker (10K Gal) [9 h]; Motor Grader [9 h]; Vibratory Roller [18 h]; Borrow excavation to embankment [16000 M3]; Mason [18 h]; Helper [72 h] |  | 125 | 125 days | 0 |
| BEW/ST/OP14/4250 |  | Fixing of MSE Walls Pannels LHS | 24d | 2014-06-15 | 2014-07-17 | BEW/ST/OP14/4210 | 408.83d | 0d | Crane [18 h]; MSREWs [500 Sqm]; Standard Coping for MSERWs [10 LM]; Mason [18 h]; Helper [72 h]; Carpenter [36 h] |  |  |  | 0 |
| BEW/ST/OP14/4310 |  | Granular Sub-Base RHS | 15d | 2014-07-07 | 2014-08-04 | BEW/ST/OP14/4240 | 437.28d | 0d | Tipper (18 M3) [36 h]; Motor Grader [9 h]; Vibratory Roller [9 h]; Water Tanker (10K Gal) [9 h]; Granular Sub-Base Course (Class B) [4100 M3]; Mason [18 h]; Helper [54 h] |  | 126 | 21 days | 0 |
| BEW/ST/OP14/4330 |  | Earth filling & Embankment Preparation LHS | 21d | 2014-07-17 | 2014-08-24 | BEW/ST/OP14/4250 | 408.83d | 0d | Tipper (18 M3) [36 h]; Water Tanker (10K Gal) [9 h]; Motor Grader [9 h]; Vibratory Roller [18 h]; Borrow excavation to embankment [16000 M3]; Mason [18 h]; Helper [72 h] |  |  |  | 0 |
| BEW/ST/OP14/4350 |  | Concreting of Approch Slab RHS | 9d | 2014-08-04 | 2014-08-17 | BEW/ST/OP14/4310 | 437.28d | 28.44d | Boom Placers [9 h]; Concrete Class 40/20 MS7 in Approach Slab [10 M3]; Steel Grade 500 for IC, WB, OP [15.14 Tonne]; Mason [18 h]; Steel Fitter [18 h]; Carpenter [18 h]; Helper [36 h] |  |  |  | 0 |
| BEW/ST/OP14/4380 |  | Granular Sub-Base LHS | 15d | 2014-08-24 | 2014-09-14 | BEW/ST/OP14/4330 | 408.83d | 0d | Tipper (18 M3) [36 h]; Water Tanker (10K Gal) [9 h]; Motor Grader [9 h]; Vibratory Roller [9 h]; Granular Sub-Base Course (Class B) [4100 M3]; Mason [18 h]; Helper [54 h] |  |  |  | 0 |
| BEW/ST/OP14/4410 |  | Concreting of Approch Slab LHS | 9d | 2014-09-14 | 2014-09-25 | BEW/ST/OP14/4380 | 408.83d | 0d | Boom Placers [9 h]; Steel Grade 500 for IC, WB, OP [15.14 Tonne]; Concrete Class 40/20 MS7 in Approach Slab [10 M3]; Mason [18 h]; Helper [36 h]; Carpenter [18 h]; Steel Fitter [18 h] |  |  |  | 0 |
| BEW/ST/OP14/4430 |  | Aggregate Base Course | 10d | 2014-09-25 | 2014-10-13 | BEW/ST/OP14/4310, BEW/ST/OP14/4380, BEW/ST/OP14/4410, BEW/ST/OP14/4350 | 408.83d | 0d | Finishing Paver (Vogalle) [10 h]; Tandem Roller [10 h]; Tipper (18 M3) [54 h]; Crushed Aggregate Base Course (Class A) [1249 M3]; Mason [18 h]; Helper [72 h] |  | 127 | 14 days | 0 |
| BEW/ST/OP14/4470 |  | Crash Barrier & Median Works | 20d | 2014-10-13 | 2014-11-10 | BEW/ST/OP14/4430 | 408.83d | 52.11d | Boom Placers [9 h]; Crane [9 h]; Concrete Barrier Parapet on MSERWs [60 LM]; Mason [18 h]; Helper [72 h]; Carpenter [36 h]; Steel Fitter [36 h]; Concrete Barrier for Bridge [180 LM] |  | 128 | 28 days | 0 |
| BEW/ST/OP14/4540 |  | Bituminous Base Course Including IC | 10d | 2014-12-11 | 2014-12-25 | BEW/ST/OP14/4430, BEW/ST/OP14/4530 SS | 366.72d | 0d | Bituminous Sprayer [9 h]; Finishing Paver (Vogalle) [10 h]; Pnematic Tyre Rollar [20 h]; Air Compressor 200 CFT [18 h]; Water Tanker (5K Gal) [10 h]; Tractor Broomer [9 h]; Bituminous Prime Coat [37317 Kilogram]; Bituminous Tack Coat [2825 Kilogram]; Bituminous Base Course [5282 M3]; Mason [18 h]; Helper [72 h] | 791 | 129 | 12 days | 0 |
| BEW/ST/OP14/4560 |  | Bituminous Wearing Course | 10d | 2014-12-25 | 2015-01-11 | BEW/ST/OP14/4540 | 366.72d | 10d | Tractor Broomer [9 h]; Finishing Paver (Vogalle) [10 h]; Pnematic Tyre Rollar [20 h]; Tandem Roller [10 h]; Water Tanker (5K Gal) [10 h]; Skid Wheel Loader (Bob Cat) [10 h]; Bituminous Sprayer [9 h]; Bituminous Tack Coat [2825 Kilogram]; Bituminous Wearing Course [1518 M3]; Mason [18 h]; Helper [72 h] | 791 | 130 | 12 days | 0 |
| BEW/ST/OP14/4580 |  | Miscellaneous Works | 10d | 2015-01-25 | 2015-02-08 | BEW/ST/OP14/4470, BEW/ST/OP14/4560, BEW/ST/OP14/4570 | 356.72d | 0d | Mason [18 h]; Helper [90 h]; Strip Seal Type Expansion joint -60mm [9 LM] |  | 132 | 12 days | 0 |

| ID | WBS | Activity | Duration | Start | Finish | Predecessors | Planned start | Planned finish | Total float | Free float | Resources | MSP Activity ID | EAM Contact Person | DIFF | user_text1 |
| --- | --- | --- | --- | --- | --- | --- | --- | --- | --- | --- | --- | --- | --- | --- | --- |
|  | 5 | **Wadi Bridges** |  | 2013-11-20 | 2014-11-06 |  |  |  |  |  |  |  |  |  |  |
|  | 5 | **Wadi Bridge @ Sta. 132+750** |  | 2013-11-20 | 2014-11-06 |  |  |  |  |  |  |  |  |  |  |
|  | 1 | **EB Structure** |  | 2013-11-20 | 2014-10-09 |  |  |  |  |  |  |  |  |  |  |
|  | 13 | **Casting of Girders** |  | 2013-11-20 | 2014-03-19 |  |  |  |  |  |  |  |  |  |  |
| BEW/ST/WB4/2000 |  | Bed Preparation and priliminary activities | 24d | 2013-11-20 | 2013-12-24 | BEW/DE/DS/1060, BEW/DE/DS/1120, BEW/PR/FC/1270 FS-25d |  |  | 439.06d | 0d |  | 2180 | 37 days | 0 |  |
| BEW/ST/WB4/2010 |  | Span 1-4 Casting of Precast Slabs | 24d | 2013-12-24 | 2014-01-29 | BEW/ST/WB4/2020 FF, BEW/ST/WB4/2000 |  |  | 576.06d | 0d | RCC Class 50/20 MS7 in Deck Slab [60 M3]; Steel Fitter [18 h]; Carpenter [18 h]; Helper [18 h] | 728 | 324 days | 0 |  |
| BEW/ST/WB4/2020 |  | Span 1-3 Casting of I-Girders including Threading, Placing Anchor Blocks & Stressing from Both Sides | 21d | 2013-12-24 | 2014-01-26 | BEW/ST/WB4/2000 |  |  | 439.06d | 0d | Boom Placers [9 h]; Crane [18 h]; I Girder Side Shuttering [18 h]; Mason [18 h]; Steel Fitter [72 h]; Carpenter [72 h]; Helper [108 h]; Post-tensioned Concrete, Class 50/20 MS7 I Girder [730 M3]; Steel Grade 500 for IC, WB, OP [260 Tonne]; Prestressing Cables - 0.6" [53 Tonne] | 727 | 690 days | 0 |  |
| BEW/ST/WB4/2040 |  | Span 4-6 Casting of I-Girders including Threading, Placing Anchor Blocks & Stressing from Both Sides | 24d | 2014-01-26 | 2014-02-27 | BEW/ST/WB4/2020 |  |  | 439.06d | 0d | Boom Placers [9 h]; Crane [18 h]; I Girder Side Shuttering [18 h]; Mason [18 h]; Steel Fitter [72 h]; Carpenter [72 h]; Helper [108 h]; Post-tensioned Concrete, Class 50/20 MS7 I Girder [730 M3]; Steel Grade 500 for IC, WB, OP [260 Tonne]; Prestressing Cables - 0.6" [53 Tonne] | 727 | 690 days | -27 |  |
| BEW/ST/WB4/2050 |  | Span 5-8 Casting of Precast Slabs | 24d | 2014-01-29 | 2014-03-04 | BEW/ST/WB4/2010 |  |  | 576.06d | 9d | RCC Class 50/20 MS7 in Deck Slab [60 M3]; Steel Fitter [18 h]; Carpenter [18 h]; Helper [18 h] | 728 | 324 days | 0 |  |
| BEW/ST/WB4/2090 |  | Span 7- 8 Casting of I-Girders including Threading, Placing Anchor Blocks & Stressing from Both Sides | 14d | 2014-02-27 | 2014-03-19 | BEW/ST/WB4/2040 |  |  | 439.06d | 0d | Boom Placers [9 h]; Crane [18 h]; I Girder Side Shuttering [18 h]; Mason [18 h]; Steel Fitter [72 h]; Carpenter [72 h]; Helper [108 h]; Post-tensioned Concrete, Class 50/20 MS7 I Girder [730 M3]; Steel Grade 500 for IC, WB, OP [260 Tonne]; Prestressing Cables - 0.6" [53 Tonne] | 727 | 690 days | 0 |  |
|  | 17 | **Pier P 01** |  | 2014-02-18 | 2014-04-07 |  |  |  |  |  |  |  |  |  |  |
| BEW/ST/WB4/1000 |  | Structural Excavation | 4d | 2014-02-18 | 2014-02-25 | BEW/ST/PL/2340 SS+36d, BEW/ST/PL/2390 SS | 2014-02-18 | 2014-02-24 | 420.28d | 0d | Excavator (Bucket & Breaker) [9 h]; Unclassified structural excavation (depth 0m to 2.0m) [87.26 M3]; Unclassified structural excavation (depth >2.0m to <4.0m) [87.26 M3]; Unclassified structural excavation (depth - 4.0m) [87.26 M3]; Tipper (18 M3) [18 h]; Helper [54 h]; Unclassified structural excavation (under water) [255 M3] |  |  | -4 |  |
| BEW/ST/WB4/1050 |  | PCC & Pile Head Breaking | 6d | 2014-02-25 | 2014-03-05 | BEW/ST/WB4/1000 |  |  | 433.61d | 0d | Helper [54 h]; Unreinforced Concrete 16/20 [12 M3]; Mason [18 h] | 47 | 14 days | 0 | G1 |
| BEW/ST/WB4/1210 |  | Concreting for Pile Cap / Pier Foundation | 9d | 2014-03-05 | 2014-03-18 | BEW/ST/WB4/1050 |  |  | 433.61d | 0d | Helper [54 h]; Steel Grade 500 for IC, WB, OP [35 Tonne]; Mason [18 h]; Steel Fitter [36 h]; Carpenter [36 h]; Crane [9 h]; Boom Placers [9 h]; Concrete 45/20 MS7 in Pile Caps & Footings (WB) [174 M3] | 48 | 11 days | 0 | G1 |
| BEW/ST/WB4/1510 |  | Conceting including Formwork & Reinforcement fixing for Pier | 14d | 2014-03-18 | 2014-04-07 | BEW/ST/WB4/1210 |  |  | 433.61d | 13.33d | Helper [54 h]; Steel Grade 500 for IC, WB, OP [3 Tonne]; Mason [18 h]; Steel Fitter [36 h]; Carpenter [36 h]; Boom Placers [9 h]; Crane [9 h]; Concrete 45/20 MS7 in Pier Columns & Pier Caps (WB) [106 M3] | 49 | 18 days | 0 | G1 |
|  | 1 | **Pier P 02** |  | 2014-02-25 | 2014-04-13 |  |  |  |  |  |  |  |  |  |  |
| BEW/ST/WB4/1060 |  | Structural Excavation | 4d | 2014-02-25 | 2014-03-03 | BEW/ST/WB4/1000 |  |  | 420.28d | 0d | Excavator (Bucket & Breaker) [9 h]; Unclassified structural excavation (depth 0m to 2.0m) [87.26 M3]; Unclassified structural excavation (depth >2.0m to <4.0m) [87.26 M3]; Unclassified structural excavation (depth - 4.0m) [87.26 M3]; Tipper (18 M3) [18 h]; Helper [54 h]; Unclassified structural excavation (under water) [255 M3] |  |  | -4 |  |
| BEW/ST/WB4/1130 |  | PCC & Pile Head Breaking | 6d | 2014-03-03 | 2014-03-11 | BEW/ST/WB4/1060 |  |  | 429.17d | 0d | Helper [54 h]; Unreinforced Concrete 16/20 [12 M3]; Mason [18 h] | 47 | 14 days | 0 | G1 |
| BEW/ST/WB4/1360 |  | Concreting for Pile Cap / Pier Foundation | 9d | 2014-03-11 | 2014-03-24 | BEW/ST/WB4/1130 |  |  | 429.17d | 0d | Helper [54 h]; Steel Grade 500 for IC, WB, OP [35 Tonne]; Mason [18 h]; Steel Fitter [36 h]; Carpenter [36 h]; Crane [9 h]; Boom Placers [9 h]; Concrete 45/20 MS7 in Pile Caps & Footings (WB) [174 M3] | 48 | 11 days | 0 | G1 |
| BEW/ST/WB4/1640 |  | Conceting including Formwork & Reinforcement fixing for Pier | 14d | 2014-03-24 | 2014-04-13 | BEW/ST/WB4/1360 |  |  | 429.17d | 8.89d | Helper [54 h]; Steel Grade 500 for IC, WB, OP [3 Tonne]; Mason [18 h]; Steel Fitter [36 h]; Carpenter [36 h]; Boom Placers [9 h]; Crane [9 h]; Concrete 45/20 MS7 in Pier Columns & Pier Caps (WB) [106 M3] | 49 | 18 days | 0 | G1 |
|  | 2 | **Pier P 03** |  | 2014-03-03 | 2014-04-20 |  |  |  |  |  |  |  |  |  |  |
| BEW/ST/WB4/1140 |  | Structural Excavation | 4d | 2014-03-03 | 2014-03-10 | BEW/ST/WB4/1060 | 2014-03-03 | 2014-03-09 | 420.28d | 0d | Excavator (Bucket & Breaker) [9 h]; Unclassified structural excavation (depth 0m to 2.0m) [87.26 M3]; Unclassified structural excavation (depth >2.0m to <4.0m) [87.26 M3]; Unclassified structural excavation (depth - 4.0m) [87.26 M3]; Tipper (18 M3) [18 h]; Helper [54 h]; Unclassified structural excavation (under water) [255 M3] |  |  | -4 |  |
| BEW/ST/WB4/1270 |  | PCC & Pile Head Breaking | 6d | 2014-03-10 | 2014-03-18 | BEW/ST/WB4/1140 |  |  | 424.72d | 0d | Helper [54 h]; Unreinforced Concrete 16/20 [12 M3]; Mason [18 h] | 47 | 14 days | 0 | G1 |
| BEW/ST/WB4/1470 |  | Concreting for Pile Cap / Pier Foundation | 9d | 2014-03-18 | 2014-03-31 | BEW/ST/WB4/1270 |  |  | 424.72d | 0d | Helper [54 h]; Steel Grade 500 for IC, WB, OP [35 Tonne]; Mason [18 h]; Steel Fitter [36 h]; Carpenter [36 h]; Crane [9 h]; Boom Placers [9 h]; Concrete 45/20 MS7 in Pile Caps & Footings (WB) [174 M3] | 48 | 11 days | 0 | G1 |
| BEW/ST/WB4/1720 |  | Conceting including Formwork & Reinforcement fixing for Pier | 14d | 2014-03-31 | 2014-04-20 | BEW/ST/WB4/1470 |  |  | 424.72d | 4.44d | Helper [54 h]; Steel Grade 500 for IC, WB, OP [3 Tonne]; Mason [18 h]; Steel Fitter [36 h]; Carpenter [36 h]; Boom Placers [9 h]; Crane [9 h]; Concrete 45/20 MS7 in Pier Columns & Pier Caps (WB) [106 M3] | 49 | 18 days | 0 | G1 |

Notes:
- BEW/ST/WB4/1050: Description: G1
- BEW/ST/WB4/1210: Description: G1
- BEW/ST/WB4/1510: Description: G1
- BEW/ST/WB4/1130: Description: G1
- BEW/ST/WB4/1360: Description: G1
- BEW/ST/WB4/1640: Description: G1
- BEW/ST/WB4/1270: Description: G1
- BEW/ST/WB4/1470: Description: G1
- BEW/ST/WB4/1720: Description: G1

| ID | WBS | Activity | Duration | Start | Finish | Predecessors | Planned start | Planned finish | Total float | Free float | Resources | DIFF | user_text1 | MSP Activity ID | EAM Contact Person |
| --- | --- | --- | --- | --- | --- | --- | --- | --- | --- | --- | --- | --- | --- | --- | --- |
|  | 5 | **Pier P 04** |  | 2014-03-10 | 2014-04-24 |  |  |  |  |  |  |  |  |  |  |
| BEW/ST/WB4/1280 |  | Structural Excavation | 4d | 2014-03-10 | 2014-03-16 | BEW/ST/WB4/1140 |  |  | 420.28d | 0d | Excavator (Bucket & Breaker) [9 h]; Unclassified structural excavation (depth 0m to 2.0m) [87.26 M3]; Unclassified structural excavation (depth >2.0m to <4.0m) [87.26 M3]; Unclassified structural excavation (depth - 4.0m) [87.26 M3]; Tipper (18 M3) [18 h]; Helper [54 h]; Unclassified structural excavation (under water) [255 M3] | -4 |  |  |  |
| BEW/ST/WB4/1400 |  | PCC & Pile Head Breaking | 6d | 2014-03-16 | 2014-03-24 | BEW/ST/WB4/1280 |  |  | 420.28d | 0d | Helper [54 h]; Unreinforced Concrete 16/20 [12 M3]; Mason [18 h] | 0 | G1 | 47 | 14 days |
| BEW/ST/WB4/1590 |  | Concreting for Pile Cap / Pier Foundation | 9d | 2014-03-24 | 2014-04-06 | BEW/ST/WB4/1400 |  |  | 420.28d | 0d | Helper [54 h]; Steel Grade 500 for IC, WB, OP [35 Tonne]; Mason [18 h]; Steel Fitter [36 h]; Carpenter [36 h]; Crane [9 h]; Boom Placers [9 h]; Concrete 45/20 MS7 in Pile Caps & Footings (WB) [174 M3] | 0 | G1 | 48 | 11 days |
| BEW/ST/WB4/1770 |  | Conceting including Formwork & Reinforcement fixing for Pier | 14d | 2014-04-06 | 2014-04-24 | BEW/ST/WB4/1590 |  |  | 420.28d | 0d | Helper [54 h]; Steel Grade 500 for IC, WB, OP [3 Tonne]; Mason [18 h]; Steel Fitter [36 h]; Carpenter [36 h]; Boom Placers [9 h]; Crane [9 h]; Concrete 45/20 MS7 in Pier Columns & Pier Caps (WB) [106 M3] | 0 | G1 | 49 | 18 days |
|  | 4 | **Pier P 05** |  | 2014-02-18 | 2014-04-07 |  |  |  |  |  |  |  |  |  |  |
| BEW/ST/WB4/1020 |  | Structural Excavation | 4d | 2014-02-18 | 2014-02-25 | BEW/ST/WB4/1000 SS | 2014-02-18 | 2014-02-24 | 440.72d | 0d | Excavator (Bucket & Breaker) [9 h]; Unclassified structural excavation (depth 0m to 2.0m) [87.26 M3]; Unclassified structural excavation (depth >2.0m to <4.0m) [87.26 M3]; Unclassified structural excavation (depth - 4.0m) [87.26 M3]; Tipper (18 M3) [18 h]; Helper [54 h]; Unclassified structural excavation (under water) [255 M3] | -4 |  |  |  |
| BEW/ST/WB4/1080 |  | PCC & Pile Head Breaking | 6d | 2014-02-25 | 2014-03-05 | BEW/ST/WB4/1020 |  |  | 449.61d | 0d | Helper [54 h]; Unreinforced Concrete 16/20 [12 M3]; Mason [18 h] | 0 | G1 | 47 | 14 days |
| BEW/ST/WB4/1230 |  | Concreting for Pile Cap / Pier Foundation | 9d | 2014-03-05 | 2014-03-18 | BEW/ST/WB4/1080 |  |  | 449.61d | 0d | Helper [54 h]; Steel Grade 500 for IC, WB, OP [35 Tonne]; Mason [18 h]; Steel Fitter [36 h]; Carpenter [36 h]; Crane [9 h]; Boom Placers [9 h]; Concrete 45/20 MS7 in Pile Caps & Footings (WB) [174 M3] | 0 | G1 | 48 | 11 days |
| BEW/ST/WB4/1530 |  | Conceting including Formwork & Reinforcement fixing for Pier | 14d | 2014-03-18 | 2014-04-07 | BEW/ST/WB4/1230 |  |  | 449.61d | 29.33d | Helper [54 h]; Steel Grade 500 for IC, WB, OP [3 Tonne]; Mason [18 h]; Steel Fitter [36 h]; Carpenter [36 h]; Boom Placers [9 h]; Crane [9 h]; Concrete 45/20 MS7 in Pier Columns & Pier Caps (WB) [106 M3] | 0 | G1 | 49 | 18 days |
|  | 3 | **Pier P 06** |  | 2014-02-25 | 2014-04-13 |  |  |  |  |  |  |  |  |  |  |
| BEW/ST/WB4/1090 |  | Structural Excavation | 4d | 2014-02-25 | 2014-03-03 | BEW/ST/WB4/1020 |  |  | 440.72d | 0d | Excavator (Bucket & Breaker) [9 h]; Unclassified structural excavation (depth 0m to 2.0m) [87.26 M3]; Unclassified structural excavation (depth >2.0m to <4.0m) [87.26 M3]; Tipper (18 M3) [18 h]; Helper [54 h]; Unclassified structural excavation (under water) [255 M3] | -4 |  |  |  |
| BEW/ST/WB4/1150 |  | PCC & Pile Head Breaking | 6d | 2014-03-03 | 2014-03-11 | BEW/ST/WB4/1090 |  |  | 445.17d | 0d | Helper [54 h]; Unreinforced Concrete 16/20 [12 M3]; Mason [18 h] | 0 | G1 | 47 | 14 days |
| BEW/ST/WB4/1370 |  | Concreting for Pile Cap / Pier Foundation | 9d | 2014-03-11 | 2014-03-24 | BEW/ST/WB4/1150 |  |  | 445.17d | 0d | Helper [54 h]; Steel Grade 500 for IC, WB, OP [35 Tonne]; Mason [18 h]; Steel Fitter [36 h]; Carpenter [36 h]; Crane [9 h]; Boom Placers [9 h]; Concrete 45/20 MS7 in Pile Caps & Footings (WB) [174 M3] | 0 | G1 | 48 | 11 days |
| BEW/ST/WB4/1650 |  | Conceting including Formwork & Reinforcement fixing for Pier | 14d | 2014-03-24 | 2014-04-13 | BEW/ST/WB4/1370 |  |  | 445.17d | 24.89d | Helper [54 h]; Steel Grade 500 for IC, WB, OP [3 Tonne]; Mason [18 h]; Steel Fitter [36 h]; Carpenter [36 h]; Boom Placers [9 h]; Crane [9 h]; Concrete 45/20 MS7 in Pier Columns & Pier Caps (WB) [106 M3] | 0 | G1 | 49 | 18 days |
|  | 7 | **Pier P 07** |  | 2014-03-03 | 2014-04-20 |  |  |  |  |  |  |  |  |  |  |
| BEW/ST/WB4/1160 |  | Structural Excavation | 4d | 2014-03-03 | 2014-03-10 | BEW/ST/WB4/1090 | 2014-03-03 | 2014-03-09 | 440.72d | 0d | Excavator (Bucket & Breaker) [9 h]; Unclassified structural excavation (depth 0m to 2.0m) [87.26 M3]; Unclassified structural excavation (depth >2.0m to <4.0m) [87.26 M3]; Tipper (18 M3) [18 h]; Helper [54 h]; Unclassified structural excavation (under water) [255 M3] | -4 |  |  |  |
| BEW/ST/WB4/1290 |  | PCC & Pile Head Breaking | 6d | 2014-03-10 | 2014-03-18 | BEW/ST/WB4/1160 |  |  | 440.72d | 0d | Helper [54 h]; Unreinforced Concrete 16/20 [12 M3]; Mason [18 h] | 0 | G1 | 47 | 14 days |
| BEW/ST/WB4/1480 |  | Concreting for Pile Cap / Pier Foundation | 9d | 2014-03-18 | 2014-03-31 | BEW/ST/WB4/1290 |  |  | 440.72d | 0d | Helper [54 h]; Steel Grade 500 for IC, WB, OP [35 Tonne]; Mason [18 h]; Steel Fitter [36 h]; Carpenter [36 h]; Crane [9 h]; Boom Placers [9 h]; Concrete 45/20 MS7 in Pile Caps & Footings (WB) [174 M3] | 0 | G1 | 48 | 11 days |
| BEW/ST/WB4/1730 |  | Conceting including Formwork & Reinforcement fixing for Pier | 14d | 2014-03-31 | 2014-04-20 | BEW/ST/WB4/1480 |  |  | 440.72d | 20.44d | Helper [54 h]; Steel Grade 500 for IC, WB, OP [3 Tonne]; Mason [18 h]; Steel Fitter [36 h]; Carpenter [36 h]; Boom Placers [9 h]; Crane [9 h]; Concrete 45/20 MS7 in Pier Columns & Pier Caps (WB) [106 M3] | 0 | G1 | 49 | 18 days |
|  | 6 | **Abutment Walls A1** |  | 2014-02-18 | 2014-04-09 |  |  |  |  |  |  |  |  |  |  |
| BEW/ST/WB4/1010 |  | Structural Excavation | 4d | 2014-02-18 | 2014-02-25 | BEW/ST/WB4/1000 SS | 2014-02-18 | 2014-02-24 | 427.17d | 0d | Excavator (Bucket & Breaker) [9 h]; Unclassified structural excavation (depth 0m to 2.0m) [211 M3]; Unclassified structural excavation (depth >2.0m to <4.0m) [94 M3]; Tipper (18 M3) [18 h]; Helper [54 h]; Unclassified structural excavation (under water) [255 M3] | -4 |  |  |  |
| BEW/ST/WB4/1070 |  | PCC & Pile Head Breaking | 6d | 2014-02-25 | 2014-03-05 | BEW/ST/WB4/1010 |  |  | 431.61d | 0d | Helper [54 h]; Unreinforced Concrete 16/20 [15 M3]; Mason [18 h] | 0 | G1 | 47 | 14 days |
| BEW/ST/WB4/1220 |  | Concreting for Pile Cap / Abutment Foundation | 9d | 2014-03-05 | 2014-03-18 | BEW/ST/WB4/1070 |  |  | 431.61d | 0d | Helper [54 h]; RCC Class 45/20 MS7 in Bridge abutment WB [330 M3]; Steel Grade 500 for IC, WB, OP [14 Tonne]; Mason [18 h]; Steel Fitter [36 h]; Carpenter [36 h]; Crane [9 h]; Boom Placers [9 h] | 0 | G1 | 48 | 11 days |
| BEW/ST/WB4/1520 |  | Conceting including Formwork & Reinforcement fixing for Abutment | 16d | 2014-03-18 | 2014-04-09 | BEW/ST/WB4/1220 |  |  | 431.61d | 11.33d | Helper [54 h]; Steel Grade 500 for IC, WB, OP [93 Tonne]; Mason [18 h]; Steel Fitter [126 h]; Carpenter [36 h]; Boom Placers [9 h]; Crane [9 h]; RCC Class 45/20 MS7 in open foundation (WB) [544 M3] | 0 | G1 | 49 | 18 days |

Notes:
- BEW/ST/WB4/1400: Description: G1
- BEW/ST/WB4/1590: Description: G1
- BEW/ST/WB4/1770: Description: G1
- BEW/ST/WB4/1080: Description: G1
- BEW/ST/WB4/1230: Description: G1
- BEW/ST/WB4/1530: Description: G1
- BEW/ST/WB4/1150: Description: G1
- BEW/ST/WB4/1370: Description: G1
- BEW/ST/WB4/1650: Description: G1
- BEW/ST/WB4/1290: Description: G1
- BEW/ST/WB4/1480: Description: G1
- BEW/ST/WB4/1730: Description: G1
- BEW/ST/WB4/1070: Description: G1
- BEW/ST/WB4/1220: Description: G1
- BEW/ST/WB4/1520: Description: G1

| ID | WBS | Activity | Duration | Start | Finish | Predecessors | Total float | Free float | Resources | Cost | DIFF | user_text1 | MSP Activity ID | EAM Contact Person |
| --- | --- | --- | --- | --- | --- | --- | --- | --- | --- | --- | --- | --- | --- | --- |
|  | 16 | **Abutment Walls A2** |  | 2014-02-25 | 2014-04-15 |  |  |  |  |  |  |  |  |  |
| BEW/ST/WB4/1040 |  | Structural Excavation | 4d | 2014-02-25 | 2014-03-03 | BEW/ST/WB4/1010 | 427.17d | 0d | Excavator (Bucket & Breaker) [9 h]; Unclassified structural excavation (depth 0m to 2.0m) [211 M3]; Unclassified structural excavation (depth >2.0m to <4.0m) [94 M3]; Tipper (18 M3) [18 h]; Helper [54 h]; Unclassified structural excavation (under water) [255 M3] |  | -4 |  |  |  |
| BEW/ST/WB4/1120 |  | PCC & Pile Head Breaking | 6d | 2014-03-03 | 2014-03-11 | BEW/ST/WB4/1040 | 427.17d | 0d | Helper [54 h]; Unreinforced Concrete 16/20 [15 M3]; Mason [18 h] |  | 0 | G1 | 47 | 14 days |
| BEW/ST/WB4/1350 |  | Concreting for Pile Cap / Abutment Foundation | 9d | 2014-03-11 | 2014-03-24 | BEW/ST/WB4/1120 | 427.17d | 0d | Helper [54 h]; RCC Class 45/20 MS7 in Bridge abutment WB [330 M3]; Steel Grade 500 for IC, WB, OP [14 Tonne]; Mason [18 h]; Steel Fitter [36 h]; Carpenter [36 h]; Crane [9 h]; Boom Placers [9 h] |  | 0 | G1 | 48 | 11 days |
| BEW/ST/WB4/1630 |  | Conceting including Formwork & Reinforcement fixing for Abutment | 16d | 2014-03-24 | 2014-04-15 | BEW/ST/WB4/1350 | 427.17d | 6.89d | Helper [54 h]; Steel Grade 500 for IC, WB, OP [93 Tonne]; Mason [18 h]; Steel Fitter [126 h]; Carpenter [36 h]; Boom Placers [9 h]; Crane [9 h]; RCC Class 45/20 MS7 in open foundation (WB) [544 M3] |  | 0 | G1 | 49 | 18 days |
|  | 15 | **Bridge Deck** |  | 2014-04-24 | 2014-09-09 |  |  |  |  |  |  |  |  |  |
| BEW/ST/WB4/2030 |  | Placing of I - Girders on temp Support Span 1 - 4 | 16d | 2014-04-24 | 2014-05-18 | BEW/ST/WB4/1510, BEW/ST/WB4/1640, BEW/ST/WB4/1720, BEW/ST/WB4/1770, BEW/ST/WB4/1520, BEW/ST/WB4/2020, BEW/ST/WB4/1630 | 420.28d | 0d | CRANE 80 T [18 h]; Helper [126 h]; Mason [18 h] |  | 0 |  | 842 | 74 days |
| BEW/ST/WB4/2060 |  | Pre-Cast Slab Placing Span 1-4 & Diaphram Wall | 16d | 2014-05-01 | 2014-05-26 | BEW/ST/WB4/2030 SS+5d | 427.28d | 0d | Crane [9 h]; Helper [72 h]; RCC Class 50/20 MS7 in Deck Slab [115 M3]; Steel Grade 500 for IC, WB, OP [11 Tonne]; Carpenter [36 h]; Steel Fitter [36 h]; Mason [36 h] |  | 0 |  | 843 | 74 days |
| BEW/ST/WB4/2080 |  | Placing of I - Girders on temp Support Span 5-8 | 16d | 2014-05-18 | 2014-06-10 | BEW/ST/WB4/2030, BEW/ST/WB4/1770, BEW/ST/WB4/1530, BEW/ST/WB4/1650, BEW/ST/WB4/1730, BEW/ST/WB4/2040 | 420.28d | 0d | CRANE 80 T [18 h]; Helper [126 h]; Mason [18 h] |  | 0 |  |  |  |
| BEW/ST/WB4/2070 |  | Span 1-4, Slab Casting including Staging, Shuttering & Rienforcement fixing and bearing | 20d | 2014-05-26 | 2014-06-23 | BEW/ST/WB4/2060 | 427.28d | 7d | Crane [9 h]; Helper [108 h]; RCC Class 50/20 MS7 in Deck Slab [660 M3]; Steel Grade 500 for IC, WB, OP [260 Tonne]; Mason [18 h]; Steel Fitter [108 h]; Carpenter [54 h]; Waterproofing for Bridge Decks [3244 Sqm]; Spherical Bearing [30 Number] |  | 0 |  | 844 | 92 days |
| BEW/ST/WB4/2120 |  | Pre-Cast Slab Placing Span 5-8 & Diaphram Wall | 16d | 2014-06-10 | 2014-07-02 | BEW/ST/WB4/2060, BEW/ST/WB4/2080 | 420.28d | 0d | RCC Class 50/20 MS7 in Deck Slab [115 M3]; Steel Grade 500 for IC, WB, OP [11 Tonne]; Mason [36 h]; Steel Fitter [36 h]; Carpenter [36 h]; Helper [72 h]; Crane [9 h] |  | 0 |  |  |  |
| BEW/ST/WB4/2140 |  | Span 5-8, Slab Casting including Staging, Shuttering & Rienforcement fixing and bearing | 20d | 2014-07-02 | 2014-08-06 | BEW/ST/WB4/2120, BEW/ST/WB4/2070 | 420.28d | 0d | RCC Class 50/20 MS7 in Deck Slab [660 M3]; Steel Grade 500 for IC, WB, OP [260 Tonne]; Mason [18 h]; Steel Fitter [108 h]; Carpenter [54 h]; Helper [108 h]; Crane [9 h]; Waterproofing for Bridge Decks [3244 Sqm]; Spherical Bearing [30 Number] |  | 0 |  |  |  |
| BEW/ST/WB4/2190 |  | Casting of Concrete Bridge Parapet | 24d | 2014-08-06 | 2014-09-09 | BEW/ST/WB4/2140 | 420.28d | 0d | Helper [54 h]; Concrete Class 40/20 MS7 in Precast Fascia Panel [260 M3]; Steel Grade 500 for IC, WB, OP [30 Tonne]; Mason [18 h]; Steel Fitter [36 h]; Carpenter [54 h]; Crane [9 h] |  | 0 |  | 845 | 43 days |
|  | 14 | **Roadworks for Wadi Bridge** |  | 2014-03-03 | 2014-10-09 |  |  |  |  |  |  |  |  |  |
| BEW/ST/WB4/1170 |  | Excavation for Retaining Wall A1 Side | 4d | 2014-03-03 | 2014-03-09 | BEW/ST/WB4/1040 | 430.72d | 0d | Unclassified structural excavation (depth 0m to 2.0m) [305 M3]; Excavator (Bucket & Breaker) [9 h]; Mason [9 h]; Helper [36 h] |  | 0 |  | 122 | 29 days |
| BEW/ST/WB4/1250 |  | Foundation for Retaining Wall A1 Side | 12d | 2014-03-09 | 2014-03-25 | BEW/ST/WB4/1170 | 459.17d | 0d | Boom Placers [9 h]; Unreinforced Concrete 16/20 [30 M3]; Concrete 40/20 MS7 in Retaining Wall [12 M3]; Mason [36 h]; Helper [72 h]; Steel Fitter [36 h]; Carpenter [36 h]; Crane [9 h]; Steel for Retaining wall and Box culverts [40 Tonne]; Waterproofing Membrane [2605 Sqm]; Water Proofing Paint for Retaining Wall and Bridges [2586 Sqm] |  | 36 |  | 123 | 59 days |
| BEW/ST/WB4/1260 |  | Excavation for Retaining Wall A2 Side | 4.44d | 2014-03-09 | 2014-03-16 | BEW/ST/WB4/1170 | 430.72d | 0d | Excavator (Bucket & Breaker) [9 h]; Unclassified structural excavation (depth 0m to 2.0m) [211 M3]; Mason [9 h]; Helper [40 h] |  | 0 |  |  |  |
| BEW/ST/WB4/1390 |  | Foundation for Retaining Wall A2 Side | 12d | 2014-03-16 | 2014-04-01 | BEW/ST/WB4/1260 | 430.72d | 0d | Boom Placers [9 h]; Unreinforced Concrete 16/20 [30 M3]; Concrete 40/20 MS7 in Retaining Wall [12 M3]; Mason [36 h]; Helper [72 h]; Carpenter [36 h]; Steel Fitter [36 h]; Crane [9 h]; Steel for Retaining wall and Box culverts [40 Tonne]; Water Proofing Paint for Retaining Wall and Bridges [2586 Sqm]; Waterproofing Membrane [2605 Sqm] |  | 36 |  |  |  |
| BEW/ST/WB4/1670 |  | Wall instalation of A1 Side | 24d | 2014-03-25 | 2014-04-28 | BEW/ST/WB4/1250 | 459.17d | 0d | Crane [18 h]; Mason [18 h]; Helper [72 h]; Carpenter [36 h]; Steel for Retaining wall and Box culverts [216 Tonne]; Concrete 40/20 MS7 in Retaining Wall [78 M3] |  | 0 |  | 124 | 120 days |
| BEW/ST/WB4/1680 |  | Earth filling & Embankment Preparation A1 Side | 21d | 2014-03-25 | 2014-04-23 | BEW/ST/WB4/1670 SS | 459.17d | 0d | Tipper (18 M3) [36 h]; Water Tanker (10K Gal) [9 h]; Motor Grader [9 h]; Vibratory Roller [18 h]; Borrow excavation to embankment [32000 M3]; Mason [18 h]; Helper [72 h]; Permeable back filling (Geotextile Membrane) [7034.38 Sqm]; 200 mm Dia. uPVC perforated pipe wrapped in Geotextile [12.5 LM]; Granular backfill [2328.44 M3]; Drainage pipe, 100mm uPVC in structure [6.25 LM]; Earth Filling for Dykes [1318.75 M3] |  | 0 |  | 125 | 125 days |
| BEW/ST/WB4/1760 |  | Wall instalation of A2 Side | 24d | 2014-04-01 | 2014-05-05 | BEW/ST/WB4/1390 | 430.72d | 0d | Crane [18 h]; Mason [18 h]; Helper [72 h]; Carpenter [36 h]; Concrete 40/20 MS7 in Retaining Wall [78 M3]; Steel for Retaining wall and Box culverts [216 Tonne] |  | 0 |  |  |  |
| BEW/ST/WB4/1860 |  | Granular Sub-Base A1 Side | 15d | 2014-04-23 | 2014-05-14 | BEW/ST/WB4/1680 | 459.17d | 0d | Tipper (18 M3) [36 h]; Motor Grader [9 h]; Vibratory Roller [9 h]; Water Tanker (10K Gal) [9 h]; Granular Sub-Base Course (Class B) [3200 M3]; Mason [18 h]; Helper [54 h] |  | 0 |  | 126 | 21 days |
| BEW/ST/WB4/1870 |  | Earth filling & Embankment Preparation A2 Side | 21d | 2014-05-05 | 2014-06-04 | BEW/ST/WB4/1760 | 430.72d | 0d | Tipper (18 M3) [36 h]; Water Tanker (10K Gal) [9 h]; Motor Grader [9 h]; Vibratory Roller [18 h]; Borrow excavation to embankment [32000 M3]; Mason [18 h]; Helper [72 h]; Drainage pipe, 100mm uPVC in structure [6.25 LM]; 200 mm Dia. uPVC perforated pipe wrapped in Geotextile [12.5 LM]; Granular backfill [2328.44 M3]; Permeable back filling (Geotextile Membrane) [7034.38 Sqm]; Earth Filling for Dykes [1318.75 M3] |  | 0 |  |  |  |
| BEW/ST/WB4/1890 |  | Concreting of Approch Slab A1 Side | 9d | 2014-05-14 | 2014-05-28 | BEW/ST/WB4/1860 | 459.17d | 28.44d | Boom Placers [9 h]; Concrete Class 40/20 MS7 in Approach Slab [20 M3]; Steel Grade 500 for IC, WB, OP [15.14 Tonne]; Mason [18 h]; Steel Fitter [18 h]; Carpenter [18 h]; Helper [36 h] |  | 0 |  |  |  |
| BEW/ST/WB4/1920 |  | Granular Sub-Base A2 Side | 15d | 2014-06-04 | 2014-06-25 | BEW/ST/WB4/1870 | 430.72d | 0d | Tipper (18 M3) [36 h]; Water Tanker (10K Gal) [9 h]; Motor Grader [9 h]; Vibratory Roller [9 h]; Granular Sub-Base Course (Class B) [3200 M3]; Mason [18 h]; Helper [54 h] |  | 0 |  |  |  |
| BEW/ST/WB4/1940 |  | Concreting of Approch Slab A2 Side | 9d | 2014-06-25 | 2014-07-08 | BEW/ST/WB4/1920 | 430.72d | 0d | Boom Placers [9 h]; Steel Grade 500 for IC, WB, OP [15.14 Tonne]; Concrete Class 40/20 MS7 in Approach Slab [20 M3]; Mason [18 h]; Helper [36 h]; Carpenter [18 h]; Steel Fitter [18 h] |  | 0 |  |  |  |
| BEW/ST/WB4/1960 |  | Aggregate Base Course | 10d | 2014-07-08 | 2014-07-22 | BEW/ST/WB4/1860, BEW/ST/WB4/1920, BEW/ST/WB4/1940, BEW/ST/WB4/1890 | 430.72d | 0d | Finishing Paver (Vogalle) [10 h]; Tandem Roller [10 h]; Tipper (18 M3) [54 h]; Crushed Aggregate Base Course (Class A) [1249 M3]; Mason [18 h]; Helper [72 h] |  | 0 |  | 127 | 14 days |
| BEW/ST/WB4/1980 |  | Crash Barrier & Median Works | 20d | 2014-07-22 | 2014-08-26 | BEW/ST/WB4/1960 | 430.72d | 10.44d | Boom Placers [9 h]; Crane [9 h]; Mason [18 h]; Helper [72 h]; Carpenter [36 h]; Steel Fitter [36 h]; Concrete Barrier for Bridge [555 LM] |  | 0 |  | 128 | 28 days |
| BEW/ST/WB4/2200 |  | Bituminous Base Course Including IC | 10d | 2014-08-06 | 2014-08-20 | BEW/ST/WB4/1960, BEW/ST/WB4/2070, BEW/ST/WB4/2140 | 424.28d | 0d | Bituminous Sprayer [9 h]; Finishing Paver (Vogalle) [10 h]; Pnematic Tyre Rollar [20 h]; Air Compressor 200 CFT [18 h]; Water Tanker (5K Gal) [10 h]; Tractor Broomer [9 h]; Bituminous Prime Coat [27185 Kilogram]; Bituminous Tack Coat [12600 Kilogram]; Bituminous Base Course [2950 M3]; Mason [18 h]; Helper [72 h] | 3,528 | 0 |  | 129 | 12 days |
| BEW/ST/WB4/2210 |  | Bituminous Wearing Course | 10d | 2014-08-20 | 2014-09-03 | BEW/ST/WB4/2200 | 424.28d | 4d | Tractor Broomer [9 h]; Finishing Paver (Vogalle) [10 h]; Pnematic Tyre Rollar [20 h]; Tandem Roller [10 h]; Water Tanker (5K Gal) [10 h]; Skid Wheel Loader (Bob Cat) [10 h]; Bituminous Sprayer [9 h]; Bituminous Tack Coat [12600 Kilogram]; Bituminous Wearing Course [410 M3]; Mason [18 h]; Helper [72 h] | 3,528 | 0 |  | 130 | 12 days |
| BEW/ST/WB4/2250 |  | Miscellaneous Works | 20d | 2014-09-09 | 2014-10-09 | BEW/ST/WB4/1980, BEW/ST/WB4/2210, BEW/ST/WB4/2190 | 420.28d | 0d | Mason [45 h]; Helper [135 h]; Abrasion resistant paint [2042.5 Sqm]; Bridge Loading Test - Testing by Static Load [2 Number]; Bridge Loading Test - Testing by Moving Load [2 Number]; Fabric wire mesh reinforcement of any size [1.25 M3]; Leveling and Grading for Wadi Training Works [3990 M3]; Strip Seal Type Expansion Joint [46 LM]; Isolation Joint at end of approach slab [46 LM] |  | 0 |  | 132 | 12 days |

Notes:
- BEW/ST/WB4/1120: Description: G1
- BEW/ST/WB4/1350: Description: G1
- BEW/ST/WB4/1630: Description: G1

| ID | WBS | Activity | Duration | Start | Finish | Predecessors | Planned start | Planned finish | Total float | Free float | Resources | MSP Activity ID | EAM Contact Person | DIFF | user_text1 |
| --- | --- | --- | --- | --- | --- | --- | --- | --- | --- | --- | --- | --- | --- | --- | --- |
|  | 4 | **WB Structure** |  | 2014-02-18 | 2014-11-06 |  |  |  |  |  |  |  |  |  |  |
|  | 13 | **Casting of Girders** |  | 2014-02-27 | 2014-06-09 |  |  |  |  |  |  |  |  |  |  |
| BEW/ST/WB4/2100 |  | Bed Preparation and priliminary activities | 12d | 2014-02-27 | 2014-03-17 | BEW/ST/WB4/2090 SS |  |  | 439.06d | 0d |  | 2180 | 37 days | 0 |  |
| BEW/ST/WB4/2110 |  | Span 1-4 Casting of Precast Slabs | 24d | 2014-03-17 | 2014-04-20 | BEW/ST/WB4/2100, BEW/ST/WB4/2050 |  |  | 567.06d | 0d | RCC Class 50/20 MS7 in Deck Slab [60 M3]; Steel Fitter [18 h]; Carpenter [18 h]; Helper [18 h] | 728 | 324 days | 0 |  |
| BEW/ST/WB4/2130 |  | Span 1-3 Casting of I-Girders including Threading, Placing Anchor Blocks & Stressing from Both Sides | 21d | 2014-03-17 | 2014-04-15 | BEW/ST/WB4/2100, BEW/ST/WB4/2090 FS-5d |  |  | 439.06d | 0d | Boom Placers [9 h]; Crane [18 h]; I Girder Side Shuttering [18 h]; Mason [18 h]; Steel Fitter [72 h]; Carpenter [72 h]; Helper [108 h]; Post-tensioned Concrete, Class 50/20 MS7 I Girder [730 M3]; Steel Grade 500 for IC, WB, OP [260 Tonne]; Prestressing Cables - 0.6" [53 Tonne] | 727 | 690 days | 0 |  |
| BEW/ST/WB4/2170 |  | Span 4-6 Casting of I-Girders including Threading, Placing Anchor Blocks & Stressing from Both Sides | 24d | 2014-04-15 | 2014-05-19 | BEW/ST/WB4/2130 |  |  | 439.06d | 0d | Boom Placers [9 h]; Crane [18 h]; I Girder Side Shuttering [18 h]; Mason [18 h]; Steel Fitter [72 h]; Carpenter [72 h]; Helper [108 h]; Post-tensioned Concrete, Class 50/20 MS7 I Girder [730 M3]; Steel Grade 500 for IC, WB, OP [260 Tonne]; Prestressing Cables - 0.6" [53 Tonne] | 727 | 690 days | -27 |  |
| BEW/ST/WB4/2150 |  | Span 5-8 Casting of Precast Slabs | 24d | 2014-04-20 | 2014-05-22 | BEW/ST/WB4/2110 |  |  | 567.06d |  | RCC Class 50/20 MS7 in Deck Slab [60 M3]; Steel Fitter [18 h]; Carpenter [18 h]; Helper [18 h] | 728 | 324 days | 0 |  |
| BEW/ST/WB4/2240 |  | Span 7- 8 Casting of I-Girders including Threading, Placing Anchor Blocks & Stressing from Both Sides | 14d | 2014-05-19 | 2014-06-09 | BEW/ST/WB4/2170 |  |  | 556.06d |  | Boom Placers [9 h]; Crane [18 h]; I Girder Side Shuttering [18 h]; Mason [18 h]; Steel Fitter [72 h]; Carpenter [72 h]; Helper [108 h]; Post-tensioned Concrete, Class 50/20 MS7 I Girder [730 M3]; Steel Grade 500 for IC, WB, OP [129 Tonne]; Prestressing Cables - 0.6" [53 Tonne] | 727 | 690 days | 0 |  |
|  | 17 | **Pier P 01** |  | 2014-02-18 | 2014-04-07 |  |  |  |  |  |  |  |  |  |  |
| BEW/ST/WB4/1030 |  | Structural Excavation | 4d | 2014-02-18 | 2014-02-25 | BEW/ST/WB4/1000 SS | 2014-02-18 | 2014-02-24 | 440.28d | 0d | Excavator (Bucket & Breaker) [9 h]; Unclassified structural excavation (depth 0m to 2.0m) [87.26 M3]; Unclassified structural excavation (depth >2.0m to <4.0m) [87.26 M3]; Tipper (18 M3) [18 h]; Helper [54 h]; Unclassified structural excavation (under water) [300 M3] |  |  | -4 |  |
| BEW/ST/WB4/1100 |  | PCC & Pile Head Breaking | 6d | 2014-02-25 | 2014-03-05 | BEW/ST/WB4/1030 |  |  | 453.61d | 0d | Helper [54 h]; Unreinforced Concrete 16/20 [12 M3]; Mason [18 h] | 47 | 14 days | 0 | G1 |
| BEW/ST/WB4/1240 |  | Concreting for Pile Cap / Pier Foundation | 9d | 2014-03-05 | 2014-03-18 | BEW/ST/WB4/1100 |  |  | 453.61d | 0d | Helper [54 h]; Steel Grade 500 for IC, WB, OP [35 Tonne]; Mason [18 h]; Steel Fitter [36 h]; Carpenter [36 h]; Crane [9 h]; Boom Placers [9 h]; Concrete 45/20 MS7 in Pile Caps & Footings (WB) [174 M3] | 48 | 11 days | 0 | G1 |
| BEW/ST/WB4/1540 |  | Conceting including Formwork & Reinforcement fixing for Pier | 14d | 2014-03-18 | 2014-04-07 | BEW/ST/WB4/1240 |  |  | 453.61d | 15.33d | Helper [54 h]; Steel Grade 500 for IC, WB, OP [3 Tonne]; Mason [18 h]; Steel Fitter [36 h]; Carpenter [36 h]; Boom Placers [9 h]; Crane [9 h]; Concrete 45/20 MS7 in Pier Columns & Pier Caps (WB) [110 M3] | 49 | 18 days | 0 | G1 |
|  | 1 | **Pier P 02** |  | 2014-02-25 | 2014-04-13 |  |  |  |  |  |  |  |  |  |  |
| BEW/ST/WB4/1110 |  | Structural Excavation | 4d | 2014-02-25 | 2014-03-03 | BEW/ST/WB4/1030 |  |  | 440.28d | 0d | Excavator (Bucket & Breaker) [9 h]; Unclassified structural excavation (depth 0m to 2.0m) [87.26 M3]; Unclassified structural excavation (depth >2.0m to <4.0m) [87.26 M3]; Tipper (18 M3) [18 h]; Helper [54 h]; Unclassified structural excavation (under water) [300 M3] |  |  | -4 |  |
| BEW/ST/WB4/1180 |  | PCC & Pile Head Breaking | 6d | 2014-03-03 | 2014-03-11 | BEW/ST/WB4/1110 |  |  | 449.17d | 0d | Helper [54 h]; Unreinforced Concrete 16/20 [12 M3]; Mason [18 h] | 47 | 14 days | 0 | G1 |
| BEW/ST/WB4/1380 |  | Concreting for Pile Cap / Pier Foundation | 9d | 2014-03-11 | 2014-03-24 | BEW/ST/WB4/1180 |  |  | 449.17d | 0d | Helper [54 h]; Steel Grade 500 for IC, WB, OP [35 Tonne]; Mason [18 h]; Steel Fitter [36 h]; Carpenter [36 h]; Crane [9 h]; Boom Placers [9 h]; Concrete 45/20 MS7 in Pile Caps & Footings (WB) [174 M3] | 48 | 11 days | 0 | G1 |
| BEW/ST/WB4/1660 |  | Conceting including Formwork & Reinforcement fixing for Pier | 14d | 2014-03-24 | 2014-04-13 | BEW/ST/WB4/1380 |  |  | 449.17d | 10.89d | Helper [54 h]; Steel Grade 500 for IC, WB, OP [3 Tonne]; Mason [18 h]; Steel Fitter [36 h]; Carpenter [36 h]; Boom Placers [9 h]; Crane [9 h]; Concrete 45/20 MS7 in Pier Columns & Pier Caps (WB) [110 M3] | 49 | 18 days | 0 | G1 |
|  | 2 | **Pier P 03** |  | 2014-03-03 | 2014-04-20 |  |  |  |  |  |  |  |  |  |  |
| BEW/ST/WB4/1190 |  | Structural Excavation | 4d | 2014-03-03 | 2014-03-10 | BEW/ST/WB4/1110 | 2014-03-03 | 2014-03-09 | 440.28d | 0d | Excavator (Bucket & Breaker) [9 h]; Unclassified structural excavation (depth 0m to 2.0m) [87.26 M3]; Unclassified structural excavation (depth >2.0m to <4.0m) [87.26 M3]; Tipper (18 M3) [18 h]; Helper [54 h]; Unclassified structural excavation (under water) [300 M3] |  |  | -4 |  |
| BEW/ST/WB4/1310 |  | PCC & Pile Head Breaking | 6d | 2014-03-10 | 2014-03-18 | BEW/ST/WB4/1190 |  |  | 444.72d | 0d | Helper [54 h]; Unreinforced Concrete 16/20 [12 M3]; Mason [18 h] | 47 | 14 days | 0 | G1 |
| BEW/ST/WB4/1490 |  | Concreting for Pile Cap / Pier Foundation | 9d | 2014-03-18 | 2014-03-31 | BEW/ST/WB4/1310 |  |  | 444.72d | 0d | Helper [54 h]; Steel Grade 500 for IC, WB, OP [35 Tonne]; Mason [18 h]; Steel Fitter [36 h]; Carpenter [36 h]; Crane [9 h]; Boom Placers [9 h]; Concrete 45/20 MS7 in Pile Caps & Footings (WB) [174 M3] | 48 | 11 days | 0 | G1 |
| BEW/ST/WB4/1740 |  | Conceting including Formwork & Reinforcement fixing for Pier | 14d | 2014-03-31 | 2014-04-20 | BEW/ST/WB4/1490 |  |  | 444.72d | 6.44d | Helper [54 h]; Steel Grade 500 for IC, WB, OP [3 Tonne]; Mason [18 h]; Steel Fitter [36 h]; Carpenter [36 h]; Boom Placers [9 h]; Crane [9 h]; Concrete 45/20 MS7 in Pier Columns & Pier Caps (WB) [110 M3] | 49 | 18 days | 0 | G1 |
|  | 5 | **Pier P 04** |  | 2014-03-10 | 2014-04-24 |  |  |  |  |  |  |  |  |  |  |
| BEW/ST/WB4/1330 |  | Structural Excavation | 4d | 2014-03-10 | 2014-03-16 | BEW/ST/WB4/1190 |  |  | 440.28d | 0d | Excavator (Bucket & Breaker) [9 h]; Unclassified structural excavation (depth 0m to 2.0m) [87.26 M3]; Unclassified structural excavation (depth >2.0m to <4.0m) [87.26 M3]; Tipper (18 M3) [18 h]; Helper [54 h]; Unclassified structural excavation (under water) [300 M3] |  |  | -4 |  |
| BEW/ST/WB4/1420 |  | PCC & Pile Head Breaking | 6d | 2014-03-16 | 2014-03-24 | BEW/ST/WB4/1330 |  |  | 440.28d | 0d | Helper [54 h]; Unreinforced Concrete 16/20 [12 M3]; Mason [18 h] | 47 | 14 days | 0 | G1 |
| BEW/ST/WB4/1610 |  | Concreting for Pile Cap / Pier Foundation | 9d | 2014-03-24 | 2014-04-06 | BEW/ST/WB4/1420 |  |  | 440.28d | 0d | Helper [54 h]; Steel Grade 500 for IC, WB, OP [35 Tonne]; Mason [18 h]; Steel Fitter [36 h]; Carpenter [36 h]; Crane [9 h]; Boom Placers [9 h]; Concrete 45/20 MS7 in Pile Caps & Footings (WB) [174 M3] | 48 | 11 days | 0 | G1 |
| BEW/ST/WB4/1790 |  | Conceting including Formwork & Reinforcement fixing for Pier | 14d | 2014-04-06 | 2014-04-24 | BEW/ST/WB4/1610 |  |  | 440.28d | 2d | Helper [54 h]; Steel Grade 500 for IC, WB, OP [3 Tonne]; Mason [18 h]; Steel Fitter [36 h]; Carpenter [36 h]; Boom Placers [9 h]; Crane [9 h]; Concrete 45/20 MS7 in Pier Columns & Pier Caps (WB) [110 M3] | 49 | 18 days | 0 | G1 |

Notes:
- BEW/ST/WB4/1100: Description: G1
- BEW/ST/WB4/1240: Description: G1
- BEW/ST/WB4/1540: Description: G1
- BEW/ST/WB4/1180: Description: G1
- BEW/ST/WB4/1380: Description: G1
- BEW/ST/WB4/1660: Description: G1
- BEW/ST/WB4/1310: Description: G1
- BEW/ST/WB4/1490: Description: G1
- BEW/ST/WB4/1740: Description: G1
- BEW/ST/WB4/1420: Description: G1
- BEW/ST/WB4/1610: Description: G1
- BEW/ST/WB4/1790: Description: G1

| ID | WBS | Activity | Duration | Start | Finish | Predecessors | Planned start | Planned finish | Total float | Free float | Resources | DIFF | user_text1 | MSP Activity ID | EAM Contact Person |
| --- | --- | --- | --- | --- | --- | --- | --- | --- | --- | --- | --- | --- | --- | --- | --- |
|  | 4 | **Pier P 05** |  | 2014-03-16 | 2014-05-01 |  |  |  |  |  |  |  |  |  |  |
| BEW/ST/WB4/1430 |  | Structural Excavation | 4d | 2014-03-16 | 2014-03-23 | BEW/ST/WB4/1330 | 2014-03-16 | 2014-03-20 | 451.83d | 0d | Excavator (Bucket & Breaker) [9 h]; Unclassified structural excavation (depth 0m to 2.0m) [87.26 M3]; Unclassified structural excavation (depth >2.0m to <4.0m) [87.26 M3]; Tipper (18 M3) [18 h]; Helper [54 h]; Unclassified structural excavation (under water) [300 M3] | -4 |  |  |  |
| BEW/ST/WB4/1570 |  | PCC & Pile Head Breaking | 6d | 2014-03-23 | 2014-03-31 | BEW/ST/WB4/1430 |  |  | 451.83d | 0d | Helper [54 h]; Unreinforced Concrete 16/20 [12 M3]; Mason [18 h] | 0 | G1 | 47 | 14 days |
| BEW/ST/WB4/1700 |  | Concreting for Pile Cap / Pier Foundation | 9d | 2014-03-31 | 2014-04-13 | BEW/ST/WB4/1570 |  |  | 451.83d | 0d | Helper [54 h]; Steel Grade 500 for IC, WB, OP [35 Tonne]; Mason [18 h]; Steel Fitter [36 h]; Carpenter [36 h]; Crane [9 h]; Boom Placers [9 h]; Concrete 45/20 MS7 in Pile Caps & Footings (WB) [174 M3] | 0 | G1 | 48 | 11 days |
| BEW/ST/WB4/1830 |  | Conceting including Formwork & Reinforcement fixing for Pier | 14d | 2014-04-13 | 2014-05-01 | BEW/ST/WB4/1700 |  |  | 451.83d | 13.56d | Helper [54 h]; Steel Grade 500 for IC, WB, OP [3 Tonne]; Mason [18 h]; Steel Fitter [36 h]; Carpenter [36 h]; Boom Placers [9 h]; Crane [9 h]; Concrete 45/20 MS7 in Pier Columns & Pier Caps (WB) [110 M3] | 0 | G1 | 49 | 18 days |
|  | 3 | **Pier P 06** |  | 2014-03-10 | 2014-04-24 |  |  |  |  |  |  |  |  |  |  |
| BEW/ST/WB4/1340 |  | Structural Excavation | 4d | 2014-03-10 | 2014-03-16 | BEW/ST/WB4/1160 |  |  | 451.83d | 0d | Excavator (Bucket & Breaker) [9 h]; Unclassified structural excavation (depth 0m to 2.0m) [87.26 M3]; Unclassified structural excavation (depth >2.0m to <4.0m) [87.26 M3]; Tipper (18 M3) [18 h]; Helper [54 h]; Unclassified structural excavation (under water) [300 M3] | -4 |  |  |  |
| BEW/ST/WB4/1440 |  | PCC & Pile Head Breaking | 6d | 2014-03-16 | 2014-03-24 | BEW/ST/WB4/1340 |  |  | 456.28d | 0d | Helper [54 h]; Unreinforced Concrete 16/20 [12 M3]; Mason [18 h] | 0 | G1 | 47 | 14 days |
| BEW/ST/WB4/1620 |  | Concreting for Pile Cap / Pier Foundation | 9d | 2014-03-24 | 2014-04-06 | BEW/ST/WB4/1440 |  |  | 456.28d | 0d | Helper [54 h]; Steel Grade 500 for IC, WB, OP [35 Tonne]; Mason [18 h]; Steel Fitter [36 h]; Carpenter [36 h]; Crane [9 h]; Boom Placers [9 h]; Concrete 45/20 MS7 in Pile Caps & Footings (WB) [174 M3] | 0 | G1 | 48 | 11 days |
| BEW/ST/WB4/1800 |  | Conceting including Formwork & Reinforcement fixing for Pier | 14d | 2014-04-06 | 2014-04-24 | BEW/ST/WB4/1620 |  |  | 456.28d | 18d | Helper [54 h]; Steel Grade 500 for IC, WB, OP [3 Tonne]; Mason [18 h]; Steel Fitter [36 h]; Carpenter [36 h]; Boom Placers [9 h]; Crane [9 h]; Concrete 45/20 MS7 in Pier Columns & Pier Caps (WB) [110 M3] | 0 | G1 | 49 | 18 days |
|  | 7 | **Pier P 07** |  | 2014-03-16 | 2014-05-01 |  |  |  |  |  |  |  |  |  |  |
| BEW/ST/WB4/1450 |  | Structural Excavation | 4d | 2014-03-16 | 2014-03-23 | BEW/ST/WB4/1340 | 2014-03-16 | 2014-03-20 | 451.83d | 0d | Excavator (Bucket & Breaker) [9 h]; Unclassified structural excavation (depth 0m to 2.0m) [87.26 M3]; Unclassified structural excavation (depth >2.0m to <4.0m) [87.26 M3]; Tipper (18 M3) [18 h]; Helper [54 h]; Unclassified structural excavation (under water) [300 M3] | -4 |  |  |  |
| BEW/ST/WB4/1580 |  | PCC & Pile Head Breaking | 6d | 2014-03-23 | 2014-03-31 | BEW/ST/WB4/1450 |  |  | 451.83d | 0d | Helper [54 h]; Unreinforced Concrete 16/20 [12 M3]; Mason [18 h] | 0 | G1 | 47 | 14 days |
| BEW/ST/WB4/1710 |  | Concreting for Pile Cap / Pier Foundation | 9d | 2014-03-31 | 2014-04-13 | BEW/ST/WB4/1580 |  |  | 451.83d | 0d | Helper [54 h]; Steel Grade 500 for IC, WB, OP [35 Tonne]; Mason [18 h]; Steel Fitter [36 h]; Carpenter [36 h]; Crane [9 h]; Boom Placers [9 h]; Concrete 45/20 MS7 in Pile Caps & Footings (WB) [176 M3] | 0 | G1 | 48 | 11 days |
| BEW/ST/WB4/1840 |  | Conceting including Formwork & Reinforcement fixing for Pier | 14d | 2014-04-13 | 2014-05-01 | BEW/ST/WB4/1710 |  |  | 451.83d | 13.56d | Helper [54 h]; Steel Grade 500 for IC, WB, OP [3 Tonne]; Mason [18 h]; Steel Fitter [36 h]; Carpenter [36 h]; Boom Placers [9 h]; Crane [9 h]; Concrete 45/20 MS7 in Pier Columns & Pier Caps (WB) [110 M3] | 0 | G1 | 49 | 18 days |
|  | 6 | **Abutment Walls A1** |  | 2014-03-03 | 2014-04-22 |  |  |  |  |  |  |  |  |  |  |
| BEW/ST/WB4/1200 |  | Structural Excavation | 4d | 2014-03-03 | 2014-03-10 | BEW/ST/WB4/1040 | 2014-03-03 | 2014-03-09 | 438.28d | 0d | Excavator (Bucket & Breaker) [9 h]; Unclassified structural excavation (depth 0m to 2.0m) [211 M3]; Unclassified structural excavation (depth >2.0m to <4.0m) [94 M3]; Tipper (18 M3) [18 h]; Helper [54 h]; Unclassified structural excavation (under water) [300 M3] | -4 |  |  |  |
| BEW/ST/WB4/1320 |  | PCC & Pile Head Breaking | 6d | 2014-03-10 | 2014-03-18 | BEW/ST/WB4/1200 |  |  | 442.72d | 0d | Helper [54 h]; Unreinforced Concrete 16/20 [15 M3]; Mason [18 h] | 0 | G1 | 47 | 14 days |
| BEW/ST/WB4/1500 |  | Concreting for Pile Cap / Abutment Foundation | 9d | 2014-03-18 | 2014-03-31 | BEW/ST/WB4/1320 |  |  | 442.72d | 0d | Helper [54 h]; RCC Class 45/20 MS7 in Bridge abutment WB [340 M3]; Steel Grade 500 for IC, WB, OP [14 Tonne]; Mason [18 h]; Steel Fitter [36 h]; Carpenter [36 h]; Crane [9 h]; Boom Placers [9 h] | 0 | G1 | 48 | 11 days |
| BEW/ST/WB4/1750 |  | Conceting including Formwork & Reinforcement fixing for Abutment | 16d | 2014-03-31 | 2014-04-22 | BEW/ST/WB4/1500 |  |  | 442.72d | 4.44d | Helper [54 h]; Steel Grade 500 for IC, WB, OP [93 Tonne]; Mason [18 h]; Steel Fitter [126 h]; Carpenter [36 h]; Boom Placers [9 h]; Crane [9 h]; RCC Class 45/20 MS7 in open foundation (WB) [545 M3] | 0 | G1 | 49 | 18 days |
|  | 16 | **Abutment Walls A2** |  | 2014-03-10 | 2014-04-28 |  |  |  |  |  |  |  |  |  |  |
| BEW/ST/WB4/1300 |  | Structural Excavation | 4d | 2014-03-10 | 2014-03-16 | BEW/ST/WB4/1200 |  |  | 438.28d | 0d | Excavator (Bucket & Breaker) [9 h]; Unclassified structural excavation (depth 0m to 2.0m) [211 M3]; Unclassified structural excavation (depth >2.0m to <4.0m) [94 M3]; Tipper (18 M3) [18 h]; Helper [54 h]; Unclassified structural excavation (under water) [196 M3] | -4 |  |  |  |
| BEW/ST/WB4/1410 |  | PCC & Pile Head Breaking | 6d | 2014-03-16 | 2014-03-24 | BEW/ST/WB4/1300 |  |  | 438.28d | 0d | Helper [54 h]; Unreinforced Concrete 16/20 [15 M3]; Mason [18 h] | 0 | G1 | 47 | 14 days |
| BEW/ST/WB4/1600 |  | Concreting for Pile Cap / Abutment Foundation | 9d | 2014-03-24 | 2014-04-06 | BEW/ST/WB4/1410 |  |  | 438.28d | 0d | Helper [54 h]; RCC Class 45/20 MS7 in Bridge abutment WB [330 M3]; Steel Grade 500 for IC, WB, OP [14 Tonne]; Mason [18 h]; Steel Fitter [36 h]; Carpenter [36 h]; Crane [9 h]; Boom Placers [9 h] | 0 | G1 | 48 | 11 days |
| BEW/ST/WB4/1780 |  | Conceting including Formwork & Reinforcement fixing for Abutment | 16d | 2014-04-06 | 2014-04-28 | BEW/ST/WB4/1600 |  |  | 438.28d | 0d | Helper [54 h]; Steel Grade 500 for IC, WB, OP [93 Tonne]; Mason [18 h]; Steel Fitter [126 h]; Carpenter [36 h]; Boom Placers [9 h]; Crane [9 h]; RCC Class 45/20 MS7 in open foundation (WB) [544 M3] | 0 | G1 | 49 | 18 days |

Notes:
- BEW/ST/WB4/1570: Description: G1
- BEW/ST/WB4/1700: Description: G1
- BEW/ST/WB4/1830: Description: G1
- BEW/ST/WB4/1440: Description: G1
- BEW/ST/WB4/1620: Description: G1
- BEW/ST/WB4/1800: Description: G1
- BEW/ST/WB4/1580: Description: G1
- BEW/ST/WB4/1710: Description: G1
- BEW/ST/WB4/1840: Description: G1
- BEW/ST/WB4/1320: Description: G1
- BEW/ST/WB4/1500: Description: G1
- BEW/ST/WB4/1750: Description: G1
- BEW/ST/WB4/1410: Description: G1
- BEW/ST/WB4/1600: Description: G1
- BEW/ST/WB4/1780: Description: G1

| ID | WBS | Activity | Duration | Start | Finish | Predecessors | Total float | Free float | Resources | Cost | MSP Activity ID | EAM Contact Person | DIFF |
| --- | --- | --- | --- | --- | --- | --- | --- | --- | --- | --- | --- | --- | --- |
|  | 15 | **Bridge Deck** |  | 2014-04-28 | 2014-09-11 |  |  |  |  |  |  |  |  |
| BEW/ST/WB4/2160 |  | Placing of I - Girders on temp Support Span 1 - 4 | 16d | 2014-04-28 | 2014-05-20 | BEW/ST/WB4/1540, BEW/ST/WB4/1660, BEW/ST/WB4/1740, BEW/ST/WB4/1790, BEW/ST/WB4/1750, BEW/ST/WB4/2130, BEW/ST/WB4/1780 | 438.28d | 0d | CRANE 80 T [18 h]; Helper [126 h]; Mason [18 h] |  | 842 | 74 days | 0 |
| BEW/ST/WB4/2180 |  | Pre-Cast Slab Placing Span 1-4 & Diaphram Wall | 16d | 2014-05-05 | 2014-05-28 | BEW/ST/WB4/2160 SS+5d | 445.28d | 0d | Crane [9 h]; Helper [72 h]; RCC Class 50/20 MS7 in Deck Slab [115 M3]; Steel Grade 500 for IC, WB, OP [11 Tonne]; Carpenter [36 h]; Steel Fitter [36 h]; Mason [36 h] |  | 843 | 74 days | 0 |
| BEW/ST/WB4/2230 |  | Placing of I - Girders on temp Support Span 5-8 | 16d | 2014-05-20 | 2014-06-12 | BEW/ST/WB4/2160, BEW/ST/WB4/1790, BEW/ST/WB4/1830, BEW/ST/WB4/1800, BEW/ST/WB4/1840, BEW/ST/WB4/2170 | 438.28d | 0d | CRANE 80 T [18 h]; Helper [126 h]; Mason [18 h] |  |  |  | 0 |
| BEW/ST/WB4/2220 |  | Span 1-4, Slab Casting including Staging, Shuttering & Rienforcement fixing and bearing | 20d | 2014-05-28 | 2014-06-25 | BEW/ST/WB4/2180 | 445.28d | 7d | Crane [9 h]; Helper [108 h]; RCC Class 50/20 MS7 in Deck Slab [660 M3]; Steel Grade 500 for IC, WB, OP [260 Tonne]; Mason [18 h]; Steel Fitter [108 h]; Carpenter [54 h]; Waterproofing for Bridge Decks [3244 Sqm]; Spherical Bearing [30 Number] |  | 844 | 92 days | 0 |
| BEW/ST/WB4/2260 |  | Pre-Cast Slab Placing Span 5-8 & Diaphram Wall | 16d | 2014-06-12 | 2014-07-06 | BEW/ST/WB4/2180, BEW/ST/WB4/2230 | 438.28d | 0d | RCC Class 50/20 MS7 in Deck Slab [115 M3]; Steel Grade 500 for IC, WB, OP [11 Tonne]; Mason [36 h]; Steel Fitter [36 h]; Carpenter [36 h]; Helper [72 h]; Crane [9 h] |  |  |  | 0 |
| BEW/ST/WB4/2270 |  | Span 5-8, Slab Casting including Staging, Shuttering & Rienforcement fixing and bearing | 20d | 2014-07-06 | 2014-08-10 | BEW/ST/WB4/2260, BEW/ST/WB4/2220 | 438.28d | 0d | RCC Class 50/20 MS7 in Deck Slab [660 M3]; Steel Grade 500 for IC, WB, OP [260 Tonne]; Mason [18 h]; Steel Fitter [108 h]; Carpenter [54 h]; Helper [108 h]; Crane [9 h]; Waterproofing for Bridge Decks [3244 Sqm]; Spherical Bearing [30 Number] |  |  |  | 0 |
| BEW/ST/WB4/2280 |  | Casting of Concrete Bridge Parapet | 24d | 2014-08-10 | 2014-09-11 | BEW/ST/WB4/2270 | 438.28d | 18d | Helper [54 h]; Concrete Class 40/20 MS7 in Precast Fascia Panel [270 M3]; Steel Grade 500 for IC, WB, OP [30 Tonne]; Mason [18 h]; Steel Fitter [36 h]; Carpenter [54 h]; Crane [9 h] |  | 845 | 43 days | 0 |
|  | 14 | **Roadworks for Wadi Bridge** |  | 2014-03-16 | 2014-11-06 |  |  |  |  |  |  |  |  |
| BEW/ST/WB4/1460 |  | Excavation for Retaining Wall A1 Side | 4d | 2014-03-16 | 2014-03-20 | BEW/ST/WB4/1300 | 441.83d | 0d | Unclassified structural excavation (depth 0m to 2.0m) [305 M3]; Excavator (Bucket & Breaker) [9 h]; Mason [9 h]; Helper [36 h] |  | 122 | 29 days | 0 |
| BEW/ST/WB4/1550 |  | Foundation for Retaining Wall A1 Side | 12d | 2014-03-20 | 2014-04-07 | BEW/ST/WB4/1460 | 470.28d | 0d | Boom Placers [9 h]; Unreinforced Concrete 16/20 [30 M3]; Concrete 40/20 MS7 in Retaining Wall [12 M3]; Mason [36 h]; Helper [72 h]; Steel Fitter [36 h]; Carpenter [36 h]; Crane [9 h]; Steel for Retaining wall and Box culverts [40 Tonne]; Waterproofing Membrane [2610 Sqm]; Water Proofing Paint for Retaining Wall and Bridges [2590 Sqm] |  | 123 | 59 days | 36 |
| BEW/ST/WB4/1560 |  | Excavation for Retaining Wall A2 Side | 4.44d | 2014-03-20 | 2014-03-27 | BEW/ST/WB4/1460 | 441.83d | 0d | Excavator (Bucket & Breaker) [9 h]; Unclassified structural excavation (depth 0m to 2.0m) [211 M3]; Mason [9 h]; Helper [40 h] |  |  |  | 0 |
| BEW/ST/WB4/1690 |  | Foundation for Retaining Wall A2 Side | 12d | 2014-03-27 | 2014-04-14 | BEW/ST/WB4/1560 | 441.83d | 0d | Boom Placers [9 h]; Unreinforced Concrete 16/20 [30 M3]; Concrete 40/20 MS7 in Retaining Wall [12 M3]; Mason [36 h]; Helper [72 h]; Carpenter [36 h]; Steel Fitter [36 h]; Crane [9 h]; Steel for Retaining wall and Box culverts [40 Tonne]; Water Proofing Paint for Retaining Wall and Bridges [2586 Sqm]; Waterproofing Membrane [2605 Sqm] |  |  |  | 36 |
| BEW/ST/WB4/1810 |  | Wall instalation of A1 Side | 24d | 2014-04-07 | 2014-05-11 | BEW/ST/WB4/1550 | 470.28d | 0d | Crane [18 h]; Mason [18 h]; Helper [72 h]; Carpenter [36 h]; Steel for Retaining wall and Box culverts [216 Tonne]; Concrete 40/20 MS7 in Retaining Wall [78 M3] |  | 124 | 120 days | 0 |
| BEW/ST/WB4/1820 |  | Earth filling & Embankment Preparation A1 Side | 21d | 2014-04-07 | 2014-05-06 | BEW/ST/WB4/1810 SS | 470.28d | 0d | Tipper (18 M3) [36 h]; Water Tanker (10K Gal) [9 h]; Motor Grader [9 h]; Vibratory Roller [18 h]; Borrow excavation to embankment [32000 M3]; Mason [18 h]; Helper [72 h]; Permeable back filling (Geotextile Membrane) [7034.38 Sqm]; 200 mm Dia. uPVC perforated pipe wrapped in Geotextile [12.5 LM]; Granular backfill [2328.44 M3]; Drainage pipe, 100mm uPVC in structure [6.25 LM]; Earth Filling for Dykes [1318.75 M3] |  | 125 | 125 days | 0 |
| BEW/ST/WB4/1850 |  | Wall instalation of A2 Side | 24d | 2014-04-14 | 2014-05-18 | BEW/ST/WB4/1690 | 441.83d | 0d | Crane [18 h]; Mason [18 h]; Helper [72 h]; Carpenter [36 h]; Concrete 40/20 MS7 in Retaining Wall [78 M3]; Steel for Retaining wall and Box culverts [216 Tonne] |  |  |  | 0 |
| BEW/ST/WB4/1880 |  | Granular Sub-Base A1 Side | 15d | 2014-05-06 | 2014-05-28 | BEW/ST/WB4/1820 | 470.28d | 0d | Tipper (18 M3) [36 h]; Motor Grader [9 h]; Vibratory Roller [9 h]; Water Tanker (10K Gal) [9 h]; Granular Sub-Base Course (Class B) [3200 M3]; Mason [18 h]; Helper [54 h] |  | 126 | 21 days | 0 |
| BEW/ST/WB4/1900 |  | Earth filling & Embankment Preparation A2 Side | 21d | 2014-05-18 | 2014-06-17 | BEW/ST/WB4/1850 | 441.83d | 0d | Tipper (18 M3) [36 h]; Water Tanker (10K Gal) [9 h]; Motor Grader [9 h]; Vibratory Roller [18 h]; Borrow excavation to embankment [32000 M3]; Mason [18 h]; Helper [72 h]; Drainage pipe, 100mm uPVC in structure [6.25 LM]; 200 mm Dia. uPVC perforated pipe wrapped in Geotextile [12.5 LM]; Granular backfill [2328.44 M3]; Permeable back filling (Geotextile Membrane) [7034.38 Sqm]; Earth Filling for Dykes [1318.75 M3] |  |  |  | 0 |
| BEW/ST/WB4/1910 |  | Concreting of Approch Slab A1 Side | 9d | 2014-05-28 | 2014-06-10 | BEW/ST/WB4/1880 | 470.28d | 28.44d | Boom Placers [9 h]; Concrete Class 40/20 MS7 in Approach Slab [20 M3]; Steel Grade 500 for IC, WB, OP [15.14 Tonne]; Mason [18 h]; Steel Fitter [18 h]; Carpenter [18 h]; Helper [36 h] |  |  |  | 0 |
| BEW/ST/WB4/1930 |  | Granular Sub-Base A2 Side | 15d | 2014-06-17 | 2014-07-08 | BEW/ST/WB4/1900 | 441.83d | 0d | Tipper (18 M3) [36 h]; Water Tanker (10K Gal) [9 h]; Motor Grader [9 h]; Vibratory Roller [9 h]; Granular Sub-Base Course (Class B) [3525 M3]; Mason [18 h]; Helper [54 h] |  |  |  | 0 |
| BEW/ST/WB4/1950 |  | Concreting of Approch Slab A2 Side | 9d | 2014-07-08 | 2014-07-21 | BEW/ST/WB4/1930 | 441.83d | 0d | Boom Placers [9 h]; Steel Grade 500 for IC, WB, OP [15.14 Tonne]; Concrete Class 40/20 MS7 in Approach Slab [20 M3]; Mason [18 h]; Helper [36 h]; Carpenter [18 h]; Steel Fitter [18 h] |  |  |  | 0 |
| BEW/ST/WB4/1970 |  | Aggregate Base Course | 10d | 2014-07-21 | 2014-08-11 | BEW/ST/WB4/1880, BEW/ST/WB4/1930, BEW/ST/WB4/1950, BEW/ST/WB4/1910 | 441.83d | 0d | Finishing Paver (Vogalle) [10 h]; Tandem Roller [10 h]; Tipper (18 M3) [54 h]; Crushed Aggregate Base Course (Class A) [1249 M3]; Mason [18 h]; Helper [72 h] |  | 127 | 14 days | 0 |
| BEW/ST/WB4/1990 |  | Crash Barrier & Median Works | 20d | 2014-08-11 | 2014-09-08 | BEW/ST/WB4/1970 | 441.83d | 21.56d | Boom Placers [9 h]; Crane [9 h]; Mason [18 h]; Helper [72 h]; Carpenter [36 h]; Steel Fitter [36 h]; Concrete Barrier for Bridge [555 LM] |  | 128 | 28 days | 0 |
| BEW/ST/WB4/2290 |  | Bituminous Base Course Including IC | 10d | 2014-08-11 | 2014-08-25 | BEW/ST/WB4/1970, BEW/ST/WB4/2220, BEW/ST/WB4/2270 | 441.83d | 0d | Bituminous Sprayer [9 h]; Finishing Paver (Vogalle) [10 h]; Pnematic Tyre Rollar [20 h]; Air Compressor 200 CFT [18 h]; Water Tanker (5K Gal) [10 h]; Tractor Broomer [9 h]; Bituminous Prime Coat [27185 Kilogram]; Bituminous Tack Coat [12600 Kilogram]; Bituminous Base Course [2950 M3]; Mason [18 h]; Helper [72 h] | 3,528 | 129 | 12 days | 0 |
| BEW/ST/WB4/2300 |  | Bituminous Wearing Course | 10d | 2014-08-25 | 2014-09-08 | BEW/ST/WB4/2290 | 441.83d | 21.56d | Tractor Broomer [9 h]; Finishing Paver (Vogalle) [10 h]; Pnematic Tyre Rollar [20 h]; Tandem Roller [10 h]; Water Tanker (5K Gal) [10 h]; Skid Wheel Loader (Bob Cat) [10 h]; Bituminous Sprayer [9 h]; Bituminous Tack Coat [12600 Kilogram]; Bituminous Wearing Course [410 M3]; Mason [18 h]; Helper [72 h] | 3,528 | 130 | 12 days | 0 |
| BEW/ST/WB4/2310 |  | Miscellaneous Works | 20d | 2014-10-09 | 2014-11-06 | BEW/ST/WB4/1990, BEW/ST/WB4/2300, BEW/ST/WB4/2250, BEW/ST/WB4/2280 | 420.28d | 0d | Mason [45 h]; Helper [135 h]; Abrasion resistant paint [2042.5 Sqm]; Bridge Loading Test - Testing by Static Load [2 Number]; Bridge Loading Test - Testing by Moving Load [2 Number]; Fabric wire mesh reinforcement of any size [1.25 M3]; Leveling and Grading for Wadi Training Works [3980 M3]; Strip Seal Type Expansion Joint [53 LM]; Isolation Joint at end of approach slab [52 LM] |  | 132 | 12 days | 0 |

| ID | WBS | Activity | Duration | Start | Finish | Predecessors | Total float | Free float | Resources | DIFF | MSP Activity ID | EAM Contact Person |
| --- | --- | --- | --- | --- | --- | --- | --- | --- | --- | --- | --- | --- |
|  | 08 | **Incidental Works** |  | 2013-07-16 | 2016-03-13 |  |  |  |  |  |  |  |
|  | 7 | **Gabbions** |  | 2015-05-03 | 2016-03-13 |  |  |  |  |  |  |  |
| BEW/IN/GEN/1060 |  | Gabion lining Ch 90 +300 to 93+300 | 24d | 2015-05-03 | 2015-06-11 | BEW/RD/INI/1130 | 102.06d | 0d | Gabion lining [5920 M3]; Wire Mesh Netting for slope protection [1833 Sqm]; Skilled Labour [54 h] | 0 |  |  |
| BEW/IN/GEN/1070 |  | Gabion lining Ch 114 +900 to 118+000 | 24d | 2015-06-11 | 2015-07-15 | BEW/IN/GEN/1060 | 102.06d | 0d | Gabion lining [5920 M3]; Wire Mesh Netting for slope protection [1833 Sqm]; Skilled Labour [54 h] | 0 |  |  |
| BEW/IN/GEN/1180 |  | Gabion lining Ch 93 +300 to 96+100 | 24d | 2015-06-11 | 2015-07-15 | BEW/IN/GEN/1060 | 126.06d | 0d | Gabion lining [5920 M3]; Wire Mesh Netting for slope protection [1833 Sqm]; Skilled Labour [54 h] | 0 |  |  |
| BEW/IN/GEN/1190 |  | Gabion lining Ch 118 +000 to 121+500 | 24d | 2015-07-15 | 2015-08-19 | BEW/IN/GEN/1070 | 102.06d | 0d | Gabion lining [5920 M3]; Wire Mesh Netting for slope protection [1833 Sqm]; Skilled Labour [54 h] | 0 |  |  |
| BEW/IN/GEN/1220 |  | Gabion liningCh 96 +100 to 99+300 | 24d | 2015-07-15 | 2015-08-19 | BEW/IN/GEN/1180 | 126.06d | 0d | Gabion lining [5920 M3]; Wire Mesh Netting for slope protection [1833 Sqm]; Skilled Labour [54 h] | 0 |  |  |
| BEW/IN/GEN/1230 |  | Gabion lining Ch 121 +500 to 124+500 | 24d | 2015-08-19 | 2015-09-22 | BEW/IN/GEN/1190 | 102.06d | 0d | Gabion lining [5920 M3]; Wire Mesh Netting for slope protection [1833 Sqm]; Skilled Labour [54 h] | 0 |  |  |
| BEW/IN/GEN/1260 |  | Gabion lining Ch 99 +300 to 102+800 | 24d | 2015-08-19 | 2015-09-22 | BEW/IN/GEN/1220 | 126.06d | 0d | Gabion lining [5920 M3]; Wire Mesh Netting for slope protection [1833 Sqm]; Skilled Labour [54 h] | 0 |  |  |
| BEW/IN/GEN/1270 |  | Gabion lining Ch 124 +500 to 127+500 | 24d | 2015-09-22 | 2015-10-27 | BEW/IN/GEN/1230 | 102.06d | 0d | Gabion lining [5920 M3]; Wire Mesh Netting for slope protection [1833 Sqm]; Skilled Labour [54 h] | 0 |  |  |
| BEW/IN/GEN/1320 |  | Gabion lining Ch 102 +800 to 105+300 | 24d | 2015-09-22 | 2015-10-27 | BEW/IN/GEN/1260 | 126.06d | 0d | Gabion lining [5920 M3]; Wire Mesh Netting for slope protection [1833 Sqm]; Skilled Labour [54 h] | 0 |  |  |
| BEW/IN/GEN/1330 |  | Gabion lining Ch 127 +500 to 130+500 | 24d | 2015-10-27 | 2015-12-01 | BEW/IN/GEN/1270 | 102.06d | 0d | Gabion lining [5920 M3]; Wire Mesh Netting for slope protection [1833 Sqm]; Skilled Labour [54 h] | 0 |  |  |
| BEW/IN/GEN/1360 |  | Gabion lining Ch 105 +300 to 109+000 | 24d | 2015-10-27 | 2015-12-01 | BEW/IN/GEN/1320 | 126.06d | 0d | Gabion lining [5920 M3]; Wire Mesh Netting for slope protection [1833 Sqm]; Skilled Labour [54 h] | 0 |  |  |
| BEW/IN/GEN/1370 |  | Gabion lining Ch 130 +500 to 133+500 | 24d | 2015-12-01 | 2016-01-05 | BEW/IN/GEN/1330 | 102.06d | 0d | Gabion lining [5920 M3]; Wire Mesh Netting for slope protection [1833 Sqm]; Skilled Labour [54 h] | 0 |  |  |
| BEW/IN/GEN/1400 |  | Gabion lining Ch 109 +000 to 112+200 | 24d | 2015-12-01 | 2016-01-05 | BEW/IN/GEN/1360 | 126.06d | 24d | Gabion lining [5920 M3]; Wire Mesh Netting for slope protection [1833 Sqm]; Skilled Labour [54 h] | 0 |  |  |
| BEW/IN/GEN/1410 |  | Gabion lining Ch 133 +500 to 136+500 | 24d | 2016-01-05 | 2016-02-08 | BEW/IN/GEN/1370 | 102.06d | 0d | Gabion lining [5920 M3]; Wire Mesh Netting for slope protection [1838 Sqm]; Skilled Labour [54 h] | 0 |  |  |
| BEW/IN/GEN/1430 |  | Gabion lining Ch 112 +200 to 114+900 | 24d | 2016-02-08 | 2016-03-13 | BEW/IN/GEN/1410, BEW/IN/GEN/1400 | 102.06d | 69.11d | Gabion lining [5920 M3]; Wire Mesh Netting for slope protection [1833 Sqm]; Skilled Labour [54 h] | 0 |  |  |
|  | 8 | **Rock Bolts, Anchors and Sprayed Concrete** |  | 2014-02-27 | 2015-09-23 |  |  |  |  |  |  |  |
| BEW/IN/GEN/1080 |  | Ch: 96+100 to 97+100 | 24d | 2014-02-27 | 2014-04-02 | BEW/RD/INI/1030 | 401.06d | 120d | Rock bolts 32mm dia. (at Heights < 15m) [60 LM]; Rock Anchors 32mm dia.(at Heights > 15m) [95 LM]; Concrete lining 20/20 Grade [750 M3]; Guiniting [110 Sqm]; Painting [1350 Sqm]; Skilled Labour [108 h] | 0 | 3382 | 115 days |
| BEW/IN/GEN/1090 |  | Ch: 111+700 to 114+500 | 24d | 2014-09-25 | 2014-11-02 | BEW/IN/GEN/1080, BEW/RD/INI/1040 | 281.06d | 0d | Rock bolts 32mm dia. (at Heights < 15m) [80 LM]; Rock Anchors 32mm dia.(at Heights > 15m) [60 LM]; Concrete lining 20/20 Grade [750 M3]; Guiniting [190 Sqm]; Painting [1500 Sqm]; Skilled Labour [108 h] | 0 | 3384 | 322 days |
| BEW/IN/GEN/1100 |  | Ch: 122+900 to 124+500 | 24d | 2014-11-02 | 2014-12-07 | BEW/IN/GEN/1090, BEW/RD/INI/1050 | 281.06d | 105d | Rock bolts 32mm dia. (at Heights < 15m) [50 LM]; Rock Anchors 32mm dia.(at Heights > 15m) [50 LM]; Concrete lining 20/20 Grade [700 M3]; Guiniting [180 Sqm]; Painting [1500 Sqm]; Skilled Labour [108 h] | 0 | 3486 | 360 days |
| BEW/IN/GEN/1110 |  | Ch: 134+300 to 136+100 | 24d | 2015-05-04 | 2015-06-14 | BEW/IN/GEN/1100, BEW/RD/INI/1060 | 176.06d | 0d | Rock bolts 32mm dia. (at Heights < 15m) [70 LM]; Rock Anchors 32mm dia.(at Heights > 15m) [50 LM]; Concrete lining 20/20 Grade [650 M3]; Guiniting [180 Sqm]; Painting [1500 Sqm]; Skilled Labour [108 h] | 0 | 3485 | 549 days |
| BEW/IN/GEN/1280 |  | Ch: 109+000 to 110+000 | 24d | 2015-06-14 | 2015-07-16 | BEW/IN/GEN/1080, BEW/IN/GEN/1110, BEW/RD/INI/1100 | 176.06d | 0d | Rock bolts 32mm dia. (at Heights < 15m) [85 LM]; Rock Anchors 32mm dia.(at Heights > 15m) [85 LM]; Concrete lining 20/20 Grade [800 M3]; Guiniting [120 Sqm]; Painting [1450 Sqm]; Skilled Labour [108 h] | 0 | 3383 | 215 days |
| BEW/IN/GEN/1440 |  | Ch: 119+200 to 120+300 | 24d | 2015-07-16 | 2015-08-20 | BEW/IN/GEN/1100, BEW/IN/GEN/1280, BEW/RD/INI/1120 | 176.06d | 0d | Rock bolts 32mm dia. (at Heights < 15m) [90 LM]; Rock Anchors 32mm dia.(at Heights > 15m) [90 LM]; Concrete lining 20/20 Grade [850 M3]; Guiniting [110 Sqm]; Painting [1350 Sqm]; Skilled Labour [108 h] | 0 | 3487 | 124 days |
| BEW/IN/GEN/1460 |  | Ch: 114+900 to 116+200 | 24d | 2015-08-20 | 2015-09-23 | BEW/IN/GEN/1440, BEW/RD/INI/1130 | 176.06d | 0d | Rock bolts 32mm dia. (at Heights < 15m) [65 LM]; Rock Anchors 32mm dia.(at Heights > 15m) [70 LM]; Concrete lining 20/20 Grade [500 M3]; Guiniting [110 Sqm]; Painting [1350 Sqm]; Skilled Labour [108 h] | 0 | 3488 | 64 days |

| ID | WBS | Activity | Duration | Start | Finish | Predecessors | Total float | Free float | Resources | MSP Activity ID | EAM Contact Person | DIFF |
| --- | --- | --- | --- | --- | --- | --- | --- | --- | --- | --- | --- | --- |
|  | 10 | **Shotcrete** |  | 2014-02-27 | 2015-11-29 |  |  |  |  |  |  |  |
| BEW/IN/GEN/1120 |  | Ch: 96+100 to 97+100 | 45d | 2014-02-27 | 2014-05-01 | BEW/RD/INI/1030 | 524.06d | 99d | Shortcrete [5000 Sqm]; Skilled Labour [108 h] | 3382 | 115 days | 0 |
| BEW/IN/GEN/1140 |  | Ch: 122+900 to 124+500 | 45d | 2014-08-26 | 2014-10-30 | BEW/RD/INI/1050 FF | 282.06d | 85d | Shortcrete [7200 Sqm]; Skilled Labour [108 h] | 3486 | 360 days | 0 |
| BEW/IN/GEN/1130 |  | Ch: 111+700 to 114+500 | 45d | 2014-09-25 | 2014-12-02 | BEW/RD/INI/1040, BEW/IN/GEN/1120 | 425.06d | 392.11d | Shortcrete [4100 Sqm]; Skilled Labour [108 h] | 3384 | 322 days | 0 |
| BEW/IN/GEN/1450 |  | Ch: 119+200 to 120+300 | 45d | 2015-03-01 | 2015-05-03 | BEW/RD/INI/1100, BEW/RD/INI/1120 | 273.06d | 97d | Shortcrete [1500 Sqm]; Skilled Labour [108 h] | 3487 | 124 days | 0 |
| BEW/IN/GEN/1150 |  | Ch: 134+300 to 136+100 | 45d | 2015-03-02 | 2015-05-04 | BEW/RD/INI/1060 FF, BEW/IN/GEN/1140 | 197.06d | 0d | Shortcrete [7700 Sqm]; Skilled Labour [108 h] | 3485 | 549 days | 0 |
| BEW/IN/GEN/1290 |  | Ch: 109+000 to 110+000 | 45d | 2015-05-04 | 2015-07-13 | BEW/RD/INI/1100, BEW/RD/INI/1100 FF, BEW/IN/GEN/1150 | 227.06d | 51d | Shortcrete [8500 Sqm]; Skilled Labour [108 h] | 3383 | 215 days | 0 |
| BEW/IN/GEN/1470 |  | Ch: 114+900 to 116+200 | 45d | 2015-09-23 | 2015-11-29 | BEW/IN/GEN/1450, BEW/RD/INI/1120, BEW/IN/GEN/1290, BEW/IN/GEN/1460 | 176.06d | 143.11d | Shortcrete [7000 Sqm]; Skilled Labour [108 h] | 3488 | 64 days | 0 |
|  | 6 | **Riprap Works -** |  | 2013-07-16 | 2015-10-28 |  |  |  |  |  |  |  |
| BEW/IN/GEN/1000 |  | Mortared Stone Riprap Ch 90 +300 to 93+300 | 24d | 2013-07-16 | 2013-08-22 |  | 575.94d | 0d | Mortared Stone Riprap Slope Protection [27800 M3]; Geotextile Fabric Filter [446 Sqm]; Skilled Labour [99 h] |  |  | 0 |
| BEW/IN/GEN/1010 |  | Mortared Stone Riprap Ch 114 +900 to 118+000 | 24d | 2013-08-22 | 2013-09-25 | BEW/IN/GEN/1000 | 575.94d | 0d | Mortared Stone Riprap Slope Protection [27800 M3]; Geotextile Fabric Filter [446 Sqm]; Skilled Labour [99 h] |  |  | 0 |
| BEW/IN/GEN/1160 |  | Mortared Stone Riprap Ch 93 +300 to 96+100 | 24d | 2013-08-22 | 2013-09-25 | BEW/IN/GEN/1000 | 575.94d | 0d | Mortared Stone Riprap Slope Protection [27800 M3]; Geotextile Fabric Filter [446 Sqm]; Skilled Labour [99 h] |  |  | 0 |
| BEW/IN/GEN/1020 |  | Loose Stone Riprap Dyke for Wadi Bridge 11, 12 | 24d | 2013-09-25 | 2013-10-30 | BEW/IN/GEN/1010 | 625.94d | 0d | Loose Stone Riprap Dyke [3435 M3]; Skilled Labour [63 h] |  |  | 0 |
| BEW/IN/GEN/1170 |  | Mortared Stone Riprap Ch 118 +000 to 121+500 | 24d | 2013-09-25 | 2013-10-30 | BEW/IN/GEN/1010 | 575.94d | 378.89d | Mortared Stone Riprap Slope Protection [27800 M3]; Geotextile Fabric Filter [446 Sqm]; Skilled Labour [99 h] |  |  | 0 |
| BEW/IN/GEN/1200 |  | Mortared Stone Riprap Ch 96 +100 to 99+300 | 24d | 2013-09-25 | 2013-10-30 | BEW/IN/GEN/1160 | 575.94d | 0d | Mortared Stone Riprap Slope Protection [27800 M3]; Geotextile Fabric Filter [446 Sqm]; Skilled Labour [99 h] |  |  | 0 |
| BEW/IN/GEN/1030 |  | Loose Stone Riprap Dyke for Wadi Bridge 13,14 | 24d | 2013-10-30 | 2013-12-05 | BEW/IN/GEN/1020 | 625.94d | 0d | Loose Stone Riprap Dyke [3435 M3]; Skilled Labour [63 h] |  |  | 0 |
| BEW/IN/GEN/1240 |  | Mortared Stone Riprap Ch 99 +300 to 102+800 | 24d | 2013-10-30 | 2013-12-05 | BEW/IN/GEN/1200 | 575.94d | 0d | Mortared Stone Riprap Slope Protection [27800 M3]; Geotextile Fabric Filter [446 Sqm]; Skilled Labour [99 h] |  |  | 0 |
| BEW/IN/GEN/1040 |  | Mortared Stone Riprap for Dyke at WB 11,12 | 24d | 2013-12-05 | 2014-01-09 | BEW/IN/GEN/1030 | 625.94d | 0d | Mortared Stone Riprap Dyke [3275 M3]; Skilled Labour [99 h] |  |  | 0 |
| BEW/IN/GEN/1300 |  | Mortared Stone Riprap Ch 102 +800 to 105+300 | 24d | 2013-12-05 | 2014-01-09 | BEW/IN/GEN/1240 | 575.94d | 0d | Mortared Stone Riprap Slope Protection [27800 M3]; Geotextile Fabric Filter [446 Sqm]; Skilled Labour [99 h] |  |  | 0 |
| BEW/IN/GEN/1050 |  | Mortared Stone Riprap for Dyke at WB 13,14 | 24d | 2014-01-09 | 2014-02-13 | BEW/IN/GEN/1040 | 625.94d | 277.67d | Mortared Stone Riprap Dyke [3275 M3]; Skilled Labour [99 h] |  |  | 0 |
| BEW/IN/GEN/1340 |  | Mortared Stone Riprap Ch 105 +300 to 109+000 | 24d | 2014-01-09 | 2014-02-13 | BEW/IN/GEN/1300 | 575.94d | 0d | Mortared Stone Riprap Slope Protection [27800 M3]; Geotextile Fabric Filter [446 Sqm]; Skilled Labour [99 h] |  |  | 0 |
| BEW/IN/GEN/1380 |  | Mortared Stone Riprap Ch 109 +000 to 112+200 | 24d | 2014-02-13 | 2014-03-19 | BEW/IN/GEN/1340 | 575.94d | 0d | Mortared Stone Riprap Slope Protection [27800 M3]; Geotextile Fabric Filter [446 Sqm]; Skilled Labour [99 h] |  |  | 0 |
| BEW/IN/GEN/1420 |  | Mortared Stone Riprap Ch 112 +200 to 114+900 | 24d | 2014-03-19 | 2014-04-22 | BEW/IN/GEN/1380 | 575.94d | 543d | Mortared Stone Riprap Slope Protection [27800 M3]; Geotextile Fabric Filter [446 Sqm]; Skilled Labour [99 h] |  |  | 0 |
| BEW/IN/GEN/1210 |  | Mortared Stone Riprap Ch 121 +500 to 124+500 | 24d | 2015-05-04 | 2015-06-14 | BEW/IN/GEN/1170, BEW/IN/GEN/1150 | 197.06d | 0d | Mortared Stone Riprap Slope Protection [27800 M3]; Geotextile Fabric Filter [446 Sqm]; Skilled Labour [99 h] |  |  | 0 |
| BEW/IN/GEN/1250 |  | Mortared Stone Riprap Ch 124 +500 to 127+500 | 24d | 2015-06-14 | 2015-07-16 | BEW/IN/GEN/1210 | 197.06d | 0d | Mortared Stone Riprap Slope Protection [27800 M3]; Geotextile Fabric Filter [446 Sqm]; Skilled Labour [99 h] |  |  | 0 |
| BEW/IN/GEN/1310 |  | Mortared Stone Riprap Ch 127 +500 to 130+500 | 24d | 2015-07-16 | 2015-08-20 | BEW/IN/GEN/1250 | 197.06d | 0d | Mortared Stone Riprap Slope Protection [27800 M3]; Geotextile Fabric Filter [446 Sqm]; Skilled Labour [99 h] |  |  | 0 |
| BEW/IN/GEN/1350 |  | Mortared Stone Riprap Ch 130 +500 to 133+500 | 24d | 2015-08-20 | 2015-09-23 | BEW/IN/GEN/1310 | 197.06d | 0d | Mortared Stone Riprap Slope Protection [27800 M3]; Geotextile Fabric Filter [446 Sqm]; Skilled Labour [99 h] |  |  | 0 |
| BEW/IN/GEN/1390 |  | Mortared Stone Riprap Ch 133 +500 to 136+500 | 24d | 2015-09-23 | 2015-10-28 | BEW/IN/GEN/1350, BEW/IN/GEN/1380 | 197.06d | 164.11d | Mortared Stone Riprap Slope Protection [27800 M3]; Geotextile Fabric Filter [456 Sqm]; Skilled Labour [99 h] |  |  | 0 |

| ID | WBS | Activity | Duration | Start | Finish | Predecessors | Total float | Free float | Resources | DIFF |
| --- | --- | --- | --- | --- | --- | --- | --- | --- | --- | --- |
|  | 2 | **Road Side Barriers** |  | 2013-07-16 | 2013-08-22 |  |  |  |  |  |
|  | 1 | **Location 1** |  | 2013-07-16 | 2013-08-22 |  |  |  |  |  |
|  | 1 | **Ch 90 +300 to 93+300** |  | 2013-07-16 | 2013-08-21 |  |  |  |  |  |
| BEW/IN/GEN/4020 |  | Instalation of W Beams | 23d | 2013-07-16 | 2013-08-21 |  | 757.94d |  | W-Beam Guardrail [12000 LM]; W-Beam Guardrail Terminal section [40 Number]; Skilled Labour [54 h] | 0 |
| BEW/IN/GEN/4030 |  | Pre Cast Concrete Barriers | 23d | 2013-07-16 | 2013-08-21 |  | 757.94d |  | Skilled Labour [45 h] | 0 |
|  | 8 | **IC 08** |  | 2013-07-16 | 2013-08-22 |  |  |  |  |  |
| BEW/IN/GEN/4380 |  | Pre Cast Concrete Barriers | 23d | 2013-07-16 | 2013-08-21 |  | 757.94d |  | Precast Concrete barrier, Single face [1850 LM]; Concrete barrier, transition section [10 LM]; Skilled Labour [45 h] | 0 |
| BEW/IN/GEN/4420 |  | Pier Protection | 24d | 2013-07-16 | 2013-08-22 |  | 756.94d |  | End anchorage for approach [139 Number]; End anchorage for approach - Guard [5 Number]; Guardrail connection with Concrete barrier [31 Number]; Heavy Duty Concrete barrier [200 LM]; Impact attenuator, Quad Beam type [3 Number]; Skilled Labour [36 h] | 0 |
|  | 10 | **OP 10** |  | 2013-07-16 | 2013-08-21 |  |  |  |  |  |
| BEW/IN/GEN/4400 |  | Pre Cast Concrete Barriers | 23d | 2013-07-16 | 2013-08-21 |  | 744.94d | 712d | Precast Concrete barrier, Single face [1850 LM]; Concrete barrier, transition section [10 LM]; Skilled Labour [45 h] | 0 |
| BEW/IN/GEN/4440 |  | Pier Protection | 23d | 2013-07-16 | 2013-08-21 |  | 744.94d | 712d | Guardrail connection with Concrete barrier [28 Number]; Heavy Duty Concrete barrier [200 LM]; Skilled Labour [36 h] | 0 |
|  | 3 | **Fences and Markers** |  | 2013-07-16 | 2013-11-11 |  |  |  |  |  |
|  | 1 | **Location 1** |  | 2013-07-16 | 2013-11-11 |  |  |  |  |  |
|  | 1 | **Ch 90 +300 to 93+300** |  | 2013-07-16 | 2013-11-11 |  |  |  |  |  |
| BEW/IN/GEN/4520 |  | Instalation of Chain Link fences | 60d | 2013-07-16 | 2013-10-13 |  | 720.94d |  | Chain-Link fence (2.10m height [5860 LM]; Chain-Link gate, double frame, 2.10m height [3 Sqm]; Chain-Link gate, single frame, [1 Sqm]; Skilled Labour [99 h] | 0 |
| BEW/IN/GEN/4540 |  | Instalation of Road Studs & Bollards | 41d | 2013-07-16 | 2013-09-16 |  | 712.94d | 0d | Reflecting Road Studs (Double face, Red color) [565 Number]; Reflecting Road Studs (Single face, White color) [530 Number]; Provide removable bollards [2 Number]; Skilled Labour [54 h] | 0 |
| BEW/IN/GEN/4530 |  | Instalation of Row Markers | 24d | 2013-10-03 | 2013-11-11 | BEW/DE/DS/1070 | 702.06d |  | Right of Way Concrete Marker Post [60 Number]; Skilled Labour [54 h] | 0 |
|  | 4 | **Traffic Signs and Road Marking** |  | 2013-07-16 | 2014-01-08 |  |  |  |  |  |
|  | 1 | **Location 1** |  | 2013-07-16 | 2014-01-08 |  |  |  |  |  |
|  | 1 | **Ch 90 +300 to 93+300** |  | 2013-07-16 | 2013-09-29 |  |  |  |  |  |
| BEW/IN/GEN/4970 |  | Traffic Signs LHS | 25d | 2013-07-16 | 2013-08-25 |  | 703.94d | 0d | Highway Sign, T 750 [2 Number]; Highway Sign T 900 [1 Number]; Highway Sign T 1200 [1 Number]; Highway Sign T 1500 [2 Number]; Highway sign, Circular (Diameter 750mm) [2 Number]; Highway sign, Circular (Diameter 900mm) [2 Number]; Highway sign, Circular (Diameter 1200mm) [1 Number]; Chevron Signs, rectangular [2100 mm x 600 mm] [1 Sqm]; Highway Signs, rectangular [750x1400] [3.8 Sqm]; Supplementary plate, rectangular [1200 mm x 700 mm] [1.4 Sqm]; Supplementary plate, rectangular [1500 mm x 700 mm] [1 Sqm]; Rectangular or Polygonal Sign Face (Area 1-2 sq m) [1 Sqm]; Rectangular or Polygonal Sign Face (Area 2-4 sq m) [1 Sqm]; Rectangular Sign Face (Area 4-6 sq m) [4 Sqm]; Rectangular Sign Face (Area 9-11 sq m) [9 Sqm]; Rectangular Sign Face (Area 14-17 sq m) [14 Sqm]; Rectangular Sign Face (Area 19-24 sq m) [20 Sqm]; Rectangular Sign Face (Area 44-50 sq m) [8 Sqm]; Octagonal Road signs (Height 900mm) [1 Sqm]; Sign post support assembly G.I pipe 100mm Di [17 Number]; Multi-post Sign Support Assembly, Type PI posts [1 Number]; Multi-post Sign Support Assembly, Type PII posts [1 Number]; Multi-post Sign Support Assembly, Type PIII posts, [1 Number]; Multi-post Sign Support Assembly, Type PIV posts [1 Number]; Multi-post Sign Support Assembly, Type PV [1 Number]; Overhead Gantry Type C1 [1 Number]; Skilled Labour [54 h] | 0 |
| BEW/IN/GEN/4980 |  | Road Markings LHS | 24d | 2013-07-16 | 2013-08-22 |  | 705.94d | 0d | Traffic Lines, Type L1/2(120) White [12 Sqm]; Traffic Lines, Type L1/3(120) White [186 Sqm]; Traffic Lines, Type L2A(120) White [20 Sqm]; Traffic Lines, Type L2/1(120) White [1 Sqm]; Traffic Lines, Type L2/2(120) White [11 Sqm]; Traffic Lines, Type L4/1(150) Yellow [955 Sqm]; Traffic Lines, Type L4/2(120) Yellow [346 Sqm]; Traffic Lines, Type L5/1(150) White [30 Sqm]; Traffic Lines, Type L5/2(120) White [9 Sqm]; (Mechanical application) [1 Sqm]; Traffic Lines, Type L8(200) White [5 Sqm]; Special Marking , Pedestrian Crossing [6 Sqm]; Special Marking , Chevrons Marking S9 [66 Sqm]; Special Marking , Lane Selection Arrow White (S3/1) [3 Sqm]; Special Marking , Lane Selection Arrow White (S4/1) [4 Sqm]; Special Marking , Lane Selection Arrow White (S5/1) [5 Sqm]; Special Marking , Lane Selection Arrow White (S7/1) [3 Sqm]; Special Marking , Lane Selection Arrow White (S8/1) [3 Sqm]; Curb painting [200 Sqm]; Skilled Labour [54 h] | 0 |
| BEW/IN/GEN/4990 |  | Flag Pole erection | 24d | 2013-07-16 | 2013-08-22 |  | 729.94d | 69d | Supply and erect new flag poles [68 Number]; Skilled Labour [54 h] | 0 |
| BEW/IN/GEN/5000 |  | Camera Foundations | 24d | 2013-07-16 | 2013-08-22 |  | 729.94d | 274.89d | Concrete Foundation for Speed Control Camera [1 Number]; Skilled Labour [72 h] | 0 |
| BEW/IN/GEN/5670 |  | Road Markings RHS | 24d | 2013-08-22 | 2013-09-25 | BEW/IN/GEN/4980 | 705.94d | 69d | Traffic Lines, Type L1/2(120) White [12 Sqm]; Traffic Lines, Type L1/3(120) White [186 Sqm]; Traffic Lines, Type L2A(120) White [20 Sqm]; Traffic Lines, Type L2/1(120) White [1 Sqm]; Traffic Lines, Type L2/2(120) White [11 Sqm]; Traffic Lines, Type L4/1(150) Yellow [955 Sqm]; Traffic Lines, Type L4/2(120) Yellow [346 Sqm]; Traffic Lines, Type L5/1(150) White [30 Sqm]; Traffic Lines, Type L5/2(120) White [9 Sqm]; (Mechanical application) [1 Sqm]; Traffic Lines, Type L8(200) White [5 Sqm]; Special Marking , Pedestrian Crossing [6 Sqm]; Special Marking , Chevrons Marking S9 [66 Sqm]; Special Marking , Lane Selection Arrow White (S3/1) [3 Sqm]; Special Marking , Lane Selection Arrow White (S4/1) [4 Sqm]; Special Marking , Lane Selection Arrow White (S5/1) [5 Sqm]; Special Marking , Lane Selection Arrow White (S7/1) [3 Sqm]; Special Marking , Lane Selection Arrow White (S8/1) [3 Sqm]; Curb painting [200 Sqm]; Skilled Labour [54 h] | 0 |
| BEW/IN/GEN/5820 |  | Traffic Signs RHS | 25d | 2013-08-25 | 2013-09-29 | BEW/IN/GEN/4970 | 703.94d | 69d | Highway Sign, T 750 [2 Number]; Highway Sign T 900 [1 Number]; Highway Sign T 1200 [1 Number]; Highway Sign T 1500 [2 Number]; Highway sign, Circular (Diameter 750mm) [2 Number]; Highway sign, Circular (Diameter 900mm) [2 Number]; Highway sign, Circular (Diameter 1200mm) [1 Number]; Chevron Signs, rectangular [2100 mm x 600 mm] [1 Sqm]; Highway Signs, rectangular [750x1400] [3 Sqm]; Supplementary plate, rectangular [1200 mm x 700 mm] [1 Sqm]; Supplementary plate, rectangular [1500 mm x 700 mm] [1 Sqm]; Rectangular or Polygonal Sign Face (Area 1-2 sq m) [1 Sqm]; Rectangular or Polygonal Sign Face (Area 2-4 sq m) [1 Sqm]; Rectangular Sign Face (Area 4-6 sq m) [4 Sqm]; Rectangular Sign Face (Area 9-11 sq m) [9 Sqm]; Rectangular Sign Face (Area 14-17 sq m) [14 Sqm]; Rectangular Sign Face (Area 19-24 sq m) [20 Sqm]; Rectangular Sign Face (Area 44-50 sq m) [8 Sqm]; Octagonal Road signs (Height 900mm) [1 Sqm]; Sign post support assembly G.I pipe 100mm Di [17 Number]; Multi-post Sign Support Assembly, Type PI posts [1 Number]; Multi-post Sign Support Assembly, Type PII posts [1 Number]; Multi-post Sign Support Assembly, Type PIII posts, [1 Number]; Multi-post Sign Support Assembly, Type PIV posts [1 Number]; Multi-post Sign Support Assembly, Type PV [1 Number]; Overhead Gantry Type C1 [1 Number]; Skilled Labour [54 h] | 0 |

| ID | WBS | Activity | Duration | Start | Finish | Predecessors | Total float | Free float | Resources | DIFF |
| --- | --- | --- | --- | --- | --- | --- | --- | --- | --- | --- |
|  | 2 | **Ch 93 +300 to 96+100** |  | 2013-07-16 | 2013-09-29 |  |  |  |  |  |
| BEW/IN/GEN/5530 |  | Traffic Signs LHS | 25d | 2013-07-16 | 2013-08-25 |  | 703.94d | 0d | Highway Sign, T 750 [2 Number]; Highway Sign T 900 [1 Number]; Highway Sign T 1200 [1 Number]; Highway Sign T 1500 [2 Number]; Highway sign, Circular (Diameter 750mm) [2 Number]; Highway sign, Circular (Diameter 900mm) [2 Number]; Highway sign, Circular (Diameter 1200mm) [1 Number]; Chevron Signs, rectangular [2100 mm x 600 mm] [1 Sqm]; Highway Signs, rectangular [750x1400] [3 Sqm]; Supplementary plate, rectangular [1200 mm x 700 mm] [1 Sqm]; Supplementary plate, rectangular [1500 mm x 700 mm] [1 Sqm]; Rectangular or Polygonal Sign Face (Area 1-2 sq m) [1 Sqm]; Rectangular or Polygonal Sign Face (Area 2-4 sq m) [1 Sqm]; Rectangular Sign Face (Area 4-6 sq m) [4 Sqm]; Rectangular Sign Face (Area 9-11 sq m) [9 Sqm]; Rectangular Sign Face (Area 14-17 sq m) [14 Sqm]; Rectangular Sign Face (Area 19-24 sq m) [20 Sqm]; Rectangular Sign Face (Area 44-50 sq m) [8 Sqm]; Octagonal Road signs (Height 900mm) [1 Sqm]; Sign post support assembly G.I pipe 100mm Di [17 Number]; Multi-post Sign Support Assembly, Type PI posts [1 Number]; Multi-post Sign Support Assembly, Type PII posts [1 Number]; Multi-post Sign Support Assembly, Type PIII posts, [1 Number]; Multi-post Sign Support Assembly, Type PIV posts [1 Number]; Multi-post Sign Support Assembly, Type PV [1 Number]; Overhead Gantry Type C1 [1 Number]; Skilled Labour [54 h] | 0 |
| BEW/IN/GEN/5540 |  | Road Markings LHS | 24d | 2013-07-16 | 2013-08-22 |  | 705.94d | 0d | Traffic Lines, Type L1/2(120) White [12 Sqm]; Traffic Lines, Type L1/3(120) White [186 Sqm]; Traffic Lines, Type L2A(120) White [20 Sqm]; Traffic Lines, Type L2/1(120) White [1 Sqm]; Traffic Lines, Type L2/2(120) White [11 Sqm]; Traffic Lines, Type L4/1(150) Yellow [955 Sqm]; Traffic Lines, Type L4/2(120) Yellow [346 Sqm]; Traffic Lines, Type L5/1(150) White [30 Sqm]; Traffic Lines, Type L5/2(120) White [9 Sqm]; (Mechanical application) [1 Sqm]; Traffic Lines, Type L8(200) White [5 Sqm]; Special Marking , Pedestrian Crossing [6 Sqm]; Special Marking , Chevrons Marking S9 [66 Sqm]; Special Marking , Lane Selection Arrow White (S3/1) [3 Sqm]; Special Marking , Lane Selection Arrow White (S4/1) [4 Sqm]; Special Marking , Lane Selection Arrow White (S5/1) [5 Sqm]; Special Marking , Lane Selection Arrow White (S7/1) [3 Sqm]; Special Marking , Lane Selection Arrow White (S8/1) [3 Sqm]; Curb painting [200 Sqm]; Skilled Labour [54 h] | 0 |
| BEW/IN/GEN/5550 |  | Flag Pole erection | 24d | 2013-07-16 | 2013-08-22 |  | 729.94d | 69d | Supply and erect new flag poles [68 Number]; Skilled Labour [54 h] | 0 |
| BEW/IN/GEN/5560 |  | Camera Foundations | 24d | 2013-07-16 | 2013-08-22 |  | 729.94d | 274.89d | Concrete Foundation for Speed Control Camera [1 Number]; Skilled Labour [72 h] | 0 |
| BEW/IN/GEN/5810 |  | Road Markings RHS | 24d | 2013-08-22 | 2013-09-25 | BEW/IN/GEN/5540 | 705.94d | 69d | Traffic Lines, Type L1/2(120) White [12 Sqm]; Traffic Lines, Type L1/3(120) White [186 Sqm]; Traffic Lines, Type L2A(120) White [20 Sqm]; Traffic Lines, Type L2/1(120) White [1 Sqm]; Traffic Lines, Type L2/2(120) White [11 Sqm]; Traffic Lines, Type L4/1(150) Yellow [955 Sqm]; Traffic Lines, Type L4/2(120) Yellow [346 Sqm]; Traffic Lines, Type L5/1(150) White [30 Sqm]; Traffic Lines, Type L5/2(120) White [9 Sqm]; (Mechanical application) [1 Sqm]; Traffic Lines, Type L8(200) White [5 Sqm]; Special Marking , Pedestrian Crossing [6 Sqm]; Special Marking , Chevrons Marking S9 [66 Sqm]; Special Marking , Lane Selection Arrow White (S3/1) [3 Sqm]; Special Marking , Lane Selection Arrow White (S4/1) [4 Sqm]; Special Marking , Lane Selection Arrow White (S5/1) [5 Sqm]; Special Marking , Lane Selection Arrow White (S7/1) [3 Sqm]; Special Marking , Lane Selection Arrow White (S8/1) [3 Sqm]; Curb painting [200 Sqm]; Skilled Labour [54 h] | 0 |
| BEW/IN/GEN/5960 |  | Traffic Signs RHS | 25d | 2013-08-25 | 2013-09-29 | BEW/IN/GEN/5530 | 703.94d | 69d | Highway Sign, T 750 [2 Number]; Highway Sign T 900 [1 Number]; Highway Sign T 1200 [1 Number]; Highway Sign T 1500 [2 Number]; Highway sign, Circular (Diameter 750mm) [2 Number]; Highway sign, Circular (Diameter 900mm) [2 Number]; Highway sign, Circular (Diameter 1200mm) [1 Number]; Chevron Signs, rectangular [2100 mm x 600 mm] [1 Sqm]; Highway Signs, rectangular [750x1400] [3 Sqm]; Supplementary plate, rectangular [1200 mm x 700 mm] [1 Sqm]; Supplementary plate, rectangular [1500 mm x 700 mm] [1 Sqm]; Rectangular or Polygonal Sign Face (Area 1-2 sq m) [1 Sqm]; Rectangular or Polygonal Sign Face (Area 2-4 sq m) [1 Sqm]; Rectangular Sign Face (Area 4-6 sq m) [4 Sqm]; Rectangular Sign Face (Area 9-11 sq m) [9 Sqm]; Rectangular Sign Face (Area 14-17 sq m) [14 Sqm]; Rectangular Sign Face (Area 19-24 sq m) [20 Sqm]; Rectangular Sign Face (Area 44-50 sq m) [8 Sqm]; Octagonal Road signs (Height 900mm) [1 Sqm]; Sign post support assembly G.I pipe 100mm Di [17 Number]; Multi-post Sign Support Assembly, Type PI posts [1 Number]; Multi-post Sign Support Assembly, Type PII posts [1 Number]; Multi-post Sign Support Assembly, Type PIII posts, [1 Number]; Multi-post Sign Support Assembly, Type PIV posts [1 Number]; Multi-post Sign Support Assembly, Type PV [1 Number]; Overhead Gantry Type C1 [1 Number]; Skilled Labour [54 h] | 0 |
|  | 3 | **Ch 96 +100 to 99+300** |  | 2013-10-27 | 2014-01-08 |  |  |  |  |  |
| BEW/IN/GEN/5490 |  | Traffic Signs LHS | 25d | 2013-10-27 | 2013-12-03 | BEW/RD1/BI/1420 | 634.94d | 0d | Highway Sign, T 750 [2 Number]; Highway Sign T 900 [1 Number]; Highway Sign T 1200 [1 Number]; Highway Sign T 1500 [2 Number]; Highway sign, Circular (Diameter 750mm) [2 Number]; Highway sign, Circular (Diameter 900mm) [2 Number]; Highway sign, Circular (Diameter 1200mm) [1 Number]; Chevron Signs, rectangular [2100 mm x 600 mm] [1 Sqm]; Highway Signs, rectangular [750x1400] [3 Sqm]; Highway Signs, rectangular [600x800] [1 Sqm]; Supplementary plate, rectangular [1200 mm x 700 mm] [1 Sqm]; Supplementary plate, rectangular [1500 mm x 700 mm] [1 Sqm]; Rectangular or Polygonal Sign Face (Area 1-2 sq m) [1 Sqm]; Rectangular or Polygonal Sign Face (Area 2-4 sq m) [1 Sqm]; Rectangular Sign Face (Area 4-6 sq m) [4 Sqm]; Rectangular Sign Face (Area 9-11 sq m) [9 Sqm]; Rectangular Sign Face (Area 14-17 sq m) [14 Sqm]; Rectangular Sign Face (Area 19-24 sq m) [20 Sqm]; Rectangular Sign Face (Area 44-50 sq m) [8 Sqm]; Octagonal Road signs (Height 900mm) [1 Sqm]; Sign post support assembly G.I pipe 100mm Di [17 Number]; Multi-post Sign Support Assembly, Type PI posts [1 Number]; Multi-post Sign Support Assembly, Type PII posts [1 Number]; Multi-post Sign Support Assembly, Type PIII posts, [1 Number]; Multi-post Sign Support Assembly, Type PIV posts [1 Number]; Multi-post Sign Support Assembly, Type PV [1 Number]; Overhead Gantry Type C1 [1 Number]; Skilled Labour [54 h] | 0 |
| BEW/IN/GEN/5500 |  | Road Markings LHS | 24d | 2013-10-27 | 2013-12-02 | BEW/RD1/BI/1420 | 636.94d | 0d | Traffic Lines, Type L1/2(120) White [12 Sqm]; Traffic Lines, Type L1/3(120) White [186 Sqm]; Traffic Lines, Type L2A(120) White [20 Sqm]; Traffic Lines, Type L2/1(120) White [1 Sqm]; Traffic Lines, Type L2/2(120) White [11 Sqm]; Traffic Lines, Type L4/1(150) Yellow [955 Sqm]; Traffic Lines, Type L4/2(120) Yellow [346 Sqm]; Traffic Lines, Type L5/1(150) White [30 Sqm]; Traffic Lines, Type L5/2(120) White [9 Sqm]; (Mechanical application) [1 Sqm]; Traffic Lines, Type L8(200) White [5 Sqm]; Special Marking , Pedestrian Crossing [6 Sqm]; Special Marking , Chevrons Marking S9 [66 Sqm]; Special Marking , Lane Selection Arrow White (S3/1) [3 Sqm]; Special Marking , Lane Selection Arrow White (S4/1) [4 Sqm]; Special Marking , Lane Selection Arrow White (S5/1) [5 Sqm]; Special Marking , Lane Selection Arrow White (S7/1) [3 Sqm]; Special Marking , Lane Selection Arrow White (S8/1) [3 Sqm]; Curb painting [200 Sqm]; Skilled Labour [54 h] | 0 |
| BEW/IN/GEN/5510 |  | Flag Pole erection | 24d | 2013-10-27 | 2013-12-02 | BEW/RD1/BI/1420 | 660.94d | 0d | Supply and erect new flag poles [68 Number]; Skilled Labour [54 h] | 0 |
| BEW/IN/GEN/5520 |  | Camera Foundations | 24d | 2013-10-27 | 2013-12-02 | BEW/RD1/BI/1420 | 660.94d | 205.89d | Concrete Foundation for Speed Control Camera [1 Number]; Skilled Labour [72 h] | 0 |
| BEW/IN/GEN/5800 |  | Road Markings RHS | 24d | 2013-12-02 | 2014-01-06 | BEW/IN/GEN/5500 | 636.94d | 0d | Traffic Lines, Type L1/2(120) White [12 Sqm]; Traffic Lines, Type L1/3(120) White [186 Sqm]; Traffic Lines, Type L2A(120) White [20 Sqm]; Traffic Lines, Type L2/1(120) White [1 Sqm]; Traffic Lines, Type L2/2(120) White [11 Sqm]; Traffic Lines, Type L4/1(150) Yellow [955 Sqm]; Traffic Lines, Type L4/2(120) Yellow [346 Sqm]; Traffic Lines, Type L5/1(150) White [30 Sqm]; Traffic Lines, Type L5/2(120) White [9 Sqm]; (Mechanical application) [1 Sqm]; Traffic Lines, Type L8(200) White [5 Sqm]; Special Marking , Pedestrian Crossing [6 Sqm]; Special Marking , Chevrons Marking S9 [66 Sqm]; Special Marking , Lane Selection Arrow White (S3/1) [3 Sqm]; Special Marking , Lane Selection Arrow White (S4/1) [4 Sqm]; Special Marking , Lane Selection Arrow White (S5/1) [5 Sqm]; Special Marking , Lane Selection Arrow White (S7/1) [3 Sqm]; Special Marking , Lane Selection Arrow White (S8/1) [3 Sqm]; Curb painting [200 Sqm]; Skilled Labour [54 h] | 0 |
| BEW/IN/GEN/5950 |  | Traffic Signs RHS | 25d | 2013-12-03 | 2014-01-08 | BEW/IN/GEN/5490 | 634.94d | 0d | Highway Sign, T 750 [2 Number]; Highway Sign T 900 [1 Number]; Highway Sign T 1200 [1 Number]; Highway Sign T 1500 [2 Number]; Highway sign, Circular (Diameter 750mm) [2 Number]; Highway sign, Circular (Diameter 900mm) [2 Number]; Highway sign, Circular (Diameter 1200mm) [1 Number]; Chevron Signs, rectangular [2100 mm x 600 mm] [1 Sqm]; Chevron Signs, rectangular [380 mm x 600 mm] [1.42 Sqm]; Highway Signs, rectangular [750x1400] [3 Sqm]; Highway Signs, rectangular [600x800] [0.84 Sqm]; Supplementary plate, rectangular [1200 mm x 700 mm] [1 Sqm]; Supplementary plate, rectangular [1500 mm x 700 mm] [1 Sqm]; Rectangular or Polygonal Sign Face (Area 1-2 sq m) [1 Sqm]; Rectangular or Polygonal Sign Face (Area 2-4 sq m) [1 Sqm]; Rectangular Sign Face (Area 4-6 sq m) [4 Sqm]; Rectangular Sign Face (Area 9-11 sq m) [9 Sqm]; Rectangular Sign Face (Area 14-17 sq m) [14 Sqm]; Rectangular Sign Face (Area 19-24 sq m) [20 Sqm]; Rectangular Sign Face (Area 44-50 sq m) [8 Sqm]; Octagonal Road signs (Height 900mm) [1 Sqm]; Sign post support assembly G.I pipe 100mm Di [17 Number]; Multi-post Sign Support Assembly, Type PI posts [1 Number]; Multi-post Sign Support Assembly, Type PII posts [1 Number]; Multi-post Sign Support Assembly, Type PIII posts, [1 Number]; Multi-post Sign Support Assembly, Type PIV posts [1 Number]; Multi-post Sign Support Assembly, Type PV [1 Number]; Overhead Gantry Type C1 [1 Number]; Skilled Labour [54 h] | 0 |
|  | 4 | **Ch 99 +300 to 102+800** |  | 2013-07-16 | 2013-09-29 |  |  |  |  |  |
| BEW/IN/GEN/5450 |  | Traffic Signs LHS | 25d | 2013-07-16 | 2013-08-25 |  | 703.94d | 0d | Highway Sign, T 750 [2 Number]; Highway Sign T 900 [1 Number]; Highway Sign T 1200 [1 Number]; Highway Sign T 1500 [2 Number]; Highway sign, Circular (Diameter 750mm) [2 Number]; Highway sign, Circular (Diameter 900mm) [2 Number]; Highway sign, Circular (Diameter 1200mm) [1 Number]; Chevron Signs, rectangular [2100 mm x 600 mm] [1 Sqm]; Chevron Signs, rectangular [380 mm x 600 mm] [1 Sqm]; Highway Signs, rectangular [750x1400] [3 Sqm]; Highway Signs, rectangular [600x800] [1 Sqm]; Supplementary plate, rectangular [1200 mm x 700 mm] [1 Sqm]; Supplementary plate, rectangular [1500 mm x 700 mm] [1 Sqm]; Rectangular or Polygonal Sign Face (Area 1-2 sq m) [1 Sqm]; Rectangular or Polygonal Sign Face (Area 2-4 sq m) [1 Sqm]; Rectangular Sign Face (Area 4-6 sq m) [4 Sqm]; Rectangular Sign Face (Area 9-11 sq m) [9 Sqm]; Rectangular Sign Face (Area 14-17 sq m) [14 Sqm]; Rectangular Sign Face (Area 19-24 sq m) [20 Sqm]; Rectangular Sign Face (Area 44-50 sq m) [8 Sqm]; Octagonal Road signs (Height 900mm) [1 Sqm]; Sign post support assembly G.I pipe 100mm Di [17 Number]; Multi-post Sign Support Assembly, Type PI posts [1 Number]; Multi-post Sign Support Assembly, Type PII posts [1 Number]; Multi-post Sign Support Assembly, Type PIII posts, [1 Number]; Multi-post Sign Support Assembly, Type PIV posts [1 Number]; Multi-post Sign Support Assembly, Type PV [1 Number]; Overhead Gantry Type C1 [1 Number]; Skilled Labour [54 h] | 0 |
| BEW/IN/GEN/5460 |  | Road Markings LHS | 24d | 2013-07-16 | 2013-08-22 |  | 705.94d | 0d | Traffic Lines, Type L1/2(120) White [12 Sqm]; Traffic Lines, Type L1/3(120) White [186 Sqm]; Traffic Lines, Type L2A(120) White [20 Sqm]; Traffic Lines, Type L2/1(120) White [1 Sqm]; Traffic Lines, Type L2/2(120) White [11 Sqm]; Traffic Lines, Type L4/1(150) Yellow [955 Sqm]; Traffic Lines, Type L4/2(120) Yellow [346 Sqm]; Traffic Lines, Type L5/1(150) White [30 Sqm]; Traffic Lines, Type L5/2(120) White [9 Sqm]; (Mechanical application) [1 Sqm]; Traffic Lines, Type L8(200) White [5 Sqm]; Special Marking , Pedestrian Crossing [6 Sqm]; Special Marking , Chevrons Marking S9 [66 Sqm]; Special Marking , Lane Selection Arrow White (S3/1) [3 Sqm]; Special Marking , Lane Selection Arrow White (S4/1) [4 Sqm]; Special Marking , Lane Selection Arrow White (S5/1) [5 Sqm]; Special Marking , Lane Selection Arrow White (S7/1) [3 Sqm]; Special Marking , Lane Selection Arrow White (S8/1) [3 Sqm]; Curb painting [200 Sqm]; Skilled Labour [54 h] | 0 |
| BEW/IN/GEN/5470 |  | Flag Pole erection | 24d | 2013-07-16 | 2013-08-22 |  | 729.94d | 69d | Supply and erect new flag poles [68 Number]; Skilled Labour [54 h] | 0 |
| BEW/IN/GEN/5480 |  | Camera Foundations | 24d | 2013-07-16 | 2013-08-22 |  | 729.94d | 274.89d | Concrete Foundation for Speed Control Camera [1 Number]; Skilled Labour [72 h] | 0 |
| BEW/IN/GEN/5790 |  | Road Markings RHS | 24d | 2013-08-22 | 2013-09-25 | BEW/IN/GEN/5460 | 705.94d | 69d | Traffic Lines, Type L1/2(120) White [12 Sqm]; Traffic Lines, Type L1/3(120) White [186 Sqm]; Traffic Lines, Type L2A(120) White [20 Sqm]; Traffic Lines, Type L2/1(120) White [1 Sqm]; Traffic Lines, Type L2/2(120) White [11 Sqm]; Traffic Lines, Type L4/1(150) Yellow [955 Sqm]; Traffic Lines, Type L4/2(120) Yellow [346 Sqm]; Traffic Lines, Type L5/1(150) White [30 Sqm]; Traffic Lines, Type L5/2(120) White [9 Sqm]; (Mechanical application) [1 Sqm]; Traffic Lines, Type L8(200) White [5 Sqm]; Special Marking , Pedestrian Crossing [6 Sqm]; Special Marking , Chevrons Marking S9 [66 Sqm]; Special Marking , Lane Selection Arrow White (S3/1) [3 Sqm]; Special Marking , Lane Selection Arrow White (S4/1) [4 Sqm]; Special Marking , Lane Selection Arrow White (S5/1) [5 Sqm]; Special Marking , Lane Selection Arrow White (S7/1) [3 Sqm]; Special Marking , Lane Selection Arrow White (S8/1) [3 Sqm]; Curb painting [200 Sqm]; Skilled Labour [54 h] | 0 |
| BEW/IN/GEN/5940 |  | Traffic Signs RHS | 25d | 2013-08-25 | 2013-09-29 | BEW/IN/GEN/5450 | 703.94d | 69d | Highway Sign, T 750 [2 Number]; Highway Sign T 900 [1 Number]; Highway Sign T 1200 [1 Number]; Highway Sign T 1500 [2 Number]; Highway sign, Circular (Diameter 750mm) [2 Number]; Highway sign, Circular (Diameter 900mm) [2 Number]; Highway sign, Circular (Diameter 1200mm) [1 Number]; Chevron Signs, rectangular [2100 mm x 600 mm] [1 Sqm]; Chevron Signs, rectangular [380 mm x 600 mm] [1 Sqm]; Highway Signs, rectangular [750x1400] [3 Sqm]; Highway Signs, rectangular [600x800] [1 Sqm]; Supplementary plate, rectangular [1200 mm x 700 mm] [1 Sqm]; Supplementary plate, rectangular [1500 mm x 700 mm] [1 Sqm]; Rectangular or Polygonal Sign Face (Area 1-2 sq m) [1 Sqm]; Rectangular or Polygonal Sign Face (Area 2-4 sq m) [1 Sqm]; Rectangular Sign Face (Area 4-6 sq m) [4 Sqm]; Rectangular Sign Face (Area 9-11 sq m) [9 Sqm]; Rectangular Sign Face (Area 14-17 sq m) [14 Sqm]; Rectangular Sign Face (Area 19-24 sq m) [20 Sqm]; Rectangular Sign Face (Area 44-50 sq m) [8 Sqm]; Octagonal Road signs (Height 900mm) [1 Sqm]; Sign post support assembly G.I pipe 100mm Di [17 Number]; Multi-post Sign Support Assembly, Type PI posts [1 Number]; Multi-post Sign Support Assembly, Type PII posts [1 Number]; Multi-post Sign Support Assembly, Type PIII posts, [1 Number]; Multi-post Sign Support Assembly, Type PIV posts [1 Number]; Multi-post Sign Support Assembly, Type PV [1 Number]; Overhead Gantry Type C1 [1 Number]; Skilled Labour [54 h] | 0 |
|  | 5 | **Ch 102 +800 to 105+300** |  | 2013-07-16 | 2013-09-29 |  |  |  |  |  |
| BEW/IN/GEN/5410 |  | Traffic Signs LHS | 25d | 2013-07-16 | 2013-08-25 |  | 703.94d | 0d | Highway Sign, T 750 [2 Number]; Highway sign, Circular (Diameter 750mm) [4 Number]; Highway sign, Circular (Diameter 900mm) [4 Number]; Highway sign, Circular (Diameter 1200mm) [1 Number]; Chevron Signs, rectangular [2100 mm x 600 mm] [2 Sqm]; Highway Signs, rectangular [750x1400] [5 Sqm]; Rectangular or Polygonal Sign Face (Area 2-4 sq m) [1 Sqm]; Rectangular Sign Face (Area 4-6 sq m) [6 Sqm]; Rectangular Sign Face (Area 9-11 sq m) [19 Sqm]; Rectangular Sign Face (Area 14-17 sq m) [14 Sqm]; Rectangular Sign Face (Area 19-24 sq m) [20 Sqm]; Rectangular Sign Face (Area 44-50 sq m) [8 Sqm]; Sign post support assembly G.I pipe 100mm Di [18 Number]; Breakaway multi-post sign post [1 Number]; Skilled Labour [54 h] | 0 |
| BEW/IN/GEN/5420 |  | Road Markings LHS | 24d | 2013-07-16 | 2013-08-22 |  | 705.94d | 0d | Traffic Lines, Type L1/2(120) White [12 Sqm]; Traffic Lines, Type L1/3(120) White [186 Sqm]; Traffic Lines, Type L2A(120) White [20 Sqm]; Traffic Lines, Type L2/1(120) White [1 Sqm]; Traffic Lines, Type L2/2(120) White [11 Sqm]; Traffic Lines, Type L4/1(150) Yellow [1005 Sqm]; Traffic Lines, Type L4/2(120) Yellow [326 Sqm]; Traffic Lines, Type L5/1(150) White [30 Sqm]; Traffic Lines, Type L5/2(120) White [9 Sqm]; (Mechanical application) [1 Sqm]; Traffic Lines, Type L8(200) White [10 Sqm]; Special Marking , Pedestrian Crossing [6 Sqm]; Special Marking , Chevrons Marking S9 [66 Sqm]; Special Marking , Lane Selection Arrow White (S3/1) [6 Sqm]; Special Marking , Lane Selection Arrow White (S4/1) [4 Sqm]; Special Marking , Lane Selection Arrow White (S5/1) [10 Sqm]; Special Marking , Lane Selection Arrow White (S7/1) [4 Sqm]; Special Marking , Lane Selection Arrow White (S8/1) [3 Sqm]; Curb painting [200 Sqm]; Skilled Labour [54 h] | 0 |
| BEW/IN/GEN/5430 |  | Flag Pole erection | 24d | 2013-07-16 | 2013-08-22 |  | 729.94d | 69d | Supply and erect new flag poles [74 Number]; Skilled Labour [54 h] | 0 |
| BEW/IN/GEN/5440 |  | Camera Foundations | 24d | 2013-07-16 | 2013-08-22 |  | 729.94d | 274.89d | Concrete Foundation for Speed Control Camera [1 Number]; Skilled Labour [72 h] | 0 |
| BEW/IN/GEN/5780 |  | Road Markings RHS | 24d | 2013-08-22 | 2013-09-25 | BEW/IN/GEN/5420 | 705.94d | 69d | Traffic Lines, Type L1/2(120) White [12 Sqm]; Traffic Lines, Type L1/3(120) White [186 Sqm]; Traffic Lines, Type L2A(120) White [20 Sqm]; Traffic Lines, Type L2/1(120) White [1 Sqm]; Traffic Lines, Type L2/2(120) White [21 Sqm]; Traffic Lines, Type L4/1(150) Yellow [955 Sqm]; Traffic Lines, Type L4/2(120) Yellow [386 Sqm]; Traffic Lines, Type L5/1(150) White [30 Sqm]; Traffic Lines, Type L5/2(120) White [9 Sqm]; (Mechanical application) [1 Sqm]; Traffic Lines, Type L8(200) White [10 Sqm]; Special Marking , Pedestrian Crossing [16 Sqm]; Special Marking , Chevrons Marking S9 [66 Sqm]; Special Marking , Lane Selection Arrow White (S3/1) [6 Sqm]; Special Marking , Lane Selection Arrow White (S4/1) [4 Sqm]; Special Marking , Lane Selection Arrow White (S5/1) [10 Sqm]; Special Marking , Lane Selection Arrow White (S7/1) [4 Sqm]; Special Marking , Lane Selection Arrow White (S8/1) [3 Sqm]; Curb painting [200 Sqm]; Skilled Labour [54 h] | 0 |
| BEW/IN/GEN/5930 |  | Traffic Signs RHS | 25d | 2013-08-25 | 2013-09-29 | BEW/IN/GEN/5410 | 703.94d | 69d | Highway Sign, T 750 [2 Number]; Highway sign, Circular (Diameter 750mm) [4 Number]; Highway sign, Circular (Diameter 900mm) [4 Number]; Highway sign, Circular (Diameter 1200mm) [1 Number]; Chevron Signs, rectangular [2100 mm x 600 mm] [2 Sqm]; Highway Signs, rectangular [750x1400] [5 Sqm]; Rectangular or Polygonal Sign Face (Area 2-4 sq m) [1 Sqm]; Rectangular Sign Face (Area 4-6 sq m) [6 Sqm]; Rectangular Sign Face (Area 9-11 sq m) [9 Sqm]; Rectangular Sign Face (Area 14-17 sq m) [14 Sqm]; Rectangular Sign Face (Area 19-24 sq m) [20 Sqm]; Rectangular Sign Face (Area 44-50 sq m) [8 Sqm]; Sign post support assembly G.I pipe 100mm Di [18 Number]; Breakaway multi-post sign post [1 Number]; Skilled Labour [54 h] | 0 |

| ID | WBS | Activity | Duration | Start | Finish | Predecessors | Total float | Free float | Resources | DIFF | MSP Activity ID | EAM Contact Person |
| --- | --- | --- | --- | --- | --- | --- | --- | --- | --- | --- | --- | --- |
|  | 6 | **Ch 105 +300 to 109+000** |  | 2013-07-16 | 2013-09-29 |  |  |  |  |  |  |  |
| BEW/IN/GEN/5370 |  | Traffic Signs LHS | 25d | 2013-07-16 | 2013-08-25 |  | 703.94d | 0d | Highway Sign, T 750 [2 Number]; Highway sign, Circular (Diameter 750mm) [4 Number]; Highway sign, Circular (Diameter 900mm) [4 Number]; Highway sign, Circular (Diameter 1200mm) [1 Number]; Chevron Signs, rectangular [2100 mm x 600 mm] [2 Sqm]; Highway Signs, rectangular [750x1400] [5 Sqm]; Rectangular or Polygonal Sign Face (Area 2-4 sq m) [1 Sqm]; Rectangular Sign Face (Area 4-6 sq m) [6 Sqm]; Rectangular Sign Face (Area 9-11 sq m) [9 Sqm]; Rectangular Sign Face (Area 14-17 sq m) [14 Sqm]; Rectangular Sign Face (Area 19-24 sq m) [20 Sqm]; Rectangular Sign Face (Area 44-50 sq m) [8 Sqm]; Sign post support assembly G.I pipe 100mm Di [18 Number]; Breakaway multi-post sign post [1 Number]; Overhead Gantry Type C2 [1 Number]; Skilled Labour [54 h] | 0 |  |  |
| BEW/IN/GEN/5380 |  | Road Markings LHS | 24d | 2013-07-16 | 2013-08-22 |  | 705.94d | 0d | Traffic Lines, Type L1/2(120) White [12 Sqm]; Traffic Lines, Type L1/3(120) White [206 Sqm]; Traffic Lines, Type L2A(120) White [20 Sqm]; Traffic Lines, Type L2/1(120) White [1 Sqm]; Traffic Lines, Type L2/2(120) White [11 Sqm]; Traffic Lines, Type L4/1(150) Yellow [955 Sqm]; Traffic Lines, Type L4/2(120) Yellow [346 Sqm]; Traffic Lines, Type L5/1(150) White [30 Sqm]; Traffic Lines, Type L5/2(120) White [9 Sqm]; (Mechanical application) [1 Sqm]; Traffic Lines, Type L8(200) White [5 Sqm]; Special Marking , Pedestrian Crossing [6 Sqm]; Special Marking , Chevrons Marking S9 [76 Sqm]; Special Marking , Lane Selection Arrow White (S3/1) [7 Sqm]; Special Marking , Lane Selection Arrow White (S4/1) [4 Sqm]; Special Marking , Lane Selection Arrow White (S5/1) [10 Sqm]; Special Marking , Lane Selection Arrow White (S7/1) [8 Sqm]; Special Marking , Lane Selection Arrow White (S8/1) [3 Sqm]; Curb painting [200 Sqm]; Skilled Labour [54 h] | 0 |  |  |
| BEW/IN/GEN/5390 |  | Flag Pole erection | 24d | 2013-07-16 | 2013-08-22 |  | 729.94d | 69d | Supply and erect new flag poles [68 Number]; Skilled Labour [54 h] | 0 |  |  |
| BEW/IN/GEN/5400 |  | Camera Foundations | 24d | 2013-07-16 | 2013-08-22 |  | 729.94d | 274.89d | Concrete Foundation for Speed Control Camera [3 Number]; Skilled Labour [72 h] | 0 |  |  |
| BEW/IN/GEN/5770 |  | Road Markings RHS | 24d | 2013-08-22 | 2013-09-25 | BEW/IN/GEN/5380 | 705.94d | 69d | Traffic Lines, Type L1/2(120) White [12 Sqm]; Traffic Lines, Type L1/3(120) White [186 Sqm]; Traffic Lines, Type L2A(120) White [20 Sqm]; Traffic Lines, Type L2/1(120) White [1 Sqm]; Traffic Lines, Type L2/2(120) White [11 Sqm]; Traffic Lines, Type L4/1(150) Yellow [955 Sqm]; Traffic Lines, Type L4/2(120) Yellow [346 Sqm]; Traffic Lines, Type L5/1(150) White [30 Sqm]; Traffic Lines, Type L5/2(120) White [9 Sqm]; (Mechanical application) [1 Sqm]; Traffic Lines, Type L8(200) White [5 Sqm]; Special Marking , Pedestrian Crossing [6 Sqm]; Special Marking , Chevrons Marking S9 [76 Sqm]; Special Marking , Lane Selection Arrow White (S3/1) [3 Sqm]; Special Marking , Lane Selection Arrow White (S4/1) [4 Sqm]; Special Marking , Lane Selection Arrow White (S5/1) [10 Sqm]; Special Marking , Lane Selection Arrow White (S7/1) [6 Sqm]; Special Marking , Lane Selection Arrow White (S8/1) [3 Sqm]; Curb painting [200 Sqm]; Skilled Labour [54 h] | 0 |  |  |
| BEW/IN/GEN/5920 |  | Traffic Signs RHS | 25d | 2013-08-25 | 2013-09-29 | BEW/IN/GEN/5370 | 703.94d | 69d | Highway Sign, T 750 [2 Number]; Highway sign, Circular (Diameter 750mm) [4 Number]; Highway sign, Circular (Diameter 900mm) [4 Number]; Highway sign, Circular (Diameter 1200mm) [1 Number]; Chevron Signs, rectangular [2100 mm x 600 mm] [2 Sqm]; Highway Signs, rectangular [750x1400] [5 Sqm]; Rectangular or Polygonal Sign Face (Area 2-4 sq m) [1 Sqm]; Rectangular Sign Face (Area 4-6 sq m) [6 Sqm]; Rectangular Sign Face (Area 9-11 sq m) [9 Sqm]; Rectangular Sign Face (Area 14-17 sq m) [14 Sqm]; Rectangular Sign Face (Area 19-24 sq m) [20 Sqm]; Rectangular Sign Face (Area 44-50 sq m) [8 Sqm]; Octagonal Road signs (Height 900mm) [1 Sqm]; Sign post support assembly G.I pipe 100mm Di [18 Number]; Breakaway multi-post sign post [1 Number]; Overhead Gantry Type C2 [1 Number]; Skilled Labour [54 h] | 0 |  |  |
|  | 7 | **Ch 109 +000 to 112+200** |  | 2013-07-16 | 2013-09-29 |  |  |  |  |  |  |  |
| BEW/IN/GEN/5330 |  | Traffic Signs LHS | 25d | 2013-07-16 | 2013-08-25 |  | 703.94d | 0d | Highway Sign, T 750 [2 Number]; Highway sign, Circular (Diameter 750mm) [4 Number]; Highway sign, Circular (Diameter 900mm) [4 Number]; Highway sign, Circular (Diameter 1200mm) [1 Number]; Chevron Signs, rectangular [2100 mm x 600 mm] [2 Sqm]; Highway Signs, rectangular [750x1400] [4.8 Sqm]; Rectangular or Polygonal Sign Face (Area 2-4 sq m) [1 Sqm]; Rectangular Sign Face (Area 4-6 sq m) [6 Sqm]; Rectangular Sign Face (Area 9-11 sq m) [9 Sqm]; Rectangular Sign Face (Area 14-17 sq m) [14 Sqm]; Rectangular Sign Face (Area 19-24 sq m) [20 Sqm]; Rectangular Sign Face (Area 44-50 sq m) [8 Sqm]; Octagonal Road signs (Height 900mm) [1 Sqm]; Sign post support assembly G.I pipe 100mm Di [17 Number]; Breakaway multi-post sign post [1 Number]; Overhead Gantry Type C2 [1 Number]; Skilled Labour [54 h] | 0 |  |  |
| BEW/IN/GEN/5340 |  | Road Markings LHS | 24d | 2013-07-16 | 2013-08-22 |  | 705.94d | 0d | Traffic Lines, Type L1/2(120) White [22 Sqm]; Traffic Lines, Type L1/3(120) White [186 Sqm]; Traffic Lines, Type L2A(120) White [20 Sqm]; Traffic Lines, Type L2/1(120) White [1 Sqm]; Traffic Lines, Type L2/2(120) White [21 Sqm]; Traffic Lines, Type L4/1(150) Yellow [955 Sqm]; Traffic Lines, Type L4/2(120) Yellow [346 Sqm]; Traffic Lines, Type L5/1(150) White [30 Sqm]; Traffic Lines, Type L5/2(120) White [9 Sqm]; (Mechanical application) [1 Sqm]; Traffic Lines, Type L8(200) White [5 Sqm]; Special Marking , Pedestrian Crossing [16 Sqm]; Special Marking , Chevrons Marking S9 [66 Sqm]; Special Marking , Lane Selection Arrow White (S3/1) [3 Sqm]; Special Marking , Lane Selection Arrow White (S4/1) [4 Sqm]; Special Marking , Lane Selection Arrow White (S5/1) [5 Sqm]; Special Marking , Lane Selection Arrow White (S7/1) [3 Sqm]; Special Marking , Lane Selection Arrow White (S8/1) [3 Sqm]; Curb painting [200 Sqm]; Skilled Labour [54 h] | 0 |  |  |
| BEW/IN/GEN/5350 |  | Flag Pole erection | 24d | 2013-07-16 | 2013-08-22 |  | 729.94d | 69d | Supply and erect new flag poles [68 Number]; Skilled Labour [54 h] | 0 |  |  |
| BEW/IN/GEN/5360 |  | Camera Foundations | 24d | 2013-07-16 | 2013-08-22 |  | 729.94d | 274.89d | Concrete Foundation for Speed Control Camera [3 Number]; Skilled Labour [72 h] | 0 |  |  |
| BEW/IN/GEN/5760 |  | Road Markings RHS | 24d | 2013-08-22 | 2013-09-25 | BEW/IN/GEN/5340 | 705.94d | 69d | Traffic Lines, Type L1/2(120) White [12 Sqm]; Traffic Lines, Type L1/3(120) White [186 Sqm]; Traffic Lines, Type L2A(120) White [20 Sqm]; Traffic Lines, Type L2/1(120) White [1 Sqm]; Traffic Lines, Type L2/2(120) White [11 Sqm]; Traffic Lines, Type L4/1(150) Yellow [955 Sqm]; Traffic Lines, Type L4/2(120) Yellow [346 Sqm]; Traffic Lines, Type L5/1(150) White [30 Sqm]; Traffic Lines, Type L5/2(120) White [9 Sqm]; (Mechanical application) [1 Sqm]; Traffic Lines, Type L8(200) White [5 Sqm]; Special Marking , Pedestrian Crossing [6 Sqm]; Special Marking , Chevrons Marking S9 [66 Sqm]; Special Marking , Lane Selection Arrow White (S3/1) [3 Sqm]; Special Marking , Lane Selection Arrow White (S4/1) [4 Sqm]; Special Marking , Lane Selection Arrow White (S5/1) [5 Sqm]; Special Marking , Lane Selection Arrow White (S7/1) [3 Sqm]; Special Marking , Lane Selection Arrow White (S8/1) [3 Sqm]; Curb painting [200 Sqm]; Skilled Labour [54 h] | 0 |  |  |
| BEW/IN/GEN/5910 |  | Traffic Signs RHS | 25d | 2013-08-25 | 2013-09-29 | BEW/IN/GEN/5330 | 703.94d | 69d | Highway Sign, T 750 [2 Number]; Highway Sign T 1500 [1 Number]; Highway sign, Circular (Diameter 750mm) [4 Number]; Highway sign, Circular (Diameter 900mm) [4 Number]; Highway sign, Circular (Diameter 1200mm) [1 Number]; Chevron Signs, rectangular [2100 mm x 600 mm] [2 Sqm]; Highway Signs, rectangular [750x1400] [4 Sqm]; Rectangular or Polygonal Sign Face (Area 2-4 sq m) [1 Sqm]; Rectangular Sign Face (Area 4-6 sq m) [6 Sqm]; Rectangular Sign Face (Area 9-11 sq m) [9 Sqm]; Rectangular Sign Face (Area 14-17 sq m) [14 Sqm]; Rectangular Sign Face (Area 19-24 sq m) [20 Sqm]; Rectangular Sign Face (Area 44-50 sq m) [18 Sqm]; Octagonal Road signs (Height 900mm) [1 Sqm]; Sign post support assembly G.I pipe 100mm Di [17 Number]; Breakaway multi-post sign post [1 Number]; Overhead Gantry Type C2 [1 Number]; Skilled Labour [54 h] | 0 |  |  |
|  | 1 | **Finlization Works** |  | 2013-07-16 | 2014-10-20 |  |  |  |  |  |  |  |
| BEW/IN/GEN/6050 |  | Finalisation of Chain Link Fence | 14d | 2013-07-16 | 2013-08-05 |  | 753.94d | 721d | Skilled Labour [54 h] | 0 |  |  |
| BEW/IN/GEN/6060 |  | Finalisation of W Beam | 14d | 2013-07-16 | 2013-08-05 |  | 753.94d | 721d | Skilled Labour [54 h] | 0 |  |  |
| BEW/IN/GEN/6040 |  | Finalisation of Road Studs and Bollards | 14d | 2013-09-16 | 2013-10-06 | BEW/IN/GEN/4540 | 712.94d | 680d | Skilled Labour [54 h] | 0 |  |  |
| BEW/IN/GEN/6020 |  | Finalisation of Flag Pole erection | 14d | 2013-12-02 | 2013-12-22 | BEW/IN/GEN/4990, BEW/IN/GEN/5550, BEW/IN/GEN/5510, BEW/IN/GEN/5470, BEW/IN/GEN/5430, BEW/IN/GEN/5390, BEW/IN/GEN/5350 | 660.94d | 628d | Skilled Labour [54 h] | 0 |  |  |
| BEW/IN/GEN/6030 |  | Finalisation of Road Marking | 14d | 2014-01-06 | 2014-01-27 | BEW/IN/GEN/5670, BEW/IN/GEN/5810, BEW/IN/GEN/5800, BEW/IN/GEN/5790, BEW/IN/GEN/5780, BEW/IN/GEN/5770, BEW/IN/GEN/5760 | 636.94d | 604d | Skilled Labour [54 h] | 0 |  |  |
| BEW/IN/GEN/6000 |  | Finalisation of Traffic Sign Works | 14d | 2014-01-08 | 2014-01-29 | BEW/IN/GEN/5910, BEW/IN/GEN/5330, BEW/IN/GEN/5920, BEW/IN/GEN/5370, BEW/IN/GEN/5930, BEW/IN/GEN/5410, BEW/IN/GEN/5940, BEW/IN/GEN/5450, BEW/IN/GEN/5950, BEW/IN/GEN/5490, BEW/IN/GEN/5960, BEW/IN/GEN/5530, BEW/IN/GEN/4970, BEW/IN/GEN/5820 | 634.94d | 602d | Skilled Labour [54 h] | 0 |  |  |
| BEW/IN/GEN/6010 |  | Finalisation of Camera Foundation | 14d | 2014-09-28 | 2014-10-20 | BEW/IN/GEN/5360, BEW/IN/GEN/5400, BEW/IN/GEN/5440, BEW/IN/GEN/5480, BEW/IN/GEN/5520, BEW/IN/GEN/5560, BEW/IN/GEN/5000, BEW/RD1/BI/1120 | 455.06d | 422.11d | Skilled Labour [54 h] | 0 |  |  |
|  | 09 | **Electrical Works** |  | 2013-07-31 | 2016-04-18 |  |  |  |  |  |  |  |
| BEW/EL/GEN/1000 |  | Placing of Enquiry / PO / WO for MEP works | 60.89d | 2013-07-31 | 2013-10-29 | BEW/DE/DS/1000 | 259.06d | 0d | Helper [60.89 h]; Skilled Labour [36 h] | 0 | 4246 | 89 days |
| BEW/EL/GEN/1020 |  | Road Lighting and Electrical Instalation | 375.89d | 2013-09-30 | 2015-04-01 | BEW/DE/DS/1120 | 340.17d | 307.22d | Helper [108 h]; Power Supply connection to the feeder pillar [65 Number]; Spare Parts (5%) as per the approved list [1 Lump Sum]; Sub station with 1Nr RMU 1Nr 500 KVA Transformer and 800 A feeder pillar [5 Number]; Sub tation with 1Nr RMU 1Nr 1000 KVA Transformer and 1600 A feeder pillar [1 Number]; 11kV pole mounted transformer sub station, 100KVA 1 Way [30 Number]; 11kV pole mounted transformer sub station, 100KVA with 2 way LV [1 Number]; 11kV pole mounted transformer sub station, 200KVA with 2 way LV [5 Number]; 11kV pole mounted transformer sub station, 200KVA with 1 way LV [2 Number]; 11kV pole mounted transformer sub station, 315KVA with 1 way LV [1 Number]; Under bridge surface mounted lighting [120 Number]; Skilled Labour [63 h] | 0 | 3074 | 546 days |
| BEW/EL/GEN/1010 |  | Submittals & Approvals | 83d | 2013-10-13 | 2014-02-13 | BEW/EL/GEN/1000 FS-10d | 259.06d | 0d | Helper [83 h]; Skilled Labour [36 h] | 0 | 4247 | 121 days |
| BEW/EL/GEN/1140 |  | Trafic Sign Illumination | 365d | 2014-11-09 | 2016-04-18 | BEW/DE/DS/1120 FS+275d | 76.06d | 43.11d | Helper [365 h]; Skilled Labour [54 h] | 0 | 3075 | 526 days |

| ID | WBS | Activity | Duration | Start | Finish | Predecessors | Total float | Free float | Resources | MSP Activity ID | EAM Contact Person | DIFF |
| --- | --- | --- | --- | --- | --- | --- | --- | --- | --- | --- | --- | --- |
|  | 1 | **Installation of 25 M Lighting High Masts with fittings - Location 1** |  | 2014-06-09 | 2015-10-06 |  |  |  |  |  |  |  |
| BEW/EL/GEN/1030 |  | Casting of foundations & civil finishing | 276d | 2014-06-09 | 2015-07-20 | BEW/EL/GEN/1010, BEW/DE/DS/1150 FS+170d | 196.06d | 0d | Helper [54 h]; Skilled Labour [72 h] | 4546 | 402 days | 0 |
| BEW/EL/GEN/1050 |  | Installation of 25 M high masts, light fittings & wiring | 286d | 2014-06-24 | 2015-08-19 | BEW/EL/GEN/1030 SS+11d | 196.06d | 0d | Helper [286 h]; Concrete Foundation for 25m high [260 Number]; Skilled Labour [99 h] | 4548 | 419 days | 0 |
| BEW/EL/GEN/1070 |  | Main circuit & loop cabling between high masts | 286d | 2014-06-26 | 2015-08-23 | BEW/EL/GEN/1050 SS+2d | 238.06d | 0d | Helper [286 h]; steel lighting column (Mid hinged Type) 25m high mast with 4 x 600 Watt HPSV [125 Number]; steel lighting column (Mid-hinged Type) 14m high pole/column with 1 x 400 Watt HPSV [238 Number]; steel lighting column (Mid hinged Type) 14m high pole/column with 2 x 400 Watt HPSV [50 Number]; Overhead Sign Lighting System for Gantry complete (Area 44-50 sq m) [2 Number]; Overhead Sign Lighting System for Cantilever (Area 19-24 sq m) [4 Number]; Overhead Sign Lighting System for Cantilever (Area 14-17 sq m) [4 Number]; Skilled Labour [63 h] | 4552 | 419 days | 0 |
| BEW/EL/GEN/1090 |  | Termination of above street light cables | 286d | 2014-07-06 | 2015-08-31 | BEW/EL/GEN/1070 SS+6d | 238.06d | 205.11d | Helper [286 h]; Nominal Conductor Area 25mm2 [24000 LM]; Nominal Conductor Area 95mm2 [2375 LM]; Nominal Conductor Area 120mm2 [40 LM]; Nominal Conductor Area 240mm2 [500 LM]; Termination on 25mm2 cabling [31 Number]; Termination on 95mm2 cabling [15 Number]; Termination on 240mm2 cabling [2 Number]; Skilled Labour [36 h] | 4554 | 414 days | 0 |
| BEW/EL/GEN/1120 |  | Installation of MFP & FP with foundation | 285d | 2014-08-12 | 2015-09-29 | BEW/EL/GEN/1050 SS+30d | 212.06d | 0d | Helper [285 h]; Skilled Labour [99 h] | 4550 | 414 days | 0 |
| BEW/EL/GEN/1130 |  | Earthing works for FPs & high masts | 290d | 2014-08-12 | 2015-10-06 | BEW/EL/GEN/1120 SS | 212.06d | 179.11d | Helper [108 h]; Twin rod earthing installation at street lighting feeder pillars [8 Number]; Single rod earthing installation at the end of street lighting circuits [16 Number]; Skilled Labour [36 h] | 4556 | 421 days | 0 |
|  | 2 | **Installation of 14 M Lighting Poles with fittings Location 1** |  | 2014-06-17 | 2015-10-29 |  |  |  |  |  |  |  |
| BEW/EL/GEN/1040 |  | Casting & placing of foundations & civil finishing | 300d | 2014-06-17 | 2015-09-01 | BEW/EL/GEN/1050 SS-5d | 196.06d | 0d | Helper [54 h]; Skilled Labour [72 h] | 4562 | 437 days | 0 |
| BEW/EL/GEN/1060 |  | Installation of 14 M Poles, light fittings & wiring | 300d | 2014-06-24 | 2015-09-08 | BEW/EL/GEN/1040 SS+5d | 196.06d | 0d | Helper [72 h]; Concrete Foundation for columns 14m high pole [600 Number]; Skilled Labour [99 h] | 4564 | 437 days | 0 |
| BEW/EL/GEN/1080 |  | Main circuit & loop cabling between poles | 300d | 2014-07-01 | 2015-09-15 | BEW/EL/GEN/1060 SS+5d | 196.06d | 0d | Helper [300 h]; steel lighting column (Mid hinged Type) 25m high mast with 4 x 600 Watt HPSV [150 Number]; steel lighting column (Mid-hinged Type) 14m high pole/column with 1 x 400 Watt HPSV [238 Number]; steel lighting column (Mid hinged Type) 14m high pole/column with 2 x 400 Watt HPSV [50 Number]; Column / high mast testing [1 Lump Sum]; Overhead Sign Lighting System for Gantry complete (Area 44-50 sq m) [2 Number]; Overhead Sign Lighting System for Cantilever (Area 19-24 sq m) [4 Number]; Overhead Sign Lighting System for Cantilever (Area 14-17 sq m) [4 Number]; Skilled Labour [63 h] | 4566 | 432 days | 0 |
| BEW/EL/GEN/1100 |  | Termination of above street light cables | 300d | 2014-07-08 | 2015-09-22 | BEW/EL/GEN/1080 SS+5d | 196.06d | 0d | Helper [300 h]; Nominal Conductor Area 25mm2 [26000 LM]; Nominal Conductor Area 95mm2 [2375 LM]; Nominal Conductor Area 120mm2 [40 LM]; Nominal Conductor Area 240mm2 [500 LM]; Termination on 25mm2 cabling [31 Number]; Termination on 95mm2 cabling [20 Number]; Termination on 120mm2 cabling [1 Number]; Termination on 240mm2 cabling [2 Number]; Skilled Labour [36 h] | 4568 | 435 days | 0 |
| BEW/EL/GEN/1110 |  | Earthing works for FPs & ckt wise poles | 320d | 2014-07-16 | 2015-10-29 | BEW/EL/GEN/1100 SS+6d | 196.06d | 163.11d | Helper [108 h]; Twin rod earthing installation at street lighting feeder pillars [8 Number]; Single rod earthing installation at the end of street lighting circuits [16 Number]; Skilled Labour [36 h] | 4570 | 463 days | 0 |
|  | 10 | **Utility Works** |  | 2013-10-03 | 2016-04-18 |  |  |  |  |  |  |  |
|  | 1 | **MEP Location - 1** |  | 2013-10-03 | 2015-10-11 |  |  |  |  |  |  |  |
|  | 1 | **11 kV OHL** |  | 2014-01-20 | 2015-09-20 |  |  |  |  |  |  |  |
| BEW/UTL/GEN/1110 |  | Survey and point marking of OHL | 45d | 2014-01-20 | 2014-03-24 | BEW/PR/FC/1280, BEW/PR/FC/1290, BEW/DE/DS/1020, BEW/DE/DS/1030, BEW/DE/DS/1050, BEW/DE/DS/1040 | 222.94d | 0d | Helper [45 h]; Skilled Labour [36 h] | 4476 | 64 days | 0 |
| BEW/UTL/GEN/1120 |  | Wooden Post Installation with foundation | 369.89d | 2014-03-24 | 2015-09-15 | BEW/UTL/GEN/1110 | 222.94d | 0d | Helper [369.89 h]; Skilled Labour [45 h] | 4478 | 540 days | 0 |
| BEW/UTL/GEN/1130 |  | Installation of accessories with supports on pole | 362.89d | 2014-04-07 | 2015-09-20 | BEW/UTL/GEN/1120 SS+10d | 222.94d | 0d | Helper [362.89 h]; Skilled Labour [99 h] | 4480 | 531 days | 0 |
| BEW/UTL/GEN/1140 |  | Stringing of 11 kV Wolf conductors | 345.89d | 2014-04-14 | 2015-09-02 | BEW/UTL/GEN/1130 SS+5d | 222.94d | 0d | Helper [345.89 h]; overhead 11 KV electrical conductors (3 conductors together) for Street Lighting [22120 LM]; underground proposed 11KV Electrical cable for Street Lighting [3320 LM]; Supply and install Mini Feeder Pillars, 400 A, 4way [3 Number]; Street Lighting Feeder Pillars, 100 A [32 Number]; Skilled Labour [36 h] | 4482 | 506 days | 0 |
| BEW/UTL/GEN/1150 |  | Installation of Stay wires etc. | 345.89d | 2014-04-22 | 2015-09-10 | BEW/UTL/GEN/1140 SS+6d | 222.94d | 0d | Helper [345.89 h]; Skilled Labour [99 h] | 4484 | 508 days | 0 |
|  | 2 | **11 kV Pole Mounted Transformer Substation** |  | 2014-05-20 | 2015-10-11 |  |  |  |  |  |  |  |
| BEW/UTL/GEN/1160 |  | Wooden H-Pole Installation with foundation | 324.89d | 2014-05-20 | 2015-09-09 | BEW/UTL/GEN/1150 SS+20d | 222.94d | 0d | Helper [324.89 h]; Skilled Labour [45 h] | 4490 | 477 days | 0 |
| BEW/UTL/GEN/1170 |  | Supporting Structure Installation | 316.89d | 2014-05-28 | 2015-09-06 | BEW/UTL/GEN/1160 SS+5d | 222.94d | 0d | Helper [316.89 h]; Skilled Labour [36 h] | 4492 | 467 days | 0 |
| BEW/UTL/GEN/1190 |  | Installation of TX & FP on H-pole | 308.89d | 2014-06-04 | 2015-09-01 | BEW/UTL/GEN/1170 SS+5d | 222.94d | 0d | Helper [308.89 h]; Skilled Labour [99 h] | 4494 | 455 days | 0 |
| BEW/UTL/GEN/1210 |  | Installation of Various accessories | 310.89d | 2014-06-11 | 2015-09-10 | BEW/UTL/GEN/1190 SS+5d | 222.94d | 0d | Helper [310.89 h]; Skilled Labour [99 h] | 4496 | 456 days | 0 |
| BEW/UTL/GEN/1230 |  | Jumpering between TX & O/H Conductors | 310.89d | 2014-06-18 | 2015-09-17 | BEW/UTL/GEN/1210 SS+5d | 222.94d | 0d | Helper [310.89 h]; Skilled Labour [99 h] | 4498 | 456 days | 0 |
| BEW/UTL/GEN/1250 |  | Cabling & Termination between TX & FP. | 310.89d | 2014-06-25 | 2015-09-24 | BEW/UTL/GEN/1230 SS+5d | 222.94d | 0d | Helper [54 h]; Skilled Labour [72 h] | 4500 | 456 days | 0 |
| BEW/UTL/GEN/1270 |  | Installation of Stay wires etc. | 316.89d | 2014-07-02 | 2015-10-11 | BEW/UTL/GEN/1250 SS+5d | 222.94d | 0d | Helper [316.89 h]; Skilled Labour [99 h] | 4502 | 464 days | 0 |
| BEW/UTL/GEN/1290 |  | Earthing & connections complete | 310.89d | 2014-07-09 | 2015-10-08 | BEW/UTL/GEN/1270 SS+5d | 223.94d | 0d | Helper [310.89 h]; Twin rod earthing installation at street lighting feeder pillars [8 Number]; Single rod earthing installation at the end of street lighting circuits [13 Number]; Skilled Labour [36 h] | 4504 | 456 days | 0 |

| ID | WBS | Activity | Duration | Start | Finish | Predecessors | Total float | Free float | Resources | MSP Activity ID | EAM Contact Person | DIFF |
| --- | --- | --- | --- | --- | --- | --- | --- | --- | --- | --- | --- | --- |
|  | 3 | **Removal of 11 kV OHL & laying of cable on road crossings** |  | 2014-05-28 | 2015-07-22 |  |  |  |  |  |  |  |
| BEW/UTL/GEN/1180 |  | Installation of H-Poles & stay wire etc. | 285.89d | 2014-05-28 | 2015-07-22 | BEW/UTL/GEN/1290 SS-30d, BEW/UTL/GEN/1160 SS | 270.94d | 0d | Helper [285.89 h]; Skilled Labour [99 h] | 4514 | 421 days | 0 |
| BEW/UTL/GEN/1200 |  | Excavation & backfilling of trench after cabling | 280.89d | 2014-06-04 | 2015-07-22 | BEW/UTL/GEN/1180 SS+5d | 270.94d | 0d | Helper [15 h] | 4516 | 414 days | 0 |
| BEW/UTL/GEN/1220 |  | Laying of 11 kV cable on road crossings | 270.89d | 2014-06-11 | 2015-07-15 | BEW/UTL/GEN/1200 SS+5d | 270.94d | 0d | Helper [270.89 h]; Skilled Labour [99 h] | 4518 | 397 days | 0 |
| BEW/UTL/GEN/1240 |  | End termination/Jointing of cable. | 250.89d | 2014-06-18 | 2015-06-24 | BEW/UTL/GEN/1220 SS+5d | 270.94d | 0d | Helper [250.89 h]; Skilled Labour [36 h] | 4520 | 369 days | 0 |
| BEW/UTL/GEN/1260 |  | Removal of 11 kV OHL | 250.89d | 2014-06-25 | 2015-07-01 | BEW/UTL/GEN/1240 SS+5d | 270.94d | 0d | Helper [250.89 h]; Skilled Labour [63 h] | 4522 | 369 days | 0 |
| BEW/UTL/GEN/1280 |  | Cable testing and Jumpering betwn cable & cond. | 250.89d | 2014-07-02 | 2015-07-08 | BEW/UTL/GEN/1260 SS+5d | 270.94d | 0d | Helper [54 h]; Skilled Labour [72 h] | 4524 | 369 days | 0 |
| BEW/UTL/GEN/1300 |  | Shutdown & charging existing OHL system | 250.89d | 2014-07-09 | 2015-07-15 | BEW/UTL/GEN/1280 SS+5d | 270.94d | 238d | Helper [72 h]; 2Way 100 mm Upvc duct for street lighting [1500 LM]; 2Way 150 mm Upvc duct for 11kv cables for street lighting [180 LM]; 4Way 100 mm Upvc duct for street lighting [1000 LM]; 4Way 150 mm Upvc duct for street lighting [100 LM]; Skilled Labour [36 h] | 4526 | 369 days | 0 |
|  | 4 | **Installation of 11 kV Package Substation Equipments (5+1)** |  | 2013-10-03 | 2014-01-02 |  |  |  |  |  |  |  |
| BEW/UTL/GEN/1060 |  | Construction of Substation building (CIVIL WORKS) | 60d | 2013-10-03 | 2014-01-02 | BEW/DE/DS/1150 | 666.06d | 0d | Helper [60 h]; Building for 11kv substations with equipment foundations [3 Number]; Pre-cast concrete foundation for mini feeder pillars [3 Number]; Pre-cast concrete foundation for street lighting feeder pillars [35 Number]; Trench for low voltage cable for one cable [53750 LM]; Trench for low voltage cable for two cable [75 LM]; Trench for low voltage cable for three cable [930 LM]; Skilled Labour [108 h] | 4532 | 85 days | 0 |
| BEW/UTL/GEN/1070 |  | Casting of foundation for TX, RMU & FP. | 24d | 2013-10-03 | 2013-11-11 | BEW/UTL/GEN/1060 SS | 685.06d | 0d | Helper [54 h]; Skilled Labour [72 h] | 4534 | 35 days | 0 |
| BEW/UTL/GEN/1080 |  | Installation of TX, RMU & FP. | 20d | 2013-10-07 | 2013-11-07 | BEW/UTL/GEN/1070 SS+2d | 685.06d | 0d | Helper [20 h]; Skilled Labour [99 h] | 4536 | 28 days | 0 |
| BEW/UTL/GEN/1090 |  | Cabling & termination between TX - RMU - FP | 20d | 2013-10-09 | 2013-11-11 | BEW/UTL/GEN/1080 SS+2d | 685.06d | 0d | Helper [54 h]; Skilled Labour [72 h] | 4538 | 28 days | 0 |
| BEW/UTL/GEN/1100 |  | Earthing network for S/S | 22d | 2013-10-13 | 2013-11-17 | BEW/UTL/GEN/1090 SS+2d | 685.06d | 652.11d | Helper [22 h]; Twin rod earthing installation at street lighting feeder pillars [8 Number]; Single rod earthing installation at the end of street lighting circuits [16 Number]; Skilled Labour [36 h] | 4540 | 30 days | 0 |
|  | 3 | **Protection** |  | 2013-11-07 | 2014-03-30 |  |  |  |  |  |  |  |
| BEW/UTL/GEN/1040 |  | Protection of 33 KV line | 98.78d | 2013-11-07 | 2014-03-30 | BEW/GEN/MS/0010 FS+114d | 592.89d | 559.94d | Helper [100 h]; Skilled Labour [63 h] | 4231 | 142 days | -2 |
| BEW/UTL/GEN/1050 |  | Protection of Telephone cables | 98.78d | 2013-11-07 | 2014-03-30 | BEW/GEN/MS/0010 FS+114d | 546.89d | 0d | Helper [100 h]; Skilled Labour [63 h] | 4232 | 142 days | -2 |
|  | 4 | **New Instalation** |  | 2014-02-13 | 2016-04-18 |  |  |  |  |  |  |  |
| BEW/UTL/GEN/1000 |  | 11 KV ducting works | 25d | 2014-02-13 | 2014-03-20 | BEW/EL/GEN/1010 | 599.06d | 566.11d | Helper [72 h]; 4way 150mm dia uPVC duct for 11kv electrical cables [1000 LM]; 2way 200mm dia uPVC duct for electrical cables [120 LM]; 2way 100mm dia uPVC duct for LV cables [1000 LM]; Skilled Labour [72 h] | 3078 | 526 days | 0 |
| BEW/UTL/GEN/1010 |  | 33 KV ducting works | 25d | 2014-02-13 | 2014-03-20 | BEW/EL/GEN/1010 | 599.06d | 566.11d | Helper [72 h]; 2way 200mm dia uPVC duct for 33kv electrical cables [1000 LM]; Skilled Labour [72 h] | 3078 | 526 days | 0 |
| BEW/UTL/GEN/1020 |  | Irrigation ducts | 365d | 2014-02-13 | 2015-08-02 | BEW/EL/GEN/1010 | 259.06d | 226.11d | Helper [365 h]; ay 300mm dia uPVC duct for Irrigation Line [1000 LM]; Skilled Labour [99 h] | 3078 | 526 days | 0 |
| BEW/UTL/GEN/1030 |  | Street Light Ducts | 365d | 2014-02-13 | 2015-08-02 | BEW/EL/GEN/1010 | 259.06d | 226.11d | Helper [365 h]; 2way 100mm dia uPVC duct for Street Lighting cables [1000 LM]; Skilled Labour [36 h] | 3078 | 526 days | 0 |
| BEW/UTL/GEN/1310 |  | Instalation of FOC for ROP | 260d | 2014-11-09 | 2015-11-22 | BEW/DE/DS/1120 FS+275d | 181.06d | 148.11d | Helper [72 h]; underground proposed pilot cable, (12 fiber FOC) for R.O.P. [46200 LM]; Skilled Labour [36 h] | 4239 | 377 days | 0 |
| BEW/UTL/GEN/1320 |  | Telephone Utility Works | 365d | 2014-11-09 | 2016-04-18 | BEW/DE/DS/1120 FS+275d | 76.06d | 43.11d | Helper [365 h]; 2way 150mm dia uPVC duct for proposed Omantel / Nawras / MOD [100 LM]; 4way 100mm dia uPVC duct for Telephone Line [1000]; Skilled Labour [36 h] | 3078 | 526 days | 0 |

| ID | WBS | Activity | Duration | Start | Finish | Predecessors | Total float | Resources | MSP Activity ID | EAM Contact Person | DIFF |
| --- | --- | --- | --- | --- | --- | --- | --- | --- | --- | --- | --- |
|  | 11 | **Clearing off and Handing over** |  | 2016-06-20 | 2016-08-28 |  |  |  |  |  |  |
| BEW/CL/GEN/1000 |  | Clearing the Site | 12d | 2016-06-20 | 2016-07-12 | BEW/UTL/GEN/1040, BEW/EL/GEN/1130, BEW/UTL/GEN/1300, BEW/EL/GEN/1020, BEW/UTL/GEN/1320, BEW/UTL/GEN/1100, BEW/UTL/GEN/1310, BEW/EL/GEN/1090, BEW/EL/GEN/1110, BEW/EL/GEN/1140, BEW/RD/INI/1090, BEW/RD/INI/1080, BEW/UTL/GEN/1000, BEW/UTL/GEN/1010, BEW/UTL/GEN/1020, BEW/UTL/GEN/1030, BEW/IN/GEN/1430, BEW/IN/GEN/1130, BEW/IN/GEN/1420, BEW/IN/GEN/1390, BEW/IN/GEN/4400, BEW/IN/GEN/4440, BEW/IN/GEN/6050, BEW/IN/GEN/6060, BEW/IN/GEN/6000, BEW/IN/GEN/6010, BEW/IN/GEN/6020, BEW/IN/GEN/6030, BEW/IN/GEN/6040, BEW/IN/GEN/1470 | 32.94d | Helper [18 h] | 3080 | 20 days | 0 |
| BEW/CL/GEN/1010 |  | Handing over the sites | 1d | 2016-08-28 | 2016-08-28 | BEW/CL/GEN/1000, BEW/PR/FC/1040 FS-1d, BEW/PR/FC/1050 FS-1d, BEW/PR/FC/1060 FS-1d, BEW/PR/FC/1070 FS-1d, BEW/PR/FC/1080 FS-1d, BEW/PR/FC/1090 FS-1d, BEW/PR/FC/1100 FS-1d, BEW/PR/FC/1110 FS-1d, BEW/PR/FC/1120 FS-1d, BEW/PR/FC/1130 FS-1d, BEW/PR/FC/1140 FS-1d, BEW/PR/FC/1150 FS-1d, BEW/PR/FC/1160 FS-1d, BEW/PR/FC/1170 FS-1d, BEW/PR/FC/1180 FS-1d, BEW/PR/FC/1190 FS-1d, BEW/PR/FC/1200 FS-1d, BEW/PR/FC/1210 FS-1d, BEW/PR/FC/1220 FS-1d, BEW/PR/FC/1230 FS-1d, BEW/PR/FC/1240 FS-1d, BEW/PR/FC/1260 FS-1d, BEW/PR/FC/1310 FS-1d, BEW/PR/FC/1320 FS-1d, BEW/PR/AB/1000, BEW/PR/AB/1140, BEW/PR/AB/1130, BEW/PR/AB/1080 | 0d | Helper [5 h] | 3081 | 7 days | 0 |
