# AlAmar Template Time Schedule

Schedule from Primavera P6, 2012-01-02 to 2012-09-14, data date 2012-01-01.

## Calendars

- Standard 5 Day Workweek w/ Basic Holidays: Mon-Fri 08:00-12:00, 13:00-17:00; Sat-Sun off. Exceptions (off unless hours are given): 2012-02-17, 2012-02-19 08:00-16:00, 2012-04-27, 2012-05-18, 2012-05-20 08:00-16:00.

## Schedule

| ID | WBS | Activity | Type | Duration | Start | Finish | Predecessors | Total float | Free float |
| --- | --- | --- | --- | --- | --- | --- | --- | --- | --- |
|  | 8 | **Project Milestone** |  |  | 2012-01-02 | 2012-08-16 |  |  |  |
| M-S01 |  | Project Start | milestone | 0d | 2012-01-02 | 2012-01-02 |  | 21d | 0d |
| M-S05 |  | Project Finish | milestone | 0d | 2012-08-16 | 2012-08-16 | 0100 | 21d |  |
|  | 9 | **Management** |  |  | 2012-01-02 | 2012-08-16 |  |  |  |
| 0000 |  | Management |  | 163d | 2012-01-02 | 2012-08-16 | M-S01 | 21d |  |
| 0100 |  | Project Scheduler |  | 163d | 2012-01-02 | 2012-08-16 | M-S01 | 21d | 0d |
|  | 7 | **1000 - Concept Design** |  |  | 2012-01-02 | 2012-02-06 |  |  |  |
|  | 1 | **Architectural** |  |  | 2012-01-02 | 2012-01-27 |  |  |  |
| 1105 |  | Drawings - Architectural |  | 20d | 2012-01-02 | 2012-01-27 |  | 0d |  |
| 1115 |  | Specifications - Architectural |  | 18d | 2012-01-04 | 2012-01-27 | 1105 SS+2d | 0d |  |
| 1125 |  | B.O.Q - Architectural |  | 16d | 2012-01-06 | 2012-01-27 | 1115 SS+2d | 0d |  |
|  | 3 | **Interior Design** |  |  | 2012-01-06 | 2012-01-27 |  |  |  |
| 1135 |  | Drawings - ID |  | 16d | 2012-01-06 | 2012-01-27 | 1225 SS | 0d |  |
| 1145 |  | Specifications - ID |  | 14d | 2012-01-10 | 2012-01-27 | 1135 SS+2d | 0d |  |
| 1155 |  | B.O.Q - ID |  | 12d | 2012-01-12 | 2012-01-27 | 1145 SS+2d | 0d |  |
|  | 4 | **Landscape** |  |  | 2012-01-06 | 2012-01-27 |  |  |  |
| 1165 |  | Drawings - Landscape |  | 16d | 2012-01-06 | 2012-01-27 | 1135 SS | 0d |  |
| 1175 |  | Specifications - Landscape |  | 14d | 2012-01-10 | 2012-01-27 | 1165 SS+2d | 0d |  |
| 1185 |  | B.O.Q - Landscape |  | 12d | 2012-01-12 | 2012-01-27 | 1175 SS+2d | 0d |  |
|  | 2 | **Structural** |  |  | 2012-01-04 | 2012-01-27 |  |  |  |
| 1205 |  | Drawings - Structural |  | 18d | 2012-01-04 | 2012-01-27 | 1115 SS | 0d |  |
| 1215 |  | Calculations |  | 16d | 2012-01-06 | 2012-01-27 | 1225 SS | 164d |  |
| 1225 |  | Specifications - Structural |  | 16d | 2012-01-06 | 2012-01-27 | 1205 SS+2d | 0d |  |
| 1235 |  | B.O.Q - Structural |  | 14d | 2012-01-10 | 2012-01-27 | 1225 SS+2d | 0d |  |

| ID | WBS | Activity | Duration | Start | Finish | Predecessors | Total float | Free float |
| --- | --- | --- | --- | --- | --- | --- | --- | --- |
|  | 5 | **Plumbing / Fire Fighting** |  | 2012-01-06 | 2012-01-27 |  |  |  |
| 1305 |  | Drawings - Plumbing / Fire Fighting | 16d | 2012-01-06 | 2012-01-27 | 1165 SS | 0d |  |
| 1315 |  | Calculations | 14d | 2012-01-10 | 2012-01-27 | 1325 SS | 164d |  |
| 1325 |  | Specifications - Plumbing / Fire Fighting | 14d | 2012-01-10 | 2012-01-27 | 1305 SS+2d | 0d |  |
| 1335 |  | B.O.Q - Plumbing / Fire Fighting | 12d | 2012-01-12 | 2012-01-27 | 1325 SS+2d | 0d |  |
|  | 6 | **HVAC** |  | 2012-01-06 | 2012-01-27 |  |  |  |
| 1345 |  | Drawings - HVAC | 16d | 2012-01-06 | 2012-01-27 | 1305 SS | 0d |  |
| 1355 |  | Calculations | 14d | 2012-01-10 | 2012-01-27 | 1365 SS | 164d |  |
| 1365 |  | Specifications - HVAC | 14d | 2012-01-10 | 2012-01-27 | 1345 SS+2d | 0d |  |
| 1375 |  | B.O.Q - HVAC | 12d | 2012-01-12 | 2012-01-27 | 1365 SS+2d | 0d |  |
|  | 7 | **Infrastructure** |  | 2012-01-10 | 2012-01-27 |  |  |  |
| 1405 |  | Drawings - Infrastructure | 14d | 2012-01-10 | 2012-01-27 | 1365 SS | 0d |  |
| 1415 |  | Specifications - Infrastructure | 12d | 2012-01-12 | 2012-01-27 | 1405 SS+2d | 0d |  |
| 1425 |  | B.O.Q - Infrastructure | 10d | 2012-01-16 | 2012-01-27 | 1415 SS+2d | 0d |  |
|  | 8 | **Electrical** |  | 2012-01-10 | 2012-01-27 |  |  |  |
| 1505 |  | Drawings - Electical | 14d | 2012-01-10 | 2012-01-27 | 1405 SS | 0d |  |
| 1515 |  | Calculations | 12d | 2012-01-12 | 2012-01-27 | 1525 SS | 164d |  |
| 1525 |  | Specifications - Electical | 12d | 2012-01-12 | 2012-01-27 | 1505 SS+2d | 0d |  |
| 1535 |  | B.O.Q - Electical | 10d | 2012-01-16 | 2012-01-27 | 1525 SS+2d | 0d |  |
|  | 13 | **Roads** |  | 2012-01-10 | 2012-01-27 |  |  |  |
| 1705 |  | Drawings - Roads | 14d | 2012-01-10 | 2012-01-27 | 1505 SS | 164d | 0d |
| 1715 |  | Calculations | 12d | 2012-01-12 | 2012-01-27 | 1725 SS | 164d |  |
| 1725 |  | Specifications - Roads | 12d | 2012-01-12 | 2012-01-27 | 1705 SS+2d | 164d | 0d |
| 1735 |  | B.O.Q - Roads | 10d | 2012-01-16 | 2012-01-27 | 1725 SS+2d | 164d |  |

| ID | WBS | Activity | Duration | Start | Finish | Predecessors | Total float | Free float |
| --- | --- | --- | --- | --- | --- | --- | --- | --- |
|  | 9 | **Technical Office / BOQ & CE** |  | 2012-01-10 | 2012-01-27 |  |  |  |
| 1605 |  | Specifications | 14d | 2012-01-10 | 2012-01-27 | 1505 SS | 0d |  |
| 1615 |  | B.O.Q / Cost Estimate | 14d | 2012-01-10 | 2012-01-27 | 1605 SS | 0d |  |
|  | 10 | **TRC / Squad Check** |  | 2012-01-17 | 2012-01-25 |  |  |  |
| SC-CD01 |  | Squad Check / Meetings | 2d | 2012-01-17 | 2012-01-18 | 1605 SS+5d | 166d | 0d |
| TRC-CD01 |  | TRC | 3d | 2012-01-23 | 2012-01-25 | SC-CD01 FS+2d | 166d |  |
|  | 12 | **Submission** |  | 2012-01-30 | 2012-01-30 |  |  |  |
| S-CD01 |  | Submission of Concet Design | 1d | 2012-01-30 | 2012-01-30 | 1615, 1605, 1535, 1525, 1505, 1425, 1415, 1405, 1375, 1365, 1345, 1335, 1325, 1305, 1185, 1175, 1165, 1155, 1145, 1135, 1235, 1225, 1205, 1125, 1115, 1105 | 0d |  |
|  | 11 | **Client Review and Approval** |  | 2012-01-31 | 2012-02-06 |  |  |  |
| CR-CD01 |  | Client Review and Approval | 5d | 2012-01-31 | 2012-02-06 | S-CD01 | 0d |  |
|  | 3 | **3000 - Design Development** |  | 2012-03-14 | 2012-04-18 |  |  |  |
|  | 1 | **Architectural** |  | 2012-03-14 | 2012-04-10 |  |  |  |
| 3105 |  | Drawings - Architectural | 20d | 2012-03-14 | 2012-04-10 | CR-SC01 | 0d |  |
| 3115 |  | Specifications - Architectural | 18d | 2012-03-16 | 2012-04-10 | 3105 SS+2d | 0d |  |
| 3125 |  | B.O.Q - Architectural | 16d | 2012-03-20 | 2012-04-10 | 3115 SS+2d | 112d |  |
|  | 3 | **Interior Design** |  | 2012-03-20 | 2012-04-10 |  |  |  |
| 3135 |  | Drawings - ID | 16d | 2012-03-20 | 2012-04-10 | 3225 SS | 0d |  |
| 3145 |  | Specifications - ID | 14d | 2012-03-22 | 2012-04-10 | 3135 SS+2d | 112d | 0d |
| 3155 |  | B.O.Q - ID | 12d | 2012-03-26 | 2012-04-10 | 3145 SS+2d | 112d |  |
|  | 4 | **Landscape** |  | 2012-03-20 | 2012-04-10 |  |  |  |
| 3165 |  | Drawings - Landscape | 16d | 2012-03-20 | 2012-04-10 | 3135 SS | 0d |  |
| 3175 |  | Specifications - Landscape | 14d | 2012-03-22 | 2012-04-10 | 3165 SS+2d | 112d | 0d |
| 3185 |  | B.O.Q - Landscape | 12d | 2012-03-26 | 2012-04-10 | 3175 SS+2d | 112d |  |
|  | 2 | **Structural** |  | 2012-03-16 | 2012-04-10 |  |  |  |
| 3205 |  | Drawings - Structural | 18d | 2012-03-16 | 2012-04-10 | 3115 SS | 0d |  |
| 3215 |  | Calculations | 16d | 2012-03-20 | 2012-04-10 | 3225 SS | 112d |  |
| 3225 |  | Specifications - Structural | 16d | 2012-03-20 | 2012-04-10 | 3205 SS+2d | 0d |  |
| 3235 |  | B.O.Q - Structural | 14d | 2012-03-22 | 2012-04-10 | 3225 SS+2d | 112d |  |

| ID | WBS | Activity | Duration | Start | Finish | Predecessors | Total float | Free float |
| --- | --- | --- | --- | --- | --- | --- | --- | --- |
|  | 5 | **Plumbing / Fire Fighting** |  | 2012-03-20 | 2012-04-10 |  |  |  |
| 3305 |  | Drawings - Plumbing / Fire Fighting | 16d | 2012-03-20 | 2012-04-10 | 3165 SS | 0d |  |
| 3315 |  | Calculations | 14d | 2012-03-22 | 2012-04-10 | 3325 SS | 112d |  |
| 3325 |  | Specifications - Plumbing / Fire Fighting | 14d | 2012-03-22 | 2012-04-10 | 3305 SS+2d | 112d | 0d |
| 3335 |  | B.O.Q - Plumbing / Fire Fighting | 12d | 2012-03-26 | 2012-04-10 | 3325 SS+2d | 112d |  |
|  | 6 | **HVAC** |  | 2012-03-20 | 2012-04-10 |  |  |  |
| 3345 |  | Drawings - HVAC | 16d | 2012-03-20 | 2012-04-10 | 3305 SS | 0d |  |
| 3355 |  | Calculations | 14d | 2012-03-22 | 2012-04-10 | 3365 SS | 112d |  |
| 3365 |  | Specifications - HVAC | 14d | 2012-03-22 | 2012-04-10 | 3345 SS+2d | 0d |  |
| 3375 |  | B.O.Q - HVAC | 12d | 2012-03-26 | 2012-04-10 | 3365 SS+2d | 112d |  |
|  | 7 | **Infrastructure** |  | 2012-03-22 | 2012-04-10 |  |  |  |
| 3405 |  | Drawings - Infrastructure | 14d | 2012-03-22 | 2012-04-10 | 3365 SS | 0d |  |
| 3415 |  | Specifications - Infrastructure | 12d | 2012-03-26 | 2012-04-10 | 3405 SS+2d | 112d | 0d |
| 3425 |  | B.O.Q - Infrastructure | 10d | 2012-03-28 | 2012-04-10 | 3415 SS+2d | 112d |  |
|  | 8 | **Electrical** |  | 2012-03-22 | 2012-04-10 |  |  |  |
| 3505 |  | Drawings - Electical | 14d | 2012-03-22 | 2012-04-10 | 3405 SS | 0d |  |
| 3515 |  | Calculations | 12d | 2012-03-26 | 2012-04-10 | 3525 SS | 112d |  |
| 3525 |  | Specifications - Electical | 12d | 2012-03-26 | 2012-04-10 | 3505 SS+2d | 112d | 0d |
| 3535 |  | B.O.Q - Electical | 10d | 2012-03-28 | 2012-04-10 | 3525 SS+2d | 112d |  |
|  | 13 | **Roads** |  | 2012-03-22 | 2012-04-10 |  |  |  |
| 3705 |  | Drawings - Roads | 14d | 2012-03-22 | 2012-04-10 | 3505 SS | 112d | 0d |
| 3715 |  | Calculations | 12d | 2012-03-26 | 2012-04-10 | 3725 SS | 112d |  |
| 3725 |  | Specifications - Roads | 12d | 2012-03-26 | 2012-04-10 | 3705 SS+2d | 112d | 0d |
| 3735 |  | B.O.Q - Roads | 10d | 2012-03-28 | 2012-04-10 | 3725 SS+2d | 112d |  |

| ID | WBS | Activity | Duration | Start | Finish | Predecessors | Total float | Free float |
| --- | --- | --- | --- | --- | --- | --- | --- | --- |
|  | 9 | **Technical Office / BOQ & CE** |  | 2012-03-22 | 2012-04-10 |  |  |  |
| 3605 |  | Specifications | 14d | 2012-03-22 | 2012-04-10 | 3505 SS | 0d |  |
| 3615 |  | B.O.Q / Cost Estimate | 14d | 2012-03-22 | 2012-04-10 | 3605 SS | 0d |  |
|  | 10 | **TRC / Squad Check** |  | 2012-03-29 | 2012-04-06 |  |  |  |
| SC-DD01 |  | Squad Check / Meetings | 2d | 2012-03-29 | 2012-03-30 | 3605 SS+5d | 114d | 0d |
| TRC-DD01 |  | TRC | 3d | 2012-04-04 | 2012-04-06 | SC-DD01 FS+2d | 114d |  |
|  | 12 | **Submission** |  | 2012-04-11 | 2012-04-11 |  |  |  |
| S-DD01 |  | Submission of Design Development | 1d | 2012-04-11 | 2012-04-11 | 3615, 3605 | 0d |  |
|  | 11 | **Client Review and Approval** |  | 2012-04-12 | 2012-04-18 |  |  |  |
| CR-DD01 |  | Client Review and Approval | 5d | 2012-04-12 | 2012-04-18 | S-DD01 | 0d |  |
|  | 6 | **2000 - Schematic Design** |  | 2012-02-07 | 2012-03-13 |  |  |  |
|  | 1 | **Architectural** |  | 2012-02-07 | 2012-03-05 |  |  |  |
| 2105 |  | Drawings - Architectural | 20d | 2012-02-07 | 2012-03-05 | CR-CD01 | 0d |  |
| 2115 |  | Specifications - Architectural | 18d | 2012-02-09 | 2012-03-05 | 2105 SS+2d | 0d |  |
| 2125 |  | B.O.Q - Architectural | 16d | 2012-02-13 | 2012-03-05 | 2115 SS+2d | 0d |  |
|  | 3 | **Interior Design** |  | 2012-02-13 | 2012-03-05 |  |  |  |
| 2135 |  | Drawings - ID | 16d | 2012-02-13 | 2012-03-05 | 2225 SS | 0d |  |
| 2145 |  | Specifications - ID | 14d | 2012-02-15 | 2012-03-05 | 2135 SS+2d | 0d |  |
| 2155 |  | B.O.Q - ID | 12d | 2012-02-19 | 2012-03-05 | 2145 SS+2d | 0d |  |
|  | 4 | **Landscape** |  | 2012-02-13 | 2012-03-05 |  |  |  |
| 2165 |  | Drawings - Landscape | 16d | 2012-02-13 | 2012-03-05 | 2135 SS | 0d |  |
| 2175 |  | Specifications - Landscape | 14d | 2012-02-15 | 2012-03-05 | 2165 SS+2d | 0d |  |
| 2185 |  | B.O.Q - Landscape | 12d | 2012-02-19 | 2012-03-05 | 2175 SS+2d | 0d |  |
|  | 2 | **Structural** |  | 2012-02-09 | 2012-03-05 |  |  |  |
| 2205 |  | Drawings - Structural | 18d | 2012-02-09 | 2012-03-05 | 2115 SS | 0d |  |
| 2215 |  | Calculations | 16d | 2012-02-13 | 2012-03-05 | 2225 SS | 138d |  |
| 2225 |  | Specifications - Structural | 16d | 2012-02-13 | 2012-03-05 | 2205 SS+2d | 0d |  |
| 2235 |  | B.O.Q - Structural | 14d | 2012-02-15 | 2012-03-05 | 2225 SS+2d | 0d |  |

| ID | WBS | Activity | Duration | Start | Finish | Predecessors | Total float | Free float |
| --- | --- | --- | --- | --- | --- | --- | --- | --- |
|  | 5 | **Plumbing / Fire Fighting** |  | 2012-02-13 | 2012-03-05 |  |  |  |
| 2305 |  | Drawings - Plumbing / Fire Fighting | 16d | 2012-02-13 | 2012-03-05 | 2165 SS | 0d |  |
| 2315 |  | Calculations | 14d | 2012-02-15 | 2012-03-05 | 2325 SS | 138d |  |
| 2325 |  | Specifications - Plumbing / Fire Fighting | 14d | 2012-02-15 | 2012-03-05 | 2305 SS+2d | 0d |  |
| 2335 |  | B.O.Q - Plumbing / Fire Fighting | 12d | 2012-02-19 | 2012-03-05 | 2325 SS+2d | 0d |  |
|  | 6 | **HVAC** |  | 2012-02-13 | 2012-03-05 |  |  |  |
| 2345 |  | Drawings - HVAC | 16d | 2012-02-13 | 2012-03-05 | 2305 SS | 0d |  |
| 2355 |  | Calculations | 14d | 2012-02-15 | 2012-03-05 | 2365 SS | 138d |  |
| 2365 |  | Specifications - HVAC | 14d | 2012-02-15 | 2012-03-05 | 2345 SS+2d | 0d |  |
| 2375 |  | B.O.Q - HVAC | 12d | 2012-02-19 | 2012-03-05 | 2365 SS+2d | 0d |  |
|  | 7 | **Infrastructure** |  | 2012-02-15 | 2012-03-05 |  |  |  |
| 2405 |  | Drawings - Infrastructure | 14d | 2012-02-15 | 2012-03-05 | 2365 SS | 0d |  |
| 2415 |  | Specifications - Infrastructure | 12d | 2012-02-19 | 2012-03-05 | 2405 SS+2d | 0d |  |
| 2425 |  | B.O.Q - Infrastructure | 10d | 2012-02-21 | 2012-03-05 | 2415 SS+2d | 0d |  |
|  | 8 | **Electrical** |  | 2012-02-15 | 2012-03-05 |  |  |  |
| 2505 |  | Drawings - Electical | 14d | 2012-02-15 | 2012-03-05 | 2405 SS | 0d |  |
| 2515 |  | Calculations | 12d | 2012-02-19 | 2012-03-05 | 2525 SS | 138d |  |
| 2525 |  | Specifications - Electical | 12d | 2012-02-19 | 2012-03-05 | 2505 SS+2d | 0d |  |
| 2535 |  | B.O.Q - Electical | 10d | 2012-02-21 | 2012-03-05 | 2525 SS+2d | 0d |  |
|  | 13 | **Roads** |  | 2012-02-15 | 2012-03-05 |  |  |  |
| 2705 |  | Drawings - Roads | 14d | 2012-02-15 | 2012-03-05 | 2505 SS | 138d | 0d |
| 2715 |  | Calculations | 12d | 2012-02-19 | 2012-03-05 | 2725 SS | 138d |  |
| 2725 |  | Specifications - Roads | 12d | 2012-02-19 | 2012-03-05 | 2705 SS+2d | 138d | 0d |
| 2735 |  | B.O.Q - Roads | 10d | 2012-02-21 | 2012-03-05 | 2725 SS+2d | 138d |  |

| ID | WBS | Activity | Duration | Start | Finish | Predecessors | Total float | Free float |
| --- | --- | --- | --- | --- | --- | --- | --- | --- |
|  | 9 | **Technical Office / BOQ & CE** |  | 2012-02-15 | 2012-03-05 |  |  |  |
| 2605 |  | Specifications | 14d | 2012-02-15 | 2012-03-05 | 2505 SS | 0d |  |
| 2615 |  | B.O.Q / Cost Estimate | 14d | 2012-02-15 | 2012-03-05 | 2605 SS | 0d |  |
|  | 10 | **TRC / Squad Check** |  | 2012-02-22 | 2012-03-01 |  |  |  |
| SC-SD01 |  | Squad Check / Meetings | 2d | 2012-02-22 | 2012-02-23 | 2605 SS+5d | 140d | 0d |
| TRC-SC |  | TRC | 3d | 2012-02-28 | 2012-03-01 | SC-SD01 FS+2d | 140d |  |
|  | 12 | **Submission** |  | 2012-03-06 | 2012-03-06 |  |  |  |
| S-SC01 |  | Submission of Schematic Design | 1d | 2012-03-06 | 2012-03-06 | 2615, 2605, 2535, 2525, 2505, 2425, 2415, 2405, 2375, 2365, 2345, 2335, 2325, 2305, 2185, 2175, 2165, 2155, 2145, 2135, 2235, 2225, 2205, 2125, 2115, 2105 | 0d |  |
|  | 11 | **Client Review and Approval** |  | 2012-03-07 | 2012-03-13 |  |  |  |
| CR-SC01 |  | Client Review and Approval | 5d | 2012-03-07 | 2012-03-13 | S-SC01 | 0d |  |
|  | 5 | **4000 - Detailed Design** |  | 2012-04-19 | 2012-05-25 |  |  |  |
|  | 1 | **Architectural** |  | 2012-04-19 | 2012-05-17 |  |  |  |
| 4105 |  | Drawings - Architectural | 20d | 2012-04-19 | 2012-05-17 | CR-DD01 | 0d |  |
| 4115 |  | Specifications - Architectural | 18d | 2012-04-23 | 2012-05-17 | 4105 SS+2d | 0d |  |
| 4125 |  | B.O.Q - Architectural | 16d | 2012-04-25 | 2012-05-17 | 4115 SS+2d | 86d |  |
|  | 3 | **Interior Design** |  | 2012-04-25 | 2012-05-17 |  |  |  |
| 4135 |  | Drawings - ID | 16d | 2012-04-25 | 2012-05-17 | 4215 SS | 0d |  |
| 4145 |  | Specifications - ID | 14d | 2012-04-30 | 2012-05-17 | 4135 SS+2d | 86d | 0d |
| 4155 |  | B.O.Q - ID | 12d | 2012-05-02 | 2012-05-17 | 4145 SS+2d | 86d |  |
|  | 4 | **Landscape** |  | 2012-04-25 | 2012-05-17 |  |  |  |
| 4165 |  | Drawings - Landscape | 16d | 2012-04-25 | 2012-05-17 | 4135 SS | 0d |  |
| 4175 |  | Specifications - Landscape | 14d | 2012-04-30 | 2012-05-17 | 4165 SS+2d | 86d | 0d |
| 4185 |  | B.O.Q - Landscape | 12d | 2012-05-02 | 2012-05-17 | 4175 SS+2d | 86d |  |
|  | 2 | **Structural** |  | 2012-04-23 | 2012-05-17 |  |  |  |
| 4205 |  | Drawings - Structural | 18d | 2012-04-23 | 2012-05-17 | 4115 SS | 0d |  |
| 4215 |  | Specifications - Structural | 16d | 2012-04-25 | 2012-05-17 | 4205 SS+2d | 0d |  |
| 4225 |  | Calculations | 16d | 2012-04-25 | 2012-05-17 | 4215 SS | 86d |  |
| 4235 |  | B.O.Q - Structural | 14d | 2012-04-30 | 2012-05-17 | 4215 SS+2d | 86d |  |

| ID | WBS | Activity | Duration | Start | Finish | Predecessors | Total float | Free float |
| --- | --- | --- | --- | --- | --- | --- | --- | --- |
|  | 5 | **Plumbing / Fire Fighting** |  | 2012-04-25 | 2012-05-17 |  |  |  |
| 4305 |  | Drawings - Plumbing / Fire Fighting | 16d | 2012-04-25 | 2012-05-17 | 4165 SS | 0d |  |
| 4315 |  | Calculations | 14d | 2012-04-30 | 2012-05-17 | 4325 SS | 86d |  |
| 4325 |  | Specifications - Plumbing / Fire Fighting | 14d | 2012-04-30 | 2012-05-17 | 4305 SS+2d | 86d | 0d |
| 4335 |  | B.O.Q - Plumbing / Fire Fighting | 12d | 2012-05-02 | 2012-05-17 | 4325 SS+2d | 86d |  |
|  | 6 | **HVAC** |  | 2012-04-25 | 2012-05-17 |  |  |  |
| 4345 |  | Drawings - HVAC | 16d | 2012-04-25 | 2012-05-17 | 4305 SS | 0d |  |
| 4355 |  | Calculations | 14d | 2012-04-30 | 2012-05-17 | 4365 SS | 86d |  |
| 4365 |  | Specifications - HVAC | 14d | 2012-04-30 | 2012-05-17 | 4345 SS+2d | 0d |  |
| 4375 |  | B.O.Q - HVAC | 12d | 2012-05-02 | 2012-05-17 | 4365 SS+2d | 86d |  |
|  | 7 | **Infrastructure** |  | 2012-04-30 | 2012-05-17 |  |  |  |
| 4405 |  | Drawings - Infrastructure | 14d | 2012-04-30 | 2012-05-17 | 4365 SS | 0d |  |
| 4415 |  | Specifications - Infrastructure | 12d | 2012-05-02 | 2012-05-17 | 4405 SS+2d | 86d | 0d |
| 4425 |  | B.O.Q - Infrastructure | 10d | 2012-05-04 | 2012-05-17 | 4415 SS+2d | 86d |  |
|  | 8 | **Electrical** |  | 2012-04-30 | 2012-05-17 |  |  |  |
| 4505 |  | Drawings - Electical | 14d | 2012-04-30 | 2012-05-17 | 4405 SS | 0d |  |
| 4515 |  | Calculations | 12d | 2012-05-02 | 2012-05-17 | 4525 SS | 86d |  |
| 4525 |  | Specifications - Electical | 12d | 2012-05-02 | 2012-05-17 | 4505 SS+2d | 86d | 0d |
| 4535 |  | B.O.Q - Electical | 10d | 2012-05-04 | 2012-05-17 | 4525 SS+2d | 86d |  |
|  | 13 | **Roads** |  | 2012-04-30 | 2012-05-17 |  |  |  |
| 4705 |  | Drawings - Roads | 14d | 2012-04-30 | 2012-05-17 | 4505 SS | 86d | 0d |
| 4715 |  | Calculations | 12d | 2012-05-02 | 2012-05-17 | 4725 SS | 86d |  |
| 4725 |  | Specifications - Roads | 12d | 2012-05-02 | 2012-05-17 | 4705 SS+2d | 86d | 0d |
| 4735 |  | B.O.Q - Roads | 10d | 2012-05-04 | 2012-05-17 | 4725 SS+2d | 86d |  |

| ID | WBS | Activity | Duration | Start | Finish | Predecessors | Total float | Free float |
| --- | --- | --- | --- | --- | --- | --- | --- | --- |
|  | 9 | **Technical Office / BOQ & CE** |  | 2012-04-30 | 2012-05-17 |  |  |  |
| 4605 |  | Specifications | 14d | 2012-04-30 | 2012-05-17 | 4505 SS | 0d |  |
| 4615 |  | B.O.Q / Cost Estimate | 14d | 2012-04-30 | 2012-05-17 | 4605 SS | 0d |  |
|  | 10 | **TRC / Squad Check** |  | 2012-05-07 | 2012-05-15 |  |  |  |
| SC-DD |  | Squad Check / Meetings | 2d | 2012-05-07 | 2012-05-08 | 4605 SS+5d | 88d | 0d |
| TRC-DD |  | TRC | 3d | 2012-05-11 | 2012-05-15 | SC-DD FS+2d | 88d |  |
|  | 12 | **Submission** |  | 2012-05-20 | 2012-05-20 |  |  |  |
| S-DD |  | Submission of Detailed Design | 1d | 2012-05-20 | 2012-05-20 | 4615, 4605 | 0d |  |
|  | 11 | **Client Review and Approval** |  | 2012-05-21 | 2012-05-25 |  |  |  |
| CR-DD |  | Client Review and Approval | 5d | 2012-05-21 | 2012-05-25 | S-DD | 0d |  |
|  | 4 | **5000 - Tender Documents** |  | 2012-05-28 | 2012-06-26 |  |  |  |
|  | 1 | **Architectural** |  | 2012-05-28 | 2012-06-22 |  |  |  |
| 5105 |  | Drawings - Architectural | 20d | 2012-05-28 | 2012-06-22 | CR-DD | 0d |  |
| 5115 |  | Specifications - Architectural | 18d | 2012-05-30 | 2012-06-22 | 5105 SS+2d | 0d |  |
| 5125 |  | B.O.Q - Architectural | 16d | 2012-06-01 | 2012-06-22 | 5115 SS+2d | 60d |  |
|  | 3 | **Interior Design** |  | 2012-06-01 | 2012-06-22 |  |  |  |
| 5135 |  | Drawings - ID | 16d | 2012-06-01 | 2012-06-22 | 5225 SS | 0d |  |
| 5145 |  | Specifications - ID | 14d | 2012-06-05 | 2012-06-22 | 5135 SS+2d | 60d | 0d |
| 5155 |  | B.O.Q - ID | 12d | 2012-06-07 | 2012-06-22 | 5145 SS+2d | 60d |  |
|  | 4 | **Landscape** |  | 2012-06-01 | 2012-06-22 |  |  |  |
| 5165 |  | Drawings - Landscape | 16d | 2012-06-01 | 2012-06-22 | 5135 SS | 0d |  |
| 5175 |  | Specifications - Landscape | 14d | 2012-06-05 | 2012-06-22 | 5165 SS+2d | 60d | 0d |
| 5185 |  | B.O.Q - Landscape | 12d | 2012-06-07 | 2012-06-22 | 5175 SS+2d | 60d |  |
|  | 2 | **Structural** |  | 2012-05-30 | 2012-06-22 |  |  |  |
| 5205 |  | Drawings - Structural | 18d | 2012-05-30 | 2012-06-22 | 5115 SS | 0d |  |
| 5215 |  | Calculations | 16d | 2012-06-01 | 2012-06-22 | 5225 SS | 60d |  |
| 5225 |  | Specifications - Structural | 16d | 2012-06-01 | 2012-06-22 | 5205 SS+2d | 0d |  |
| 5235 |  | B.O.Q - Structural | 14d | 2012-06-05 | 2012-06-22 | 5225 SS+2d | 60d |  |

| ID | WBS | Activity | Duration | Start | Finish | Predecessors | Total float | Free float |
| --- | --- | --- | --- | --- | --- | --- | --- | --- |
|  | 5 | **Plumbing / Fire Fighting** |  | 2012-06-01 | 2012-06-22 |  |  |  |
| 5305 |  | Drawings - Plumbing / Fire Fighting | 16d | 2012-06-01 | 2012-06-22 | 5165 SS | 0d |  |
| 5315 |  | Calculations | 14d | 2012-06-05 | 2012-06-22 | 5325 SS | 60d |  |
| 5325 |  | Specifications - Plumbing / Fire Fighting | 14d | 2012-06-05 | 2012-06-22 | 5305 SS+2d | 60d | 0d |
| 5335 |  | B.O.Q - Plumbing / Fire Fighting | 12d | 2012-06-07 | 2012-06-22 | 5325 SS+2d | 60d |  |
|  | 6 | **HVAC** |  | 2012-06-01 | 2012-06-22 |  |  |  |
| 5345 |  | Drawings - HVAC | 16d | 2012-06-01 | 2012-06-22 | 5305 SS | 0d |  |
| 5355 |  | Calculations | 14d | 2012-06-05 | 2012-06-22 | 5365 SS | 60d |  |
| 5365 |  | Specifications - HVAC | 14d | 2012-06-05 | 2012-06-22 | 5345 SS+2d | 0d |  |
| 5375 |  | B.O.Q - HVAC | 12d | 2012-06-07 | 2012-06-22 | 5365 SS+2d | 60d |  |
|  | 7 | **Infrastructure** |  | 2012-06-05 | 2012-06-22 |  |  |  |
| 5405 |  | Drawings - Infrastructure | 14d | 2012-06-05 | 2012-06-22 | 5365 SS | 0d |  |
| 5415 |  | Specifications - Infrastructure | 12d | 2012-06-07 | 2012-06-22 | 5405 SS+2d | 60d | 0d |
| 5425 |  | B.O.Q - Infrastructure | 10d | 2012-06-11 | 2012-06-22 | 5415 SS+2d | 60d |  |
|  | 8 | **Electrical** |  | 2012-06-05 | 2012-06-22 |  |  |  |
| 5505 |  | Drawings - Electical | 14d | 2012-06-05 | 2012-06-22 | 5405 SS | 0d |  |
| 5515 |  | Calculations | 12d | 2012-06-07 | 2012-06-22 | 5525 SS | 60d |  |
| 5525 |  | Specifications - Electical | 12d | 2012-06-07 | 2012-06-22 | 5505 SS+2d | 60d | 0d |
| 5535 |  | B.O.Q - Electical | 10d | 2012-06-11 | 2012-06-22 | 5525 SS+2d | 60d |  |
|  | 13 | **Roads** |  | 2012-06-05 | 2012-06-22 |  |  |  |
| 5705 |  | Drawings - Roads | 14d | 2012-06-05 | 2012-06-22 | 5505 SS | 60d | 0d |
| 5715 |  | Calculations | 12d | 2012-06-07 | 2012-06-22 | 5725 SS | 60d |  |
| 5725 |  | Specifications - Roads | 12d | 2012-06-07 | 2012-06-22 | 5705 SS+2d | 60d | 0d |
| 5735 |  | B.O.Q - Roads | 10d | 2012-06-11 | 2012-06-22 | 5725 SS+2d | 60d |  |

| ID | WBS | Activity | Duration | Start | Finish | Predecessors | Total float | Free float |
| --- | --- | --- | --- | --- | --- | --- | --- | --- |
|  | 9 | **Technical Office / BOQ & CE** |  | 2012-06-05 | 2012-06-22 |  |  |  |
| 5605 |  | Specifications | 14d | 2012-06-05 | 2012-06-22 | 5505 SS | 0d |  |
| 5615 |  | B.O.Q / Cost Estimate | 14d | 2012-06-05 | 2012-06-22 | 5605 SS | 0d |  |
|  | 10 | **TRC / Squad Check** |  | 2012-06-12 | 2012-06-20 |  |  |  |
| SC/M-TD |  | Squad Check / Meetings | 2d | 2012-06-12 | 2012-06-13 | 5605 SS+5d | 62d | 0d |
| TRC-TD |  | TRC | 3d | 2012-06-18 | 2012-06-20 | SC/M-TD FS+2d | 62d |  |
|  | 12 | **Submission** |  | 2012-06-25 | 2012-06-25 |  |  |  |
| S-TD |  | Submission of Tender Documents | 1d | 2012-06-25 | 2012-06-25 | 5615, 5605 | 0d |  |
|  | 11 | **Client Review and Approval** |  | 2012-06-26 | 2012-06-26 |  |  |  |
| CR-TD |  | Client Review and Approval | 1d | 2012-06-26 | 2012-06-26 | S-TD | 0d |  |
|  | 2 | **6000 - Tender Evaluation** |  | 2012-06-27 | 2012-07-18 |  |  |  |
|  | 1 | **Architectural** |  | 2012-06-27 | 2012-07-17 |  |  |  |
| 6105 |  | Drawings - Architectural | 15d | 2012-06-27 | 2012-07-17 | CR-TD | 0d |  |
|  | 3 | **Interior Design** |  | 2012-06-27 | 2012-07-17 |  |  |  |
| 6115 |  | Drawings - ID | 15d | 2012-06-27 | 2012-07-17 | 6205 SS | 0d |  |
|  | 4 | **Landscape** |  | 2012-06-27 | 2012-07-17 |  |  |  |
| 6125 |  | Drawings - Landscape | 15d | 2012-06-27 | 2012-07-17 | 6115 SS | 0d |  |
|  | 2 | **Structural** |  | 2012-06-27 | 2012-07-17 |  |  |  |
| 6205 |  | Drawings - Structural | 15d | 2012-06-27 | 2012-07-17 | 6105 SS | 0d |  |
|  | 5 | **Plumbing / Fire Fighting** |  | 2012-06-27 | 2012-07-17 |  |  |  |
| 6305 |  | Drawings - Plumbing / Fire Fighting | 15d | 2012-06-27 | 2012-07-17 | 6125 SS | 0d |  |
|  | 6 | **HVAC** |  | 2012-06-27 | 2012-07-17 |  |  |  |
| 6345 |  | Drawings - HVAC | 15d | 2012-06-27 | 2012-07-17 | 6305 SS | 0d |  |
|  | 7 | **Infrastructure** |  | 2012-06-27 | 2012-07-17 |  |  |  |
| 6405 |  | Drawings - Infrastructure | 15d | 2012-06-27 | 2012-07-17 | 6345 SS | 0d |  |

| ID | WBS | Activity | Duration | Start | Finish | Predecessors | Total float | Free float |
| --- | --- | --- | --- | --- | --- | --- | --- | --- |
|  | 8 | **Electrical** |  | 2012-06-27 | 2012-07-17 |  |  |  |
| 6505 |  | Drawings - Electical | 15d | 2012-06-27 | 2012-07-17 | 6405 SS | 0d |  |
|  | 13 | **Roads** |  | 2012-06-27 | 2012-07-16 |  |  |  |
| 6705 |  | Drawings - Roads | 14d | 2012-06-27 | 2012-07-16 | 6505 SS | 44d |  |
|  | 9 | **Technical Office / BOQ & CE** |  | 2012-06-27 | 2012-07-17 |  |  |  |
| 6605 |  | Specifications | 15d | 2012-06-27 | 2012-07-17 | 6505 SS | 0d |  |
| 6615 |  | B.O.Q / Cost Estimate | 15d | 2012-06-27 | 2012-07-17 | 6605 SS | 0d |  |
|  | 11 | **Submission** |  | 2012-07-18 | 2012-07-18 |  |  |  |
| S-TE |  | Submission of Evaluation Report | 1d | 2012-07-18 | 2012-07-18 | 6615, 6605 | 0d |  |
|  | 1 | **7000 - Construction Documents** |  | 2012-07-19 | 2012-08-16 |  |  |  |
|  | 1 | **Architectural** |  | 2012-07-19 | 2012-08-15 |  |  |  |
| 7105 |  | Drawings - Architectural | 20d | 2012-07-19 | 2012-08-15 | S-TE | 0d |  |
| 7115 |  | Specifications - Architectural | 18d | 2012-07-23 | 2012-08-15 | 7105 SS+2d | 0d |  |
| 7125 |  | B.O.Q - Architectural | 16d | 2012-07-25 | 2012-08-15 | 7115 SS+2d | 22d |  |
|  | 3 | **Interior Design** |  | 2012-07-25 | 2012-08-15 |  |  |  |
| 7135 |  | Drawings - ID | 16d | 2012-07-25 | 2012-08-15 | 7225 SS | 0d |  |
| 7145 |  | Specifications - ID | 14d | 2012-07-27 | 2012-08-15 | 7135 SS+2d | 22d | 0d |
| 7155 |  | B.O.Q - ID | 12d | 2012-07-31 | 2012-08-15 | 7145 SS+2d | 22d |  |
|  | 4 | **Landscape** |  | 2012-07-25 | 2012-08-15 |  |  |  |
| 7165 |  | Drawings - Landscape | 16d | 2012-07-25 | 2012-08-15 | 7135 SS | 0d |  |
| 7175 |  | Specifications - Landscape | 14d | 2012-07-27 | 2012-08-15 | 7165 SS+2d | 22d | 0d |
| 7185 |  | B.O.Q - Landscape | 12d | 2012-07-31 | 2012-08-15 | 7175 SS+2d | 22d |  |
|  | 2 | **Structural** |  | 2012-07-23 | 2012-08-15 |  |  |  |
| 7205 |  | Drawings - Structural | 18d | 2012-07-23 | 2012-08-15 | 7115 SS | 0d |  |
| 7215 |  | Calculations | 16d | 2012-07-25 | 2012-08-15 | 7225 SS | 22d |  |
| 7225 |  | Specifications - Structural | 16d | 2012-07-25 | 2012-08-15 | 7205 SS+2d | 0d |  |
| 7235 |  | B.O.Q - Structural | 14d | 2012-07-27 | 2012-08-15 | 7225 SS+2d | 22d |  |

| ID | WBS | Activity | Duration | Start | Finish | Predecessors | Total float | Free float |
| --- | --- | --- | --- | --- | --- | --- | --- | --- |
|  | 5 | **Plumbing / Fire Fighting** |  | 2012-07-25 | 2012-08-15 |  |  |  |
| 7305 |  | Drawings - Plumbing / Fire Fighting | 16d | 2012-07-25 | 2012-08-15 | 7165 SS | 0d |  |
| 7315 |  | Calculations | 14d | 2012-07-27 | 2012-08-15 | 7325 SS | 22d |  |
| 7325 |  | Specifications - Plumbing / Fire Fighting | 14d | 2012-07-27 | 2012-08-15 | 7305 SS+2d | 0d |  |
| 7335 |  | B.O.Q - Plumbing / Fire Fighting | 12d | 2012-07-31 | 2012-08-15 | 7325 SS+2d | 22d |  |
|  | 6 | **HVAC** |  | 2012-07-25 | 2012-08-15 |  |  |  |
| 7345 |  | Drawings - HVAC | 16d | 2012-07-25 | 2012-08-15 | 7305 SS | 0d |  |
| 7355 |  | Calculations | 14d | 2012-07-27 | 2012-08-15 | 7365 SS | 22d |  |
| 7365 |  | Specifications - HVAC | 14d | 2012-07-27 | 2012-08-15 | 7345 SS+2d | 0d |  |
| 7375 |  | B.O.Q - HVAC | 12d | 2012-07-31 | 2012-08-15 | 7365 SS+2d | 0d |  |
|  | 7 | **Infrastructure** |  | 2012-07-27 | 2012-08-15 |  |  |  |
| 7405 |  | Drawings - Infrastructure | 14d | 2012-07-27 | 2012-08-15 | 7365 SS | 0d |  |
| 7415 |  | Specifications - Infrastructure | 12d | 2012-07-31 | 2012-08-15 | 7405 SS+2d | 0d |  |
| 7425 |  | B.O.Q - Infrastructure | 10d | 2012-08-02 | 2012-08-15 | 7415 SS+2d | 0d |  |
|  | 8 | **Electrical** |  | 2012-07-27 | 2012-08-15 |  |  |  |
| 7505 |  | Drawings - Electical | 14d | 2012-07-27 | 2012-08-15 | 7405 SS | 0d |  |
| 7515 |  | Calculations | 12d | 2012-07-31 | 2012-08-15 | 7525 SS | 22d |  |
| 7525 |  | Specifications - Electical | 12d | 2012-07-31 | 2012-08-15 | 7505 SS+2d | 0d |  |
| 7535 |  | B.O.Q - Electical | 10d | 2012-08-02 | 2012-08-15 | 7525 SS+2d | 0d |  |
|  | 13 | **Roads** |  | 2012-07-27 | 2012-08-15 |  |  |  |
| 7705 |  | Drawings - Roads | 14d | 2012-07-27 | 2012-08-15 | 7505 SS | 22d | 0d |
| 7715 |  | Calculations | 12d | 2012-07-31 | 2012-08-15 | 7725 SS | 22d |  |
| 7725 |  | Specifications - Roads | 12d | 2012-07-31 | 2012-08-15 | 7705 SS+2d | 22d | 0d |
| 7735 |  | B.O.Q - Roads | 10d | 2012-08-02 | 2012-08-15 | 7725 SS+2d | 22d |  |

| ID | WBS | Activity | Duration | Start | Finish | Predecessors | Total float | Free float |
| --- | --- | --- | --- | --- | --- | --- | --- | --- |
|  | 10 | **TRC / Squad Check** |  | 2012-08-03 | 2012-08-13 |  |  |  |
| SC/M-CD |  | Squad Check / Meetings | 2d | 2012-08-03 | 2012-08-06 | 7605 SS+5d | 24d | 0d |
| TRC-CD |  | TRC | 3d | 2012-08-09 | 2012-08-13 | SC/M-CD FS+2d | 24d |  |
|  | 9 | **Technical Office / BOQ & CE** |  | 2012-07-27 | 2012-08-15 |  |  |  |
| 7605 |  | Specifications | 14d | 2012-07-27 | 2012-08-15 | 7505 SS | 0d |  |
| 7615 |  | B.O.Q / Cost Estimate | 14d | 2012-07-27 | 2012-08-15 | 7605 SS | 0d |  |
|  | 11 | **Submission** |  | 2012-08-16 | 2012-08-16 |  |  |  |
| S-CD |  | Submission of Construction Documents | 1d | 2012-08-16 | 2012-08-16 | 7615, 7605, 7535, 7525, 7505, 7425, 7415, 7405, 7365, 7375, 7345, 7325 | 0d |  |
|  | 12 | **8000 - Shopdrawings** |  | 2012-08-17 | 2012-09-14 |  |  |  |
|  | 1 | **Architectural** |  | 2012-08-17 | 2012-09-13 |  |  |  |
| 8105 |  | Drawings - Architectural | 20d | 2012-08-17 | 2012-09-13 | S-CD | 0d |  |
|  | 3 | **Interior Design** |  | 2012-08-23 | 2012-09-13 |  |  |  |
| 8135 |  | Drawings - ID | 16d | 2012-08-23 | 2012-09-13 | 8105 SS+4d | 0d |  |
|  | 4 | **Landscape** |  | 2012-08-23 | 2012-09-13 |  |  |  |
| 8165 |  | Drawings - Landscape | 16d | 2012-08-23 | 2012-09-13 | 8135 SS | 0d |  |
|  | 2 | **Structural** |  | 2012-08-21 | 2012-09-13 |  |  |  |
| 8205 |  | Drawings - Structural | 18d | 2012-08-21 | 2012-09-13 | 8105 SS+2d | 1d |  |
|  | 5 | **Plumbing / Fire Fighting** |  | 2012-08-23 | 2012-09-13 |  |  |  |
| 8305 |  | Drawings - Plumbing / Fire Fighting | 16d | 2012-08-23 | 2012-09-13 | 8165 SS | 0d |  |
|  | 6 | **HVAC** |  | 2012-08-23 | 2012-09-13 |  |  |  |
| 8345 |  | Drawings - HVAC | 16d | 2012-08-23 | 2012-09-13 | 8305 SS | 0d |  |
|  | 7 | **Infrastructure** |  | 2012-08-27 | 2012-09-13 |  |  |  |
| 8405 |  | Drawings - Infrastructure | 14d | 2012-08-27 | 2012-09-13 | 8345 SS+2d | 0d |  |
|  | 8 | **Electrical** |  | 2012-08-27 | 2012-09-13 |  |  |  |
| 8505 |  | Drawings - Electical | 14d | 2012-08-27 | 2012-09-13 | 8405 SS | 0d |  |

| ID | WBS | Activity | Duration | Start | Finish | Predecessors | Total float | Free float |
| --- | --- | --- | --- | --- | --- | --- | --- | --- |
|  | 10 | **TRC / Squad Check** |  | 2012-09-03 | 2012-09-11 |  |  |  |
| SC/M-SD |  | Squad Check / Meetings | 2d | 2012-09-03 | 2012-09-04 | 8405 SS+5d | 3d | 0d |
| TRC-SD |  | TRC | 3d | 2012-09-07 | 2012-09-11 | SC/M-SD FS+2d | 3d |  |
|  | 11 | **Submission** |  | 2012-09-14 | 2012-09-14 |  |  |  |
| S-SD |  | Submission of Construction Documents | 1d | 2012-09-14 | 2012-09-14 | 8505, 8405, 8345 | 0d |  |
