# الصالة المغطاة-نادي الصيد-6 اكتوبر

Schedule from Primavera P6, 2012-01-01 to 2013-03-30, data date 2011-12-14.

## Calendars

- 7-Day Workweek: Mon-Sun 08:00-12:00, 13:00-17:00.

## Schedule

| ID | WBS | Activity | Type | Duration | Start | Finish | Predecessors | Total float | Free float |
| --- | --- | --- | --- | --- | --- | --- | --- | --- | --- |
|  | 4 | **اهداف مرحلية** |  |  | 2012-01-01 | 2013-03-30 |  |  |  |
| A1370 |  | بداية المشروع | milestone | 0d | 2012-01-01 | 2012-01-01 |  | 0d |  |
| A1380 |  | نهاية المشروع | milestone | 0d | 2013-03-30 | 2013-03-30 | A1340, A1180, A1770, A1750, A1780, A1860, A1570, A1740, A1200, A1550, A1810, A1820, A1480, A2090, A2110 | 0d |  |
|  | 5 | **مرحلة التجهيزات** |  |  | 2012-01-01 | 2012-01-20 |  |  |  |
| A1390 |  | تجهيزات ادارية و نقل المكاتب |  | 20d | 2012-01-01 | 2012-01-20 | A1370 | 0d |  |
|  | 1 | **الصالة المغطاة** |  |  | 2012-01-11 | 2013-03-30 |  |  |  |
|  | 1 | **الاعمال الانشائية** |  |  | 2012-01-11 | 2012-12-19 |  |  |  |
| A1000 |  | حفر حتى منسوب التأسيس |  | 30d | 2012-01-11 | 2012-02-09 | A1390 SS+10d | 0d |  |
| A1020 |  | خرسانة عادية لزوم قواعد الاعمدة و الاطارات |  | 25d | 2012-01-31 | 2012-02-24 | A1000 FS-10d | 0d |  |
| A1030 |  | خرسانة مسلحة لزوم قواعد الاعمدة والاطارات |  | 40d | 2012-02-14 | 2012-03-24 | A1020 SS+14d | 0d |  |
| A2070 |  | الردم بين القواعد |  | 30d | 2012-06-03 | 2012-07-02 | A1890 | 0d |  |
| A1470 |  | عزل اسفل ارضية البدروم |  | 5d | 2012-07-03 | 2012-07-07 | A2070 | 0d |  |
| A1360 |  | صب ارضية البدروم -خرسانة عادية |  | 10d | 2012-07-08 | 2012-07-17 | A1470 | 0d |  |
| A1430 |  | صب ارضية البدروم -خرسانة مسلحة |  | 15d | 2012-07-18 | 2012-08-01 | A1360 | 0d |  |
| A1350 |  | خرسانة مسلحة لزوم بلاطة ارضية الملعب |  | 30d | 2012-11-20 | 2012-12-19 | A1330 | 5d | 0d |
|  | 1 | **المنطقة الاولى** |  |  | 2012-03-05 | 2012-07-22 |  |  |  |
| A1040 |  | خرسانة مسلحة للاعمدة و الاطارات حتى منسوب -3.1 |  | 15d | 2012-03-05 | 2012-03-19 | A1030 FS-20d | 0d |  |
| A1050 |  | خرسانة مسلحة لزوم سقف -3.1 |  | 15d | 2012-03-20 | 2012-04-03 | A1040 | 0d |  |
| A1060 |  | الاعمدة و الاطارات حتى منسوب -1.9 أ |  | 15d | 2012-04-04 | 2012-04-18 | A1050 | 0d |  |
| A1070 |  | خرسانة مسلحة لزوم سقف البدروم منسوب -1.9 أ |  | 30d | 2012-04-19 | 2012-05-18 | A1060 | 5d | 0d |
| A1080 |  | الاعمدة و الاطارات حتى منسوب بلاطة المدرجات +2.00 أ |  | 20d | 2012-05-19 | 2012-06-07 | A1070 | 5d | 0d |
| A1090 |  | خرسانة مسلحة لزوم بلاطة المدرج +2.00 أ |  | 45d | 2012-06-08 | 2012-07-22 | A1080 | 251d |  |
|  | 2 | **المنطقة الثانية** |  |  | 2012-04-19 | 2012-08-11 |  |  |  |
| A1880 |  | الاعمدة و الاطارات حتى منسوب -1.9 ب |  | 15d | 2012-04-19 | 2012-05-03 | A1060 | 0d |  |
| A1890 |  | خرسانة مسلحة لزوم سقف البدروم منسوب -1.9 ب |  | 30d | 2012-05-04 | 2012-06-02 | A1880 | 0d |  |
| A1950 |  | الاعمدة و الاطارات حتى منسوب بلاطة المدرجات +2.00 ب |  | 20d | 2012-06-08 | 2012-06-27 | A1080 | 5d | 0d |
| A1980 |  | خرسانة مسلحة لزوم بلاطة المدرج +2.00 ب |  | 45d | 2012-06-28 | 2012-08-11 | A1950 | 231d |  |

| ID | WBS | Activity | Duration | Start | Finish | Predecessors | Total float | Free float |
| --- | --- | --- | --- | --- | --- | --- | --- | --- |
|  | 3 | **المنطقة الثالثة** |  | 2012-05-04 | 2012-08-31 |  |  |  |
| A1900 |  | الاعمدة و الاطارات حتى منسوب -1.9 ج | 15d | 2012-05-04 | 2012-05-18 | A1880 | 271d | 0d |
| A1920 |  | خرسانة مسلحة لزوم سقف البدروم منسوب -1.9 ج | 30d | 2012-05-19 | 2012-06-17 | A1900 | 286d |  |
| A1960 |  | الاعمدة و الاطارات حتى منسوب بلاطة المدرجات +2.00 ج | 20d | 2012-06-28 | 2012-07-17 | A1950 | 5d | 0d |
| A1990 |  | خرسانة مسلحة لزوم بلاطة المدرج +2.00 ج | 45d | 2012-07-18 | 2012-08-31 | A1960 | 211d |  |
|  | 4 | **المنطقة الرابعة** |  | 2012-05-19 | 2012-09-20 |  |  |  |
| A1930 |  | الاعمدة و الاطارات حتى منسوب -1.9 د | 15d | 2012-05-19 | 2012-06-02 | A1900 | 271d | 0d |
| A1910 |  | خرسانة مسلحة لزوم سقف البدروم منسوب -1.9 د | 30d | 2012-06-03 | 2012-07-02 | A1930 | 271d |  |
| A1970 |  | الاعمدة و الاطارات حتى منسوب بلاطة المدرجات +2.00 د | 20d | 2012-07-18 | 2012-08-06 | A1960 | 5d | 0d |
| A2000 |  | خرسانة مسلحة لزوم بلاطة المدرج +2.00 د | 45d | 2012-08-07 | 2012-09-20 | A1970 | 5d | 0d |
|  | 5 | **اعمال الهيكل المعدني** |  | 2012-09-21 | 2012-11-19 |  |  |  |
| A1320 |  | تركيب الجمالون الحديد | 30d | 2012-09-21 | 2012-10-20 | A2000 | 5d | 0d |
| A1330 |  | تركيب الواح الساندوتش | 30d | 2012-10-21 | 2012-11-19 | A1320 | 5d | 0d |
|  | 4 | **الاعمال المعمارية** |  | 2012-08-02 | 2013-03-30 |  |  |  |
| A1120 |  | المباني الداخلية للبدروم و الادوار المتكررة | 75d | 2012-08-02 | 2012-10-15 | A1430 | 0d |  |
| A1130 |  | بياض داخلي | 75d | 2012-09-01 | 2012-11-14 | A1120 SS+30d | 0d |  |
| A1140 |  | تركيب الارضيات | 75d | 2012-10-01 | 2012-12-14 | A1130 SS+30d | 0d |  |
| A1150 |  | بياض خارجي لواجهة الصالة المغطاة | 60d | 2012-11-15 | 2013-01-13 | A1130 | 1d | 0d |
| A1160 |  | تكسيات الحوائط الداخلية | 60d | 2012-12-10 | 2013-02-07 | A1140 FS-5d | 0d |  |
| A1340 |  | تشطيب ارض الملعب رولات فينيل | 30d | 2012-12-20 | 2013-01-18 | A1350 | 71d |  |
| A1480 |  | تركيب كراسي المدرجات | 60d | 2012-12-20 | 2013-02-17 | A1350 | 41d |  |
| A1170 |  | تركيب الحليات الجبسية لزوم الواجهات | 45d | 2012-12-30 | 2013-02-12 | A1150 FS-15d | 1d | 0d |
| A1180 |  | دهانات بلاستيك داخلية | 60d | 2013-01-30 | 2013-03-30 | A1160 FS-9d | 0d |  |
| A1200 |  | دهانات خارجية دراي ميكس | 45d | 2013-02-13 | 2013-03-29 | A1170 | 1d |  |
| A1190 |  | تركيب الابواب والنوافذ و اعمال الزجاج | 45d | 2013-02-14 | 2013-03-30 | A1180 SS+15d | 0d |  |

| ID | WBS | Activity | Duration | Start | Finish | Predecessors | Total float | Free float |
| --- | --- | --- | --- | --- | --- | --- | --- | --- |
|  | 1 | **تشطيب قاعات السينما** |  | 2012-12-30 | 2013-03-25 |  |  |  |
| A2040 |  | ارضيات جرانيت لزوم مداخل السينما | 10d | 2012-12-30 | 2013-01-08 | A1350 FS+10d | 5d | 0d |
| A2010 |  | اعمال التجاليد الخشبية للحوائط | 20d | 2013-01-09 | 2013-01-28 | A2040 | 5d | 0d |
| A2020 |  | اعمال التكسيات الخشبية للحوائط | 14d | 2013-01-29 | 2013-02-11 | A2010 | 5d | 0d |
| A2030 |  | اعمال السقف المعلق | 20d | 2013-02-12 | 2013-03-03 | A2020 | 5d | 0d |
| A2050 |  | تركيب اللكراسي | 15d | 2013-03-04 | 2013-03-18 | A2030 | 5d | 0d |
| A2060 |  | تركيب ارضيات الموكيت | 7d | 2013-03-19 | 2013-03-25 | A2050 | 5d |  |
|  | 3 | **الاعمال الاليكتروميكانيكية** |  | 2012-10-16 | 2013-03-29 |  |  |  |
|  | 1 | **Electrical works** |  | 2012-11-15 | 2013-03-29 |  |  |  |
| A1600 |  | High current system | 84d | 2012-11-15 | 2013-02-06 | A1130 | 1d | 0d |
| A1680 |  | Lighting system | 60d | 2012-12-15 | 2013-02-12 | A1600 SS+30d | 1d | 0d |
| A2100 |  | Cable trays | 30d | 2012-12-15 | 2013-01-13 | A1600 SS+30d | 21d | 20d |
| A1580 |  | Low current systems | 79.94d | 2013-01-04 | 2013-03-24 | A1680 SS+20d | 1d | 0d |
| A1570 |  | Electrical equipments | 55d | 2013-02-03 | 2013-03-29 | A1580 SS+30d, A2100 | 1d | 0d |
| A2110 |  | Electrical boards erection | 20d | 2013-02-03 | 2013-02-22 | A1570 SS | 36d |  |
| A2090 |  | Lighting fixtures | 45d | 2013-02-13 | 2013-03-29 | A1680 | 1d |  |
|  | 2 | **Mechanical works** |  | 2012-10-16 | 2013-03-29 |  |  |  |
|  | 1 | **Fire fighting systems** |  | 2012-10-16 | 2013-03-14 |  |  |  |
| A1730 |  | Internal fire fighting network | 90d | 2012-10-16 | 2013-01-13 | A1120 | 16d | 0d |
| A1740 |  | External fire fighting network | 60d | 2013-01-14 | 2013-03-14 | A1730 | 16d |  |
| A1800 |  | Fire extinguisher erection | 20d | 2013-01-14 | 2013-02-02 | A1730 | 56d |  |
| A2120 |  | Sprinkler system | 30d | 2013-01-14 | 2013-02-12 | A1730 | 46d |  |
|  | 2 | **HVAC systems** |  | 2012-11-15 | 2013-03-29 |  |  |  |
| A1760 |  | Pipe networks | 90d | 2012-11-15 | 2013-02-12 | A1130 | 1d | 0d |
| A1770 |  | Duct works | 90d | 2012-12-15 | 2013-03-14 | A1130 FS+30d | 16d |  |
| A1780 |  | HVAC equipments | 30d | 2013-02-23 | 2013-03-24 | A1760 FS+10d | 1d | 0d |
| A1750 |  | Fans | 30d | 2013-02-28 | 2013-03-29 | A1780 SS+5d | 1d |  |

| ID | WBS | Activity | Duration | Start | Finish | Predecessors | Total float | Free float |
| --- | --- | --- | --- | --- | --- | --- | --- | --- |
|  | 3 | **الاعمال الصحية** |  | 2012-10-16 | 2013-03-29 |  |  |  |
| A1840 |  | أعمال الامداد بالمياه للشبكات الداخلية | 60d | 2012-10-16 | 2012-12-14 | A1120 | 1d | 0d |
| A1790 |  | خط الصرف للشبكة الخارجية | 75d | 2012-11-15 | 2013-01-28 | A1830 SS | 1d | 0d |
| A1830 |  | أعمال الصرف للشبكات الداخلية | 60d | 2012-11-15 | 2013-01-13 | A1840 SS+30d | 1d | 0d |
| A1810 |  | خط المياه للشبكة الخارجية | 60d | 2013-01-29 | 2013-03-29 | A1790 | 1d |  |
| A1820 |  | توريد و تركيب الاجهزة الصحية | 30d | 2013-02-24 | 2013-03-25 | A1190 SS+10d | 5d |  |
|  | 2 | **غرفة الكهرباء** |  | 2012-09-07 | 2013-03-23 |  |  |  |
|  | 1 | **اعمال انشائية** |  | 2012-09-07 | 2012-12-10 |  |  |  |
| A1400 |  | أعمال ترابية | 7d | 2012-09-07 | 2012-09-13 | A1370 FS+250d | 7d | 0d |
| A1410 |  | قواعد عادية | 7d | 2012-09-14 | 2012-09-20 | A1400 | 7d | 0d |
| A1420 |  | قواعد مسلحة | 14d | 2012-09-21 | 2012-10-04 | A1410 | 7d | 0d |
| A1440 |  | اعمدة الارضي | 10d | 2012-10-05 | 2012-10-14 | A1420 | 7d | 0d |
| A1460 |  | صب دكة الدور الارضي | 3d | 2012-11-18 | 2012-11-20 | A1500 | 7d | 0d |
| A1450 |  | سقف الدور الارضي | 20d | 2012-11-21 | 2012-12-10 | A1460 | 7d | 0d |
|  | 2 | **اعمال معمارية** |  | 2012-10-15 | 2013-03-23 |  |  |  |
| A1490 |  | مباني قصية الردم | 20d | 2012-10-15 | 2012-11-03 | A1440 | 7d | 0d |
| A1500 |  | عزل و ردم داخل القصية | 14d | 2012-11-04 | 2012-11-17 | A1490 | 7d | 0d |
| A1510 |  | مباني الدور الارضي | 14d | 2012-12-11 | 2012-12-24 | A1450 | 7d | 0d |
| A1520 |  | بياض داخلي | 21d | 2012-12-25 | 2013-01-14 | A1510 | 7d | 0d |
| A1530 |  | بياض خارجي | 21d | 2013-01-15 | 2013-02-04 | A1520 | 7d | 0d |
| A1540 |  | تشطيبات داخلية | 20d | 2013-02-05 | 2013-02-24 | A1530 | 7d | 0d |
| A1560 |  | تشطيبات خارجية | 20d | 2013-02-25 | 2013-03-16 | A1540 | 7d | 0d |
| A1550 |  | دهان خارجي | 7d | 2013-03-17 | 2013-03-23 | A1560 | 7d |  |
|  | 3 | **اعمال تنسيق الموقع** |  | 2012-12-15 | 2013-03-29 |  |  |  |
| A1850 |  | Hardscape | 60d | 2012-12-15 | 2013-02-12 | A1140 | 1d | 0d |
| A1860 |  | Softscape | 45d | 2013-02-13 | 2013-03-29 | A1870 SS | 1d |  |
| A1870 |  | Iriigation networks | 45d | 2013-02-13 | 2013-03-29 | A1850 | 1d | 0d |
